Sn,Task Name,Activity Type,Planned Start,Planned Finish,Actual Start,Actual Finish,PGMA,Parent WBS Level
1,Zero Date of Project,MIL,2022-09-27,2022-09-27,2022-09-27,2022-09-27,,"1(EPC Package for Talcher Thermal Power Project, Stage-III (2X660MW))"
2,Milestones/ as per Work Schedule,MIL,2022-10-27,2026-09-25,,,,"1(EPC Package for Talcher Thermal Power Project, Stage-III (2X660MW))"
3,Milestones: Basic Engineering,MIL,2022-10-27,2023-02-23,,,,1.2(Milestones/ as per Work Schedule)
4,Milestones: Detailed Engineering,MIL,2022-12-26,2024-02-18,,,,1.2(Milestones/ as per Work Schedule)
5,Milestone: Commencement of Manufacturing,MIL,2023-03-25,2023-03-25,,,,1.2(Milestones/ as per Work Schedule)
6,Ordering of Major BOIs,MIL,2023-03-26,2023-09-21,,,,1.2(Milestones/ as per Work Schedule)
7,Milestone: COMPLETION of Ordering of Balance BOIs,MIL,2025-01-21,2025-01-21,,,,1.2(Milestones/ as per Work Schedule)
8,Milestone: Establishment of Storage & pre-assembly yard,MIL,2023-01-30,2023-05-29,,,,1.2(Milestones/ as per Work Schedule)
9,Milestones: Supply of foundation materials for Boiler and Bunker Structures ,MIL,2023-03-29,2023-03-29,,,,1.2(Milestones/ as per Work Schedule)
10,Milestones: Commencement of supplies of Structures & Main Equipment,MIL,2023-06-28,2023-06-28,,,,1.2(Milestones/ as per Work Schedule)
11,Milestones: Boiler Erection Start,MIL,2023-09-26,2023-09-26,,,,1.2(Milestones/ as per Work Schedule)
12,Milestones: Ceiling Girder Lifting,MIL,2024-07-25,2024-07-25,,,,1.2(Milestones/ as per Work Schedule)
13,Milestones: Drainable Hydro Test ,MIL,2025-07-26,2025-07-26,,,,1.2(Milestones/ as per Work Schedule)
14,Milestones: Non Drainable Hydro test Readiness,MIL,2025-11-29,2025-11-29,,,,1.2(Milestones/ as per Work Schedule)
15,Milestones: Supply of Critical piping,MIL,2025-05-30,2025-05-30,,,,1.2(Milestones/ as per Work Schedule)
16,Milestones: Pre-Assembly/Erection of Critical piping,MIL,2024-03-25,2025-09-15,,,,1.2(Milestones/ as per Work Schedule)
17,Milestones: C&I  readiness for Boiler Light up,MIL,2026-01-19,2026-01-19,,,,1.2(Milestones/ as per Work Schedule)
18,Milestones: Boiler Light up & Chemical Cleaning,MIL,2026-01-24,2026-01-24,,,,1.2(Milestones/ as per Work Schedule)
19,Milestones: Supply of Coal Mills ,MIL,2023-10-27,2024-10-20,,,,1.2(Milestones/ as per Work Schedule)
20,Milestones: Steam Blowing start with Coal,MIL,2026-02-27,2026-02-27,,,,1.2(Milestones/ as per Work Schedule)
21,Milestones: Steam Blowing COMPLETION with Coal,MIL,2026-03-26,2026-03-26,,,,1.2(Milestones/ as per Work Schedule)
22,Milestones: Condenser Erection start,MIL,2024-07-31,2024-07-31,,,,1.2(Milestones/ as per Work Schedule)
23,Milestones: Turbine Erection start,MIL,2024-08-07,2024-08-07,,,,1.2(Milestones/ as per Work Schedule)
24,Milestones: Generator Stator lifting,MIL,2025-04-07,2025-04-07,,,,1.2(Milestones/ as per Work Schedule)
25,Milestone: Supply of CW Puddle flange,MIL,2024-03-19,2024-03-19,,,,1.2(Milestones/ as per Work Schedule)
26,Milestone: Supply of TG Embedment,MIL,2023-12-25,2023-12-25,,,,1.2(Milestones/ as per Work Schedule)
27,Milestone: Supply of EOT Crane,MIL,2024-02-11,2024-02-11,,,,1.2(Milestones/ as per Work Schedule)
28,Milestones: Turbine Box up,MIL,2025-09-25,2025-09-25,,,,1.2(Milestones/ as per Work Schedule)
29,Milestone: Turbine Oil flushing COMPLETION,MIL,2025-11-25,2025-11-25,,,,1.2(Milestones/ as per Work Schedule)
30,Milestones: Turbine on Barring gear,MIL,2026-01-26,2026-01-26,,,,1.2(Milestones/ as per Work Schedule)
31,Milestones: Synchronization on Coal,MIL,2026-05-26,2026-05-26,,,,1.2(Milestones/ as per Work Schedule)
32,Milestones: Full Load operation,MIL,2026-06-25,2026-06-25,,,,1.2(Milestones/ as per Work Schedule)
33,Milestones: COMPLETION of Trial Operation & PG test,MIL,2026-06-25,2026-07-24,,,,1.2(Milestones/ as per Work Schedule)
34,Milestones: COMPLETION of Major supplies,MIL,2026-01-11,2026-01-11,,,,1.2(Milestones/ as per Work Schedule)
35,Milestones: COMPLETION of all Supplies,MIL,2026-02-09,2026-02-09,,,,1.2(Milestones/ as per Work Schedule)
36,Milestones: COMPLETION of site delivery of all mandatory spares,MIL,2025-12-09,2025-12-09,,,,1.2(Milestones/ as per Work Schedule)
37,Milestones: COMPLETION of Facilities,MIL,2026-09-25,2026-09-25,,,,1.2(Milestones/ as per Work Schedule)
38,Readiness of Major Civil Foundation,CIV,2023-06-27,2025-07-27,,,,"1(EPC Package for Talcher Thermal Power Project, Stage-III (2X660MW))"
39,Readiness of Major Civil Foundation: Boiler Foundation,CIV,2023-09-25,2023-09-25,,,,1.3(Readiness of Major Civil Foundation)
40,Readiness of Major Civil Foundation: ESP Foundation,CIV,2023-12-22,2023-12-22,,,,1.3(Readiness of Major Civil Foundation)
41,Readiness of Major Civil Foundation: Commencement of Excavation for TG Building,CIV,2023-06-27,2023-06-27,,,,1.3(Readiness of Major Civil Foundation)
42,Readiness of Major Civil Foundation: Casting of TG Raft,CIV,2023-08-31,2023-08-31,,,,1.3(Readiness of Major Civil Foundation)
43,Readiness of Major Civil Foundation: Casting of TG Deck,CIV,2024-04-07,2024-04-07,,,,1.3(Readiness of Major Civil Foundation)
44,Readiness of Major Civil Foundation: Readiness of TG Deck with EOT crane and approach,CIV,2024-08-06,2024-08-06,,,,1.3(Readiness of Major Civil Foundation)
45,Readiness of Major Civil Foundation: Condenser Foundation,CIV,2024-02-23,2024-02-23,,,,1.3(Readiness of Major Civil Foundation)
46,Readiness of Major Civil Foundation: ID Fan Foundation,CIV,2024-06-27,2024-06-27,,,,1.3(Readiness of Major Civil Foundation)
47,Readiness of Major Civil Foundation: FD Fan Foundation,CIV,2025-07-09,2025-07-09,,,,1.3(Readiness of Major Civil Foundation)
48,Readiness of Major Civil Foundation: PA Fan Foundation,CIV,2025-07-27,2025-07-27,,,,1.3(Readiness of Major Civil Foundation)
49,Readiness of Major Civil Foundation: SA Fan Foundation,CIV,2025-07-09,2025-07-09,,,,1.3(Readiness of Major Civil Foundation)
50,Readiness of Major Civil Foundation: Mill Foundation,CIV,2024-09-15,2024-09-15,,,,1.3(Readiness of Major Civil Foundation)
51,Readiness of Major Civil Foundation: Bunker Bay Foundation,CIV,2023-09-27,2025-01-04,,,,1.3(Readiness of Major Civil Foundation)
52,Readiness of Major Civil Foundation: MDBFP Foundation,CIV,2025-01-07,2025-01-07,,,,1.3(Readiness of Major Civil Foundation)
53,Readiness of Major Civil Foundation: TDBFP Foundation,CIV,2025-02-07,2025-02-07,,,,1.3(Readiness of Major Civil Foundation)
54,Readiness of Major Civil Foundation: CEP Foundation,CIV,2024-08-05,2024-08-05,,,,1.3(Readiness of Major Civil Foundation)
55,Readiness of Major Civil Foundation: BOF-ESP Duct Foundation,CIV,2025-04-20,2025-04-20,,,,1.3(Readiness of Major Civil Foundation)
56,Readiness of Major Civil Foundation: ESP-ID Duct Foundation,CIV,2024-09-26,2024-09-26,,,,1.3(Readiness of Major Civil Foundation)
57,Readiness of Major Civil Foundation: ID-Chimney Duct Foundation,CIV,2024-11-27,2024-11-27,,,,1.3(Readiness of Major Civil Foundation)
58,Readiness of Major Civil Foundation: GT Foundation,CIV,2024-09-09,2024-09-09,,,,1.3(Readiness of Major Civil Foundation)
59,Readiness of Major Civil Foundation: ST Foundation,CIV,2025-02-20,2025-02-20,,,,1.3(Readiness of Major Civil Foundation)
60,Readiness of Major Civil Foundation: UAT Foundation,CIV,2025-01-01,2025-01-01,,,,1.3(Readiness of Major Civil Foundation)
61,Readiness of Major Civil Foundation: SAT Foundation,CIV,2025-01-03,2025-01-03,,,,1.3(Readiness of Major Civil Foundation)
62,Readiness of Major Civil Foundation: SPBD Foundation,CIV,2025-04-22,2025-04-22,,,,1.3(Readiness of Major Civil Foundation)
63,Readiness of Major Civil Foundation: IPBD Foundation,CIV,2025-02-22,2025-02-22,,,,1.3(Readiness of Major Civil Foundation)
64,Readiness of Major Equipment and system,OTH,2025-02-20,2026-06-20,,,,"1(EPC Package for Talcher Thermal Power Project, Stage-III (2X660MW))"
65,Readiness of Major Equipment and system: DMCW System,OTH,2025-08-19,2025-08-19,,,,1.4(Readiness of Major Equipment and system)
66,Readiness of Major Equipment and system: First ID Fan,OTH,2025-12-31,2025-12-31,,,,1.4(Readiness of Major Equipment and system)
67,Readiness of Major Equipment and system: Second ID Fan,OTH,2026-03-31,2026-03-31,,,,1.4(Readiness of Major Equipment and system)
68,Readiness of Major Equipment and system: First FD Fan,OTH,2025-12-09,2025-12-09,,,,1.4(Readiness of Major Equipment and system)
69,Readiness of Major Equipment and system: Second FD Fan,OTH,2026-02-03,2026-02-03,,,,1.4(Readiness of Major Equipment and system)
70,Readiness of Major Equipment and system: First APH,OTH,2025-11-29,2025-11-29,,,,1.4(Readiness of Major Equipment and system)
71,Readiness of Major Equipment and system: Second APH,OTH,2026-02-01,2026-02-01,,,,1.4(Readiness of Major Equipment and system)
72,Readiness of Major Equipment and system: Second PA Fan,OTH,2026-03-06,2026-03-06,,,,1.4(Readiness of Major Equipment and system)
73,Readiness of Major Equipment and system: First PA Fan,OTH,2026-02-19,2026-02-19,,,,1.4(Readiness of Major Equipment and system)
74,Readiness of Major Equipment and system: SA Fan,OTH,2026-05-01,2026-05-01,,,,1.4(Readiness of Major Equipment and system)
75,Readiness of Major Equipment and system: MDBFP,OTH,2025-09-17,2025-09-17,,,,1.4(Readiness of Major Equipment and system)
76,Readiness of Major Equipment and system: CEP,OTH,2025-11-18,2025-11-18,,,,1.4(Readiness of Major Equipment and system)
77,Readiness of Major Equipment and system: TDBFP,OTH,2026-04-18,2026-04-18,,,,1.4(Readiness of Major Equipment and system)
78,"Readiness of Major Equipment and system: Service transformer, Aux transformer Charging",OTH,2025-05-24,2025-05-24,,,,1.4(Readiness of Major Equipment and system)
79,Readiness of Major Equipment and system: DCS Panel Charging,OTH,2025-10-27,2025-10-27,,,,1.4(Readiness of Major Equipment and system)
80,Readiness of Major Equipment and system: C&I for BLU (Gun Trial of AB Elevation),OTH,2025-12-19,2025-12-19,,,,1.4(Readiness of Major Equipment and system)
81,Readiness of Major Equipment and system: C&I for Chemical Cleaning (Gun Trial CD elevation),OTH,2025-11-25,2025-11-25,,,,1.4(Readiness of Major Equipment and system)
82,Readiness of Major Equipment and system: C&I for SB,OTH,2025-12-25,2025-12-25,,,,1.4(Readiness of Major Equipment and system)
83,Readiness of Major Equipment and system: C&I for Sync,OTH,2026-04-27,2026-04-27,,,,1.4(Readiness of Major Equipment and system)
84,Readiness of Major Equipment and system: C&I for Full Loading,OTH,2025-06-03,2025-06-03,,,,1.4(Readiness of Major Equipment and system)
85,Readiness of Major Equipment and system: Mills,OTH,2025-11-15,2025-11-15,,,,1.4(Readiness of Major Equipment and system)
86,Readiness of Major Equipment and system: Feeders ,OTH,2025-11-20,2025-11-20,,,,1.4(Readiness of Major Equipment and system)
87,Readiness of Major Equipment and system: Scanner FAN,OTH,2025-11-02,2025-11-02,,,,1.4(Readiness of Major Equipment and system)
88,Readiness of Major Equipment and system: Soot Blowing System,OTH,2025-08-18,2025-08-18,,,,1.4(Readiness of Major Equipment and system)
89,Readiness of Major Equipment and system: ESP Charging,OTH,2025-12-20,2025-12-20,,,,1.4(Readiness of Major Equipment and system)
90,Readiness of Major Equipment and system: COMPLETION of Main Boiler Structure work,OTH,2025-02-20,2025-02-20,,,,1.4(Readiness of Major Equipment and system)
91,Readiness of Major Equipment and system: DM Plant for HT,OTH,2025-02-20,2025-02-20,,,,1.4(Readiness of Major Equipment and system)
92,Readiness of Major Equipment and system: Complete DM Plant,OTH,2025-07-20,2025-07-20,,,,1.4(Readiness of Major Equipment and system)
93,Readiness of Major Equipment and system: Compressed air system,OTH,2025-10-24,2025-10-24,,,,1.4(Readiness of Major Equipment and system)
94,Readiness of Major Equipment and system: Air conditioning system,OTH,2026-01-19,2026-01-19,,,,1.4(Readiness of Major Equipment and system)
95,Readiness of Major Equipment and system: Cooling Tower,OTH,2025-11-25,2025-11-25,,,,1.4(Readiness of Major Equipment and system)
96,Readiness of Major Equipment and system: Chimney for BLU,OTH,2025-09-01,2025-09-01,,,,1.4(Readiness of Major Equipment and system)
97,Readiness of Major Equipment and system: Complete Chimney,OTH,2025-11-30,2025-11-30,,,,1.4(Readiness of Major Equipment and system)
98,Readiness of Major Equipment and system: Ventilation system,OTH,2026-03-26,2026-03-26,,,,1.4(Readiness of Major Equipment and system)
99,Readiness of Major Equipment and system: FPS for BLU,OTH,2026-01-05,2026-01-05,,,,1.4(Readiness of Major Equipment and system)
100,Readiness of Major Equipment and system: Completed FPS,OTH,2026-04-15,2026-04-15,,,,1.4(Readiness of Major Equipment and system)
101,Readiness of Major Equipment and system: DG set,OTH,2025-08-27,2025-08-27,,,,1.4(Readiness of Major Equipment and system)
102,Readiness of Major Equipment and system: CPU,OTH,2026-02-24,2026-02-24,,,,1.4(Readiness of Major Equipment and system)
103,Readiness of Major Equipment and system: ACW,OTH,2025-11-04,2025-11-04,,,,1.4(Readiness of Major Equipment and system)
104,Readiness of Major Equipment and system: CW,OTH,2025-07-13,2025-07-13,,,,1.4(Readiness of Major Equipment and system)
105,Readiness of Major Equipment and system: Fuel Oil system,OTH,2025-11-17,2025-11-17,,,,1.4(Readiness of Major Equipment and system)
106,Readiness of Major Equipment and system: Bunker,OTH,2025-06-23,2025-06-23,,,,1.4(Readiness of Major Equipment and system)
107,Readiness of Major Equipment and system: WTP,OTH,2025-02-20,2025-02-20,,,,1.4(Readiness of Major Equipment and system)
108,Readiness of Major Equipment and system: STP,OTH,2026-06-14,2026-06-14,,,,1.4(Readiness of Major Equipment and system)
109,Readiness of Major Equipment and system: MRS,OTH,2026-06-20,2026-06-20,,,,1.4(Readiness of Major Equipment and system)
110,Readiness of Major Equipment and system: CHP,OTH,2026-01-26,2026-01-26,,,,1.4(Readiness of Major Equipment and system)
111,Readiness of Major Equipment and system: AHP,OTH,2025-02-20,2025-02-20,,,,1.4(Readiness of Major Equipment and system)
112,Readiness of Major Equipment and system: FGD,OTH,2026-05-18,2026-05-18,,,,1.4(Readiness of Major Equipment and system)
113,CUSTOMER Inputs,CUST,2022-09-27,2025-11-25,2022-09-27,,,"1(EPC Package for Talcher Thermal Power Project, Stage-III (2X660MW))"
114,CUSTOMER INPUTS: LAND (FREE FROM ALL ENCUMBRANCES),CUST,2022-09-27,2022-11-25,2022-09-27,,,1.5(CUSTOMER Inputs)
115,APPROACH ROAD UPTO THE MAIN PLANT,CUST,2022-09-27,2022-09-27,2022-09-27,,,1.5(CUSTOMER Inputs)
116,CUSTOMER INPUTS: CONSTRUCTION WATER ,CUST,2022-10-11,2022-10-11,,,,1.5(CUSTOMER Inputs)
117,CUSTOMER INPUTS: CONSTRUCTION POWER SOURCE,CUST,2022-10-11,2022-10-11,,,,1.5(CUSTOMER Inputs)
118,CUSTOMER INPUTS:  AVAILABILITY OF START-UP POWER ,CUST,2025-01-25,2025-01-25,,,,1.5(CUSTOMER Inputs)
119,CUSTOMER INPUTS: RAW WATER AVAILABILITY UPTO THE TERMINAL POINT OF PLANT ,CUST,2024-12-26,2024-12-26,,,,1.5(CUSTOMER Inputs)
120,CUSTOMER INPUTS: FUEL OIL AVAILABILITY ,CUST,2025-08-27,2025-08-27,,,,1.5(CUSTOMER Inputs)
121,CUSTOMER INPUTS: LIMESTONE AVAILABILITY ,CUST,2025-09-27,2025-09-27,,,,1.5(CUSTOMER Inputs)
122,CUSTOMER INPUTS: COAL AVAILABILITY ,CUST,2025-11-25,2025-11-25,,,,1.5(CUSTOMER Inputs)
123,CUSTOMER INPUTS: AVAILABILITY OF POWER EVACUATION ,CUST,2025-08-17,2025-08-17,,,,1.5(CUSTOMER Inputs)
124,Award of Sub-Contracts by PS-Region,PRC,2022-09-27,2024-11-15,2022-08-24,,,"1(EPC Package for Talcher Thermal Power Project, Stage-III (2X660MW))"
125,"Construction power package including construction lighting in plant, construction water, steel yard",PRC,2022-09-27,2022-11-10,2022-08-24,2022-12-20,,1.6(Award of Sub-Contracts by PS-Region)
126,NIT,ENQ,2022-09-27,2022-09-27,2022-08-24,2022-08-24,,"1.6.1(Construction power package including construction lighting in plant, construction water, steel yard)"
127,LOI,ORD,2022-09-27,2022-10-26,2022-09-19,2022-12-08,,"1.6.1(Construction power package including construction lighting in plant, construction water, steel yard)"
128,MOBILIZATION BY AGENCY AT SITE,ORD,2022-10-27,2022-11-10,2022-12-14,2022-12-20,,"1.6.1(Construction power package including construction lighting in plant, construction water, steel yard)"
129,Enabling work,PRC,2022-11-25,2023-02-08,2022-08-24,2022-12-20,,1.6(Award of Sub-Contracts by PS-Region)
130,NIT,ENQ,2022-11-25,2022-11-25,2022-08-24,2022-08-24,,1.6.2(Enabling work)
131,LOI,ORD,2022-11-26,2023-01-24,2022-09-19,2022-12-08,,1.6.2(Enabling work)
132,MOBILIZATION BY AGENCY AT SITE,ORD,2023-01-25,2023-02-08,2022-12-14,2022-12-20,,1.6.2(Enabling work)
133,Civil,PRC,2022-10-06,2023-09-06,2022-11-03,,,1.6(Award of Sub-Contracts by PS-Region)
134,Dismantling work of above ground facility,PRC,2022-10-06,2022-12-20,2022-11-24,,,1.6.3(Civil)
135,NIT,ENQ,2022-10-06,2022-10-06,2022-11-24,2022-11-24,,1.6.3.1(Dismantling work of above ground facility)
136,LOI,ORD,2022-10-07,2022-12-05,2022-12-08,2022-12-18,,1.6.3.1(Dismantling work of above ground facility)
137,MOBILIZATION BY AGENCY AT SITE,ORD,2022-12-06,2022-12-20,,,,1.6.3.1(Dismantling work of above ground facility)
138,Civil- SG-1+ ESP-1+FGD-1 (Absorber+Fan+ Duct up to Chimney etc)+ BAH-1+ SCR-1 + Levelling & Grading+ Below ground dismantling work and excluding Paving work of this package,PRC,2022-10-26,2023-01-14,2022-12-20,,,1.6.3(Civil)
139,NIT,ENQ,2022-10-26,2022-10-26,2022-12-20,2022-12-20,,1.6.3.2(Civil- SG-1+ ESP-1+FGD-1 (Absorber+Fan+ Duct up to Chimney etc)+ BAH-1+ SCR-1 + Levelling & Grading+ Below ground dismantling work and excluding Paving work of this package)
140,LOI,ORD,2022-10-27,2022-12-25,,,,1.6.3.2(Civil- SG-1+ ESP-1+FGD-1 (Absorber+Fan+ Duct up to Chimney etc)+ BAH-1+ SCR-1 + Levelling & Grading+ Below ground dismantling work and excluding Paving work of this package)
141,MOBILIZATION BY AGENCY AT SITE,ORD,2022-12-26,2023-01-14,,,,1.6.3.2(Civil- SG-1+ ESP-1+FGD-1 (Absorber+Fan+ Duct up to Chimney etc)+ BAH-1+ SCR-1 + Levelling & Grading+ Below ground dismantling work and excluding Paving work of this package)
142,Civil -PH-1+X-mer Yard-1+ESP/FGD Control Room+ DG building  + Levelling & Grading+ Below ground dismantling work,PRC,2022-10-26,2023-02-28,,,,1.6.3(Civil)
143,NIT,ENQ,2022-10-26,2022-10-26,,,,1.6.3.3(Civil -PH-1+X-mer Yard-1+ESP/FGD Control Room+ DG building  + Levelling & Grading+ Below ground dismantling work)
144,LOI,ORD,2022-10-27,2022-12-25,,,,1.6.3.3(Civil -PH-1+X-mer Yard-1+ESP/FGD Control Room+ DG building  + Levelling & Grading+ Below ground dismantling work)
145,MOBILIZATION BY AGENCY AT SITE,ORD,2023-02-09,2023-02-28,,,,1.6.3.3(Civil -PH-1+X-mer Yard-1+ESP/FGD Control Room+ DG building  + Levelling & Grading+ Below ground dismantling work)
146,Switch Yard+ 33 Kv SWGR + Levelling & Grading+ Below ground dismantling work,OTH,2022-11-25,2023-03-30,2022-11-22,,,1.6.3(Civil)
147,NIT,ENQ,2022-11-25,2022-11-25,2022-11-22,2022-11-22,,1.6.3.4(Switch Yard+ 33 Kv SWGR + Levelling & Grading+ Below ground dismantling work)
148,LOI,ORD,2022-11-26,2023-01-24,,,,1.6.3.4(Switch Yard+ 33 Kv SWGR + Levelling & Grading+ Below ground dismantling work)
149,MOBILIZATION BY AGENCY AT SITE,ORD,2023-03-11,2023-03-30,,,,1.6.3.4(Switch Yard+ 33 Kv SWGR + Levelling & Grading+ Below ground dismantling work)
150,Civil for Coal Handling Plant (CHP),OTH,2022-11-25,2023-03-30,2022-11-09,,,1.6.3(Civil)
151,NIT,ENQ,2022-11-25,2022-11-25,2022-11-09,2022-11-09,,1.6.3.5(Civil for Coal Handling Plant (CHP))
152,LOI,ORD,2022-11-26,2023-01-24,,,,1.6.3.5(Civil for Coal Handling Plant (CHP))
153,MOBILIZATION BY AGENCY AT SITE,ORD,2023-03-11,2023-03-30,,,,1.6.3.5(Civil for Coal Handling Plant (CHP))
154,Civil for Ash Handling Plant (AHP),PRC,2023-04-24,2023-08-27,2023-01-03,,,1.6.3(Civil)
155,NIT,ENQ,2023-04-24,2023-04-24,2023-01-03,2023-01-03,,1.6.3.6(Civil for Ash Handling Plant (AHP))
156,LOI,ORD,2023-04-25,2023-06-23,,,,1.6.3.6(Civil for Ash Handling Plant (AHP))
157,MOBILIZATION BY AGENCY AT SITE,ORD,2023-08-08,2023-08-27,,,,1.6.3.6(Civil for Ash Handling Plant (AHP))
158,NDCT cooling Tower,PRC,2022-11-25,2023-03-30,2022-11-26,,,1.6.3(Civil)
159,NIT,ENQ,2022-11-25,2022-11-25,2022-11-26,2022-11-26,,1.6.3.7(NDCT cooling Tower)
160,LOI,ORD,2022-11-26,2023-01-24,,,,1.6.3.7(NDCT cooling Tower)
161,MOBILIZATION BY AGENCY AT SITE,ORD,2023-03-11,2023-03-30,,,,1.6.3.7(NDCT cooling Tower)
162,Balance BOPs civil,PRC,2023-04-24,2023-07-13,,,,1.6.3(Civil)
163,NIT,ENQ,2023-04-24,2023-04-24,,,,1.6.3.8(Balance BOPs civil)
164,LOI,ORD,2023-04-25,2023-06-23,,,,1.6.3.8(Balance BOPs civil)
165,MOBILIZATION BY AGENCY AT SITE,ORD,2023-06-24,2023-07-13,,,,1.6.3.8(Balance BOPs civil)
166,Civil agency for Chimney,PRC,2022-11-25,2023-04-09,2022-11-03,,,1.6.3(Civil)
167,NIT,ENQ,2022-11-25,2022-11-25,2022-11-03,2022-11-03,,1.6.3.9(Civil agency for Chimney)
168,LOI,ORD,2022-11-26,2023-02-03,2022-11-28,2022-12-26,,1.6.3.9(Civil agency for Chimney)
169,MOBILIZATION BY AGENCY AT SITE,ORD,2023-03-21,2023-04-09,,,,1.6.3.9(Civil agency for Chimney)
170,Civil- FGD buildings (LHP+GHP etc) + Levelling & Grading+ Below ground dismantling work,PRC,2023-04-24,2023-09-06,,,,1.6.3(Civil)
171,NIT,ENQ,2023-04-24,2023-04-24,,,,1.6.3.10(Civil- FGD buildings (LHP+GHP etc) + Levelling & Grading+ Below ground dismantling work)
172,LOI,ORD,2023-04-25,2023-07-03,,,,1.6.3.10(Civil- FGD buildings (LHP+GHP etc) + Levelling & Grading+ Below ground dismantling work)
173,MOBILIZATION BY AGENCY AT SITE,ORD,2023-08-18,2023-09-06,,,,1.6.3.10(Civil- FGD buildings (LHP+GHP etc) + Levelling & Grading+ Below ground dismantling work)
174,Mechanical,PRC,2023-03-25,2024-07-27,,,,1.6(Award of Sub-Contracts by PS-Region)
175,"Mechanical ? Boiler, Aux Boiler & Bunker",PRC,2023-06-03,2023-09-21,,,,1.6.4(Mechanical)
176,NIT,ENQ,2023-06-03,2023-06-03,,,,"1.6.4.1(Mechanical ? Boiler, Aux Boiler & Bunker)"
177,LOI,ORD,2023-06-04,2023-09-01,,,,"1.6.4.1(Mechanical ? Boiler, Aux Boiler & Bunker)"
178,MOBILIZATION BY AGENCY AT SITE,ORD,2023-09-02,2023-09-21,,,,"1.6.4.1(Mechanical ? Boiler, Aux Boiler & Bunker)"
179,Mechanical ? ESP & FGD,PRC,2023-07-08,2023-10-26,,,,1.6.4(Mechanical)
180,NIT,ENQ,2023-07-08,2023-07-08,,,,1.6.4.2(Mechanical ? ESP & FGD)
181,LOI,ORD,2023-07-09,2023-10-06,,,,1.6.4.2(Mechanical ? ESP & FGD)
182,MOBILIZATION BY AGENCY AT SITE,ORD,2023-10-07,2023-10-26,,,,1.6.4.2(Mechanical ? ESP & FGD)
183, Power Cycle Piping ,PRC,2024-02-08,2024-07-27,,,,1.6.4(Mechanical)
184,NIT,ENQ,2024-02-08,2024-02-08,,,,1.6.4.3( Power Cycle Piping )
185,LOI,ORD,2024-02-09,2024-07-07,,,,1.6.4.3( Power Cycle Piping )
186,MOBILIZATION BY AGENCY AT SITE,ORD,2024-07-08,2024-07-27,,,,1.6.4.3( Power Cycle Piping )
187,Steam Turbine & Generator,PRC,2024-02-09,2024-05-29,,,,1.6.4(Mechanical)
188,NIT,ENQ,2024-02-09,2024-02-09,,,,1.6.4.4(Steam Turbine & Generator)
189,LOI,ORD,2024-02-10,2024-05-09,,,,1.6.4.4(Steam Turbine & Generator)
190,MOBILIZATION BY AGENCY AT SITE,ORD,2024-05-10,2024-05-29,,,,1.6.4.4(Steam Turbine & Generator)
191,Structure:- Power House,PRC,2023-03-25,2023-06-13,,,,1.6.4(Mechanical)
192,NIT,ENQ,2023-03-25,2023-03-25,,,,1.6.4.5(Structure:- Power House)
193,LOI,ORD,2023-03-26,2023-05-24,,,,1.6.4.5(Structure:- Power House)
194,MOBILIZATION BY AGENCY AT SITE,ORD,2023-05-25,2023-06-13,,,,1.6.4.5(Structure:- Power House)
195,Structure:- CHP,PRC,2023-08-22,2023-11-10,,,,1.6.4(Mechanical)
196,NIT,ENQ,2023-08-22,2023-08-22,,,,1.6.4.6(Structure:- CHP)
197,LOI,ORD,2023-08-23,2023-10-21,,,,1.6.4.6(Structure:- CHP)
198,MOBILIZATION BY AGENCY AT SITE,ORD,2023-10-22,2023-11-10,,,,1.6.4.6(Structure:- CHP)
199,Structure:- FGD+AHP+Pipe Rack,PRC,2023-11-30,2024-02-18,,,,1.6.4(Mechanical)
200,NIT,ENQ,2023-11-30,2023-11-30,,,,1.6.4.7(Structure:- FGD+AHP+Pipe Rack)
201,LOI,ORD,2023-12-01,2024-01-29,,,,1.6.4.7(Structure:- FGD+AHP+Pipe Rack)
202,MOBILIZATION BY AGENCY AT SITE,ORD,2024-01-30,2024-02-18,,,,1.6.4.7(Structure:- FGD+AHP+Pipe Rack)
203,Electrical & Cabling Pkg ,PRC,2024-06-28,2024-10-16,,,,1.6(Award of Sub-Contracts by PS-Region)
204,NIT,ENQ,2024-06-28,2024-06-28,,,,1.6.5(Electrical & Cabling Pkg )
205,LOI,ORD,2024-06-29,2024-09-26,,,,1.6.5(Electrical & Cabling Pkg )
206,MOBILIZATION BY AGENCY AT SITE,ORD,2024-09-27,2024-10-16,,,,1.6.5(Electrical & Cabling Pkg )
207,C&I Pkg ,PRC,2024-07-28,2024-11-15,,,,1.6(Award of Sub-Contracts by PS-Region)
208,NIT,ENQ,2024-07-28,2024-07-28,,,,1.6.6(C&I Pkg )
209,LOI,ORD,2024-07-29,2024-10-26,,,,1.6.6(C&I Pkg )
210,MOBILIZATION BY AGENCY AT SITE,ORD,2024-10-27,2024-11-15,,,,1.6.6(C&I Pkg )
211,Topographical Survey and Soil Investigation,ENG,2022-09-27,2022-10-26,2022-09-27,2022-11-26,,"1(EPC Package for Talcher Thermal Power Project, Stage-III (2X660MW))"
212,Topographical Survey and Soil Investigation: Work COMPLETION and Report Submission,ENG,2022-09-27,2022-10-26,2022-09-27,2022-11-26,,1.7(Topographical Survey and Soil Investigation)
213,Development of Site Infrastructure,OTH,2022-09-27,2024-05-18,2022-09-27,,,"1(EPC Package for Talcher Thermal Power Project, Stage-III (2X660MW))"
214,Mobilization of site levelling agency at site and commencement of site levelling works including dismantling activities ,,2023-01-25,2023-03-25,,,,1.8(Development of Site Infrastructure)
215,Completion of Site Levelling,CIV,2023-04-25,2023-07-23,,,,1.8(Development of Site Infrastructure)
216,Readiness of Priority Roads  including Drains ,CIV,2023-05-25,2024-01-19,,,,1.8(Development of Site Infrastructure)
217,Readiness of External Drain for evacuation of plant area drainage ,CIV,2023-03-26,2023-11-20,,,,1.8(Development of Site Infrastructure)
218,Readiness of area lighting in Plant ,OTH,2023-03-26,2023-09-21,,,,1.8(Development of Site Infrastructure)
219,Readiness of Temporary office of BHEL,CIV,2022-09-27,2022-11-25,2022-09-27,2022-11-30,,1.8(Development of Site Infrastructure)
220,Readiness of BHEL office ,CIV,2022-09-27,2023-05-24,,,,1.8(Development of Site Infrastructure)
221,Readiness of Safety Control Room & Site office of NTPC,CIV,2023-06-23,2023-06-23,,,,1.8(Development of Site Infrastructure)
222,"Readiness of Storage and Preassembly yard with Hard crusting, Roads & Drains etc. as per priority requirement of project ",CIV,2023-03-26,2023-12-20,,,,1.8(Development of Site Infrastructure)
223,Establishment of workers habitat in phased manner ,CIV,2022-12-26,2024-05-18,,,,1.8(Development of Site Infrastructure)
224,Dismantling,CIV,2022-12-21,2024-01-30,,,,1.8(Development of Site Infrastructure)
225,Dismantling of existing raw material reservoirs,CIV,2023-07-15,2024-01-30,,,,1.8.11(Dismantling)
226,Dismantling of super structure ,CIV,2022-12-21,2023-07-08,,,,1.8.11(Dismantling)
227,Boiler & Auxiliaries,OTH,2022-09-27,2026-05-28,2022-11-21,,,"1(EPC Package for Talcher Thermal Power Project, Stage-III (2X660MW))"
228,Boiler Structure,OTH,2022-09-27,2026-04-30,2022-12-15,,,1.9(Boiler & Auxiliaries)
229,Basic engineering,ENG,2022-10-27,2023-02-23,,,,1.9.1(Boiler Structure)
230,Supply (BHEL TRY),SUP,2022-09-27,2025-11-10,2022-12-15,,,1.9.1(Boiler Structure)
231,Main Boiler supporting structure (PG-35),OTH,2022-09-27,2024-03-11,2022-12-15,,PG35,1.9.1.2(Supply (BHEL TRY))
232,FOUNDATION MATERIALS- (PGMA-35011),SUP,2022-10-27,2023-05-27,2022-12-15,,35010,1.9.1.2.1(Main Boiler supporting structure (PG-35))
233,Engineering,ENG,2022-10-27,2023-01-19,2022-12-15,,35011,1.9.1.2.1.1(FOUNDATION MATERIALS- (PGMA-35011))
234,Manufacturing,MFG,2023-01-20,2023-04-27,,,35011,1.9.1.2.1.1(FOUNDATION MATERIALS- (PGMA-35011))
235,Dispatch,DIS,2023-03-29,2023-05-27,,,35011,1.9.1.2.1.1(FOUNDATION MATERIALS- (PGMA-35011))
236,MAIN COLUMNS LEFT 1ST PASS (PGMA-35111),SUP,2022-10-27,2023-09-10,,,35111,1.9.1.2.1(Main Boiler supporting structure (PG-35))
237,Engineering,ENG,2022-10-27,2023-05-08,,,35111,1.9.1.2.1.2(MAIN COLUMNS LEFT 1ST PASS (PGMA-35111))
238,Manufacturing,MFG,2023-02-18,2023-06-27,,,35111,1.9.1.2.1.2(MAIN COLUMNS LEFT 1ST PASS (PGMA-35111))
239,Dispatch,DIS,2023-06-28,2023-09-10,,,35111,1.9.1.2.1.2(MAIN COLUMNS LEFT 1ST PASS (PGMA-35111))
240,MAIN COLUMNS LEFT 2ND PASS (PGMA-35112),SUP,2022-10-27,2023-09-10,,,35112,1.9.1.2.1(Main Boiler supporting structure (PG-35))
241,Engineering,ENG,2022-10-27,2023-05-08,,,35112,1.9.1.2.1.3(MAIN COLUMNS LEFT 2ND PASS (PGMA-35112))
242,Manufacturing,MFG,2023-02-18,2023-06-27,,,35112,1.9.1.2.1.3(MAIN COLUMNS LEFT 2ND PASS (PGMA-35112))
243,Dispatch,DIS,2023-06-28,2023-09-10,,,35112,1.9.1.2.1.3(MAIN COLUMNS LEFT 2ND PASS (PGMA-35112))
244,MAIN COLUMNS RIGHT 1ST PASS (PGMA-35121),SUP,2022-10-27,2023-09-25,,,35121,1.9.1.2.1(Main Boiler supporting structure (PG-35))
245,Engineering,ENG,2022-10-27,2023-05-08,,,35121,1.9.1.2.1.4(MAIN COLUMNS RIGHT 1ST PASS (PGMA-35121))
246,Manufacturing,MFG,2023-02-18,2023-06-27,,,35121,1.9.1.2.1.4(MAIN COLUMNS RIGHT 1ST PASS (PGMA-35121))
247,Dispatch,DIS,2023-06-28,2023-09-25,,,35121,1.9.1.2.1.4(MAIN COLUMNS RIGHT 1ST PASS (PGMA-35121))
248,MAIN COLUMNS RIGHT 2ND PASS (PGMA-35122),SUP,2022-10-27,2023-09-25,,,35122,1.9.1.2.1(Main Boiler supporting structure (PG-35))
249,Engineering,ENG,2022-10-27,2023-05-08,,,35122,1.9.1.2.1.5(MAIN COLUMNS RIGHT 2ND PASS (PGMA-35122))
250,Manufacturing,MFG,2023-02-18,2023-06-27,,,35122,1.9.1.2.1.5(MAIN COLUMNS RIGHT 2ND PASS (PGMA-35122))
251,Dispatch,DIS,2023-06-28,2023-09-25,,,35122,1.9.1.2.1.5(MAIN COLUMNS RIGHT 2ND PASS (PGMA-35122))
252,MAIN COLUMNS MIDDLE (PGMA-35130),SUP,2022-10-27,2023-09-25,,,35130,1.9.1.2.1(Main Boiler supporting structure (PG-35))
253,Engineering,ENG,2022-10-27,2023-05-08,,,35130,1.9.1.2.1.6(MAIN COLUMNS MIDDLE (PGMA-35130))
254,Manufacturing,MFG,2023-02-18,2023-06-27,,,35130,1.9.1.2.1.6(MAIN COLUMNS MIDDLE (PGMA-35130))
255,Dispatch,DIS,2023-06-28,2023-09-25,,,35130,1.9.1.2.1.6(MAIN COLUMNS MIDDLE (PGMA-35130))
256,AUXILIARY COLUMNS-LEFT SIDE (PGMA-35140),SUP,2022-10-27,2023-09-25,,,35140,1.9.1.2.1(Main Boiler supporting structure (PG-35))
257,Engineering,ENG,2022-10-27,2023-05-08,,,35140,1.9.1.2.1.7(AUXILIARY COLUMNS-LEFT SIDE (PGMA-35140))
258,Manufacturing,MFG,2023-02-18,2023-06-27,,,35140,1.9.1.2.1.7(AUXILIARY COLUMNS-LEFT SIDE (PGMA-35140))
259,Dispatch,DIS,2023-06-28,2023-09-25,,,35140,1.9.1.2.1.7(AUXILIARY COLUMNS-LEFT SIDE (PGMA-35140))
260,AUXILIARY COLUMNS-RIGHT SIDE (PGMA-35150),SUP,2022-10-27,2023-09-25,,,35150,1.9.1.2.1(Main Boiler supporting structure (PG-35))
261,Engineering,ENG,2022-10-27,2023-05-08,,,35150,1.9.1.2.1.8(AUXILIARY COLUMNS-RIGHT SIDE (PGMA-35150))
262,Manufacturing,MFG,2023-02-18,2023-06-27,,,35150,1.9.1.2.1.8(AUXILIARY COLUMNS-RIGHT SIDE (PGMA-35150))
263,Dispatch,DIS,2023-06-28,2023-09-25,,,35150,1.9.1.2.1.8(AUXILIARY COLUMNS-RIGHT SIDE (PGMA-35150))
264,GIRDER PIN CONNECTIONS (PGMA-35190),SUP,2022-10-27,2023-10-26,,,35190,1.9.1.2.1(Main Boiler supporting structure (PG-35))
265,Engineering,ENG,2022-10-27,2023-05-23,,,35190,1.9.1.2.1.9(GIRDER PIN CONNECTIONS (PGMA-35190))
266,Manufacturing,MFG,2023-03-05,2023-08-27,,,35190,1.9.1.2.1.9(GIRDER PIN CONNECTIONS (PGMA-35190))
267,Dispatch,DIS,2023-08-28,2023-10-26,,,35190,1.9.1.2.1.9(GIRDER PIN CONNECTIONS (PGMA-35190))
268,CEILING STRUCTURE-MAIN GIRDERS 1ST PASS (PGMA-35211),SUP,2022-10-27,2023-12-19,,,35211,1.9.1.2.1(Main Boiler supporting structure (PG-35))
269,Engineering,ENG,2022-10-27,2023-05-23,,,35211,1.9.1.2.1.10(CEILING STRUCTURE-MAIN GIRDERS 1ST PASS (PGMA-35211))
270,Manufacturing,MFG,2023-03-05,2023-09-20,,,35211,1.9.1.2.1.10(CEILING STRUCTURE-MAIN GIRDERS 1ST PASS (PGMA-35211))
271,Dispatch,DIS,2023-09-21,2023-12-19,,,35211,1.9.1.2.1.10(CEILING STRUCTURE-MAIN GIRDERS 1ST PASS (PGMA-35211))
272,CEILING STRUCTURE-MAIN GIRDERS 2ND PASS (PGMA-35212),SUP,2022-10-27,2023-12-19,,,35212,1.9.1.2.1(Main Boiler supporting structure (PG-35))
273,Engineering,ENG,2022-10-27,2023-05-23,,,35212,1.9.1.2.1.11(CEILING STRUCTURE-MAIN GIRDERS 2ND PASS (PGMA-35212))
274,Manufacturing,MFG,2023-03-05,2023-09-20,,,35212,1.9.1.2.1.11(CEILING STRUCTURE-MAIN GIRDERS 2ND PASS (PGMA-35212))
275,Dispatch,DIS,2023-09-21,2023-12-19,,,35212,1.9.1.2.1.11(CEILING STRUCTURE-MAIN GIRDERS 2ND PASS (PGMA-35212))
276,CEIL STRUCT-CROSS WELDED BEAMS 1ST PASS (PGMA-35213),SUP,2022-10-27,2023-12-21,,,35213,1.9.1.2.1(Main Boiler supporting structure (PG-35))
277,Engineering,ENG,2022-10-27,2023-05-23,,,35213,1.9.1.2.1.12(CEIL STRUCT-CROSS WELDED BEAMS 1ST PASS (PGMA-35213))
278,Manufacturing,MFG,2023-03-07,2023-09-22,,,35213,1.9.1.2.1.12(CEIL STRUCT-CROSS WELDED BEAMS 1ST PASS (PGMA-35213))
279,Dispatch,DIS,2023-09-23,2023-12-21,,,35213,1.9.1.2.1.12(CEIL STRUCT-CROSS WELDED BEAMS 1ST PASS (PGMA-35213))
280,CEIL STRUCT-CROSS WELDED BEAMS 2ND PASS (PGMA-35214),SUP,2022-10-27,2023-12-21,,,35214,1.9.1.2.1(Main Boiler supporting structure (PG-35))
281,Engineering,ENG,2022-10-27,2023-05-23,,,35214,1.9.1.2.1.13(CEIL STRUCT-CROSS WELDED BEAMS 2ND PASS (PGMA-35214))
282,Manufacturing,MFG,2023-03-07,2023-09-22,,,35214,1.9.1.2.1.13(CEIL STRUCT-CROSS WELDED BEAMS 2ND PASS (PGMA-35214))
283,Dispatch,DIS,2023-09-23,2023-12-21,,,35214,1.9.1.2.1.13(CEIL STRUCT-CROSS WELDED BEAMS 2ND PASS (PGMA-35214))
284,CEILING STRUCTURE ROLLED BEAM 1ST PASS (PGMA-35221),SUP,2022-09-27,2024-01-03,,,35221,1.9.1.2.1(Main Boiler supporting structure (PG-35))
285,Engineering,ENG,2022-09-27,2023-06-05,,,35221,1.9.1.2.1.14(CEILING STRUCTURE ROLLED BEAM 1ST PASS (PGMA-35221))
286,Manufacturing,MFG,2023-03-20,2023-10-05,,,35221,1.9.1.2.1.14(CEILING STRUCTURE ROLLED BEAM 1ST PASS (PGMA-35221))
287,Dispatch,DIS,2023-10-06,2024-01-03,,,35221,1.9.1.2.1.14(CEILING STRUCTURE ROLLED BEAM 1ST PASS (PGMA-35221))
288,CEILING STRUCTURE ROLLED BEAM 2ND PASS (PGMA-35222),SUP,2022-09-27,2024-01-03,,,35222,1.9.1.2.1(Main Boiler supporting structure (PG-35))
289,Engineering,ENG,2022-09-27,2023-06-05,,,35222,1.9.1.2.1.15(CEILING STRUCTURE ROLLED BEAM 2ND PASS (PGMA-35222))
290,Manufacturing,MFG,2023-03-20,2023-10-05,,,35222,1.9.1.2.1.15(CEILING STRUCTURE ROLLED BEAM 2ND PASS (PGMA-35222))
291,Dispatch,DIS,2023-10-06,2024-01-03,,,35222,1.9.1.2.1.15(CEILING STRUCTURE ROLLED BEAM 2ND PASS (PGMA-35222))
292,CEILING STRUCTURE HORBRACING 1ST PASS (PGMA-35231),SUP,2022-10-27,2024-02-02,,,35231,1.9.1.2.1(Main Boiler supporting structure (PG-35))
293,Engineering,ENG,2022-10-27,2023-07-05,,,35231,1.9.1.2.1.16(CEILING STRUCTURE HORBRACING 1ST PASS (PGMA-35231))
294,Manufacturing,MFG,2023-04-19,2023-11-04,,,35231,1.9.1.2.1.16(CEILING STRUCTURE HORBRACING 1ST PASS (PGMA-35231))
295,Dispatch,DIS,2023-11-05,2024-02-02,,,35231,1.9.1.2.1.16(CEILING STRUCTURE HORBRACING 1ST PASS (PGMA-35231))
296,CEILING STRUCTURE HORBRACING 2ND PASS (PGMA-35232),SUP,2022-10-27,2024-02-02,,,35232,1.9.1.2.1(Main Boiler supporting structure (PG-35))
297,Engineering,ENG,2022-10-27,2023-07-05,,,35232,1.9.1.2.1.17(CEILING STRUCTURE HORBRACING 2ND PASS (PGMA-35232))
298,Manufacturing,MFG,2023-04-19,2023-11-04,,,35232,1.9.1.2.1.17(CEILING STRUCTURE HORBRACING 2ND PASS (PGMA-35232))
299,Dispatch,DIS,2023-11-05,2024-02-02,,,35232,1.9.1.2.1.17(CEILING STRUCTURE HORBRACING 2ND PASS (PGMA-35232))
300,HORIZONTAL BRACING I PASS IMBL (PGMA-35311),SUP,2022-10-27,2024-01-31,,,35311,1.9.1.2.1(Main Boiler supporting structure (PG-35))
301,Engineering,ENG,2022-10-27,2023-07-05,,,35311,1.9.1.2.1.18(HORIZONTAL BRACING I PASS IMBL (PGMA-35311))
302,Manufacturing,MFG,2023-04-17,2023-11-02,,,35311,1.9.1.2.1.18(HORIZONTAL BRACING I PASS IMBL (PGMA-35311))
303,Dispatch,DIS,2023-11-03,2024-01-31,,,35311,1.9.1.2.1.18(HORIZONTAL BRACING I PASS IMBL (PGMA-35311))
304,HORIZ BRACING II PASS I MBL (PGMA-35312),SUP,2022-10-27,2024-01-31,,,35312,1.9.1.2.1(Main Boiler supporting structure (PG-35))
305,Engineering,ENG,2022-10-27,2023-07-05,,,35312,1.9.1.2.1.19(HORIZ BRACING II PASS I MBL (PGMA-35312))
306,Manufacturing,MFG,2023-04-17,2023-11-02,,,35312,1.9.1.2.1.19(HORIZ BRACING II PASS I MBL (PGMA-35312))
307,Dispatch,DIS,2023-11-03,2024-01-31,,,35312,1.9.1.2.1.19(HORIZ BRACING II PASS I MBL (PGMA-35312))
308,HORIZ BRACING I PASS II MBL (PGMA-35321),SUP,2022-10-27,2024-01-31,,,35321,1.9.1.2.1(Main Boiler supporting structure (PG-35))
309,Engineering,ENG,2022-10-27,2023-07-05,,,35321,1.9.1.2.1.20(HORIZ BRACING I PASS II MBL (PGMA-35321))
310,Manufacturing,MFG,2023-04-17,2023-11-02,,,35321,1.9.1.2.1.20(HORIZ BRACING I PASS II MBL (PGMA-35321))
311,Dispatch,DIS,2023-11-03,2024-01-31,,,35321,1.9.1.2.1.20(HORIZ BRACING I PASS II MBL (PGMA-35321))
312,HORIZ BRACING II PASS II MBL (PGMA-35322),SUP,2022-10-27,2024-01-31,,,35322,1.9.1.2.1(Main Boiler supporting structure (PG-35))
313,Engineering,ENG,2022-10-27,2023-07-05,,,35322,1.9.1.2.1.21(HORIZ BRACING II PASS II MBL (PGMA-35322))
314,Manufacturing,MFG,2023-04-17,2023-11-02,,,35322,1.9.1.2.1.21(HORIZ BRACING II PASS II MBL (PGMA-35322))
315,Dispatch,DIS,2023-11-03,2024-01-31,,,35322,1.9.1.2.1.21(HORIZ BRACING II PASS II MBL (PGMA-35322))
316,HORIZ BRACING I PASS III MBL (PGMA-35331),SUP,2022-10-27,2024-01-31,,,35331,1.9.1.2.1(Main Boiler supporting structure (PG-35))
317,Engineering,ENG,2022-10-27,2023-07-05,,,35331,1.9.1.2.1.22(HORIZ BRACING I PASS III MBL (PGMA-35331))
318,Manufacturing,MFG,2023-04-17,2023-11-02,,,35331,1.9.1.2.1.22(HORIZ BRACING I PASS III MBL (PGMA-35331))
319,Dispatch,DIS,2023-11-03,2024-01-31,,,35331,1.9.1.2.1.22(HORIZ BRACING I PASS III MBL (PGMA-35331))
320,HORIZ BRACING II PASS III MBL (PGMA-35332),SUP,2022-10-27,2024-01-31,,,35332,1.9.1.2.1(Main Boiler supporting structure (PG-35))
321,Engineering,ENG,2022-10-27,2023-07-05,,,35332,1.9.1.2.1.23(HORIZ BRACING II PASS III MBL (PGMA-35332))
322,Manufacturing,MFG,2023-04-17,2023-11-02,,,35332,1.9.1.2.1.23(HORIZ BRACING II PASS III MBL (PGMA-35332))
323,Dispatch,DIS,2023-11-03,2024-01-31,,,35332,1.9.1.2.1.23(HORIZ BRACING II PASS III MBL (PGMA-35332))
324,HORIZ BRACING I PASS IV MBL (PGMA-35341),SUP,2022-10-27,2024-01-31,,,35341,1.9.1.2.1(Main Boiler supporting structure (PG-35))
325,Engineering,ENG,2022-10-27,2023-07-05,,,35341,1.9.1.2.1.24(HORIZ BRACING I PASS IV MBL (PGMA-35341))
326,Manufacturing,MFG,2023-04-17,2023-11-02,,,35341,1.9.1.2.1.24(HORIZ BRACING I PASS IV MBL (PGMA-35341))
327,Dispatch,DIS,2023-11-03,2024-01-31,,,35341,1.9.1.2.1.24(HORIZ BRACING I PASS IV MBL (PGMA-35341))
328,HORIZ BRACING II PASS IV MBL (PGMA-35342),SUP,2022-10-27,2024-01-31,,,35342,1.9.1.2.1(Main Boiler supporting structure (PG-35))
329,Engineering,ENG,2022-10-27,2023-07-05,,,35342,1.9.1.2.1.25(HORIZ BRACING II PASS IV MBL (PGMA-35342))
330,Manufacturing,MFG,2023-04-17,2023-11-02,,,35342,1.9.1.2.1.25(HORIZ BRACING II PASS IV MBL (PGMA-35342))
331,Dispatch,DIS,2023-11-03,2024-01-31,,,35342,1.9.1.2.1.25(HORIZ BRACING II PASS IV MBL (PGMA-35342))
332,HORIZ BRACING I PASS V MBL (PGMA-35351),SUP,2022-10-27,2024-02-02,,,35351,1.9.1.2.1(Main Boiler supporting structure (PG-35))
333,Engineering,ENG,2022-10-27,2023-07-05,,,35351,1.9.1.2.1.26(HORIZ BRACING I PASS V MBL (PGMA-35351))
334,Manufacturing,MFG,2023-04-19,2023-11-04,,,35351,1.9.1.2.1.26(HORIZ BRACING I PASS V MBL (PGMA-35351))
335,Dispatch,DIS,2023-11-05,2024-02-02,,,35351,1.9.1.2.1.26(HORIZ BRACING I PASS V MBL (PGMA-35351))
336,HORIZ BRACING II PASS V MBL (PGMA-35352),SUP,2022-10-27,2024-02-02,,,35352,1.9.1.2.1(Main Boiler supporting structure (PG-35))
337,Engineering,ENG,2022-10-27,2023-07-05,,,35352,1.9.1.2.1.27(HORIZ BRACING II PASS V MBL (PGMA-35352))
338,Manufacturing,MFG,2023-04-19,2023-11-04,,,35352,1.9.1.2.1.27(HORIZ BRACING II PASS V MBL (PGMA-35352))
339,Dispatch,DIS,2023-11-05,2024-02-02,,,35352,1.9.1.2.1.27(HORIZ BRACING II PASS V MBL (PGMA-35352))
340,HORIZ BRACING I PASS VI MBL (PGMA-35361),SUP,2022-10-27,2024-02-02,,,35361,1.9.1.2.1(Main Boiler supporting structure (PG-35))
341,Engineering,ENG,2022-10-27,2023-07-05,,,35361,1.9.1.2.1.28(HORIZ BRACING I PASS VI MBL (PGMA-35361))
342,Manufacturing,MFG,2023-04-19,2023-11-04,,,35361,1.9.1.2.1.28(HORIZ BRACING I PASS VI MBL (PGMA-35361))
343,Dispatch,DIS,2023-11-05,2024-02-02,,,35361,1.9.1.2.1.28(HORIZ BRACING I PASS VI MBL (PGMA-35361))
344,HORIZ BRACING II PASS VI MBL (PGMA-35362),SUP,2022-10-27,2024-02-02,,,35362,1.9.1.2.1(Main Boiler supporting structure (PG-35))
345,Engineering,ENG,2022-10-27,2023-07-05,,,35362,1.9.1.2.1.29(HORIZ BRACING II PASS VI MBL (PGMA-35362))
346,Manufacturing,MFG,2023-04-19,2023-11-04,,,35362,1.9.1.2.1.29(HORIZ BRACING II PASS VI MBL (PGMA-35362))
347,Dispatch,DIS,2023-11-05,2024-02-02,,,35362,1.9.1.2.1.29(HORIZ BRACING II PASS VI MBL (PGMA-35362))
348,LAND & CONN PLAT TIER-1 (PGMA-35381),SUP,2022-10-27,2024-01-31,,,35381,1.9.1.2.1(Main Boiler supporting structure (PG-35))
349,Engineering,ENG,2022-10-27,2023-07-05,,,35381,1.9.1.2.1.30(LAND & CONN PLAT TIER-1 (PGMA-35381))
350,Manufacturing,MFG,2023-04-17,2023-11-02,,,35381,1.9.1.2.1.30(LAND & CONN PLAT TIER-1 (PGMA-35381))
351,Dispatch,DIS,2023-11-03,2024-01-31,,,35381,1.9.1.2.1.30(LAND & CONN PLAT TIER-1 (PGMA-35381))
352,LAND & CONN PLAT TIER-2 (PGMA-35382),SUP,2022-10-27,2024-01-31,,,35382,1.9.1.2.1(Main Boiler supporting structure (PG-35))
353,Engineering,ENG,2022-10-27,2023-07-05,,,35382,1.9.1.2.1.31(LAND & CONN PLAT TIER-2 (PGMA-35382))
354,Manufacturing,MFG,2023-04-17,2023-11-02,,,35382,1.9.1.2.1.31(LAND & CONN PLAT TIER-2 (PGMA-35382))
355,Dispatch,DIS,2023-11-03,2024-01-31,,,35382,1.9.1.2.1.31(LAND & CONN PLAT TIER-2 (PGMA-35382))
356,LAND & CONN PLAT TIER-3 (PGMA-35383),SUP,2022-10-27,2024-01-31,,,35383,1.9.1.2.1(Main Boiler supporting structure (PG-35))
357,Engineering,ENG,2022-10-27,2023-07-05,,,35383,1.9.1.2.1.32(LAND & CONN PLAT TIER-3 (PGMA-35383))
358,Manufacturing,MFG,2023-04-17,2023-11-02,,,35383,1.9.1.2.1.32(LAND & CONN PLAT TIER-3 (PGMA-35383))
359,Dispatch,DIS,2023-11-03,2024-01-31,,,35383,1.9.1.2.1.32(LAND & CONN PLAT TIER-3 (PGMA-35383))
360,HORIL BEAMS FIRST PASS-TIER-1 (PGMA-35441),SUP,2022-10-27,2024-01-31,,,35441,1.9.1.2.1(Main Boiler supporting structure (PG-35))
361,Engineering,ENG,2022-10-27,2023-07-05,,,35441,1.9.1.2.1.33(HORIL BEAMS FIRST PASS-TIER-1 (PGMA-35441))
362,Manufacturing,MFG,2023-04-17,2023-11-02,,,35441,1.9.1.2.1.33(HORIL BEAMS FIRST PASS-TIER-1 (PGMA-35441))
363,Dispatch,DIS,2023-11-03,2024-01-31,,,35441,1.9.1.2.1.33(HORIL BEAMS FIRST PASS-TIER-1 (PGMA-35441))
364,HORIL BEAMS FIRST PASS-TIER-2 (PGMA-35442),SUP,2022-10-27,2024-01-31,,,35442,1.9.1.2.1(Main Boiler supporting structure (PG-35))
365,Engineering,ENG,2022-10-27,2023-07-05,,,35442,1.9.1.2.1.34(HORIL BEAMS FIRST PASS-TIER-2 (PGMA-35442))
366,Manufacturing,MFG,2023-04-17,2023-11-02,,,35442,1.9.1.2.1.34(HORIL BEAMS FIRST PASS-TIER-2 (PGMA-35442))
367,Dispatch,DIS,2023-11-03,2024-01-31,,,35442,1.9.1.2.1.34(HORIL BEAMS FIRST PASS-TIER-2 (PGMA-35442))
368,HORIL BEAMS FIRST PASS-TIER-3 (PGMA-35443),SUP,2022-10-27,2024-01-31,,,35443,1.9.1.2.1(Main Boiler supporting structure (PG-35))
369,Engineering,ENG,2022-10-27,2023-07-05,,,35443,1.9.1.2.1.35(HORIL BEAMS FIRST PASS-TIER-3 (PGMA-35443))
370,Manufacturing,MFG,2023-04-17,2023-11-02,,,35443,1.9.1.2.1.35(HORIL BEAMS FIRST PASS-TIER-3 (PGMA-35443))
371,Dispatch,DIS,2023-11-03,2024-01-31,,,35443,1.9.1.2.1.35(HORIL BEAMS FIRST PASS-TIER-3 (PGMA-35443))
372,HOR BEAM-SECOND PASS- TIER-1 (PGMA-35451),SUP,2022-10-27,2024-01-31,,,35451,1.9.1.2.1(Main Boiler supporting structure (PG-35))
373,Engineering,ENG,2022-10-27,2023-07-05,,,35451,1.9.1.2.1.36(HOR BEAM-SECOND PASS- TIER-1 (PGMA-35451))
374,Manufacturing,MFG,2023-04-17,2023-11-02,,,35451,1.9.1.2.1.36(HOR BEAM-SECOND PASS- TIER-1 (PGMA-35451))
375,Dispatch,DIS,2023-11-03,2024-01-31,,,35451,1.9.1.2.1.36(HOR BEAM-SECOND PASS- TIER-1 (PGMA-35451))
376,HOR BEAM-SECOND PASS- TIER-2 (PGMA-35452),SUP,2022-10-27,2024-01-31,,,35452,1.9.1.2.1(Main Boiler supporting structure (PG-35))
377,Engineering,ENG,2022-10-27,2023-07-05,,,35452,1.9.1.2.1.37(HOR BEAM-SECOND PASS- TIER-2 (PGMA-35452))
378,Manufacturing,MFG,2023-04-17,2023-11-02,,,35452,1.9.1.2.1.37(HOR BEAM-SECOND PASS- TIER-2 (PGMA-35452))
379,Dispatch,DIS,2023-11-03,2024-01-31,,,35452,1.9.1.2.1.37(HOR BEAM-SECOND PASS- TIER-2 (PGMA-35452))
380,HOR BEAM-SECOND PASS- TIER-3 (PGMA-35453),SUP,2022-10-27,2024-01-31,,,35453,1.9.1.2.1(Main Boiler supporting structure (PG-35))
381,Engineering,ENG,2022-10-27,2023-07-05,,,35453,1.9.1.2.1.38(HOR BEAM-SECOND PASS- TIER-3 (PGMA-35453))
382,Manufacturing,MFG,2023-04-17,2023-11-02,,,35453,1.9.1.2.1.38(HOR BEAM-SECOND PASS- TIER-3 (PGMA-35453))
383,Dispatch,DIS,2023-11-03,2024-01-31,,,35453,1.9.1.2.1.38(HOR BEAM-SECOND PASS- TIER-3 (PGMA-35453))
384,FRONT BRACING-TIER-1 (PGMA-35511),SUP,2022-10-27,2024-01-31,,,35511,1.9.1.2.1(Main Boiler supporting structure (PG-35))
385,Engineering,ENG,2022-10-27,2023-07-05,,,35511,1.9.1.2.1.39(FRONT BRACING-TIER-1 (PGMA-35511))
386,Manufacturing,MFG,2023-04-17,2023-11-02,,,35511,1.9.1.2.1.39(FRONT BRACING-TIER-1 (PGMA-35511))
387,Dispatch,DIS,2023-11-03,2024-01-31,,,35511,1.9.1.2.1.39(FRONT BRACING-TIER-1 (PGMA-35511))
388,FRONT BRACING-TIER-2 (PGMA-35512),SUP,2022-10-27,2024-01-31,,,35512,1.9.1.2.1(Main Boiler supporting structure (PG-35))
389,Engineering,ENG,2022-10-27,2023-07-05,,,35512,1.9.1.2.1.40(FRONT BRACING-TIER-2 (PGMA-35512))
390,Manufacturing,MFG,2023-04-17,2023-11-02,,,35512,1.9.1.2.1.40(FRONT BRACING-TIER-2 (PGMA-35512))
391,Dispatch,DIS,2023-11-03,2024-01-31,,,35512,1.9.1.2.1.40(FRONT BRACING-TIER-2 (PGMA-35512))
392,FRONT BRACING-TIER-3 (PGMA-35513),SUP,2022-10-27,2024-01-31,,,35513,1.9.1.2.1(Main Boiler supporting structure (PG-35))
393,Engineering,ENG,2022-10-27,2023-07-05,,,35513,1.9.1.2.1.41(FRONT BRACING-TIER-3 (PGMA-35513))
394,Manufacturing,MFG,2023-04-17,2023-11-02,,,35513,1.9.1.2.1.41(FRONT BRACING-TIER-3 (PGMA-35513))
395,Dispatch,DIS,2023-11-03,2024-01-31,,,35513,1.9.1.2.1.41(FRONT BRACING-TIER-3 (PGMA-35513))
396,SIDE BRACING-TIER-1 (PGMA-35521),SUP,2022-10-27,2024-01-31,,,35521,1.9.1.2.1(Main Boiler supporting structure (PG-35))
397,Engineering,ENG,2022-10-27,2023-07-05,,,35521,1.9.1.2.1.42(SIDE BRACING-TIER-1 (PGMA-35521))
398,Manufacturing,MFG,2023-04-17,2023-11-02,,,35521,1.9.1.2.1.42(SIDE BRACING-TIER-1 (PGMA-35521))
399,Dispatch,DIS,2023-11-03,2024-01-31,,,35521,1.9.1.2.1.42(SIDE BRACING-TIER-1 (PGMA-35521))
400,SIDE BRACING-TIER-2 (PGMA-35522),SUP,2022-10-27,2024-01-31,,,35522,1.9.1.2.1(Main Boiler supporting structure (PG-35))
401,Engineering,ENG,2022-10-27,2023-07-05,,,35522,1.9.1.2.1.43(SIDE BRACING-TIER-2 (PGMA-35522))
402,Manufacturing,MFG,2023-04-17,2023-11-02,,,35522,1.9.1.2.1.43(SIDE BRACING-TIER-2 (PGMA-35522))
403,Dispatch,DIS,2023-11-03,2024-01-31,,,35522,1.9.1.2.1.43(SIDE BRACING-TIER-2 (PGMA-35522))
404,SIDE BRACING-TIER-3 (PGMA-35523),SUP,2022-10-27,2024-01-31,,,35523,1.9.1.2.1(Main Boiler supporting structure (PG-35))
405,Engineering,ENG,2022-10-27,2023-07-05,,,35523,1.9.1.2.1.44(SIDE BRACING-TIER-3 (PGMA-35523))
406,Manufacturing,MFG,2023-04-17,2023-11-02,,,35523,1.9.1.2.1.44(SIDE BRACING-TIER-3 (PGMA-35523))
407,Dispatch,DIS,2023-11-03,2024-01-31,,,35523,1.9.1.2.1.44(SIDE BRACING-TIER-3 (PGMA-35523))
408,REAR BRACING-TIER-1 (PGMA-35531),SUP,2022-10-27,2024-01-31,,,35531,1.9.1.2.1(Main Boiler supporting structure (PG-35))
409,Engineering,ENG,2022-10-27,2023-07-05,,,35531,1.9.1.2.1.45(REAR BRACING-TIER-1 (PGMA-35531))
410,Manufacturing,MFG,2023-04-17,2023-11-02,,,35531,1.9.1.2.1.45(REAR BRACING-TIER-1 (PGMA-35531))
411,Dispatch,DIS,2023-11-03,2024-01-31,,,35531,1.9.1.2.1.45(REAR BRACING-TIER-1 (PGMA-35531))
412,REAR BRACING-TIER-2 (PGMA-35532),SUP,2022-10-27,2024-01-31,,,35532,1.9.1.2.1(Main Boiler supporting structure (PG-35))
413,Engineering,ENG,2022-10-27,2023-07-05,,,35532,1.9.1.2.1.46(REAR BRACING-TIER-2 (PGMA-35532))
414,Manufacturing,MFG,2023-04-17,2023-11-02,,,35532,1.9.1.2.1.46(REAR BRACING-TIER-2 (PGMA-35532))
415,Dispatch,DIS,2023-11-03,2024-01-31,,,35532,1.9.1.2.1.46(REAR BRACING-TIER-2 (PGMA-35532))
416,REAR BRACING-TIER-3 (PGMA-35533),SUP,2022-10-27,2024-01-31,,,35533,1.9.1.2.1(Main Boiler supporting structure (PG-35))
417,Engineering,ENG,2022-10-27,2023-07-05,,,35533,1.9.1.2.1.47(REAR BRACING-TIER-3 (PGMA-35533))
418,Manufacturing,MFG,2023-04-17,2023-11-02,,,35533,1.9.1.2.1.47(REAR BRACING-TIER-3 (PGMA-35533))
419,Dispatch,DIS,2023-11-03,2024-01-31,,,35533,1.9.1.2.1.47(REAR BRACING-TIER-3 (PGMA-35533))
420,HSFG FASTENERS FOR PG 35 (PGMA-35700),SUP,2022-10-27,2024-01-31,,,35700,1.9.1.2.1(Main Boiler supporting structure (PG-35))
421,Engineering,ENG,2022-10-27,2023-07-05,,,35700,1.9.1.2.1.48(HSFG FASTENERS FOR PG 35 (PGMA-35700))
422,Manufacturing,MFG,2023-04-17,2023-11-02,,,35700,1.9.1.2.1.48(HSFG FASTENERS FOR PG 35 (PGMA-35700))
423,Dispatch,DIS,2023-11-03,2024-01-31,,,35700,1.9.1.2.1.48(HSFG FASTENERS FOR PG 35 (PGMA-35700))
424,FLOOR GRILLS AND GUARD PLATE (PGMA-35811),SUP,2022-10-27,2024-01-31,,,35811,1.9.1.2.1(Main Boiler supporting structure (PG-35))
425,Engineering,ENG,2022-10-27,2023-07-05,,,35811,1.9.1.2.1.49(FLOOR GRILLS AND GUARD PLATE (PGMA-35811))
426,Manufacturing,MFG,2023-04-17,2023-11-02,,,35811,1.9.1.2.1.49(FLOOR GRILLS AND GUARD PLATE (PGMA-35811))
427,Dispatch,DIS,2023-11-03,2024-01-31,,,35811,1.9.1.2.1.49(FLOOR GRILLS AND GUARD PLATE (PGMA-35811))
428,STAIRS-LOWER (PGMA-35821),SUP,2022-10-27,2024-01-31,,,35821,1.9.1.2.1(Main Boiler supporting structure (PG-35))
429,Engineering,ENG,2022-10-27,2023-07-05,,,35821,1.9.1.2.1.50(STAIRS-LOWER (PGMA-35821))
430,Manufacturing,MFG,2023-04-17,2023-11-02,,,35821,1.9.1.2.1.50(STAIRS-LOWER (PGMA-35821))
431,Dispatch,DIS,2023-11-03,2024-01-31,,,35821,1.9.1.2.1.50(STAIRS-LOWER (PGMA-35821))
432,STAIRS-MIDDLE (PGMA-35822),SUP,2022-10-27,2024-01-31,,,35822,1.9.1.2.1(Main Boiler supporting structure (PG-35))
433,Engineering,ENG,2022-10-27,2023-07-05,,,35822,1.9.1.2.1.51(STAIRS-MIDDLE (PGMA-35822))
434,Manufacturing,MFG,2023-04-17,2023-11-02,,,35822,1.9.1.2.1.51(STAIRS-MIDDLE (PGMA-35822))
435,Dispatch,DIS,2023-11-03,2024-01-31,,,35822,1.9.1.2.1.51(STAIRS-MIDDLE (PGMA-35822))
436,STAIRS-UPPER (PGMA-35823),SUP,2022-10-27,2024-03-09,,,35823,1.9.1.2.1(Main Boiler supporting structure (PG-35))
437,Engineering,ENG,2022-10-27,2023-07-03,,,35823,1.9.1.2.1.52(STAIRS-UPPER (PGMA-35823))
438,Manufacturing,MFG,2023-04-15,2024-02-08,,,35823,1.9.1.2.1.52(STAIRS-UPPER (PGMA-35823))
439,Dispatch,DIS,2024-02-09,2024-03-09,,,35823,1.9.1.2.1.52(STAIRS-UPPER (PGMA-35823))
440,HAND RAILS & POSTS (PGMA-35851),SUP,2022-10-27,2024-03-11,,,35851,1.9.1.2.1(Main Boiler supporting structure (PG-35))
441,Engineering,ENG,2022-10-27,2023-07-03,,,35851,1.9.1.2.1.53(HAND RAILS & POSTS (PGMA-35851))
442,Manufacturing,MFG,2023-04-17,2024-02-10,,,35851,1.9.1.2.1.53(HAND RAILS & POSTS (PGMA-35851))
443,Dispatch,DIS,2024-02-11,2024-03-11,,,35851,1.9.1.2.1.53(HAND RAILS & POSTS (PGMA-35851))
444,CONSUMABLES &Erection MATERIALS (PGMA-35993),SUP,2022-10-27,2023-07-27,,,35993,1.9.1.2.1(Main Boiler supporting structure (PG-35))
445,Engineering,ENG,2022-10-27,2023-05-08,,,35993,1.9.1.2.1.54(CONSUMABLES &Erection MATERIALS (PGMA-35993))
446,Manufacturing,MFG,2023-02-18,2023-06-27,,,35993,1.9.1.2.1.54(CONSUMABLES &Erection MATERIALS (PGMA-35993))
447,Dispatch,DIS,2023-06-28,2023-07-27,,,35993,1.9.1.2.1.54(CONSUMABLES &Erection MATERIALS (PGMA-35993))
448,CHUTE PIPE AND LADDERS (PGMA-35995),SUP,2022-10-27,2023-07-27,,,35995,1.9.1.2.1(Main Boiler supporting structure (PG-35))
449,Engineering,ENG,2022-10-27,2023-05-08,,,35995,1.9.1.2.1.55(CHUTE PIPE AND LADDERS (PGMA-35995))
450,Manufacturing,MFG,2023-02-18,2023-06-27,,,35995,1.9.1.2.1.55(CHUTE PIPE AND LADDERS (PGMA-35995))
451,Dispatch,DIS,2023-06-28,2023-07-27,,,35995,1.9.1.2.1.55(CHUTE PIPE AND LADDERS (PGMA-35995))
452,Galleries & Stairways (PG-36),SUP,2022-12-26,2025-03-04,,,PG36,1.9.1.2(Supply (BHEL TRY))
453,COLUMNS NEAR AIR PRE HEATERS (PGMA-36110),SUP,2022-12-26,2023-11-27,,,36110,1.9.1.2.2(Galleries & Stairways (PG-36))
454,Engineering,ENG,2022-12-26,2023-05-26,,,36110,1.9.1.2.2.1(COLUMNS NEAR AIR PRE HEATERS (PGMA-36110))
455,Manufacturing,MFG,2023-04-27,2023-10-28,,,36110,1.9.1.2.2.1(COLUMNS NEAR AIR PRE HEATERS (PGMA-36110))
456,Dispatch,DIS,2023-10-29,2023-11-27,,,36110,1.9.1.2.2.1(COLUMNS NEAR AIR PRE HEATERS (PGMA-36110))
457,MIDDLE COLUMNS IN BOILER (PGMA-36130),SUP,2022-12-26,2023-11-27,,,36130,1.9.1.2.2(Galleries & Stairways (PG-36))
458,Engineering,ENG,2022-12-26,2023-05-26,,,36130,1.9.1.2.2.2(MIDDLE COLUMNS IN BOILER (PGMA-36130))
459,Manufacturing,MFG,2023-04-27,2023-10-28,,,36130,1.9.1.2.2.2(MIDDLE COLUMNS IN BOILER (PGMA-36130))
460,Dispatch,DIS,2023-10-29,2023-11-27,,,36130,1.9.1.2.2.2(MIDDLE COLUMNS IN BOILER (PGMA-36130))
461,BEAMS & BRACINGS NEAR AIR PRE HEATER (PGMA-36150),SUP,2022-12-26,2023-11-27,,,36150,1.9.1.2.2(Galleries & Stairways (PG-36))
462,Engineering,ENG,2022-12-26,2023-05-26,,,36150,1.9.1.2.2.3(BEAMS & BRACINGS NEAR AIR PRE HEATER (PGMA-36150))
463,Manufacturing,MFG,2023-04-27,2023-10-28,,,36150,1.9.1.2.2.3(BEAMS & BRACINGS NEAR AIR PRE HEATER (PGMA-36150))
464,Dispatch,DIS,2023-10-29,2023-11-27,,,36150,1.9.1.2.2.3(BEAMS & BRACINGS NEAR AIR PRE HEATER (PGMA-36150))
465,MAIN FLOOR I MBL 1ST PASS (PGMA-36311),SUP,2023-01-25,2024-03-29,,,36311,1.9.1.2.2(Galleries & Stairways (PG-36))
466,Engineering,ENG,2023-01-25,2023-09-05,,,36311,1.9.1.2.2.4(MAIN FLOOR I MBL 1ST PASS (PGMA-36311))
467,Manufacturing,MFG,2023-08-07,2024-02-28,,,36311,1.9.1.2.2.4(MAIN FLOOR I MBL 1ST PASS (PGMA-36311))
468,Dispatch,DIS,2024-02-29,2024-03-29,,,36311,1.9.1.2.2.4(MAIN FLOOR I MBL 1ST PASS (PGMA-36311))
469,MAIN FLOOR I MBL 2ND PASS (PGMA-36312),SUP,2023-01-25,2024-03-29,,,36312,1.9.1.2.2(Galleries & Stairways (PG-36))
470,Engineering,ENG,2023-01-25,2023-09-05,,,36312,1.9.1.2.2.5(MAIN FLOOR I MBL 2ND PASS (PGMA-36312))
471,Manufacturing,MFG,2023-08-07,2024-02-28,,,36312,1.9.1.2.2.5(MAIN FLOOR I MBL 2ND PASS (PGMA-36312))
472,Dispatch,DIS,2024-02-29,2024-03-29,,,36312,1.9.1.2.2.5(MAIN FLOOR I MBL 2ND PASS (PGMA-36312))
473,NON-MBL FLOOR BETWEEN MBL I&II (PGMA-36313),SUP,2023-01-25,2024-03-29,,,36313,1.9.1.2.2(Galleries & Stairways (PG-36))
474,Engineering,ENG,2023-01-25,2023-09-05,,,36313,1.9.1.2.2.6(NON-MBL FLOOR BETWEEN MBL I&II (PGMA-36313))
475,Manufacturing,MFG,2023-08-07,2024-02-28,,,36313,1.9.1.2.2.6(NON-MBL FLOOR BETWEEN MBL I&II (PGMA-36313))
476,Dispatch,DIS,2024-02-29,2024-03-29,,,36313,1.9.1.2.2.6(NON-MBL FLOOR BETWEEN MBL I&II (PGMA-36313))
477,NON-MBL FLOOR BETWEEN MBL I&II (PGMA-36314),SUP,2023-01-25,2024-03-29,,,36314,1.9.1.2.2(Galleries & Stairways (PG-36))
478,Engineering,ENG,2023-01-25,2023-09-05,,,36314,1.9.1.2.2.7(NON-MBL FLOOR BETWEEN MBL I&II (PGMA-36314))
479,Manufacturing,MFG,2023-08-07,2024-02-28,,,36314,1.9.1.2.2.7(NON-MBL FLOOR BETWEEN MBL I&II (PGMA-36314))
480,Dispatch,DIS,2024-02-29,2024-03-29,,,36314,1.9.1.2.2.7(NON-MBL FLOOR BETWEEN MBL I&II (PGMA-36314))
481,NON-MBL FLOOR BETWEEN MBL I&II (PGMA-36315),SUP,2023-01-25,2024-03-29,,,36315,1.9.1.2.2(Galleries & Stairways (PG-36))
482,Engineering,ENG,2023-01-25,2023-09-05,,,36315,1.9.1.2.2.8(NON-MBL FLOOR BETWEEN MBL I&II (PGMA-36315))
483,Manufacturing,MFG,2023-08-07,2024-02-28,,,36315,1.9.1.2.2.8(NON-MBL FLOOR BETWEEN MBL I&II (PGMA-36315))
484,Dispatch,DIS,2024-02-29,2024-03-29,,,36315,1.9.1.2.2.8(NON-MBL FLOOR BETWEEN MBL I&II (PGMA-36315))
485,NON-MBL FLOOR BETWEEN MBL I&II (PGMA-36316),SUP,2023-01-25,2024-03-29,,,36316,1.9.1.2.2(Galleries & Stairways (PG-36))
486,Engineering,ENG,2023-01-25,2023-09-05,,,36316,1.9.1.2.2.9(NON-MBL FLOOR BETWEEN MBL I&II (PGMA-36316))
487,Manufacturing,MFG,2023-08-07,2024-02-28,,,36316,1.9.1.2.2.9(NON-MBL FLOOR BETWEEN MBL I&II (PGMA-36316))
488,Dispatch,DIS,2024-02-29,2024-03-29,,,36316,1.9.1.2.2.9(NON-MBL FLOOR BETWEEN MBL I&II (PGMA-36316))
489,MAIN FLOOR II MBL IST PASS (PGMA-36321),SUP,2023-01-25,2024-03-29,,,36321,1.9.1.2.2(Galleries & Stairways (PG-36))
490,Engineering,ENG,2023-01-25,2023-09-05,,,36321,1.9.1.2.2.10(MAIN FLOOR II MBL IST PASS (PGMA-36321))
491,Manufacturing,MFG,2023-08-07,2024-02-28,,,36321,1.9.1.2.2.10(MAIN FLOOR II MBL IST PASS (PGMA-36321))
492,Dispatch,DIS,2024-02-29,2024-03-29,,,36321,1.9.1.2.2.10(MAIN FLOOR II MBL IST PASS (PGMA-36321))
493,MAIN FLOOR II MBL 2ND PASS (PGMA-36322),SUP,2022-12-26,2024-02-28,,,36322,1.9.1.2.2(Galleries & Stairways (PG-36))
494,Engineering,ENG,2022-12-26,2023-08-06,,,36322,1.9.1.2.2.11(MAIN FLOOR II MBL 2ND PASS (PGMA-36322))
495,Manufacturing,MFG,2023-07-08,2024-01-29,,,36322,1.9.1.2.2.11(MAIN FLOOR II MBL 2ND PASS (PGMA-36322))
496,Dispatch,DIS,2024-01-30,2024-02-28,,,36322,1.9.1.2.2.11(MAIN FLOOR II MBL 2ND PASS (PGMA-36322))
497,NON-MBL FLOOR BETWEEN MBL II&III (PGMA-36323),SUP,2023-01-25,2024-09-15,,,36323,1.9.1.2.2(Galleries & Stairways (PG-36))
498,Engineering,ENG,2023-01-25,2023-11-20,,,36323,1.9.1.2.2.12(NON-MBL FLOOR BETWEEN MBL II&III (PGMA-36323))
499,Manufacturing,MFG,2023-10-22,2024-08-16,,,36323,1.9.1.2.2.12(NON-MBL FLOOR BETWEEN MBL II&III (PGMA-36323))
500,Dispatch,DIS,2024-08-17,2024-09-15,,,36323,1.9.1.2.2.12(NON-MBL FLOOR BETWEEN MBL II&III (PGMA-36323))
501,NON-MBL FLOOR BETWEEN MBL II&III (PGMA-36324),SUP,2023-01-25,2024-02-27,,,36324,1.9.1.2.2(Galleries & Stairways (PG-36))
502,Engineering,ENG,2023-01-25,2023-08-14,,,36324,1.9.1.2.2.13(NON-MBL FLOOR BETWEEN MBL II&III (PGMA-36324))
503,Manufacturing,MFG,2023-07-16,2024-01-28,,,36324,1.9.1.2.2.13(NON-MBL FLOOR BETWEEN MBL II&III (PGMA-36324))
504,Dispatch,DIS,2024-01-29,2024-02-27,,,36324,1.9.1.2.2.13(NON-MBL FLOOR BETWEEN MBL II&III (PGMA-36324))
505,NON-MBL FLOOR BETWEEN MBL II&III (PGMA-36325),SUP,2023-01-25,2024-02-27,,,36325,1.9.1.2.2(Galleries & Stairways (PG-36))
506,Engineering,ENG,2023-01-25,2023-08-14,,,36325,1.9.1.2.2.14(NON-MBL FLOOR BETWEEN MBL II&III (PGMA-36325))
507,Manufacturing,MFG,2023-07-16,2024-01-28,,,36325,1.9.1.2.2.14(NON-MBL FLOOR BETWEEN MBL II&III (PGMA-36325))
508,Dispatch,DIS,2024-01-29,2024-02-27,,,36325,1.9.1.2.2.14(NON-MBL FLOOR BETWEEN MBL II&III (PGMA-36325))
509,NON-MBL FLOOR BETWEEN MBL II&III (PGMA-36326),SUP,2023-01-25,2024-02-27,,,36326,1.9.1.2.2(Galleries & Stairways (PG-36))
510,Engineering,ENG,2023-01-25,2023-08-14,,,36326,1.9.1.2.2.15(NON-MBL FLOOR BETWEEN MBL II&III (PGMA-36326))
511,Manufacturing,MFG,2023-07-16,2024-01-28,,,36326,1.9.1.2.2.15(NON-MBL FLOOR BETWEEN MBL II&III (PGMA-36326))
512,Dispatch,DIS,2024-01-29,2024-02-27,,,36326,1.9.1.2.2.15(NON-MBL FLOOR BETWEEN MBL II&III (PGMA-36326))
513,NON-MBL FLOOR BETWEEN MBL II&III (PGMA-36327),SUP,2023-01-25,2024-02-27,,,36327,1.9.1.2.2(Galleries & Stairways (PG-36))
514,Engineering,ENG,2023-01-25,2023-08-14,,,36327,1.9.1.2.2.16(NON-MBL FLOOR BETWEEN MBL II&III (PGMA-36327))
515,Manufacturing,MFG,2023-07-16,2024-01-28,,,36327,1.9.1.2.2.16(NON-MBL FLOOR BETWEEN MBL II&III (PGMA-36327))
516,Dispatch,DIS,2024-01-29,2024-02-27,,,36327,1.9.1.2.2.16(NON-MBL FLOOR BETWEEN MBL II&III (PGMA-36327))
517,MAIN FLOOR III MBL 1ST PASS (PGMA-36331),SUP,2023-01-25,2024-02-27,,,36331,1.9.1.2.2(Galleries & Stairways (PG-36))
518,Engineering,ENG,2023-01-25,2023-08-14,,,36331,1.9.1.2.2.17(MAIN FLOOR III MBL 1ST PASS (PGMA-36331))
519,Manufacturing,MFG,2023-07-16,2024-01-28,,,36331,1.9.1.2.2.17(MAIN FLOOR III MBL 1ST PASS (PGMA-36331))
520,Dispatch,DIS,2024-01-29,2024-02-27,,,36331,1.9.1.2.2.17(MAIN FLOOR III MBL 1ST PASS (PGMA-36331))
521,MAIN FLOOR III MBL 2ND PASS (PGMA-36332),SUP,2023-01-25,2024-02-27,,,36332,1.9.1.2.2(Galleries & Stairways (PG-36))
522,Engineering,ENG,2023-01-25,2023-08-14,,,36332,1.9.1.2.2.18(MAIN FLOOR III MBL 2ND PASS (PGMA-36332))
523,Manufacturing,MFG,2023-07-16,2024-01-28,,,36332,1.9.1.2.2.18(MAIN FLOOR III MBL 2ND PASS (PGMA-36332))
524,Dispatch,DIS,2024-01-29,2024-02-27,,,36332,1.9.1.2.2.18(MAIN FLOOR III MBL 2ND PASS (PGMA-36332))
525,NON-MBL FLOOR BETWEEN MBL III & IV (PGMA-36333),SUP,2023-01-25,2024-02-27,,,36333,1.9.1.2.2(Galleries & Stairways (PG-36))
526,Engineering,ENG,2023-01-25,2023-08-14,,,36333,1.9.1.2.2.19(NON-MBL FLOOR BETWEEN MBL III & IV (PGMA-36333))
527,Manufacturing,MFG,2023-07-16,2024-01-28,,,36333,1.9.1.2.2.19(NON-MBL FLOOR BETWEEN MBL III & IV (PGMA-36333))
528,Dispatch,DIS,2024-01-29,2024-02-27,,,36333,1.9.1.2.2.19(NON-MBL FLOOR BETWEEN MBL III & IV (PGMA-36333))
529,NON-MBL FLOOR BETWEEN MBL III & IV (PGMA-36334),SUP,2023-01-25,2024-02-27,,,36334,1.9.1.2.2(Galleries & Stairways (PG-36))
530,Engineering,ENG,2023-01-25,2023-08-14,,,36334,1.9.1.2.2.20(NON-MBL FLOOR BETWEEN MBL III & IV (PGMA-36334))
531,Manufacturing,MFG,2023-07-16,2024-01-28,,,36334,1.9.1.2.2.20(NON-MBL FLOOR BETWEEN MBL III & IV (PGMA-36334))
532,Dispatch,DIS,2024-01-29,2024-02-27,,,36334,1.9.1.2.2.20(NON-MBL FLOOR BETWEEN MBL III & IV (PGMA-36334))
533,NON-MBL FLOOR BETWEEN MBL III & IV (PGMA-36335),SUP,2023-01-25,2024-02-27,,,36335,1.9.1.2.2(Galleries & Stairways (PG-36))
534,Engineering,ENG,2023-01-25,2023-08-14,,,36335,1.9.1.2.2.21(NON-MBL FLOOR BETWEEN MBL III & IV (PGMA-36335))
535,Manufacturing,MFG,2023-07-16,2024-01-28,,,36335,1.9.1.2.2.21(NON-MBL FLOOR BETWEEN MBL III & IV (PGMA-36335))
536,Dispatch,DIS,2024-01-29,2024-02-27,,,36335,1.9.1.2.2.21(NON-MBL FLOOR BETWEEN MBL III & IV (PGMA-36335))
537,FLOOR IN II PASS (PGMA-36336),SUP,2023-01-25,2024-02-27,,,36336,1.9.1.2.2(Galleries & Stairways (PG-36))
538,Engineering,ENG,2023-01-25,2023-08-14,,,36336,1.9.1.2.2.22(FLOOR IN II PASS (PGMA-36336))
539,Manufacturing,MFG,2023-07-16,2024-01-28,,,36336,1.9.1.2.2.22(FLOOR IN II PASS (PGMA-36336))
540,Dispatch,DIS,2024-01-29,2024-02-27,,,36336,1.9.1.2.2.22(FLOOR IN II PASS (PGMA-36336))
541,FLOOR IN I PASS (PGMA-36337),SUP,2023-01-25,2024-02-27,,,36337,1.9.1.2.2(Galleries & Stairways (PG-36))
542,Engineering,ENG,2023-01-25,2023-08-14,,,36337,1.9.1.2.2.23(FLOOR IN I PASS (PGMA-36337))
543,Manufacturing,MFG,2023-07-16,2024-01-28,,,36337,1.9.1.2.2.23(FLOOR IN I PASS (PGMA-36337))
544,Dispatch,DIS,2024-01-29,2024-02-27,,,36337,1.9.1.2.2.23(FLOOR IN I PASS (PGMA-36337))
545,FLOOR IN II PASS (PGMA-36338),SUP,2023-01-25,2024-02-27,,,36338,1.9.1.2.2(Galleries & Stairways (PG-36))
546,Engineering,ENG,2023-01-25,2023-08-14,,,36338,1.9.1.2.2.24(FLOOR IN II PASS (PGMA-36338))
547,Manufacturing,MFG,2023-07-16,2024-01-28,,,36338,1.9.1.2.2.24(FLOOR IN II PASS (PGMA-36338))
548,Dispatch,DIS,2024-01-29,2024-02-27,,,36338,1.9.1.2.2.24(FLOOR IN II PASS (PGMA-36338))
549,MAIN FLOOR IV MBL 1ST PASS (PGMA-36341),SUP,2023-01-25,2024-01-27,,,36341,1.9.1.2.2(Galleries & Stairways (PG-36))
550,Engineering,ENG,2023-01-25,2023-08-04,,,36341,1.9.1.2.2.25(MAIN FLOOR IV MBL 1ST PASS (PGMA-36341))
551,Manufacturing,MFG,2023-07-06,2023-12-28,,,36341,1.9.1.2.2.25(MAIN FLOOR IV MBL 1ST PASS (PGMA-36341))
552,Dispatch,DIS,2023-12-29,2024-01-27,,,36341,1.9.1.2.2.25(MAIN FLOOR IV MBL 1ST PASS (PGMA-36341))
553,MAIN FLOOR IV MBL 2ND PASS (PGMA-36342),SUP,2023-01-25,2024-01-27,,,36342,1.9.1.2.2(Galleries & Stairways (PG-36))
554,Engineering,ENG,2023-01-25,2023-08-04,,,36342,1.9.1.2.2.26(MAIN FLOOR IV MBL 2ND PASS (PGMA-36342))
555,Manufacturing,MFG,2023-07-06,2023-12-28,,,36342,1.9.1.2.2.26(MAIN FLOOR IV MBL 2ND PASS (PGMA-36342))
556,Dispatch,DIS,2023-12-29,2024-01-27,,,36342,1.9.1.2.2.26(MAIN FLOOR IV MBL 2ND PASS (PGMA-36342))
557,NON-MBL FLOOR BETWEEN MBL IV &V (PGMA-36343),SUP,2023-01-25,2024-01-27,,,36343,1.9.1.2.2(Galleries & Stairways (PG-36))
558,Engineering,ENG,2023-01-25,2023-08-04,,,36343,1.9.1.2.2.27(NON-MBL FLOOR BETWEEN MBL IV &V (PGMA-36343))
559,Manufacturing,MFG,2023-07-06,2023-12-28,,,36343,1.9.1.2.2.27(NON-MBL FLOOR BETWEEN MBL IV &V (PGMA-36343))
560,Dispatch,DIS,2023-12-29,2024-01-27,,,36343,1.9.1.2.2.27(NON-MBL FLOOR BETWEEN MBL IV &V (PGMA-36343))
561,NON-MBL FLOOR BETWEEN MBL IV &V (PGMA-36344),SUP,2023-01-25,2024-01-27,,,36344,1.9.1.2.2(Galleries & Stairways (PG-36))
562,Engineering,ENG,2023-01-25,2023-08-04,,,36344,1.9.1.2.2.28(NON-MBL FLOOR BETWEEN MBL IV &V (PGMA-36344))
563,Manufacturing,MFG,2023-07-06,2023-12-28,,,36344,1.9.1.2.2.28(NON-MBL FLOOR BETWEEN MBL IV &V (PGMA-36344))
564,Dispatch,DIS,2023-12-29,2024-01-27,,,36344,1.9.1.2.2.28(NON-MBL FLOOR BETWEEN MBL IV &V (PGMA-36344))
565,NON-MBL FLOOR BETWEEN MBL IV &V (PGMA-36345),SUP,2023-01-25,2024-01-27,,,36345,1.9.1.2.2(Galleries & Stairways (PG-36))
566,Engineering,ENG,2023-01-25,2023-08-04,,,36345,1.9.1.2.2.29(NON-MBL FLOOR BETWEEN MBL IV &V (PGMA-36345))
567,Manufacturing,MFG,2023-07-06,2023-12-28,,,36345,1.9.1.2.2.29(NON-MBL FLOOR BETWEEN MBL IV &V (PGMA-36345))
568,Dispatch,DIS,2023-12-29,2024-01-27,,,36345,1.9.1.2.2.29(NON-MBL FLOOR BETWEEN MBL IV &V (PGMA-36345))
569,MAIN FLOOR V MBL I ST PASS (PGMA-36351),SUP,2022-12-26,2023-12-28,,,36351,1.9.1.2.2(Galleries & Stairways (PG-36))
570,Engineering,ENG,2022-12-26,2023-07-05,,,36351,1.9.1.2.2.30(MAIN FLOOR V MBL I ST PASS (PGMA-36351))
571,Manufacturing,MFG,2023-06-06,2023-11-28,,,36351,1.9.1.2.2.30(MAIN FLOOR V MBL I ST PASS (PGMA-36351))
572,Dispatch,DIS,2023-11-29,2023-12-28,,,36351,1.9.1.2.2.30(MAIN FLOOR V MBL I ST PASS (PGMA-36351))
573,MAIN FLOOR V MBL II ND PASS (PGMA-36352),SUP,2022-12-26,2023-12-28,,,36352,1.9.1.2.2(Galleries & Stairways (PG-36))
574,Engineering,ENG,2022-12-26,2023-07-05,,,36352,1.9.1.2.2.31(MAIN FLOOR V MBL II ND PASS (PGMA-36352))
575,Manufacturing,MFG,2023-06-06,2023-11-28,,,36352,1.9.1.2.2.31(MAIN FLOOR V MBL II ND PASS (PGMA-36352))
576,Dispatch,DIS,2023-11-29,2023-12-28,,,36352,1.9.1.2.2.31(MAIN FLOOR V MBL II ND PASS (PGMA-36352))
577,NON-MBL FLOOR BETWEEN MBL V &VI (PGMA-36353),SUP,2022-12-26,2025-03-04,,,36353,1.9.1.2.2(Galleries & Stairways (PG-36))
578,Engineering,ENG,2022-12-26,2024-01-29,,,36353,1.9.1.2.2.32(NON-MBL FLOOR BETWEEN MBL V &VI (PGMA-36353))
579,Manufacturing,MFG,2023-12-31,2025-02-02,,,36353,1.9.1.2.2.32(NON-MBL FLOOR BETWEEN MBL V &VI (PGMA-36353))
580,Dispatch,DIS,2025-02-03,2025-03-04,,,36353,1.9.1.2.2.32(NON-MBL FLOOR BETWEEN MBL V &VI (PGMA-36353))
581,NON-MBL FLOOR BETWEEN MBL V &VI (PGMA-36354),SUP,2022-12-26,2025-03-04,,,36354,1.9.1.2.2(Galleries & Stairways (PG-36))
582,Engineering,ENG,2022-12-26,2024-01-29,,,36354,1.9.1.2.2.33(NON-MBL FLOOR BETWEEN MBL V &VI (PGMA-36354))
583,Manufacturing,MFG,2023-12-31,2025-02-02,,,36354,1.9.1.2.2.33(NON-MBL FLOOR BETWEEN MBL V &VI (PGMA-36354))
584,Dispatch,DIS,2025-02-03,2025-03-04,,,36354,1.9.1.2.2.33(NON-MBL FLOOR BETWEEN MBL V &VI (PGMA-36354))
585,NON-MBL FLOOR BETWEEN MBL V &VI (PGMA-36355),SUP,2022-12-26,2025-03-04,,,36355,1.9.1.2.2(Galleries & Stairways (PG-36))
586,Engineering,ENG,2022-12-26,2024-01-29,,,36355,1.9.1.2.2.34(NON-MBL FLOOR BETWEEN MBL V &VI (PGMA-36355))
587,Manufacturing,MFG,2023-12-31,2025-02-02,,,36355,1.9.1.2.2.34(NON-MBL FLOOR BETWEEN MBL V &VI (PGMA-36355))
588,Dispatch,DIS,2025-02-03,2025-03-04,,,36355,1.9.1.2.2.34(NON-MBL FLOOR BETWEEN MBL V &VI (PGMA-36355))
589,MAIN FLOOR VI MBL 1ST PASS (PGMA-36361),SUP,2022-12-26,2025-03-04,,,36361,1.9.1.2.2(Galleries & Stairways (PG-36))
590,Engineering,ENG,2022-12-26,2024-01-29,,,36361,1.9.1.2.2.35(MAIN FLOOR VI MBL 1ST PASS (PGMA-36361))
591,Manufacturing,MFG,2023-12-31,2025-02-02,,,36361,1.9.1.2.2.35(MAIN FLOOR VI MBL 1ST PASS (PGMA-36361))
592,Dispatch,DIS,2025-02-03,2025-03-04,,,36361,1.9.1.2.2.35(MAIN FLOOR VI MBL 1ST PASS (PGMA-36361))
593,MAIN FLOOR VI MBL 2ND PASS (PGMA-36362),SUP,2022-12-26,2025-03-04,,,36362,1.9.1.2.2(Galleries & Stairways (PG-36))
594,Engineering,ENG,2022-12-26,2024-01-29,,,36362,1.9.1.2.2.36(MAIN FLOOR VI MBL 2ND PASS (PGMA-36362))
595,Manufacturing,MFG,2023-12-31,2025-02-02,,,36362,1.9.1.2.2.36(MAIN FLOOR VI MBL 2ND PASS (PGMA-36362))
596,Dispatch,DIS,2025-02-03,2025-03-04,,,36362,1.9.1.2.2.36(MAIN FLOOR VI MBL 2ND PASS (PGMA-36362))
597,NON-MBL FLOOR ABOVE MBL VI (PGMA-36363),SUP,2022-12-26,2025-03-04,,,36363,1.9.1.2.2(Galleries & Stairways (PG-36))
598,Engineering,ENG,2022-12-26,2024-01-29,,,36363,1.9.1.2.2.37(NON-MBL FLOOR ABOVE MBL VI (PGMA-36363))
599,Manufacturing,MFG,2023-12-31,2025-02-02,,,36363,1.9.1.2.2.37(NON-MBL FLOOR ABOVE MBL VI (PGMA-36363))
600,Dispatch,DIS,2025-02-03,2025-03-04,,,36363,1.9.1.2.2.37(NON-MBL FLOOR ABOVE MBL VI (PGMA-36363))
601,MISCELLANEOUS PLATFORMS-PART I (PGMA-36391),SUP,2023-01-25,2024-03-29,,,36391,1.9.1.2.2(Galleries & Stairways (PG-36))
602,Engineering,ENG,2023-01-25,2023-08-17,,,36391,1.9.1.2.2.38(MISCELLANEOUS PLATFORMS-PART I (PGMA-36391))
603,Manufacturing,MFG,2023-07-19,2024-02-28,,,36391,1.9.1.2.2.38(MISCELLANEOUS PLATFORMS-PART I (PGMA-36391))
604,Dispatch,DIS,2024-02-29,2024-03-29,,,36391,1.9.1.2.2.38(MISCELLANEOUS PLATFORMS-PART I (PGMA-36391))
605,MISCELLANEOUS PLATFORMS-PART II (PGMA-36392),SUP,2023-01-25,2024-03-29,,,36392,1.9.1.2.2(Galleries & Stairways (PG-36))
606,Engineering,ENG,2023-01-25,2023-08-17,,,36392,1.9.1.2.2.39(MISCELLANEOUS PLATFORMS-PART II (PGMA-36392))
607,Manufacturing,MFG,2023-07-19,2024-02-28,,,36392,1.9.1.2.2.39(MISCELLANEOUS PLATFORMS-PART II (PGMA-36392))
608,Dispatch,DIS,2024-02-29,2024-03-29,,,36392,1.9.1.2.2.39(MISCELLANEOUS PLATFORMS-PART II (PGMA-36392))
609,MISCELLANEOUS PLATFORMS-PART III (PGMA-36393),SUP,2023-01-25,2024-03-29,,,36393,1.9.1.2.2(Galleries & Stairways (PG-36))
610,Engineering,ENG,2023-01-25,2023-08-17,,,36393,1.9.1.2.2.40(MISCELLANEOUS PLATFORMS-PART III (PGMA-36393))
611,Manufacturing,MFG,2023-07-19,2024-02-28,,,36393,1.9.1.2.2.40(MISCELLANEOUS PLATFORMS-PART III (PGMA-36393))
612,Dispatch,DIS,2024-02-29,2024-03-29,,,36393,1.9.1.2.2.40(MISCELLANEOUS PLATFORMS-PART III (PGMA-36393))
613,MISCELLANEOUS PLATFORMS-PART IV (PGMA-36394),SUP,2023-01-25,2024-03-29,,,36394,1.9.1.2.2(Galleries & Stairways (PG-36))
614,Engineering,ENG,2023-01-25,2023-08-17,,,36394,1.9.1.2.2.41(MISCELLANEOUS PLATFORMS-PART IV (PGMA-36394))
615,Manufacturing,MFG,2023-07-19,2024-02-28,,,36394,1.9.1.2.2.41(MISCELLANEOUS PLATFORMS-PART IV (PGMA-36394))
616,Dispatch,DIS,2024-02-29,2024-03-29,,,36394,1.9.1.2.2.41(MISCELLANEOUS PLATFORMS-PART IV (PGMA-36394))
617,MISCELLANEOUS PLATFORMS-PART V (PGMA-36395),SUP,2023-01-25,2024-03-29,,,36395,1.9.1.2.2(Galleries & Stairways (PG-36))
618,Engineering,ENG,2023-01-25,2023-08-17,,,36395,1.9.1.2.2.42(MISCELLANEOUS PLATFORMS-PART V (PGMA-36395))
619,Manufacturing,MFG,2023-07-19,2024-02-28,,,36395,1.9.1.2.2.42(MISCELLANEOUS PLATFORMS-PART V (PGMA-36395))
620,Dispatch,DIS,2024-02-29,2024-03-29,,,36395,1.9.1.2.2.42(MISCELLANEOUS PLATFORMS-PART V (PGMA-36395))
621,BOILER ROOF STRUCTURE (PGMA-36610),SUP,2022-12-26,2023-12-28,,,36610,1.9.1.2.2(Galleries & Stairways (PG-36))
622,Engineering,ENG,2022-12-26,2023-07-05,,,36610,1.9.1.2.2.43(BOILER ROOF STRUCTURE (PGMA-36610))
623,Manufacturing,MFG,2023-06-06,2023-11-28,,,36610,1.9.1.2.2.43(BOILER ROOF STRUCTURE (PGMA-36610))
624,Dispatch,DIS,2023-11-29,2023-12-28,,,36610,1.9.1.2.2.43(BOILER ROOF STRUCTURE (PGMA-36610))
625,BOILER ROOF SHEETING (PGMA-36611),SUP,2022-12-26,2023-12-28,,,36611,1.9.1.2.2(Galleries & Stairways (PG-36))
626,Engineering,ENG,2022-12-26,2023-07-05,,,36611,1.9.1.2.2.44(BOILER ROOF SHEETING (PGMA-36611))
627,Manufacturing,MFG,2023-06-06,2023-11-28,,,36611,1.9.1.2.2.44(BOILER ROOF SHEETING (PGMA-36611))
628,Dispatch,DIS,2023-11-29,2023-12-28,,,36611,1.9.1.2.2.44(BOILER ROOF SHEETING (PGMA-36611))
629,RAIN WATER PIPES & GUTTER (PGMA-36613),SUP,2023-01-25,2024-02-27,,,36613,1.9.1.2.2(Galleries & Stairways (PG-36))
630,Engineering,ENG,2023-01-25,2023-08-14,,,36613,1.9.1.2.2.45(RAIN WATER PIPES & GUTTER (PGMA-36613))
631,Manufacturing,MFG,2023-07-16,2024-01-28,,,36613,1.9.1.2.2.45(RAIN WATER PIPES & GUTTER (PGMA-36613))
632,Dispatch,DIS,2024-01-29,2024-02-27,,,36613,1.9.1.2.2.45(RAIN WATER PIPES & GUTTER (PGMA-36613))
633,BOILER SIDE CLADDING STRUCTURE (PGMA-36620),SUP,2023-01-25,2024-03-29,,,36620,1.9.1.2.2(Galleries & Stairways (PG-36))
634,Engineering,ENG,2023-01-25,2023-08-17,,,36620,1.9.1.2.2.46(BOILER SIDE CLADDING STRUCTURE (PGMA-36620))
635,Manufacturing,MFG,2023-07-19,2024-02-28,,,36620,1.9.1.2.2.46(BOILER SIDE CLADDING STRUCTURE (PGMA-36620))
636,Dispatch,DIS,2024-02-29,2024-03-29,,,36620,1.9.1.2.2.46(BOILER SIDE CLADDING STRUCTURE (PGMA-36620))
637,BOILER SIDE CLADDING STRUCTURE (PGMA-36621),SUP,2023-01-25,2024-03-29,,,36621,1.9.1.2.2(Galleries & Stairways (PG-36))
638,Engineering,ENG,2023-01-25,2023-08-17,,,36621,1.9.1.2.2.47(BOILER SIDE CLADDING STRUCTURE (PGMA-36621))
639,Manufacturing,MFG,2023-07-19,2024-02-28,,,36621,1.9.1.2.2.47(BOILER SIDE CLADDING STRUCTURE (PGMA-36621))
640,Dispatch,DIS,2024-02-29,2024-03-29,,,36621,1.9.1.2.2.47(BOILER SIDE CLADDING STRUCTURE (PGMA-36621))
641,POSTS AND HANGERS (PGMA-36740),SUP,2023-01-25,2024-04-28,,,36740,1.9.1.2.2(Galleries & Stairways (PG-36))
642,Engineering,ENG,2023-01-25,2023-09-05,,,36740,1.9.1.2.2.48(POSTS AND HANGERS (PGMA-36740))
643,Manufacturing,MFG,2023-09-06,2024-03-29,,,36740,1.9.1.2.2.48(POSTS AND HANGERS (PGMA-36740))
644,Dispatch,DIS,2024-03-30,2024-04-28,,,36740,1.9.1.2.2.48(POSTS AND HANGERS (PGMA-36740))
645,FLOOR GRILLS AND GUARD PLATES-LOWER (PGMA-36811),SUP,2023-01-25,2024-04-28,,,36811,1.9.1.2.2(Galleries & Stairways (PG-36))
646,Engineering,ENG,2023-01-25,2023-09-05,,,36811,1.9.1.2.2.49(FLOOR GRILLS AND GUARD PLATES-LOWER (PGMA-36811))
647,Manufacturing,MFG,2023-09-06,2024-03-29,,,36811,1.9.1.2.2.49(FLOOR GRILLS AND GUARD PLATES-LOWER (PGMA-36811))
648,Dispatch,DIS,2024-03-30,2024-04-28,,,36811,1.9.1.2.2.49(FLOOR GRILLS AND GUARD PLATES-LOWER (PGMA-36811))
649,FLOOR GRILLS&GUARD PLATE MIDDLE (PGMA-36812),SUP,2023-07-24,2024-09-25,,,36812,1.9.1.2.2(Galleries & Stairways (PG-36))
650,Engineering,ENG,2023-07-24,2024-02-10,,,36812,1.9.1.2.2.50(FLOOR GRILLS&GUARD PLATE MIDDLE (PGMA-36812))
651,Manufacturing,MFG,2024-02-11,2024-08-26,,,36812,1.9.1.2.2.50(FLOOR GRILLS&GUARD PLATE MIDDLE (PGMA-36812))
652,Dispatch,DIS,2024-08-27,2024-09-25,,,36812,1.9.1.2.2.50(FLOOR GRILLS&GUARD PLATE MIDDLE (PGMA-36812))
653,FLOOR GRILLS&GUARD PLATES- UPPER (PGMA-36813),SUP,2023-01-25,2024-02-26,,,36813,1.9.1.2.2(Galleries & Stairways (PG-36))
654,Engineering,ENG,2023-01-25,2023-08-04,,,36813,1.9.1.2.2.51(FLOOR GRILLS&GUARD PLATES- UPPER (PGMA-36813))
655,Manufacturing,MFG,2023-08-05,2024-01-27,,,36813,1.9.1.2.2.51(FLOOR GRILLS&GUARD PLATES- UPPER (PGMA-36813))
656,Dispatch,DIS,2024-01-28,2024-02-26,,,36813,1.9.1.2.2.51(FLOOR GRILLS&GUARD PLATES- UPPER (PGMA-36813))
657,FLOOR GRILLS&GUARD PLATE MISCELLANEOUS (PGMA-36814),SUP,2022-12-26,2023-12-27,,,36814,1.9.1.2.2(Galleries & Stairways (PG-36))
658,Engineering,ENG,2022-12-26,2023-05-26,,,36814,1.9.1.2.2.52(FLOOR GRILLS&GUARD PLATE MISCELLANEOUS (PGMA-36814))
659,Manufacturing,MFG,2023-05-27,2023-11-27,,,36814,1.9.1.2.2.52(FLOOR GRILLS&GUARD PLATE MISCELLANEOUS (PGMA-36814))
660,Dispatch,DIS,2023-11-28,2023-12-27,,,36814,1.9.1.2.2.52(FLOOR GRILLS&GUARD PLATE MISCELLANEOUS (PGMA-36814))
661,STAIRS AND LADDERS (PGMA-36820),SUP,2022-12-26,2023-12-27,,,36820,1.9.1.2.2(Galleries & Stairways (PG-36))
662,Engineering,ENG,2022-12-26,2023-05-26,,,36820,1.9.1.2.2.53(STAIRS AND LADDERS (PGMA-36820))
663,Manufacturing,MFG,2023-05-27,2023-11-27,,,36820,1.9.1.2.2.53(STAIRS AND LADDERS (PGMA-36820))
664,Dispatch,DIS,2023-11-28,2023-12-27,,,36820,1.9.1.2.2.53(STAIRS AND LADDERS (PGMA-36820))
665,HAND RAILS &POSTS LOWER (PGMA-36851),SUP,2023-01-25,2024-04-28,,,36851,1.9.1.2.2(Galleries & Stairways (PG-36))
666,Engineering,ENG,2023-01-25,2023-09-05,,,36851,1.9.1.2.2.54(HAND RAILS &POSTS LOWER (PGMA-36851))
667,Manufacturing,MFG,2023-09-06,2024-03-29,,,36851,1.9.1.2.2.54(HAND RAILS &POSTS LOWER (PGMA-36851))
668,Dispatch,DIS,2024-03-30,2024-04-28,,,36851,1.9.1.2.2.54(HAND RAILS &POSTS LOWER (PGMA-36851))
669,HANDRAILS & POSTS MIDDLE (PGMA-36852),SUP,2023-01-25,2024-02-26,,,36852,1.9.1.2.2(Galleries & Stairways (PG-36))
670,Engineering,ENG,2023-01-25,2023-08-04,,,36852,1.9.1.2.2.55(HANDRAILS & POSTS MIDDLE (PGMA-36852))
671,Manufacturing,MFG,2023-08-05,2024-01-27,,,36852,1.9.1.2.2.55(HANDRAILS & POSTS MIDDLE (PGMA-36852))
672,Dispatch,DIS,2024-01-28,2024-02-26,,,36852,1.9.1.2.2.55(HANDRAILS & POSTS MIDDLE (PGMA-36852))
673,HANDRAILS & POSTS UPPER (PGMA-36853),SUP,2022-12-26,2023-12-27,,,36853,1.9.1.2.2(Galleries & Stairways (PG-36))
674,Engineering,ENG,2022-12-26,2023-05-26,,,36853,1.9.1.2.2.56(HANDRAILS & POSTS UPPER (PGMA-36853))
675,Manufacturing,MFG,2023-05-27,2023-11-27,,,36853,1.9.1.2.2.56(HANDRAILS & POSTS UPPER (PGMA-36853))
676,Dispatch,DIS,2023-11-28,2023-12-27,,,36853,1.9.1.2.2.56(HANDRAILS & POSTS UPPER (PGMA-36853))
677,CONSUMABLES &Erection MATERIALS (PGMA-36993),SUP,2022-12-26,2023-12-27,,,36993,1.9.1.2.2(Galleries & Stairways (PG-36))
678,Engineering,ENG,2022-12-26,2023-05-26,,,36993,1.9.1.2.2.57(CONSUMABLES &Erection MATERIALS (PGMA-36993))
679,Manufacturing,MFG,2023-05-27,2023-11-27,,,36993,1.9.1.2.2.57(CONSUMABLES &Erection MATERIALS (PGMA-36993))
680,Dispatch,DIS,2023-11-28,2023-12-27,,,36993,1.9.1.2.2.57(CONSUMABLES &Erection MATERIALS (PGMA-36993))
681,Inter - Connecting Walkways (PG-38),SUP,2022-09-27,2025-05-30,,,PG38,1.9.1.2(Supply (BHEL TRY))
682,LIFT COLUMNS (PGMA-38110),SUP,2022-09-27,2023-06-29,,,38110,1.9.1.2.3(Inter - Connecting Walkways (PG-38))
683,Engineering,ENG,2022-09-27,2023-04-08,,,38110,1.9.1.2.3.1(LIFT COLUMNS (PGMA-38110))
684,Manufacturing,MFG,2023-01-21,2023-05-30,,,38110,1.9.1.2.3.1(LIFT COLUMNS (PGMA-38110))
685,Dispatch,DIS,2023-05-31,2023-06-29,,,38110,1.9.1.2.3.1(LIFT COLUMNS (PGMA-38110))
686,INTER CONN PLATFORMSBETN BOILER/ELEVAT (PGMA-38210),SUP,2023-06-12,2024-12-28,,,38210,1.9.1.2.3(Inter - Connecting Walkways (PG-38))
687,Engineering,ENG,2023-06-12,2024-02-28,,,38210,1.9.1.2.3.2(INTER CONN PLATFORMSBETN BOILER/ELEVAT (PGMA-38210))
688,Manufacturing,MFG,2024-02-29,2024-11-28,,,38210,1.9.1.2.3.2(INTER CONN PLATFORMSBETN BOILER/ELEVAT (PGMA-38210))
689,Dispatch,DIS,2024-11-29,2024-12-28,,,38210,1.9.1.2.3.2(INTER CONN PLATFORMSBETN BOILER/ELEVAT (PGMA-38210))
690,MILL HANDLING MONORAILS (PGMA-38299),SUP,2023-06-12,2025-01-17,,,38299,1.9.1.2.3(Inter - Connecting Walkways (PG-38))
691,Engineering,ENG,2023-06-12,2024-03-07,,,38299,1.9.1.2.3.3(MILL HANDLING MONORAILS (PGMA-38299))
692,Manufacturing,MFG,2024-03-08,2024-12-18,,,38299,1.9.1.2.3.3(MILL HANDLING MONORAILS (PGMA-38299))
693,Dispatch,DIS,2024-12-19,2025-01-17,,,38299,1.9.1.2.3.3(MILL HANDLING MONORAILS (PGMA-38299))
694,CONN PLATFORMS TO MILL/DEAERATOR BAY (PGMA-38310),SUP,2023-06-12,2024-12-28,,,38310,1.9.1.2.3(Inter - Connecting Walkways (PG-38))
695,Engineering,ENG,2023-06-12,2024-02-28,,,38310,1.9.1.2.3.4(CONN PLATFORMS TO MILL/DEAERATOR BAY (PGMA-38310))
696,Manufacturing,MFG,2024-02-29,2024-11-28,,,38310,1.9.1.2.3.4(CONN PLATFORMS TO MILL/DEAERATOR BAY (PGMA-38310))
697,Dispatch,DIS,2024-11-29,2024-12-28,,,38310,1.9.1.2.3.4(CONN PLATFORMS TO MILL/DEAERATOR BAY (PGMA-38310))
698,ECO HANDLING STRUCTURE (PGMA-38381),SUP,2023-03-23,2024-10-28,,,38381,1.9.1.2.3(Inter - Connecting Walkways (PG-38))
699,Engineering,ENG,2023-03-23,2023-12-17,,,38381,1.9.1.2.3.5(ECO HANDLING STRUCTURE (PGMA-38381))
700,Manufacturing,MFG,2023-12-18,2024-09-28,,,38381,1.9.1.2.3.5(ECO HANDLING STRUCTURE (PGMA-38381))
701,Dispatch,DIS,2024-09-29,2024-10-28,,,38381,1.9.1.2.3.5(ECO HANDLING STRUCTURE (PGMA-38381))
702,MILL MAINTANANCE PLATFORMS (PGMA-38410),SUP,2023-05-18,2024-11-27,,,38410,1.9.1.2.3(Inter - Connecting Walkways (PG-38))
703,Engineering,ENG,2023-05-18,2024-02-03,,,38410,1.9.1.2.3.6(MILL MAINTANANCE PLATFORMS (PGMA-38410))
704,Manufacturing,MFG,2024-02-04,2024-10-28,,,38410,1.9.1.2.3.6(MILL MAINTANANCE PLATFORMS (PGMA-38410))
705,Dispatch,DIS,2024-10-29,2024-11-27,,,38410,1.9.1.2.3.6(MILL MAINTANANCE PLATFORMS (PGMA-38410))
706,LIFT BEAMS & BRACINGS (PGMA-38510),SUP,2023-05-18,2024-10-28,,,38510,1.9.1.2.3(Inter - Connecting Walkways (PG-38))
707,Engineering,ENG,2023-05-18,2024-01-17,,,38510,1.9.1.2.3.7(LIFT BEAMS & BRACINGS (PGMA-38510))
708,Manufacturing,MFG,2024-01-18,2024-09-28,,,38510,1.9.1.2.3.7(LIFT BEAMS & BRACINGS (PGMA-38510))
709,Dispatch,DIS,2024-09-29,2024-10-28,,,38510,1.9.1.2.3.7(LIFT BEAMS & BRACINGS (PGMA-38510))
710,PASSENGER ELEVATOR BRACINGS-MIDDLE (PGMA-38512),SUP,2023-05-18,2024-10-28,,,38512,1.9.1.2.3(Inter - Connecting Walkways (PG-38))
711,Engineering,ENG,2023-05-18,2024-01-17,,,38512,1.9.1.2.3.8(PASSENGER ELEVATOR BRACINGS-MIDDLE (PGMA-38512))
712,Manufacturing,MFG,2024-01-18,2024-09-28,,,38512,1.9.1.2.3.8(PASSENGER ELEVATOR BRACINGS-MIDDLE (PGMA-38512))
713,Dispatch,DIS,2024-09-29,2024-10-28,,,38512,1.9.1.2.3.8(PASSENGER ELEVATOR BRACINGS-MIDDLE (PGMA-38512))
714,ELEVATOR CLADDING STRUCTURE (PGMA-38610),SUP,2023-07-02,2025-01-27,,,38610,1.9.1.2.3(Inter - Connecting Walkways (PG-38))
715,Engineering,ENG,2023-07-02,2024-03-22,,,38610,1.9.1.2.3.9(ELEVATOR CLADDING STRUCTURE (PGMA-38610))
716,Manufacturing,MFG,2024-03-23,2024-12-28,,,38610,1.9.1.2.3.9(ELEVATOR CLADDING STRUCTURE (PGMA-38610))
717,Dispatch,DIS,2024-12-29,2025-01-27,,,38610,1.9.1.2.3.9(ELEVATOR CLADDING STRUCTURE (PGMA-38610))
718,ELEVATOR CLADDING (PGMA-38611),SUP,2023-07-02,2025-01-27,,,38611,1.9.1.2.3(Inter - Connecting Walkways (PG-38))
719,Engineering,ENG,2023-07-02,2024-03-22,,,38611,1.9.1.2.3.10(ELEVATOR CLADDING (PGMA-38611))
720,Manufacturing,MFG,2024-03-23,2024-12-28,,,38611,1.9.1.2.3.10(ELEVATOR CLADDING (PGMA-38611))
721,Dispatch,DIS,2024-12-29,2025-01-27,,,38611,1.9.1.2.3.10(ELEVATOR CLADDING (PGMA-38611))
722,CONN PLATFORM ROOF STRUCTURE (PGMA-38612),SUP,2023-07-02,2025-01-27,,,38612,1.9.1.2.3(Inter - Connecting Walkways (PG-38))
723,Engineering,ENG,2023-07-02,2024-03-22,,,38612,1.9.1.2.3.11(CONN PLATFORM ROOF STRUCTURE (PGMA-38612))
724,Manufacturing,MFG,2024-03-23,2024-12-28,,,38612,1.9.1.2.3.11(CONN PLATFORM ROOF STRUCTURE (PGMA-38612))
725,Dispatch,DIS,2024-12-29,2025-01-27,,,38612,1.9.1.2.3.11(CONN PLATFORM ROOF STRUCTURE (PGMA-38612))
726,LIFT MACHINE ROOM DETAILS &MISC STRUCT (PGMA-38710),SUP,2023-05-18,2024-11-27,,,38710,1.9.1.2.3(Inter - Connecting Walkways (PG-38))
727,Engineering,ENG,2023-05-18,2024-02-03,,,38710,1.9.1.2.3.12(LIFT MACHINE ROOM DETAILS &MISC STRUCT (PGMA-38710))
728,Manufacturing,MFG,2024-02-04,2024-10-28,,,38710,1.9.1.2.3.12(LIFT MACHINE ROOM DETAILS &MISC STRUCT (PGMA-38710))
729,Dispatch,DIS,2024-10-29,2024-11-27,,,38710,1.9.1.2.3.12(LIFT MACHINE ROOM DETAILS &MISC STRUCT (PGMA-38710))
730,ELEVATOR CLADDING STRUCTURES (PGMA-38712),SUP,2023-05-18,2024-11-27,,,38712,1.9.1.2.3(Inter - Connecting Walkways (PG-38))
731,Engineering,ENG,2023-05-18,2024-02-03,,,38712,1.9.1.2.3.13(ELEVATOR CLADDING STRUCTURES (PGMA-38712))
732,Manufacturing,MFG,2024-02-04,2024-10-28,,,38712,1.9.1.2.3.13(ELEVATOR CLADDING STRUCTURES (PGMA-38712))
733,Dispatch,DIS,2024-10-29,2024-11-27,,,38712,1.9.1.2.3.13(ELEVATOR CLADDING STRUCTURES (PGMA-38712))
734,FLOORGRILLS AND GUARD PLATE (PGMA-38810),SUP,2023-05-18,2024-11-27,,,38810,1.9.1.2.3(Inter - Connecting Walkways (PG-38))
735,Engineering,ENG,2023-05-18,2024-02-03,,,38810,1.9.1.2.3.14(FLOORGRILLS AND GUARD PLATE (PGMA-38810))
736,Manufacturing,MFG,2024-02-04,2024-10-28,,,38810,1.9.1.2.3.14(FLOORGRILLS AND GUARD PLATE (PGMA-38810))
737,Dispatch,DIS,2024-10-29,2024-11-27,,,38810,1.9.1.2.3.14(FLOORGRILLS AND GUARD PLATE (PGMA-38810))
738,STAIRS AND LADDERS (PGMA-38820),SUP,2023-05-18,2025-02-14,,,38820,1.9.1.2.3(Inter - Connecting Walkways (PG-38))
739,Engineering,ENG,2023-05-18,2024-03-14,,,38820,1.9.1.2.3.15(STAIRS AND LADDERS (PGMA-38820))
740,Manufacturing,MFG,2024-03-15,2025-01-15,,,38820,1.9.1.2.3.15(STAIRS AND LADDERS (PGMA-38820))
741,Dispatch,DIS,2025-01-16,2025-02-14,,,38820,1.9.1.2.3.15(STAIRS AND LADDERS (PGMA-38820))
742,HAND RAILS AND HAND RAIL POSTS (PGMA-38850),SUP,2023-05-18,2024-11-27,,,38850,1.9.1.2.3(Inter - Connecting Walkways (PG-38))
743,Engineering,ENG,2023-05-18,2024-02-03,,,38850,1.9.1.2.3.16(HAND RAILS AND HAND RAIL POSTS (PGMA-38850))
744,Manufacturing,MFG,2024-02-04,2024-10-28,,,38850,1.9.1.2.3.16(HAND RAILS AND HAND RAIL POSTS (PGMA-38850))
745,Dispatch,DIS,2024-10-29,2024-11-27,,,38850,1.9.1.2.3.16(HAND RAILS AND HAND RAIL POSTS (PGMA-38850))
746,CONSUMABLES &Erection MATERIALS (PGMA-38993),SUP,2023-08-31,2025-05-30,,,38993,1.9.1.2.3(Inter - Connecting Walkways (PG-38))
747,Engineering,ENG,2023-08-31,2024-06-27,,,38993,1.9.1.2.3.17(CONSUMABLES &Erection MATERIALS (PGMA-38993))
748,Manufacturing,MFG,2024-06-28,2025-04-30,,,38993,1.9.1.2.3.17(CONSUMABLES &Erection MATERIALS (PGMA-38993))
749,Dispatch,DIS,2025-05-01,2025-05-30,,,38993,1.9.1.2.3.17(CONSUMABLES &Erection MATERIALS (PGMA-38993))
750,Coal bunker Bay Structures (PG-34),SUP,2022-10-27,2024-01-25,,,PG34,1.9.1.2(Supply (BHEL TRY))
751,FOUN.MATLS FOR BUNKER COLOMNS (PGMA-34010),SUP,2022-10-27,2023-05-28,,,34010,1.9.1.2.4(Coal bunker Bay Structures (PG-34))
752,Engineering,ENG,2022-10-27,2023-01-19,,,34010,1.9.1.2.4.1(FOUN.MATLS FOR BUNKER COLOMNS (PGMA-34010))
753,Manufacturing,MFG,2022-12-21,2023-03-28,,,34010,1.9.1.2.4.1(FOUN.MATLS FOR BUNKER COLOMNS (PGMA-34010))
754,Dispatch,DIS,2023-03-29,2023-05-28,,,34010,1.9.1.2.4.1(FOUN.MATLS FOR BUNKER COLOMNS (PGMA-34010))
755,BUNKER COLUMNS (PGMA-34100),SUP,2022-10-27,2023-09-10,,,34100,1.9.1.2.4(Coal bunker Bay Structures (PG-34))
756,Engineering,ENG,2022-10-27,2023-05-08,,,34100,1.9.1.2.4.2(BUNKER COLUMNS (PGMA-34100))
757,Manufacturing,MFG,2023-02-18,2023-06-27,,,34100,1.9.1.2.4.2(BUNKER COLUMNS (PGMA-34100))
758,Dispatch,DIS,2023-06-28,2023-09-10,,,34100,1.9.1.2.4.2(BUNKER COLUMNS (PGMA-34100))
759,BUNKER SUPPORT FRAMES (PGMA-34200),SUP,2022-10-27,2023-09-27,,,34200,1.9.1.2.4(Coal bunker Bay Structures (PG-34))
760,Engineering,ENG,2022-10-27,2023-03-27,,,34200,1.9.1.2.4.3(BUNKER SUPPORT FRAMES (PGMA-34200))
761,Manufacturing,MFG,2023-02-26,2023-08-28,,,34200,1.9.1.2.4.3(BUNKER SUPPORT FRAMES (PGMA-34200))
762,Dispatch,DIS,2023-08-29,2023-09-27,,,34200,1.9.1.2.4.3(BUNKER SUPPORT FRAMES (PGMA-34200))
763,PLATFORMS (PGMA-34300),SUP,2023-02-24,2024-01-25,,,34300,1.9.1.2.4(Coal bunker Bay Structures (PG-34))
764,Engineering,ENG,2023-02-24,2023-07-25,,,34300,1.9.1.2.4.4(PLATFORMS (PGMA-34300))
765,Manufacturing,MFG,2023-06-26,2023-12-26,,,34300,1.9.1.2.4.4(PLATFORMS (PGMA-34300))
766,Dispatch,DIS,2023-12-27,2024-01-25,,,34300,1.9.1.2.4.4(PLATFORMS (PGMA-34300))
767,BUNKER BAY FLOOR BEAMS (PGMA-34390),SUP,2023-02-24,2024-01-25,,,34390,1.9.1.2.4(Coal bunker Bay Structures (PG-34))
768,Engineering,ENG,2023-02-24,2023-07-25,,,34390,1.9.1.2.4.5(BUNKER BAY FLOOR BEAMS (PGMA-34390))
769,Manufacturing,MFG,2023-06-26,2023-12-26,,,34390,1.9.1.2.4.5(BUNKER BAY FLOOR BEAMS (PGMA-34390))
770,Dispatch,DIS,2023-12-27,2024-01-25,,,34390,1.9.1.2.4.5(BUNKER BAY FLOOR BEAMS (PGMA-34390))
771,HORIZONTAL BEAMS BETWEEN COLUMNS (PGMA-34400),SUP,2022-12-26,2023-11-26,,,34400,1.9.1.2.4(Coal bunker Bay Structures (PG-34))
772,Engineering,ENG,2022-12-26,2023-05-26,,,34400,1.9.1.2.4.6(HORIZONTAL BEAMS BETWEEN COLUMNS (PGMA-34400))
773,Manufacturing,MFG,2023-04-27,2023-10-27,,,34400,1.9.1.2.4.6(HORIZONTAL BEAMS BETWEEN COLUMNS (PGMA-34400))
774,Dispatch,DIS,2023-10-28,2023-11-26,,,34400,1.9.1.2.4.6(HORIZONTAL BEAMS BETWEEN COLUMNS (PGMA-34400))
775,VERTICAL BRACINGS (PGMA-34500),SUP,2022-12-26,2023-11-26,,,34500,1.9.1.2.4(Coal bunker Bay Structures (PG-34))
776,Engineering,ENG,2022-12-26,2023-05-26,,,34500,1.9.1.2.4.7(VERTICAL BRACINGS (PGMA-34500))
777,Manufacturing,MFG,2023-04-27,2023-10-27,,,34500,1.9.1.2.4.7(VERTICAL BRACINGS (PGMA-34500))
778,Dispatch,DIS,2023-10-28,2023-11-26,,,34500,1.9.1.2.4.7(VERTICAL BRACINGS (PGMA-34500))
779,FLOORGRILLS AND GUARD PLATES (PGMA-34810),SUP,2023-02-24,2024-01-25,,,34810,1.9.1.2.4(Coal bunker Bay Structures (PG-34))
780,Engineering,ENG,2023-02-24,2023-07-25,,,34810,1.9.1.2.4.8(FLOORGRILLS AND GUARD PLATES (PGMA-34810))
781,Manufacturing,MFG,2023-06-26,2023-12-26,,,34810,1.9.1.2.4.8(FLOORGRILLS AND GUARD PLATES (PGMA-34810))
782,Dispatch,DIS,2023-12-27,2024-01-25,,,34810,1.9.1.2.4.8(FLOORGRILLS AND GUARD PLATES (PGMA-34810))
783,STAIRS AND LADDERS (PGMA-34820),SUP,2023-02-24,2024-01-25,,,34820,1.9.1.2.4(Coal bunker Bay Structures (PG-34))
784,Engineering,ENG,2023-02-24,2023-07-25,,,34820,1.9.1.2.4.9(STAIRS AND LADDERS (PGMA-34820))
785,Manufacturing,MFG,2023-06-26,2023-12-26,,,34820,1.9.1.2.4.9(STAIRS AND LADDERS (PGMA-34820))
786,Dispatch,DIS,2023-12-27,2024-01-25,,,34820,1.9.1.2.4.9(STAIRS AND LADDERS (PGMA-34820))
787,HANDRAILS & HANDRAIL POSTS (PGMA-34850),SUP,2023-02-24,2024-01-25,,,34850,1.9.1.2.4(Coal bunker Bay Structures (PG-34))
788,Engineering,ENG,2023-02-24,2023-07-25,,,34850,1.9.1.2.4.10(HANDRAILS & HANDRAIL POSTS (PGMA-34850))
789,Manufacturing,MFG,2023-06-26,2023-12-26,,,34850,1.9.1.2.4.10(HANDRAILS & HANDRAIL POSTS (PGMA-34850))
790,Dispatch,DIS,2023-12-27,2024-01-25,,,34850,1.9.1.2.4.10(HANDRAILS & HANDRAIL POSTS (PGMA-34850))
791,Manholes and Furnace Openings (PG-28),SUP,2023-01-25,2024-11-27,,,PG28,1.9.1.2(Supply (BHEL TRY))
792,DOORS (PGMA-28220),SUP,2023-01-25,2024-11-27,,,28220,1.9.1.2.5(Manholes and Furnace Openings (PG-28))
793,Engineering,ENG,2023-01-25,2023-12-20,,,28220,1.9.1.2.5.1(DOORS (PGMA-28220))
794,Manufacturing,MFG,2023-12-21,2024-10-28,,,28220,1.9.1.2.5.1(DOORS (PGMA-28220))
795,Dispatch,DIS,2024-10-29,2024-11-27,,,28220,1.9.1.2.5.1(DOORS (PGMA-28220))
796,BPS FASTENERS (PGMA-28700),SUP,2023-01-25,2024-11-27,,,28700,1.9.1.2.5(Manholes and Furnace Openings (PG-28))
797,Engineering,ENG,2023-01-25,2023-12-20,,,28700,1.9.1.2.5.2(BPS FASTENERS (PGMA-28700))
798,Manufacturing,MFG,2023-12-21,2024-10-28,,,28700,1.9.1.2.5.2(BPS FASTENERS (PGMA-28700))
799,Dispatch,DIS,2024-10-29,2024-11-27,,,28700,1.9.1.2.5.2(BPS FASTENERS (PGMA-28700))
800, BOI- HT- Boiler Elevator,SUP,2023-04-15,2024-04-29,,,,1.9.1.2(Supply (BHEL TRY))
801,NIT,ENQ,2023-04-15,2023-04-15,,,,1.9.1.2.6( BOI- HT- Boiler Elevator)
802,Ordering,ORD,2023-04-16,2023-09-12,,,,1.9.1.2.6( BOI- HT- Boiler Elevator)
803,Manufacturing,MFG,2023-09-13,2024-03-30,,,,1.9.1.2.6( BOI- HT- Boiler Elevator)
804,Dispatch,DIS,2024-03-31,2024-04-29,,,,1.9.1.2.6( BOI- HT- Boiler Elevator)
805, BOI- FL- Quick erect scaffold,SUP,2023-10-12,2025-11-10,,,,1.9.1.2(Supply (BHEL TRY))
806,NIT,ENQ,2023-10-12,2023-10-12,,,,1.9.1.2.7( BOI- FL- Quick erect scaffold)
807,Ordering,ORD,2023-10-13,2024-07-18,,,,1.9.1.2.7( BOI- FL- Quick erect scaffold)
808,Manufacturing,MFG,2024-07-19,2025-05-14,,,,1.9.1.2.7( BOI- FL- Quick erect scaffold)
809,Dispatch,DIS,2025-05-15,2025-11-10,,,,1.9.1.2.7( BOI- FL- Quick erect scaffold)
810,Civil,CIV,2023-02-23,2024-12-15,,,,1.9.1(Boiler Structure)
811, REL OF DWG FOR SG Foundation,PE - RFC,2023-02-23,2023-02-23,,,,1.9.1.3(Civil)
812,Boiler Foundation,CIV,2023-02-24,2023-09-25,,,,1.9.1.3(Civil)
813, Excavation,CIV,2023-02-24,2023-04-09,,,,1.9.1.3.2(Boiler Foundation)
814, RCC Raft,CIV,2023-04-10,2023-07-03,,,,1.9.1.3.2(Boiler Foundation)
815, RCC Pedestal,CIV,2023-07-04,2023-09-10,,,,1.9.1.3.2(Boiler Foundation)
816, Backfilling,CIV,2023-09-11,2023-09-25,,,,1.9.1.3.2(Boiler Foundation)
817,Coal Bunker Bay Foundation and structure,CIV,2023-02-23,2024-12-15,,,,1.9.1.3(Civil)
818, REL OF DWG FOR BUNKER Foundation,PE - RFC,2023-02-23,2023-02-23,,,,1.9.1.3.3(Coal Bunker Bay Foundation and structure)
819,Coal BUNKER BAY FOUNDATIONS,CIV,2023-02-24,2023-09-26,,,,1.9.1.3.3(Coal Bunker Bay Foundation and structure)
820, Excavation & PCC,CIV,2023-02-24,2023-04-19,,,,1.9.1.3.3.2(Coal BUNKER BAY FOUNDATIONS)
821, RCC foundation,CIV,2023-04-20,2023-07-13,,,,1.9.1.3.3.2(Coal BUNKER BAY FOUNDATIONS)
822, RCC Pedestal ( Upto Bolt Lift),CIV,2023-07-14,2023-09-06,,,,1.9.1.3.3.2(Coal BUNKER BAY FOUNDATIONS)
823, Backfilling,CIV,2023-09-07,2023-09-18,,,,1.9.1.3.3.2(Coal BUNKER BAY FOUNDATIONS)
824, Finishing Work,CIV,2023-09-19,2023-09-26,,,,1.9.1.3.3.2(Coal BUNKER BAY FOUNDATIONS)
825,Coal Bunker Bay Floors and Roof,CIV,2024-05-20,2024-12-15,,,,1.9.1.3.3(Coal Bunker Bay Foundation and structure)
826, RCC Feeder Floor Slab,CIV,2024-05-20,2024-07-08,,,,1.9.1.3.3.3(Coal Bunker Bay Floors and Roof)
827, RCC Tripper Floor Slab,CIV,2024-07-04,2024-09-21,,,,1.9.1.3.3.3(Coal Bunker Bay Floors and Roof)
828, RCC Roof Slab,CIV,2024-09-27,2024-12-15,,,,1.9.1.3.3.3(Coal Bunker Bay Floors and Roof)
829,Erection,ERC,2023-09-26,2026-04-30,,,,1.9.1(Boiler Structure)
830,Main Boiler supporting structure (PG-35),ERC,2023-09-26,2026-04-30,,,PG35,1.9.1.4(Erection)
831,Erection: Main Columns ,ERC,2023-09-26,2024-06-21,,,,1.9.1.4.1(Main Boiler supporting structure (PG-35))
832,Erection: Auxiliary Columns,ERC,2023-09-30,2024-03-27,,,,1.9.1.4.1(Main Boiler supporting structure (PG-35))
833,Erection: Horizontal Bracing including Chute Pipe And Ladder,ERC,2024-02-01,2024-06-14,,,,1.9.1.4.1(Main Boiler supporting structure (PG-35))
834,Erection: Horizontal Beams,ERC,2024-02-01,2024-07-09,,,,1.9.1.4.1(Main Boiler supporting structure (PG-35))
835,Erection: Land Platform,ERC,2024-02-01,2024-06-09,,,,1.9.1.4.1(Main Boiler supporting structure (PG-35))
836,Erection: Front Bracing,ERC,2024-02-01,2024-06-09,,,,1.9.1.4.1(Main Boiler supporting structure (PG-35))
837,Erection: Side Bracing,ERC,2024-02-01,2024-06-09,,,,1.9.1.4.1(Main Boiler supporting structure (PG-35))
838,Erection: Rear Bracing,ERC,2024-02-01,2024-06-09,,,,1.9.1.4.1(Main Boiler supporting structure (PG-35))
839,Erection: Floor Grills And Guard,ERC,2024-02-03,2025-05-27,,,,1.9.1.4.1(Main Boiler supporting structure (PG-35))
840,Erection: Stairs ,ERC,2024-02-03,2024-06-21,,,,1.9.1.4.1(Main Boiler supporting structure (PG-35))
841,Erection: Hand Rails And Posts,ERC,2024-03-12,2026-04-30,,,,1.9.1.4.1(Main Boiler supporting structure (PG-35))
842,Erection: Ceiling Girder Main Structure,ERC,2024-06-22,2024-07-25,,,,1.9.1.4.1(Main Boiler supporting structure (PG-35))
843,Erection: CEIL STRUCT-CROSS WELDED BEAMS,ERC,2024-04-23,2024-07-25,,,,1.9.1.4.1(Main Boiler supporting structure (PG-35))
844,Erection: Ceiling Structure Rolled beam,ERC,2024-06-22,2024-07-25,,,,1.9.1.4.1(Main Boiler supporting structure (PG-35))
845,Erection: Ceiling Structure Horizontal beam,ERC,2024-04-23,2024-07-25,,,,1.9.1.4.1(Main Boiler supporting structure (PG-35))
846,Erection: Ceiling Girder Lifting Complete,ERC,2024-07-25,2024-07-25,,,,1.9.1.4.1(Main Boiler supporting structure (PG-35))
847,Galleries & Stairways (PG-36),ERC,2024-03-30,2025-12-27,,,PG36,1.9.1.4(Erection)
848,Erection: COLUMNS NEAR AIR PRE HEATERS,ERC,2024-07-26,2024-11-22,,,,1.9.1.4.2(Galleries & Stairways (PG-36))
849,Erection: MIDDLE COLUMNS IN BOILER,ERC,2024-05-27,2024-09-23,,,,1.9.1.4.2(Galleries & Stairways (PG-36))
850,Erection: BEAMS & BRACINGS NEAR AIR PRE HEATER,ERC,2024-07-26,2025-01-21,,,,1.9.1.4.2(Galleries & Stairways (PG-36))
851,Erection: Main Floor MBL- 1st and 2nd Pass,ERC,2024-04-27,2025-12-27,,,,1.9.1.4.2(Galleries & Stairways (PG-36))
852,Erection: NON MBL Floor - 1st and 2nd Pass,ERC,2024-03-30,2025-11-29,,,,1.9.1.4.2(Galleries & Stairways (PG-36))
853,Erection: Miscellaneous Platform,ERC,2024-06-26,2025-11-17,,,,1.9.1.4.2(Galleries & Stairways (PG-36))
854,Erection: Boiler Roof Structure,ERC,2024-06-26,2024-08-24,,,,1.9.1.4.2(Galleries & Stairways (PG-36))
855,Erection: Boiler Roof Sheeting,ERC,2024-06-26,2024-08-24,,,,1.9.1.4.2(Galleries & Stairways (PG-36))
856,Erection: Rain Water Pipes And Gutter,ERC,2024-07-26,2024-08-24,,,,1.9.1.4.2(Galleries & Stairways (PG-36))
857,Erection: Boiler Side Cladding Structure,ERC,2024-07-26,2024-09-23,,,,1.9.1.4.2(Galleries & Stairways (PG-36))
858,Erection: Floor grills and guard plate,ERC,2024-09-26,2025-12-19,,,,1.9.1.4.2(Galleries & Stairways (PG-36))
859,Erection: Stairs And Ladders,ERC,2024-11-23,2025-04-21,,,,1.9.1.4.2(Galleries & Stairways (PG-36))
860,Erection: Handrails And Posts,ERC,2024-06-26,2025-09-18,,,,1.9.1.4.2(Galleries & Stairways (PG-36))
861,Erection: Silencer and supports,ERC,2024-07-26,2024-08-24,,,,1.9.1.4.2(Galleries & Stairways (PG-36))
862,Inter - Connecting Walkways (PG-38),ERC,2024-10-29,2026-01-05,,,PG38,1.9.1.4(Erection)
863,"Erection: LIFT COLUMNS, Beams & Bracing",ERC,2024-10-29,2025-02-25,,,,1.9.1.4.3(Inter - Connecting Walkways (PG-38))
864,Erection: INTER CONN PLATFORMSBETN BOILER/ELEVATOR,ERC,2025-06-20,2025-08-18,,,,1.9.1.4.3(Inter - Connecting Walkways (PG-38))
865,Erection: MILL HANDLING MONORAILS,ERC,2025-01-18,2025-03-18,,,,1.9.1.4.3(Inter - Connecting Walkways (PG-38))
866,Erection: CONN PLATFORMS TO MILL/DEAERATOR BAY,ERC,2025-11-07,2026-01-05,,,,1.9.1.4.3(Inter - Connecting Walkways (PG-38))
867,Erection: ECO HANDLING STRUCTURE,ERC,2025-09-18,2025-11-06,,,,1.9.1.4.3(Inter - Connecting Walkways (PG-38))
868,Erection: MILL MAINTANANCE PLATFORMS,ERC,2024-11-28,2025-01-11,,,,1.9.1.4.3(Inter - Connecting Walkways (PG-38))
869,Erection: ELEVATOR CLADDING STRUCTURE,ERC,2025-02-26,2025-07-25,,,,1.9.1.4.3(Inter - Connecting Walkways (PG-38))
870,Erection: ELEVATOR CLADDING,ERC,2025-07-26,2025-09-23,,,,1.9.1.4.3(Inter - Connecting Walkways (PG-38))
871,Erection: CONN PLATFORM ROOF STRUCTURE,ERC,2025-08-19,2025-09-17,,,,1.9.1.4.3(Inter - Connecting Walkways (PG-38))
872,Erection: LIFT MACHINE ROOM DETAILS &MISC STRUCT,ERC,2025-02-26,2025-07-25,,,,1.9.1.4.3(Inter - Connecting Walkways (PG-38))
873,Erection: FLOORGRILLS AND GUARD PLATE,ERC,2025-07-26,2025-08-24,,,,1.9.1.4.3(Inter - Connecting Walkways (PG-38))
874,Erection: STAIRS AND LADDERS,ERC,2025-08-25,2025-09-23,,,,1.9.1.4.3(Inter - Connecting Walkways (PG-38))
875,Erection: HAND RAILS AND HAND RAIL POSTS,ERC,2025-09-24,2025-10-23,,,,1.9.1.4.3(Inter - Connecting Walkways (PG-38))
876,Coal bunker Bay Structures (PG-34),ERC,2024-01-26,2024-11-05,,,PG34,1.9.1.4(Erection)
877,"Erection: BUNKER COLUMNS, SUPPORT FRAME,PLATFORM, BEAMS & BRACINGS Upto Feeder Floor",ERC,2024-01-26,2024-03-05,,,,1.9.1.4.4(Coal bunker Bay Structures (PG-34))
878,"Erection: BUNKER COLUMNS, SUPPORT FRAME,PLATFORM, BEAMS & BRACINGS Upto Tripper Floor",ERC,2024-03-06,2024-04-19,,,,1.9.1.4.4(Coal bunker Bay Structures (PG-34))
879,"Erection: BUNKER COLUMNS, SUPPORT FRAME,PLATFORM, BEAMS & BRACINGS Upto Roof",ERC,2024-04-20,2024-06-08,,,,1.9.1.4.4(Coal bunker Bay Structures (PG-34))
880,Erection: Cladding,ERC,2024-06-09,2024-08-07,,,,1.9.1.4.4(Coal bunker Bay Structures (PG-34))
881,Erection: FLOORGRILLS AND GUARD PLATES,ERC,2024-06-09,2024-09-06,,,,1.9.1.4.4(Coal bunker Bay Structures (PG-34))
882,Erection: STAIRS AND LADDERS,ERC,2024-07-09,2024-10-06,,,,1.9.1.4.4(Coal bunker Bay Structures (PG-34))
883,Erection: HANDRAILS & HANDRAIL POSTS,ERC,2024-08-08,2024-11-05,,,,1.9.1.4.4(Coal bunker Bay Structures (PG-34))
884,Manholes and Furnace Openings (PG-28),ERC,2025-04-05,2025-06-03,,,PG28,1.9.1.4(Erection)
885,Erection: DOORS,ERC,2025-04-05,2025-06-03,,,,1.9.1.4.5(Manholes and Furnace Openings (PG-28))
886,"Water Circulation System, Super Heaters and Re-Heaters ",ERC,2022-09-27,2026-02-27,,,,1.9(Boiler & Auxiliaries)
887,Supply (BHEL TRY),SUP,2022-09-27,2025-11-11,,,,"1.9.2(Water Circulation System, Super Heaters and Re-Heaters )"
888,Water Circulation System,SUP,2022-09-27,2025-11-11,,,,1.9.2.1(Supply (BHEL TRY))
889,"Separator, Storage Tanks and Supports (PG-04)",SUP,2022-09-27,2024-03-27,,,PG04,1.9.2.1.1(Water Circulation System)
890,SUPPORTS FOR COLLECTOR & SEPERATOR VESSEL (PGMA-4147),SUP,2022-09-27,2024-01-26,,,4147,"1.9.2.1.1.1(Separator, Storage Tanks and Supports (PG-04))"
891,Engineering,ENG,2022-09-27,2023-08-04,,,04147,1.9.2.1.1.1.1(SUPPORTS FOR COLLECTOR & SEPERATOR VESSEL (PGMA-4147))
892,Manufacturing,MFG,2023-05-05,2023-12-12,,,04147,1.9.2.1.1.1.1(SUPPORTS FOR COLLECTOR & SEPERATOR VESSEL (PGMA-4147))
893,Dispatch,DIS,2023-12-13,2024-01-26,,,04147,1.9.2.1.1.1.1(SUPPORTS FOR COLLECTOR & SEPERATOR VESSEL (PGMA-4147))
894,Separator Vessels with Internals & Attach (PGMA-4321),SUP,2023-01-25,2024-03-27,,,4321,"1.9.2.1.1.1(Separator, Storage Tanks and Supports (PG-04))"
895,Engineering,ENG,2023-01-25,2023-08-14,,,04321,1.9.2.1.1.1.2(Separator Vessels with Internals & Attach (PGMA-4321))
896,Manufacturing,MFG,2023-08-15,2024-02-26,,,04321,1.9.2.1.1.1.2(Separator Vessels with Internals & Attach (PGMA-4321))
897,Dispatch,DIS,2024-02-27,2024-03-27,,,04321,1.9.2.1.1.1.2(Separator Vessels with Internals & Attach (PGMA-4321))
898,SUPP FOR COLLECTING & SEPERATOR VESSEL(DD) (PGMA-4347),SUP,2023-01-25,2024-02-26,,,04347,"1.9.2.1.1.1(Separator, Storage Tanks and Supports (PG-04))"
899,Engineering,ENG,2023-01-25,2023-08-04,,,04347,1.9.2.1.1.1.3(SUPP FOR COLLECTING & SEPERATOR VESSEL(DD) (PGMA-4347))
900,Manufacturing,MFG,2023-08-05,2024-01-27,,,04347,1.9.2.1.1.1.3(SUPP FOR COLLECTING & SEPERATOR VESSEL(DD) (PGMA-4347))
901,Dispatch,DIS,2024-01-28,2024-02-26,,,04347,1.9.2.1.1.1.3(SUPP FOR COLLECTING & SEPERATOR VESSEL(DD) (PGMA-4347))
902,SUPP FOR COLLECTING & SEPERATOR VESSEL (PGMA-4547),SUP,2023-01-25,2024-02-26,,,4547,"1.9.2.1.1.1(Separator, Storage Tanks and Supports (PG-04))"
903,Engineering,ENG,2023-01-25,2023-08-04,,,04547,1.9.2.1.1.1.4(SUPP FOR COLLECTING & SEPERATOR VESSEL (PGMA-4547))
904,Manufacturing,MFG,2023-08-05,2024-01-27,,,04547,1.9.2.1.1.1.4(SUPP FOR COLLECTING & SEPERATOR VESSEL (PGMA-4547))
905,Dispatch,DIS,2024-01-28,2024-02-26,,,04547,1.9.2.1.1.1.4(SUPP FOR COLLECTING & SEPERATOR VESSEL (PGMA-4547))
906,Waterwall Headers (PG-05),SUP,2023-01-25,2024-11-27,,,PG05,1.9.2.1.1(Water Circulation System)
907,INLET FRONT LOWER WW HEADER (PGMA-5137),SUP,2023-01-25,2024-11-27,,,5137,1.9.2.1.1.2(Waterwall Headers (PG-05))
908,Engineering,ENG,2023-01-25,2023-12-20,,,05137,1.9.2.1.1.2.1(INLET FRONT LOWER WW HEADER (PGMA-5137))
909,Manufacturing,MFG,2023-12-21,2024-10-28,,,05137,1.9.2.1.1.2.1(INLET FRONT LOWER WW HEADER (PGMA-5137))
910,Dispatch,DIS,2024-10-29,2024-11-27,,,05137,1.9.2.1.1.2.1(INLET FRONT LOWER WW HEADER (PGMA-5137))
911,INLET REAR LOWER WW HEADER (PGMA-5147),SUP,2023-01-25,2024-11-27,,,5147,1.9.2.1.1.2(Waterwall Headers (PG-05))
912,Engineering,ENG,2023-01-25,2023-12-20,,,05147,1.9.2.1.1.2.2(INLET REAR LOWER WW HEADER (PGMA-5147))
913,Manufacturing,MFG,2023-12-21,2024-10-28,,,05147,1.9.2.1.1.2.2(INLET REAR LOWER WW HEADER (PGMA-5147))
914,Dispatch,DIS,2024-10-29,2024-11-27,,,05147,1.9.2.1.1.2.2(INLET REAR LOWER WW HEADER (PGMA-5147))
915,INLET SIDE LOWER WW HEADER (PGMA-5155),SUP,2023-01-25,2024-11-27,,,5155,1.9.2.1.1.2(Waterwall Headers (PG-05))
916,Engineering,ENG,2023-01-25,2023-12-20,,,05155,1.9.2.1.1.2.3(INLET SIDE LOWER WW HEADER (PGMA-5155))
917,Manufacturing,MFG,2023-12-21,2024-10-28,,,05155,1.9.2.1.1.2.3(INLET SIDE LOWER WW HEADER (PGMA-5155))
918,Dispatch,DIS,2024-10-29,2024-11-27,,,05155,1.9.2.1.1.2.3(INLET SIDE LOWER WW HEADER (PGMA-5155))
919,WATERWALL REAR HANGER OUTLET HDR (PGMA-5227),SUP,2023-01-25,2024-02-26,,,5227,1.9.2.1.1.2(Waterwall Headers (PG-05))
920,Engineering,ENG,2023-01-25,2023-08-04,,,05227,1.9.2.1.1.2.4(WATERWALL REAR HANGER OUTLET HDR (PGMA-5227))
921,Manufacturing,MFG,2023-08-05,2024-01-27,,,05227,1.9.2.1.1.2.4(WATERWALL REAR HANGER OUTLET HDR (PGMA-5227))
922,Dispatch,DIS,2024-01-28,2024-02-26,,,05227,1.9.2.1.1.2.4(WATERWALL REAR HANGER OUTLET HDR (PGMA-5227))
923,OUTLET FRONT UPPER WW HEADER (PGMA-5231),SUP,2023-01-25,2024-02-26,,,5231,1.9.2.1.1.2(Waterwall Headers (PG-05))
924,Engineering,ENG,2023-01-25,2023-08-04,,,05231,1.9.2.1.1.2.5(OUTLET FRONT UPPER WW HEADER (PGMA-5231))
925,Manufacturing,MFG,2023-08-05,2024-01-27,,,05231,1.9.2.1.1.2.5(OUTLET FRONT UPPER WW HEADER (PGMA-5231))
926,Dispatch,DIS,2024-01-28,2024-02-26,,,05231,1.9.2.1.1.2.5(OUTLET FRONT UPPER WW HEADER (PGMA-5231))
927,OUTLET SIDE UPPER WW HEADER (PGMA-5251),SUP,2023-01-25,2024-02-26,,,5251,1.9.2.1.1.2(Waterwall Headers (PG-05))
928,Engineering,ENG,2023-01-25,2023-08-04,,,05251,1.9.2.1.1.2.6(OUTLET SIDE UPPER WW HEADER (PGMA-5251))
929,Manufacturing,MFG,2023-08-05,2024-01-27,,,05251,1.9.2.1.1.2.6(OUTLET SIDE UPPER WW HEADER (PGMA-5251))
930,Dispatch,DIS,2024-01-28,2024-02-26,,,05251,1.9.2.1.1.2.6(OUTLET SIDE UPPER WW HEADER (PGMA-5251))
931,Furnace Rear wall Intermediate header (PGMA-5327),SUP,2023-01-25,2024-04-28,,,5327,1.9.2.1.1.2(Waterwall Headers (PG-05))
932,Engineering,ENG,2023-01-25,2023-09-05,,,05327,1.9.2.1.1.2.7(Furnace Rear wall Intermediate header (PGMA-5327))
933,Manufacturing,MFG,2023-09-06,2024-03-29,,,05327,1.9.2.1.1.2.7(Furnace Rear wall Intermediate header (PGMA-5327))
934,Dispatch,DIS,2024-03-30,2024-04-28,,,05327,1.9.2.1.1.2.7(Furnace Rear wall Intermediate header (PGMA-5327))
935,FRONT INTERMEDIATE HEADER (PGMA-5330),SUP,2023-01-25,2024-04-28,,,5330,1.9.2.1.1.2(Waterwall Headers (PG-05))
936,Engineering,ENG,2023-01-25,2023-09-05,,,05330,1.9.2.1.1.2.8(FRONT INTERMEDIATE HEADER (PGMA-5330))
937,Manufacturing,MFG,2023-09-06,2024-03-29,,,05330,1.9.2.1.1.2.8(FRONT INTERMEDIATE HEADER (PGMA-5330))
938,Dispatch,DIS,2024-03-30,2024-04-28,,,05330,1.9.2.1.1.2.8(FRONT INTERMEDIATE HEADER (PGMA-5330))
939,SIDE INTERMEDIATE HEADER (PGMA-5350),SUP,2023-01-25,2024-04-28,,,5350,1.9.2.1.1.2(Waterwall Headers (PG-05))
940,Engineering,ENG,2023-01-25,2023-09-05,,,05350,1.9.2.1.1.2.9(SIDE INTERMEDIATE HEADER (PGMA-5350))
941,Manufacturing,MFG,2023-09-06,2024-03-29,,,05350,1.9.2.1.1.2.9(SIDE INTERMEDIATE HEADER (PGMA-5350))
942,Dispatch,DIS,2024-03-30,2024-04-28,,,05350,1.9.2.1.1.2.9(SIDE INTERMEDIATE HEADER (PGMA-5350))
943,Waterwall Panels (PG-06),SUP,2023-01-25,2024-08-29,,,PG06,1.9.2.1.1(Water Circulation System)
944,UNCLASSIFIED BURNER PANEL (PGMA-6400),SUP,2023-01-25,2024-07-29,,,6400,1.9.2.1.1.3(Waterwall Panels (PG-06))
945,Engineering,ENG,2023-01-25,2023-10-26,,,06400,1.9.2.1.1.3.1(UNCLASSIFIED BURNER PANEL (PGMA-6400))
946,Manufacturing,MFG,2023-10-27,2024-06-29,,,06400,1.9.2.1.1.3.1(UNCLASSIFIED BURNER PANEL (PGMA-6400))
947,Dispatch,DIS,2024-06-30,2024-07-29,,,06400,1.9.2.1.1.3.1(UNCLASSIFIED BURNER PANEL (PGMA-6400))
948,BURNER PNL- OS (PGMA-6401),SUP,2023-01-25,2024-07-29,,,6401,1.9.2.1.1.3(Waterwall Panels (PG-06))
949,Engineering,ENG,2023-01-25,2023-10-26,,,06401,1.9.2.1.1.3.2(BURNER PNL- OS (PGMA-6401))
950,Manufacturing,MFG,2023-10-27,2024-06-29,,,06401,1.9.2.1.1.3.2(BURNER PNL- OS (PGMA-6401))
951,Dispatch,DIS,2024-06-30,2024-07-29,,,06401,1.9.2.1.1.3.2(BURNER PNL- OS (PGMA-6401))
952,FRONT INTERMEDIATE WW PNL -OS (PGMA-6434),SUP,2023-01-25,2024-05-29,,,6434,1.9.2.1.1.3(Waterwall Panels (PG-06))
953,Engineering,ENG,2023-01-25,2023-09-26,,,06434,1.9.2.1.1.3.3(FRONT INTERMEDIATE WW PNL -OS (PGMA-6434))
954,Manufacturing,MFG,2023-09-27,2024-04-29,,,06434,1.9.2.1.1.3.3(FRONT INTERMEDIATE WW PNL -OS (PGMA-6434))
955,Dispatch,DIS,2024-04-30,2024-05-29,,,06434,1.9.2.1.1.3.3(FRONT INTERMEDIATE WW PNL -OS (PGMA-6434))
956,FRONT WW LOWER PANEL-OS (PGMA-6437),SUP,2023-01-25,2024-08-29,,,6437,1.9.2.1.1.3(Waterwall Panels (PG-06))
957,Engineering,ENG,2023-01-25,2023-11-05,,,06437,1.9.2.1.1.3.4(FRONT WW LOWER PANEL-OS (PGMA-6437))
958,Manufacturing,MFG,2023-11-06,2024-07-30,,,06437,1.9.2.1.1.3.4(FRONT WW LOWER PANEL-OS (PGMA-6437))
959,Dispatch,DIS,2024-07-31,2024-08-29,,,06437,1.9.2.1.1.3.4(FRONT WW LOWER PANEL-OS (PGMA-6437))
960,REAR INTERMEDIATE WW PNL -OS (PGMA-6444),SUP,2023-01-25,2024-08-29,,,6444,1.9.2.1.1.3(Waterwall Panels (PG-06))
961,Engineering,ENG,2023-01-25,2023-11-05,,,06444,1.9.2.1.1.3.5(REAR INTERMEDIATE WW PNL -OS (PGMA-6444))
962,Manufacturing,MFG,2023-11-06,2024-07-30,,,06444,1.9.2.1.1.3.5(REAR INTERMEDIATE WW PNL -OS (PGMA-6444))
963,Dispatch,DIS,2024-07-31,2024-08-29,,,06444,1.9.2.1.1.3.5(REAR INTERMEDIATE WW PNL -OS (PGMA-6444))
964,SIDE UPPER WW PNL -OS (PGMA-6451),SUP,2023-01-25,2024-03-29,,,6451,1.9.2.1.1.3(Waterwall Panels (PG-06))
965,Engineering,ENG,2023-01-25,2023-08-14,,,06451,1.9.2.1.1.3.6(SIDE UPPER WW PNL -OS (PGMA-6451))
966,Manufacturing,MFG,2023-08-15,2024-02-28,,,06451,1.9.2.1.1.3.6(SIDE UPPER WW PNL -OS (PGMA-6451))
967,Dispatch,DIS,2024-02-29,2024-03-29,,,06451,1.9.2.1.1.3.6(SIDE UPPER WW PNL -OS (PGMA-6451))
968,SIDE INTERMEDIATE WW PNL -OS (PGMA-6453),SUP,2023-01-25,2024-03-29,,,6453,1.9.2.1.1.3(Waterwall Panels (PG-06))
969,Engineering,ENG,2023-01-25,2023-08-14,,,06453,1.9.2.1.1.3.7(SIDE INTERMEDIATE WW PNL -OS (PGMA-6453))
970,Manufacturing,MFG,2023-08-15,2024-02-28,,,06453,1.9.2.1.1.3.7(SIDE INTERMEDIATE WW PNL -OS (PGMA-6453))
971,Dispatch,DIS,2024-02-29,2024-03-29,,,06453,1.9.2.1.1.3.7(SIDE INTERMEDIATE WW PNL -OS (PGMA-6453))
972,SIDE LOWER WW PNL -OS (PGMA-6455),SUP,2023-01-25,2024-08-29,,,6455,1.9.2.1.1.3(Waterwall Panels (PG-06))
973,Engineering,ENG,2023-01-25,2023-11-05,,,06455,1.9.2.1.1.3.8(SIDE LOWER WW PNL -OS (PGMA-6455))
974,Manufacturing,MFG,2023-11-06,2024-07-30,,,06455,1.9.2.1.1.3.8(SIDE LOWER WW PNL -OS (PGMA-6455))
975,Dispatch,DIS,2024-07-31,2024-08-29,,,06455,1.9.2.1.1.3.8(SIDE LOWER WW PNL -OS (PGMA-6455))
976,BURNER PANELS WITH ATTACHMENT (PGMA-6500),SUP,2023-01-25,2024-07-29,,,6500,1.9.2.1.1.3(Waterwall Panels (PG-06))
977,Engineering,ENG,2023-01-25,2023-10-26,,,06500,1.9.2.1.1.3.9(BURNER PANELS WITH ATTACHMENT (PGMA-6500))
978,Manufacturing,MFG,2023-10-27,2024-06-29,,,06500,1.9.2.1.1.3.9(BURNER PANELS WITH ATTACHMENT (PGMA-6500))
979,Dispatch,DIS,2024-06-30,2024-07-29,,,06500,1.9.2.1.1.3.9(BURNER PANELS WITH ATTACHMENT (PGMA-6500))
980,SOFA PANELS -OS (PGMA-6501),SUP,2023-01-25,2024-07-29,,,6501,1.9.2.1.1.3(Waterwall Panels (PG-06))
981,Engineering,ENG,2023-01-25,2023-10-26,,,06501,1.9.2.1.1.3.10(SOFA PANELS -OS (PGMA-6501))
982,Manufacturing,MFG,2023-10-27,2024-06-29,,,06501,1.9.2.1.1.3.10(SOFA PANELS -OS (PGMA-6501))
983,Dispatch,DIS,2024-06-30,2024-07-29,,,06501,1.9.2.1.1.3.10(SOFA PANELS -OS (PGMA-6501))
984,FRONT UPPER WW PNL + ATCH (PGMA-6731),SUP,2023-01-25,2024-03-29,,,6731,1.9.2.1.1.3(Waterwall Panels (PG-06))
985,Engineering,ENG,2023-01-25,2023-08-14,,,06731,1.9.2.1.1.3.11(FRONT UPPER WW PNL + ATCH (PGMA-6731))
986,Manufacturing,MFG,2023-08-15,2024-02-28,,,06731,1.9.2.1.1.3.11(FRONT UPPER WW PNL + ATCH (PGMA-6731))
987,Dispatch,DIS,2024-02-29,2024-03-29,,,06731,1.9.2.1.1.3.11(FRONT UPPER WW PNL + ATCH (PGMA-6731))
988,Front Upper Corners Ww Panel + attachment (PGMA-6732),SUP,2023-01-25,2024-03-29,,,6732,1.9.2.1.1.3(Waterwall Panels (PG-06))
989,Engineering,ENG,2023-01-25,2023-08-14,,,06732,1.9.2.1.1.3.12(Front Upper Corners Ww Panel + attachment (PGMA-6732))
990,Manufacturing,MFG,2023-08-15,2024-02-28,,,06732,1.9.2.1.1.3.12(Front Upper Corners Ww Panel + attachment (PGMA-6732))
991,Dispatch,DIS,2024-02-29,2024-03-29,,,06732,1.9.2.1.1.3.12(Front Upper Corners Ww Panel + attachment (PGMA-6732))
992,FRONT INTERMEDIATE WW PNL + ATCH (PGMA-6734),SUP,2023-01-25,2024-05-29,,,6734,1.9.2.1.1.3(Waterwall Panels (PG-06))
993,Engineering,ENG,2023-01-25,2023-09-26,,,06734,1.9.2.1.1.3.13(FRONT INTERMEDIATE WW PNL + ATCH (PGMA-6734))
994,Manufacturing,MFG,2023-09-27,2024-04-29,,,06734,1.9.2.1.1.3.13(FRONT INTERMEDIATE WW PNL + ATCH (PGMA-6734))
995,Dispatch,DIS,2024-04-30,2024-05-29,,,06734,1.9.2.1.1.3.13(FRONT INTERMEDIATE WW PNL + ATCH (PGMA-6734))
996,FUR LWR FRNT SPIRAL PANELS WITH I/L TERM TUBES (PGMA-6737),SUP,2023-01-25,2024-08-29,,,6737,1.9.2.1.1.3(Waterwall Panels (PG-06))
997,Engineering,ENG,2023-01-25,2023-11-05,,,06737,1.9.2.1.1.3.14(FUR LWR FRNT SPIRAL PANELS WITH I/L TERM TUBES (PGMA-6737))
998,Manufacturing,MFG,2023-11-06,2024-07-30,,,06737,1.9.2.1.1.3.14(FUR LWR FRNT SPIRAL PANELS WITH I/L TERM TUBES (PGMA-6737))
999,Dispatch,DIS,2024-07-31,2024-08-29,,,06737,1.9.2.1.1.3.14(FUR LWR FRNT SPIRAL PANELS WITH I/L TERM TUBES (PGMA-6737))
1000,REAR UPPER WW PNL + ATCH (PGMA-6741),SUP,2023-01-25,2024-04-28,,,6741,1.9.2.1.1.3(Waterwall Panels (PG-06))
1001,Engineering,ENG,2023-01-25,2023-09-05,,,06741,1.9.2.1.1.3.15(REAR UPPER WW PNL + ATCH (PGMA-6741))
1002,Manufacturing,MFG,2023-09-06,2024-03-29,,,06741,1.9.2.1.1.3.15(REAR UPPER WW PNL + ATCH (PGMA-6741))
1003,Dispatch,DIS,2024-03-30,2024-04-28,,,06741,1.9.2.1.1.3.15(REAR UPPER WW PNL + ATCH (PGMA-6741))
1004,FUR UPPER REAR SPIRAL PANEL (PGMA-6744),SUP,2023-01-25,2024-07-29,,,6744,1.9.2.1.1.3(Waterwall Panels (PG-06))
1005,Engineering,ENG,2023-01-25,2023-10-26,,,06744,1.9.2.1.1.3.16(FUR UPPER REAR SPIRAL PANEL (PGMA-6744))
1006,Manufacturing,MFG,2023-10-27,2024-06-29,,,06744,1.9.2.1.1.3.16(FUR UPPER REAR SPIRAL PANEL (PGMA-6744))
1007,Dispatch,DIS,2024-06-30,2024-07-29,,,06744,1.9.2.1.1.3.16(FUR UPPER REAR SPIRAL PANEL (PGMA-6744))
1008,FUR LWR REAR SPIRAL PANELS WITH I/T TERM TUBES (PGMA-6747),SUP,2023-01-25,2024-08-29,,,6747,1.9.2.1.1.3(Waterwall Panels (PG-06))
1009,Engineering,ENG,2023-01-25,2023-11-05,,,06747,1.9.2.1.1.3.17(FUR LWR REAR SPIRAL PANELS WITH I/T TERM TUBES (PGMA-6747))
1010,Manufacturing,MFG,2023-11-06,2024-07-30,,,06747,1.9.2.1.1.3.17(FUR LWR REAR SPIRAL PANELS WITH I/T TERM TUBES (PGMA-6747))
1011,Dispatch,DIS,2024-07-31,2024-08-29,,,06747,1.9.2.1.1.3.17(FUR LWR REAR SPIRAL PANELS WITH I/T TERM TUBES (PGMA-6747))
1012,SIDE UPPER WW PNL + ATCH (PGMA-6751),SUP,2023-01-25,2024-03-29,,,6751,1.9.2.1.1.3(Waterwall Panels (PG-06))
1013,Engineering,ENG,2023-01-25,2023-08-14,,,06751,1.9.2.1.1.3.18(SIDE UPPER WW PNL + ATCH (PGMA-6751))
1014,Manufacturing,MFG,2023-08-15,2024-02-28,,,06751,1.9.2.1.1.3.18(SIDE UPPER WW PNL + ATCH (PGMA-6751))
1015,Dispatch,DIS,2024-02-29,2024-03-29,,,06751,1.9.2.1.1.3.18(SIDE UPPER WW PNL + ATCH (PGMA-6751))
1016,Furnace vertical wall panels sides L&R (PGMA-6752),SUP,2023-01-25,2024-04-28,,,6752,1.9.2.1.1.3(Waterwall Panels (PG-06))
1017,Engineering,ENG,2023-01-25,2023-09-05,,,06752,1.9.2.1.1.3.19(Furnace vertical wall panels sides L&R (PGMA-6752))
1018,Manufacturing,MFG,2023-09-06,2024-03-29,,,06752,1.9.2.1.1.3.19(Furnace vertical wall panels sides L&R (PGMA-6752))
1019,Dispatch,DIS,2024-03-30,2024-04-28,,,06752,1.9.2.1.1.3.19(Furnace vertical wall panels sides L&R (PGMA-6752))
1020,FUR UPPER SIDE SPIRAL PANELS (PGMA-6753),SUP,2023-01-25,2024-05-29,,,6753,1.9.2.1.1.3(Waterwall Panels (PG-06))
1021,Engineering,ENG,2023-01-25,2023-09-26,,,06753,1.9.2.1.1.3.20(FUR UPPER SIDE SPIRAL PANELS (PGMA-6753))
1022,Manufacturing,MFG,2023-09-27,2024-04-29,,,06753,1.9.2.1.1.3.20(FUR UPPER SIDE SPIRAL PANELS (PGMA-6753))
1023,Dispatch,DIS,2024-04-30,2024-05-29,,,06753,1.9.2.1.1.3.20(FUR UPPER SIDE SPIRAL PANELS (PGMA-6753))
1024,SIDE LOWER WW PNL + ATCH (PGMA-6755),SUP,2023-01-25,2024-08-29,,,6755,1.9.2.1.1.3(Waterwall Panels (PG-06))
1025,Engineering,ENG,2023-01-25,2023-11-05,,,06755,1.9.2.1.1.3.21(SIDE LOWER WW PNL + ATCH (PGMA-6755))
1026,Manufacturing,MFG,2023-11-06,2024-07-30,,,06755,1.9.2.1.1.3.21(SIDE LOWER WW PNL + ATCH (PGMA-6755))
1027,Dispatch,DIS,2024-07-31,2024-08-29,,,06755,1.9.2.1.1.3.21(SIDE LOWER WW PNL + ATCH (PGMA-6755))
1028,Circulation System Components (PG-07),SUP,2022-12-26,2024-09-27,,,PG07,1.9.2.1.1(Water Circulation System)
1029,Separator-Collecting Vessel Connecting Link (PGMA-7110),SUP,2023-01-25,2024-02-26,,,7110,1.9.2.1.1.4(Circulation System Components (PG-07))
1030,Engineering,ENG,2023-01-25,2023-08-04,,,07110,1.9.2.1.1.4.1(Separator-Collecting Vessel Connecting Link (PGMA-7110))
1031,Manufacturing,MFG,2023-08-05,2024-01-27,,,07110,1.9.2.1.1.4.1(Separator-Collecting Vessel Connecting Link (PGMA-7110))
1032,Dispatch,DIS,2024-01-28,2024-02-26,,,07110,1.9.2.1.1.4.1(Separator-Collecting Vessel Connecting Link (PGMA-7110))
1033,Mixing Sphere (PGMA-7125),SUP,2023-01-25,2024-04-28,,,7125,1.9.2.1.1.4(Circulation System Components (PG-07))
1034,Engineering,ENG,2023-01-25,2023-09-05,,,07125,1.9.2.1.1.4.2(Mixing Sphere (PGMA-7125))
1035,Manufacturing,MFG,2023-09-06,2024-03-29,,,07125,1.9.2.1.1.4.2(Mixing Sphere (PGMA-7125))
1036,Dispatch,DIS,2024-03-30,2024-04-28,,,07125,1.9.2.1.1.4.2(Mixing Sphere (PGMA-7125))
1037,FURNACE SCREEN TUBES (PGMA-7223),SUP,2023-01-25,2024-05-29,,,7223,1.9.2.1.1.4(Circulation System Components (PG-07))
1038,Engineering,ENG,2023-01-25,2023-09-26,,,07223,1.9.2.1.1.4.3(FURNACE SCREEN TUBES (PGMA-7223))
1039,Manufacturing,MFG,2023-09-27,2024-04-29,,,07223,1.9.2.1.1.4.3(FURNACE SCREEN TUBES (PGMA-7223))
1040,Dispatch,DIS,2024-04-30,2024-05-29,,,07223,1.9.2.1.1.4.3(FURNACE SCREEN TUBES (PGMA-7223))
1041,LOWER CORNER TRANSITION TUBES (PGMA-7231),SUP,2023-01-25,2024-09-27,,,7231,1.9.2.1.1.4(Circulation System Components (PG-07))
1042,Engineering,ENG,2023-01-25,2023-11-20,,,07231,1.9.2.1.1.4.4(LOWER CORNER TRANSITION TUBES (PGMA-7231))
1043,Manufacturing,MFG,2023-11-21,2024-08-28,,,07231,1.9.2.1.1.4.4(LOWER CORNER TRANSITION TUBES (PGMA-7231))
1044,Dispatch,DIS,2024-08-29,2024-09-27,,,07231,1.9.2.1.1.4.4(LOWER CORNER TRANSITION TUBES (PGMA-7231))
1045,UPPER CORNER TRANSITION TUBES (PGMA-7232),SUP,2023-01-25,2024-03-29,,,7232,1.9.2.1.1.4(Circulation System Components (PG-07))
1046,Engineering,ENG,2023-01-25,2023-08-14,,,07232,1.9.2.1.1.4.5(UPPER CORNER TRANSITION TUBES (PGMA-7232))
1047,Manufacturing,MFG,2023-08-15,2024-02-28,,,07232,1.9.2.1.1.4.5(UPPER CORNER TRANSITION TUBES (PGMA-7232))
1048,Dispatch,DIS,2024-02-29,2024-03-29,,,07232,1.9.2.1.1.4.5(UPPER CORNER TRANSITION TUBES (PGMA-7232))
1049,WW FRONT HEADER SUSPENSION-DD (PGMA-7302),SUP,2022-12-26,2024-01-27,,,7302,1.9.2.1.1.4(Circulation System Components (PG-07))
1050,Engineering,ENG,2022-12-26,2023-07-05,,,07302,1.9.2.1.1.4.6(WW FRONT HEADER SUSPENSION-DD (PGMA-7302))
1051,Manufacturing,MFG,2023-07-06,2023-12-28,,,07302,1.9.2.1.1.4.6(WW FRONT HEADER SUSPENSION-DD (PGMA-7302))
1052,Dispatch,DIS,2023-12-29,2024-01-27,,,07302,1.9.2.1.1.4.6(WW FRONT HEADER SUSPENSION-DD (PGMA-7302))
1053,WW SIDE HEADER SUSPENSION-DD (PGMA-7303),SUP,2022-12-26,2024-01-27,,,7303,1.9.2.1.1.4(Circulation System Components (PG-07))
1054,Engineering,ENG,2022-12-26,2023-07-05,,,07303,1.9.2.1.1.4.7(WW SIDE HEADER SUSPENSION-DD (PGMA-7303))
1055,Manufacturing,MFG,2023-07-06,2023-12-28,,,07303,1.9.2.1.1.4.7(WW SIDE HEADER SUSPENSION-DD (PGMA-7303))
1056,Dispatch,DIS,2023-12-29,2024-01-27,,,07303,1.9.2.1.1.4.7(WW SIDE HEADER SUSPENSION-DD (PGMA-7303))
1057,FURNACE WALL SUPPORTS FRONT-DD (PGMA-7309),SUP,2023-01-25,2024-03-29,,,7309,1.9.2.1.1.4(Circulation System Components (PG-07))
1058,Engineering,ENG,2023-01-25,2023-08-14,,,07309,1.9.2.1.1.4.8(FURNACE WALL SUPPORTS FRONT-DD (PGMA-7309))
1059,Manufacturing,MFG,2023-08-15,2024-02-28,,,07309,1.9.2.1.1.4.8(FURNACE WALL SUPPORTS FRONT-DD (PGMA-7309))
1060,Dispatch,DIS,2024-02-29,2024-03-29,,,07309,1.9.2.1.1.4.8(FURNACE WALL SUPPORTS FRONT-DD (PGMA-7309))
1061,FUR SIDE RISERS (PGMA-7315),SUP,2023-01-25,2024-03-29,,,7315,1.9.2.1.1.4(Circulation System Components (PG-07))
1062,Engineering,ENG,2023-01-25,2023-08-14,,,07315,1.9.2.1.1.4.9(FUR SIDE RISERS (PGMA-7315))
1063,Manufacturing,MFG,2023-08-15,2024-02-28,,,07315,1.9.2.1.1.4.9(FUR SIDE RISERS (PGMA-7315))
1064,Dispatch,DIS,2024-02-29,2024-03-29,,,07315,1.9.2.1.1.4.9(FUR SIDE RISERS (PGMA-7315))
1065,FUR REAR RISERS (PGMA-7316),SUP,2023-01-25,2024-03-29,,,7316,1.9.2.1.1.4(Circulation System Components (PG-07))
1066,Engineering,ENG,2023-01-25,2023-08-14,,,07316,1.9.2.1.1.4.10(FUR REAR RISERS (PGMA-7316))
1067,Manufacturing,MFG,2023-08-15,2024-02-28,,,07316,1.9.2.1.1.4.10(FUR REAR RISERS (PGMA-7316))
1068,Dispatch,DIS,2024-02-29,2024-03-29,,,07316,1.9.2.1.1.4.10(FUR REAR RISERS (PGMA-7316))
1069,FUR FRNT RISERS (PGMA-7318),SUP,2023-01-25,2024-03-29,,,7318,1.9.2.1.1.4(Circulation System Components (PG-07))
1070,Engineering,ENG,2023-01-25,2023-08-14,,,07318,1.9.2.1.1.4.11(FUR FRNT RISERS (PGMA-7318))
1071,Manufacturing,MFG,2023-08-15,2024-02-28,,,07318,1.9.2.1.1.4.11(FUR FRNT RISERS (PGMA-7318))
1072,Dispatch,DIS,2024-02-29,2024-03-29,,,07318,1.9.2.1.1.4.11(FUR FRNT RISERS (PGMA-7318))
1073,RISER TUBE SUPPORT-DD (PGMA-7331),SUP,2023-01-25,2024-02-26,,,7331,1.9.2.1.1.4(Circulation System Components (PG-07))
1074,Engineering,ENG,2023-01-25,2023-08-04,,,07331,1.9.2.1.1.4.12(RISER TUBE SUPPORT-DD (PGMA-7331))
1075,Manufacturing,MFG,2023-08-05,2024-01-27,,,07331,1.9.2.1.1.4.12(RISER TUBE SUPPORT-DD (PGMA-7331))
1076,Dispatch,DIS,2024-01-28,2024-02-26,,,07331,1.9.2.1.1.4.12(RISER TUBE SUPPORT-DD (PGMA-7331))
1077,FURNACE SPIRAL WALL SUPPORTS-DD (PGMA-7360),SUP,2023-01-25,2024-08-29,,,7360,1.9.2.1.1.4(Circulation System Components (PG-07))
1078,Engineering,ENG,2023-01-25,2023-11-05,,,07360,1.9.2.1.1.4.13(FURNACE SPIRAL WALL SUPPORTS-DD (PGMA-7360))
1079,Manufacturing,MFG,2023-11-06,2024-07-30,,,07360,1.9.2.1.1.4.13(FURNACE SPIRAL WALL SUPPORTS-DD (PGMA-7360))
1080,Dispatch,DIS,2024-07-31,2024-08-29,,,07360,1.9.2.1.1.4.13(FURNACE SPIRAL WALL SUPPORTS-DD (PGMA-7360))
1081,FURNACE WALL SUPP REAR-DD (PGMA-7361),SUP,2023-01-25,2024-03-29,,,7361,1.9.2.1.1.4(Circulation System Components (PG-07))
1082,Engineering,ENG,2023-01-25,2023-08-14,,,07361,1.9.2.1.1.4.14(FURNACE WALL SUPP REAR-DD (PGMA-7361))
1083,Manufacturing,MFG,2023-08-15,2024-02-28,,,07361,1.9.2.1.1.4.14(FURNACE WALL SUPP REAR-DD (PGMA-7361))
1084,Dispatch,DIS,2024-02-29,2024-03-29,,,07361,1.9.2.1.1.4.14(FURNACE WALL SUPP REAR-DD (PGMA-7361))
1085,FURNACE WALL SUPPORTS SIDES L & R-DD (PGMA-7362),SUP,2023-01-25,2024-03-29,,,7362,1.9.2.1.1.4(Circulation System Components (PG-07))
1086,Engineering,ENG,2023-01-25,2023-08-14,,,07362,1.9.2.1.1.4.15(FURNACE WALL SUPPORTS SIDES L & R-DD (PGMA-7362))
1087,Manufacturing,MFG,2023-08-15,2024-02-28,,,07362,1.9.2.1.1.4.15(FURNACE WALL SUPPORTS SIDES L & R-DD (PGMA-7362))
1088,Dispatch,DIS,2024-02-29,2024-03-29,,,07362,1.9.2.1.1.4.15(FURNACE WALL SUPPORTS SIDES L & R-DD (PGMA-7362))
1089,CONSUMABLES &Erection MATERIALS-DD (PGMA-7393),SUP,2022-12-26,2023-12-27,,,7393,1.9.2.1.1.4(Circulation System Components (PG-07))
1090,Engineering,ENG,2022-12-26,2023-05-26,,,07393,1.9.2.1.1.4.16(CONSUMABLES &Erection MATERIALS-DD (PGMA-7393))
1091,Manufacturing,MFG,2023-05-27,2023-11-27,,,07393,1.9.2.1.1.4.16(CONSUMABLES &Erection MATERIALS-DD (PGMA-7393))
1092,Dispatch,DIS,2023-11-28,2023-12-27,,,07393,1.9.2.1.1.4.16(CONSUMABLES &Erection MATERIALS-DD (PGMA-7393))
1093,COMBUSTOR OUTLET HEADER SUPPORTS (PGMA-7402),SUP,2022-12-26,2024-01-27,,,7402,1.9.2.1.1.4(Circulation System Components (PG-07))
1094,Engineering,ENG,2022-12-26,2023-07-05,,,07402,1.9.2.1.1.4.17(COMBUSTOR OUTLET HEADER SUPPORTS (PGMA-7402))
1095,Manufacturing,MFG,2023-07-06,2023-12-28,,,07402,1.9.2.1.1.4.17(COMBUSTOR OUTLET HEADER SUPPORTS (PGMA-7402))
1096,Dispatch,DIS,2023-12-29,2024-01-27,,,07402,1.9.2.1.1.4.17(COMBUSTOR OUTLET HEADER SUPPORTS (PGMA-7402))
1097,WW SIDE HEADER SUSPENSION (PGMA-7403),SUP,2022-12-26,2024-01-27,,,7403,1.9.2.1.1.4(Circulation System Components (PG-07))
1098,Engineering,ENG,2022-12-26,2023-07-05,,,07403,1.9.2.1.1.4.18(WW SIDE HEADER SUSPENSION (PGMA-7403))
1099,Manufacturing,MFG,2023-07-06,2023-12-28,,,07403,1.9.2.1.1.4.18(WW SIDE HEADER SUSPENSION (PGMA-7403))
1100,Dispatch,DIS,2023-12-29,2024-01-27,,,07403,1.9.2.1.1.4.18(WW SIDE HEADER SUSPENSION (PGMA-7403))
1101,WW SCREEN HEADER SUSPENSION (PGMA-7405),SUP,2022-12-26,2024-01-27,,,7405,1.9.2.1.1.4(Circulation System Components (PG-07))
1102,Engineering,ENG,2022-12-26,2023-07-05,,,07405,1.9.2.1.1.4.19(WW SCREEN HEADER SUSPENSION (PGMA-7405))
1103,Manufacturing,MFG,2023-07-06,2023-12-28,,,07405,1.9.2.1.1.4.19(WW SCREEN HEADER SUSPENSION (PGMA-7405))
1104,Dispatch,DIS,2023-12-29,2024-01-27,,,07405,1.9.2.1.1.4.19(WW SCREEN HEADER SUSPENSION (PGMA-7405))
1105,Furnace wall Supports front (PGMA-7409),SUP,2023-01-25,2024-03-29,,,7409,1.9.2.1.1.4(Circulation System Components (PG-07))
1106,Engineering,ENG,2023-01-25,2023-08-14,,,07409,1.9.2.1.1.4.20(Furnace wall Supports front (PGMA-7409))
1107,Manufacturing,MFG,2023-08-15,2024-02-28,,,07409,1.9.2.1.1.4.20(Furnace wall Supports front (PGMA-7409))
1108,Dispatch,DIS,2024-02-29,2024-03-29,,,07409,1.9.2.1.1.4.20(Furnace wall Supports front (PGMA-7409))
1109,FURNACE SCREEN TUBES-OS (PGMA-7423),SUP,2023-01-25,2024-05-29,,,7423,1.9.2.1.1.4(Circulation System Components (PG-07))
1110,Engineering,ENG,2023-01-25,2023-09-26,,,07423,1.9.2.1.1.4.21(FURNACE SCREEN TUBES-OS (PGMA-7423))
1111,Manufacturing,MFG,2023-09-27,2024-04-29,,,07423,1.9.2.1.1.4.21(FURNACE SCREEN TUBES-OS (PGMA-7423))
1112,Dispatch,DIS,2024-04-30,2024-05-29,,,07423,1.9.2.1.1.4.21(FURNACE SCREEN TUBES-OS (PGMA-7423))
1113,RISER TUBE SUPPORT (PGMA-7431),SUP,2023-01-25,2024-02-26,,,7431,1.9.2.1.1.4(Circulation System Components (PG-07))
1114,Engineering,ENG,2023-01-25,2023-08-04,,,07431,1.9.2.1.1.4.22(RISER TUBE SUPPORT (PGMA-7431))
1115,Manufacturing,MFG,2023-08-05,2024-01-27,,,07431,1.9.2.1.1.4.22(RISER TUBE SUPPORT (PGMA-7431))
1116,Dispatch,DIS,2024-01-28,2024-02-26,,,07431,1.9.2.1.1.4.22(RISER TUBE SUPPORT (PGMA-7431))
1117,Furnace Spiral Wall supports Misc. items (PGMA-7460),SUP,2023-01-25,2024-08-29,,,7460,1.9.2.1.1.4(Circulation System Components (PG-07))
1118,Engineering,ENG,2023-01-25,2023-11-05,,,07460,1.9.2.1.1.4.23(Furnace Spiral Wall supports Misc. items (PGMA-7460))
1119,Manufacturing,MFG,2023-11-06,2024-07-30,,,07460,1.9.2.1.1.4.23(Furnace Spiral Wall supports Misc. items (PGMA-7460))
1120,Dispatch,DIS,2024-07-31,2024-08-29,,,07460,1.9.2.1.1.4.23(Furnace Spiral Wall supports Misc. items (PGMA-7460))
1121,Furnace wall Supports rear (PGMA-7461),SUP,2023-01-25,2024-03-29,,,7461,1.9.2.1.1.4(Circulation System Components (PG-07))
1122,Engineering,ENG,2023-01-25,2023-08-14,,,07461,1.9.2.1.1.4.24(Furnace wall Supports rear (PGMA-7461))
1123,Manufacturing,MFG,2023-08-15,2024-02-28,,,07461,1.9.2.1.1.4.24(Furnace wall Supports rear (PGMA-7461))
1124,Dispatch,DIS,2024-02-29,2024-03-29,,,07461,1.9.2.1.1.4.24(Furnace wall Supports rear (PGMA-7461))
1125,Furnace wall Supports Sides L & R (PGMA-7462),SUP,2023-01-25,2024-03-29,,,7462,1.9.2.1.1.4(Circulation System Components (PG-07))
1126,Engineering,ENG,2023-01-25,2023-08-14,,,07462,1.9.2.1.1.4.25(Furnace wall Supports Sides L & R (PGMA-7462))
1127,Manufacturing,MFG,2023-08-15,2024-02-28,,,07462,1.9.2.1.1.4.25(Furnace wall Supports Sides L & R (PGMA-7462))
1128,Dispatch,DIS,2024-02-29,2024-03-29,,,07462,1.9.2.1.1.4.25(Furnace wall Supports Sides L & R (PGMA-7462))
1129,EVAPORATOR COILS (PGMA-7502),SUP,2022-12-26,2024-01-27,,,7502,1.9.2.1.1.4(Circulation System Components (PG-07))
1130,Engineering,ENG,2022-12-26,2023-07-05,,,07502,1.9.2.1.1.4.26(EVAPORATOR COILS (PGMA-7502))
1131,Manufacturing,MFG,2023-07-06,2023-12-28,,,07502,1.9.2.1.1.4.26(EVAPORATOR COILS (PGMA-7502))
1132,Dispatch,DIS,2023-12-29,2024-01-27,,,07502,1.9.2.1.1.4.26(EVAPORATOR COILS (PGMA-7502))
1133,EVAPORATOR COILS (PGMA-7503),SUP,2022-12-26,2024-01-27,,,7503,1.9.2.1.1.4(Circulation System Components (PG-07))
1134,Engineering,ENG,2022-12-26,2023-07-05,,,07503,1.9.2.1.1.4.27(EVAPORATOR COILS (PGMA-7503))
1135,Manufacturing,MFG,2023-07-06,2023-12-28,,,07503,1.9.2.1.1.4.27(EVAPORATOR COILS (PGMA-7503))
1136,Dispatch,DIS,2023-12-29,2024-01-27,,,07503,1.9.2.1.1.4.27(EVAPORATOR COILS (PGMA-7503))
1137,MODULE SUPPORT - IP (PGMA-7505),SUP,2022-12-26,2024-01-27,,,7505,1.9.2.1.1.4(Circulation System Components (PG-07))
1138,Engineering,ENG,2022-12-26,2023-07-05,,,07505,1.9.2.1.1.4.28(MODULE SUPPORT - IP (PGMA-7505))
1139,Manufacturing,MFG,2023-07-06,2023-12-28,,,07505,1.9.2.1.1.4.28(MODULE SUPPORT - IP (PGMA-7505))
1140,Dispatch,DIS,2023-12-29,2024-01-27,,,07505,1.9.2.1.1.4.28(MODULE SUPPORT - IP (PGMA-7505))
1141,RISER TUBE SUPPORT-SHOP (PGMA-7531),SUP,2023-01-25,2024-02-26,,,7531,1.9.2.1.1.4(Circulation System Components (PG-07))
1142,Engineering,ENG,2023-01-25,2023-08-04,,,07531,1.9.2.1.1.4.29(RISER TUBE SUPPORT-SHOP (PGMA-7531))
1143,Manufacturing,MFG,2023-08-05,2024-01-27,,,07531,1.9.2.1.1.4.29(RISER TUBE SUPPORT-SHOP (PGMA-7531))
1144,Dispatch,DIS,2024-01-28,2024-02-26,,,07531,1.9.2.1.1.4.29(RISER TUBE SUPPORT-SHOP (PGMA-7531))
1145,FURNACE SPIRAL WALL MISC ITEMS-SHOP (PGMA-7560),SUP,2023-01-25,2024-08-29,,,7560,1.9.2.1.1.4(Circulation System Components (PG-07))
1146,Engineering,ENG,2023-01-25,2023-11-05,,,07560,1.9.2.1.1.4.30(FURNACE SPIRAL WALL MISC ITEMS-SHOP (PGMA-7560))
1147,Manufacturing,MFG,2023-11-06,2024-07-30,,,07560,1.9.2.1.1.4.30(FURNACE SPIRAL WALL MISC ITEMS-SHOP (PGMA-7560))
1148,Dispatch,DIS,2024-07-31,2024-08-29,,,07560,1.9.2.1.1.4.30(FURNACE SPIRAL WALL MISC ITEMS-SHOP (PGMA-7560))
1149,INDEGENOUS ELECTRODE (PGMA-7991),SUP,2022-12-26,2023-12-27,,,7991,1.9.2.1.1.4(Circulation System Components (PG-07))
1150,Engineering,ENG,2022-12-26,2023-05-26,,,07991,1.9.2.1.1.4.31(INDEGENOUS ELECTRODE (PGMA-7991))
1151,Manufacturing,MFG,2023-05-27,2023-11-27,,,07991,1.9.2.1.1.4.31(INDEGENOUS ELECTRODE (PGMA-7991))
1152,Dispatch,DIS,2023-11-28,2023-12-27,,,07991,1.9.2.1.1.4.31(INDEGENOUS ELECTRODE (PGMA-7991))
1153,IMPORTED ELECTRODES (PGMA-7992),SUP,2023-01-25,2024-03-29,,,7992,1.9.2.1.1.4(Circulation System Components (PG-07))
1154,Engineering,ENG,2023-01-25,2023-08-14,,,07992,1.9.2.1.1.4.32(IMPORTED ELECTRODES (PGMA-7992))
1155,Manufacturing,MFG,2023-08-15,2024-02-28,,,07992,1.9.2.1.1.4.32(IMPORTED ELECTRODES (PGMA-7992))
1156,Dispatch,DIS,2024-02-29,2024-03-29,,,07992,1.9.2.1.1.4.32(IMPORTED ELECTRODES (PGMA-7992))
1157,CONSUMABLES &Erection MATERIALS (PGMA-7993),SUP,2022-12-26,2023-12-27,,,7993,1.9.2.1.1.4(Circulation System Components (PG-07))
1158,Engineering,ENG,2022-12-26,2023-05-26,,,07993,1.9.2.1.1.4.33(CONSUMABLES &Erection MATERIALS (PGMA-7993))
1159,Manufacturing,MFG,2023-05-27,2023-11-27,,,07993,1.9.2.1.1.4.33(CONSUMABLES &Erection MATERIALS (PGMA-7993))
1160,Dispatch,DIS,2023-11-28,2023-12-27,,,07993,1.9.2.1.1.4.33(CONSUMABLES &Erection MATERIALS (PGMA-7993))
1161,Buckstays and Framing (PG-08),SUP,2023-01-25,2024-10-27,,,PG08,1.9.2.1.1(Water Circulation System)
1162,FURNACE UPPER BUCKSTAYS- FRONT & REAR (PGMA-8001),SUP,2023-01-25,2024-03-29,,,8001,1.9.2.1.1.5(Buckstays and Framing (PG-08))
1163,Engineering,ENG,2023-01-25,2023-08-14,,,08001,1.9.2.1.1.5.1(FURNACE UPPER BUCKSTAYS- FRONT & REAR (PGMA-8001))
1164,Manufacturing,MFG,2023-08-15,2024-02-28,,,08001,1.9.2.1.1.5.1(FURNACE UPPER BUCKSTAYS- FRONT & REAR (PGMA-8001))
1165,Dispatch,DIS,2024-02-29,2024-03-29,,,08001,1.9.2.1.1.5.1(FURNACE UPPER BUCKSTAYS- FRONT & REAR (PGMA-8001))
1166,FURNACE UPPER BUCKSTAYS - SIDE (PGMA-8003),SUP,2023-01-25,2024-03-29,,,8003,1.9.2.1.1.5(Buckstays and Framing (PG-08))
1167,Engineering,ENG,2023-01-25,2023-08-14,,,08003,1.9.2.1.1.5.2(FURNACE UPPER BUCKSTAYS - SIDE (PGMA-8003))
1168,Manufacturing,MFG,2023-08-15,2024-02-28,,,08003,1.9.2.1.1.5.2(FURNACE UPPER BUCKSTAYS - SIDE (PGMA-8003))
1169,Dispatch,DIS,2024-02-29,2024-03-29,,,08003,1.9.2.1.1.5.2(FURNACE UPPER BUCKSTAYS - SIDE (PGMA-8003))
1170,FURNACE INTER BUCKSTAYS (PGMA-8006),SUP,2023-01-25,2024-09-27,,,8006,1.9.2.1.1.5(Buckstays and Framing (PG-08))
1171,Engineering,ENG,2023-01-25,2023-11-20,,,08006,1.9.2.1.1.5.3(FURNACE INTER BUCKSTAYS (PGMA-8006))
1172,Manufacturing,MFG,2023-11-21,2024-08-28,,,08006,1.9.2.1.1.5.3(FURNACE INTER BUCKSTAYS (PGMA-8006))
1173,Dispatch,DIS,2024-08-29,2024-09-27,,,08006,1.9.2.1.1.5.3(FURNACE INTER BUCKSTAYS (PGMA-8006))
1174,FURNACE LOWER BUCKSTAYS (PGMA-8007),SUP,2023-01-25,2024-10-27,,,8007,1.9.2.1.1.5(Buckstays and Framing (PG-08))
1175,Engineering,ENG,2023-01-25,2023-12-05,,,08007,1.9.2.1.1.5.4(FURNACE LOWER BUCKSTAYS (PGMA-8007))
1176,Manufacturing,MFG,2023-12-06,2024-09-27,,,08007,1.9.2.1.1.5.4(FURNACE LOWER BUCKSTAYS (PGMA-8007))
1177,Dispatch,DIS,2024-09-28,2024-10-27,,,08007,1.9.2.1.1.5.4(FURNACE LOWER BUCKSTAYS (PGMA-8007))
1178,FURNACE REAR ARCH BUCKSTAYS (PGMA-8111),SUP,2023-01-25,2024-08-29,,,8111,1.9.2.1.1.5(Buckstays and Framing (PG-08))
1179,Engineering,ENG,2023-01-25,2023-11-05,,,08111,1.9.2.1.1.5.5(FURNACE REAR ARCH BUCKSTAYS (PGMA-8111))
1180,Manufacturing,MFG,2023-11-06,2024-07-30,,,08111,1.9.2.1.1.5.5(FURNACE REAR ARCH BUCKSTAYS (PGMA-8111))
1181,Dispatch,DIS,2024-07-31,2024-08-29,,,08111,1.9.2.1.1.5.5(FURNACE REAR ARCH BUCKSTAYS (PGMA-8111))
1182,UPPER BACK PASS BUCKSTAY (PGMA-8501),SUP,2023-01-25,2024-03-29,,,8501,1.9.2.1.1.5(Buckstays and Framing (PG-08))
1183,Engineering,ENG,2023-01-25,2023-08-14,,,08501,1.9.2.1.1.5.6(UPPER BACK PASS BUCKSTAY (PGMA-8501))
1184,Manufacturing,MFG,2023-08-15,2024-02-28,,,08501,1.9.2.1.1.5.6(UPPER BACK PASS BUCKSTAY (PGMA-8501))
1185,Dispatch,DIS,2024-02-29,2024-03-29,,,08501,1.9.2.1.1.5.6(UPPER BACK PASS BUCKSTAY (PGMA-8501))
1186,FURNACE BACK PASS BUCKSTAYS -SIDE (PGMA-8503),SUP,2023-01-25,2024-03-29,,,8503,1.9.2.1.1.5(Buckstays and Framing (PG-08))
1187,Engineering,ENG,2023-01-25,2023-08-14,,,08503,1.9.2.1.1.5.7(FURNACE BACK PASS BUCKSTAYS -SIDE (PGMA-8503))
1188,Manufacturing,MFG,2023-08-15,2024-02-28,,,08503,1.9.2.1.1.5.7(FURNACE BACK PASS BUCKSTAYS -SIDE (PGMA-8503))
1189,Dispatch,DIS,2024-02-29,2024-03-29,,,08503,1.9.2.1.1.5.7(FURNACE BACK PASS BUCKSTAYS -SIDE (PGMA-8503))
1190,FURNACE KEY BUCKSTAYS - UPPER (PGMA-8901),SUP,2023-01-25,2024-03-29,,,8901,1.9.2.1.1.5(Buckstays and Framing (PG-08))
1191,Engineering,ENG,2023-01-25,2023-08-14,,,08901,1.9.2.1.1.5.8(FURNACE KEY BUCKSTAYS - UPPER (PGMA-8901))
1192,Manufacturing,MFG,2023-08-15,2024-02-28,,,08901,1.9.2.1.1.5.8(FURNACE KEY BUCKSTAYS - UPPER (PGMA-8901))
1193,Dispatch,DIS,2024-02-29,2024-03-29,,,08901,1.9.2.1.1.5.8(FURNACE KEY BUCKSTAYS - UPPER (PGMA-8901))
1194,EXPN. MOVEMENT MEASUREMENT COMPONENTS (PGMA-8910),SUP,2023-01-25,2024-05-16,,,8910,1.9.2.1.1.5(Buckstays and Framing (PG-08))
1195,Engineering,ENG,2023-01-25,2023-08-27,,,08910,1.9.2.1.1.5.9(EXPN. MOVEMENT MEASUREMENT COMPONENTS (PGMA-8910))
1196,Manufacturing,MFG,2023-08-28,2024-04-16,,,08910,1.9.2.1.1.5.9(EXPN. MOVEMENT MEASUREMENT COMPONENTS (PGMA-8910))
1197,Dispatch,DIS,2024-04-17,2024-05-16,,,08910,1.9.2.1.1.5.9(EXPN. MOVEMENT MEASUREMENT COMPONENTS (PGMA-8910))
1198,BULKED B.P.S ITEMS FOR UPPER BUCKSTAYS (PGMA-8911),SUP,2023-01-25,2024-03-29,,,8911,1.9.2.1.1.5(Buckstays and Framing (PG-08))
1199,Engineering,ENG,2023-01-25,2023-08-14,,,08911,1.9.2.1.1.5.10(BULKED B.P.S ITEMS FOR UPPER BUCKSTAYS (PGMA-8911))
1200,Manufacturing,MFG,2023-08-15,2024-02-28,,,08911,1.9.2.1.1.5.10(BULKED B.P.S ITEMS FOR UPPER BUCKSTAYS (PGMA-8911))
1201,Dispatch,DIS,2024-02-29,2024-03-29,,,08911,1.9.2.1.1.5.10(BULKED B.P.S ITEMS FOR UPPER BUCKSTAYS (PGMA-8911))
1202,BULKED B.P.S ITEMS FOR INTERMEDIATE BUCKSTAYS (PGMA-8912),SUP,2023-01-25,2024-09-27,,,8912,1.9.2.1.1.5(Buckstays and Framing (PG-08))
1203,Engineering,ENG,2023-01-25,2023-11-20,,,08912,1.9.2.1.1.5.11(BULKED B.P.S ITEMS FOR INTERMEDIATE BUCKSTAYS (PGMA-8912))
1204,Manufacturing,MFG,2023-11-21,2024-08-28,,,08912,1.9.2.1.1.5.11(BULKED B.P.S ITEMS FOR INTERMEDIATE BUCKSTAYS (PGMA-8912))
1205,Dispatch,DIS,2024-08-29,2024-09-27,,,08912,1.9.2.1.1.5.11(BULKED B.P.S ITEMS FOR INTERMEDIATE BUCKSTAYS (PGMA-8912))
1206,BULKED B.P.S ITEMS FOR LOWER BUCKSTAYS (PGMA-8913),SUP,2023-01-25,2024-10-27,,,8913,1.9.2.1.1.5(Buckstays and Framing (PG-08))
1207,Engineering,ENG,2023-01-25,2023-12-05,,,08913,1.9.2.1.1.5.12(BULKED B.P.S ITEMS FOR LOWER BUCKSTAYS (PGMA-8913))
1208,Manufacturing,MFG,2023-12-06,2024-09-27,,,08913,1.9.2.1.1.5.12(BULKED B.P.S ITEMS FOR LOWER BUCKSTAYS (PGMA-8913))
1209,Dispatch,DIS,2024-09-28,2024-10-27,,,08913,1.9.2.1.1.5.12(BULKED B.P.S ITEMS FOR LOWER BUCKSTAYS (PGMA-8913))
1210,"Economiser Headers, Coils and Components (PG-19)",SUP,2023-01-25,2024-11-27,,,PG19,1.9.2.1.1(Water Circulation System)
1211,Economiser Supports above Roof- DD (PGMA-19304),SUP,2023-01-25,2024-03-29,,,19304,"1.9.2.1.1.6(Economiser Headers, Coils and Components (PG-19))"
1212,Engineering,ENG,2023-01-25,2023-08-14,,,19304,1.9.2.1.1.6.1(Economiser Supports above Roof- DD (PGMA-19304))
1213,Manufacturing,MFG,2023-08-15,2024-02-28,,,19304,1.9.2.1.1.6.1(Economiser Supports above Roof- DD (PGMA-19304))
1214,Dispatch,DIS,2024-02-29,2024-03-29,,,19304,1.9.2.1.1.6.1(Economiser Supports above Roof- DD (PGMA-19304))
1215,ECO. LINES & LINKS SUPPORTS-DD (PGMA-19306),SUP,2023-01-25,2024-03-29,,,19306,"1.9.2.1.1.6(Economiser Headers, Coils and Components (PG-19))"
1216,Engineering,ENG,2023-01-25,2023-08-14,,,19306,1.9.2.1.1.6.2(ECO. LINES & LINKS SUPPORTS-DD (PGMA-19306))
1217,Manufacturing,MFG,2023-08-15,2024-02-28,,,19306,1.9.2.1.1.6.2(ECO. LINES & LINKS SUPPORTS-DD (PGMA-19306))
1218,Dispatch,DIS,2024-02-29,2024-03-29,,,19306,1.9.2.1.1.6.2(ECO. LINES & LINKS SUPPORTS-DD (PGMA-19306))
1219,ECO FEED PIPE SUPPORT-DD (PGMA-19307),SUP,2023-01-25,2024-03-29,,,19307,"1.9.2.1.1.6(Economiser Headers, Coils and Components (PG-19))"
1220,Engineering,ENG,2023-01-25,2023-08-14,,,19307,1.9.2.1.1.6.3(ECO FEED PIPE SUPPORT-DD (PGMA-19307))
1221,Manufacturing,MFG,2023-08-15,2024-02-28,,,19307,1.9.2.1.1.6.3(ECO FEED PIPE SUPPORT-DD (PGMA-19307))
1222,Dispatch,DIS,2024-02-29,2024-03-29,,,19307,1.9.2.1.1.6.3(ECO FEED PIPE SUPPORT-DD (PGMA-19307))
1223,ECO HANGER TUBE ATTACHMENT (PGMA-19402),SUP,2023-01-25,2024-03-29,,,19402,"1.9.2.1.1.6(Economiser Headers, Coils and Components (PG-19))"
1224,Engineering,ENG,2023-01-25,2023-08-14,,,19402,1.9.2.1.1.6.4(ECO HANGER TUBE ATTACHMENT (PGMA-19402))
1225,Manufacturing,MFG,2023-08-15,2024-02-28,,,19402,1.9.2.1.1.6.4(ECO HANGER TUBE ATTACHMENT (PGMA-19402))
1226,Dispatch,DIS,2024-02-29,2024-03-29,,,19402,1.9.2.1.1.6.4(ECO HANGER TUBE ATTACHMENT (PGMA-19402))
1227,ECO. LINES & LINKS SUPPORTS-SHOP (PGMA-19506),SUP,2023-01-25,2024-03-29,,,19506,"1.9.2.1.1.6(Economiser Headers, Coils and Components (PG-19))"
1228,Engineering,ENG,2023-01-25,2023-08-14,,,19506,1.9.2.1.1.6.5(ECO. LINES & LINKS SUPPORTS-SHOP (PGMA-19506))
1229,Manufacturing,MFG,2023-08-15,2024-02-28,,,19506,1.9.2.1.1.6.5(ECO. LINES & LINKS SUPPORTS-SHOP (PGMA-19506))
1230,Dispatch,DIS,2024-02-29,2024-03-29,,,19506,1.9.2.1.1.6.5(ECO. LINES & LINKS SUPPORTS-SHOP (PGMA-19506))
1231,ECO FEED PIPE SUPPORT-SHOP (PGMA-19507),SUP,2023-01-25,2024-03-29,,,19507,"1.9.2.1.1.6(Economiser Headers, Coils and Components (PG-19))"
1232,Engineering,ENG,2023-01-25,2023-08-14,,,19507,1.9.2.1.1.6.6(ECO FEED PIPE SUPPORT-SHOP (PGMA-19507))
1233,Manufacturing,MFG,2023-08-15,2024-02-28,,,19507,1.9.2.1.1.6.6(ECO FEED PIPE SUPPORT-SHOP (PGMA-19507))
1234,Dispatch,DIS,2024-02-29,2024-03-29,,,19507,1.9.2.1.1.6.6(ECO FEED PIPE SUPPORT-SHOP (PGMA-19507))
1235,ECONOMISER INLET HEADERS (PGMA-19701),SUP,2023-01-25,2024-09-27,,,19701,"1.9.2.1.1.6(Economiser Headers, Coils and Components (PG-19))"
1236,Engineering,ENG,2023-01-25,2023-11-20,,,19701,1.9.2.1.1.6.7(ECONOMISER INLET HEADERS (PGMA-19701))
1237,Manufacturing,MFG,2023-11-21,2024-08-28,,,19701,1.9.2.1.1.6.7(ECONOMISER INLET HEADERS (PGMA-19701))
1238,Dispatch,DIS,2024-08-29,2024-09-27,,,19701,1.9.2.1.1.6.7(ECONOMISER INLET HEADERS (PGMA-19701))
1239,ECONOMISER OUTLET HEADERS (PGMA-19702),SUP,2023-01-25,2024-03-29,,,19702,"1.9.2.1.1.6(Economiser Headers, Coils and Components (PG-19))"
1240,Engineering,ENG,2023-01-25,2023-08-14,,,19702,1.9.2.1.1.6.8(ECONOMISER OUTLET HEADERS (PGMA-19702))
1241,Manufacturing,MFG,2023-08-15,2024-02-28,,,19702,1.9.2.1.1.6.8(ECONOMISER OUTLET HEADERS (PGMA-19702))
1242,Dispatch,DIS,2024-02-29,2024-03-29,,,19702,1.9.2.1.1.6.8(ECONOMISER OUTLET HEADERS (PGMA-19702))
1243,ECONOMISER INTERMEDIATE HEADER - REAR (PGMA-19753),SUP,2023-01-25,2024-08-29,,,19753,"1.9.2.1.1.6(Economiser Headers, Coils and Components (PG-19))"
1244,Engineering,ENG,2023-01-25,2023-11-05,,,19753,1.9.2.1.1.6.9(ECONOMISER INTERMEDIATE HEADER - REAR (PGMA-19753))
1245,Manufacturing,MFG,2023-11-06,2024-07-30,,,19753,1.9.2.1.1.6.9(ECONOMISER INTERMEDIATE HEADER - REAR (PGMA-19753))
1246,Dispatch,DIS,2024-07-31,2024-08-29,,,19753,1.9.2.1.1.6.9(ECONOMISER INTERMEDIATE HEADER - REAR (PGMA-19753))
1247,ECONOMISER INTERMEDIATE HEADER - FRONT (PGMA-19763),SUP,2023-01-25,2024-08-29,,,19763,"1.9.2.1.1.6(Economiser Headers, Coils and Components (PG-19))"
1248,Engineering,ENG,2023-01-25,2023-11-05,,,19763,1.9.2.1.1.6.10(ECONOMISER INTERMEDIATE HEADER - FRONT (PGMA-19763))
1249,Manufacturing,MFG,2023-11-06,2024-07-30,,,19763,1.9.2.1.1.6.10(ECONOMISER INTERMEDIATE HEADER - FRONT (PGMA-19763))
1250,Dispatch,DIS,2024-07-31,2024-08-29,,,19763,1.9.2.1.1.6.10(ECONOMISER INTERMEDIATE HEADER - FRONT (PGMA-19763))
1251,ECONOMISER INTERMEDIATE HEADER - INTER (PGMA-19783),SUP,2023-01-25,2024-08-29,,,19783,"1.9.2.1.1.6(Economiser Headers, Coils and Components (PG-19))"
1252,Engineering,ENG,2023-01-25,2023-11-05,,,19783,1.9.2.1.1.6.11(ECONOMISER INTERMEDIATE HEADER - INTER (PGMA-19783))
1253,Manufacturing,MFG,2023-11-06,2024-07-30,,,19783,1.9.2.1.1.6.11(ECONOMISER INTERMEDIATE HEADER - INTER (PGMA-19783))
1254,Dispatch,DIS,2024-07-31,2024-08-29,,,19783,1.9.2.1.1.6.11(ECONOMISER INTERMEDIATE HEADER - INTER (PGMA-19783))
1255,HEADERS OF CENTER INTER (PGMA-19793),SUP,2023-01-25,2024-08-29,,,19793,"1.9.2.1.1.6(Economiser Headers, Coils and Components (PG-19))"
1256,Engineering,ENG,2023-01-25,2023-11-05,,,19793,1.9.2.1.1.6.12(HEADERS OF CENTER INTER (PGMA-19793))
1257,Manufacturing,MFG,2023-11-06,2024-07-30,,,19793,1.9.2.1.1.6.12(HEADERS OF CENTER INTER (PGMA-19793))
1258,Dispatch,DIS,2024-07-31,2024-08-29,,,19793,1.9.2.1.1.6.12(HEADERS OF CENTER INTER (PGMA-19793))
1259,ECONOMISER HANGER TUBES (PGMA-19802),SUP,2023-01-25,2024-03-29,,,19802,"1.9.2.1.1.6(Economiser Headers, Coils and Components (PG-19))"
1260,Engineering,ENG,2023-01-25,2023-08-14,,,19802,1.9.2.1.1.6.13(ECONOMISER HANGER TUBES (PGMA-19802))
1261,Manufacturing,MFG,2023-08-15,2024-02-28,,,19802,1.9.2.1.1.6.13(ECONOMISER HANGER TUBES (PGMA-19802))
1262,Dispatch,DIS,2024-02-29,2024-03-29,,,19802,1.9.2.1.1.6.13(ECONOMISER HANGER TUBES (PGMA-19802))
1263,PLAIN TUBE ECONO. UPPER COIL ASSY(LEFT) (PGMA-19814),SUP,2023-01-25,2024-07-29,,,,"1.9.2.1.1.6(Economiser Headers, Coils and Components (PG-19))"
1264,Engineering,ENG,2023-01-25,2023-10-26,,,19814,1.9.2.1.1.6.14(PLAIN TUBE ECONO. UPPER COIL ASSY(LEFT) (PGMA-19814))
1265,Manufacturing,MFG,2023-10-27,2024-06-29,,,19814,1.9.2.1.1.6.14(PLAIN TUBE ECONO. UPPER COIL ASSY(LEFT) (PGMA-19814))
1266,Dispatch,DIS,2024-06-30,2024-07-29,,,19814,1.9.2.1.1.6.14(PLAIN TUBE ECONO. UPPER COIL ASSY(LEFT) (PGMA-19814))
1267,ECO LOWER ASSY -LEFT (PGMA-19824),SUP,2023-01-25,2024-09-27,,,19824,"1.9.2.1.1.6(Economiser Headers, Coils and Components (PG-19))"
1268,Engineering,ENG,2023-01-25,2023-11-20,,,19824,1.9.2.1.1.6.15(ECO LOWER ASSY -LEFT (PGMA-19824))
1269,Manufacturing,MFG,2023-11-21,2024-08-28,,,19824,1.9.2.1.1.6.15(ECO LOWER ASSY -LEFT (PGMA-19824))
1270,Dispatch,DIS,2024-08-29,2024-09-27,,,19824,1.9.2.1.1.6.15(ECO LOWER ASSY -LEFT (PGMA-19824))
1271,ECONOMISER FEED PIPE (PGMA-19850),SUP,2023-01-25,2024-03-29,,,19850,"1.9.2.1.1.6(Economiser Headers, Coils and Components (PG-19))"
1272,Engineering,ENG,2023-01-25,2023-08-14,,,19850,1.9.2.1.1.6.16(ECONOMISER FEED PIPE (PGMA-19850))
1273,Manufacturing,MFG,2023-08-15,2024-02-28,,,19850,1.9.2.1.1.6.16(ECONOMISER FEED PIPE (PGMA-19850))
1274,Dispatch,DIS,2024-02-29,2024-03-29,,,19850,1.9.2.1.1.6.16(ECONOMISER FEED PIPE (PGMA-19850))
1275,LINK FROM ECO OUTLET HEADER TO ECO MIX LINE(PGMA-19851),SUP,2023-01-25,2024-03-29,,,19851,"1.9.2.1.1.6(Economiser Headers, Coils and Components (PG-19))"
1276,Engineering,ENG,2023-01-25,2023-08-14,,,19851,1.9.2.1.1.6.17(LINK FROM ECO OUTLET HEADER TO ECO MIX LINE(PGMA-19851))
1277,Manufacturing,MFG,2023-08-15,2024-02-28,,,19851,1.9.2.1.1.6.17(LINK FROM ECO OUTLET HEADER TO ECO MIX LINE(PGMA-19851))
1278,Dispatch,DIS,2024-02-29,2024-03-29,,,19851,1.9.2.1.1.6.17(LINK FROM ECO OUTLET HEADER TO ECO MIX LINE(PGMA-19851))
1279,ECONOMISER-I TO ECONOMISER-II LINK (PGMA-19852),SUP,2023-01-25,2024-03-29,,,19852,"1.9.2.1.1.6(Economiser Headers, Coils and Components (PG-19))"
1280,Engineering,ENG,2023-01-25,2023-08-14,,,19852,1.9.2.1.1.6.18(ECONOMISER-I TO ECONOMISER-II LINK (PGMA-19852))
1281,Manufacturing,MFG,2023-08-15,2024-02-28,,,19852,1.9.2.1.1.6.18(ECONOMISER-I TO ECONOMISER-II LINK (PGMA-19852))
1282,Dispatch,DIS,2024-02-29,2024-03-29,,,19852,1.9.2.1.1.6.18(ECONOMISER-I TO ECONOMISER-II LINK (PGMA-19852))
1283,ECONOMISER FEED PIPE (PGMA-19853),SUP,2023-01-25,2024-03-29,,,19853,"1.9.2.1.1.6(Economiser Headers, Coils and Components (PG-19))"
1284,Engineering,ENG,2023-01-25,2023-08-14,,,19853,1.9.2.1.1.6.19(ECONOMISER FEED PIPE (PGMA-19853))
1285,Manufacturing,MFG,2023-08-15,2024-02-28,,,19853,1.9.2.1.1.6.19(ECONOMISER FEED PIPE (PGMA-19853))
1286,Dispatch,DIS,2024-02-29,2024-03-29,,,19853,1.9.2.1.1.6.19(ECONOMISER FEED PIPE (PGMA-19853))
1287,ECO INTER ASSY - LEFT (PGMA-19884),SUP,2023-01-25,2024-08-29,,,19884,"1.9.2.1.1.6(Economiser Headers, Coils and Components (PG-19))"
1288,Engineering,ENG,2023-01-25,2023-11-05,,,19884,1.9.2.1.1.6.20(ECO INTER ASSY - LEFT (PGMA-19884))
1289,Manufacturing,MFG,2023-11-06,2024-07-30,,,19884,1.9.2.1.1.6.20(ECO INTER ASSY - LEFT (PGMA-19884))
1290,Dispatch,DIS,2024-07-31,2024-08-29,,,19884,1.9.2.1.1.6.20(ECO INTER ASSY - LEFT (PGMA-19884))
1291,ECONOMISER MISCELLANEOUS COMPONENTS (PGMA-19903),SUP,2023-01-25,2024-10-27,,,19903,"1.9.2.1.1.6(Economiser Headers, Coils and Components (PG-19))"
1292,Engineering,ENG,2023-01-25,2023-12-05,,,19903,1.9.2.1.1.6.21(ECONOMISER MISCELLANEOUS COMPONENTS (PGMA-19903))
1293,Manufacturing,MFG,2023-12-06,2024-09-27,,,19903,1.9.2.1.1.6.21(ECONOMISER MISCELLANEOUS COMPONENTS (PGMA-19903))
1294,Dispatch,DIS,2024-09-28,2024-10-27,,,19903,1.9.2.1.1.6.21(ECONOMISER MISCELLANEOUS COMPONENTS (PGMA-19903))
1295,IP ECONOMISER SUPPORTS & SUSPENSIONS (PGMA-19904),SUP,2023-01-25,2024-03-29,,,19904,"1.9.2.1.1.6(Economiser Headers, Coils and Components (PG-19))"
1296,Engineering,ENG,2023-01-25,2023-08-14,,,19904,1.9.2.1.1.6.22(IP ECONOMISER SUPPORTS & SUSPENSIONS (PGMA-19904))
1297,Manufacturing,MFG,2023-08-15,2024-02-28,,,19904,1.9.2.1.1.6.22(IP ECONOMISER SUPPORTS & SUSPENSIONS (PGMA-19904))
1298,Dispatch,DIS,2024-02-29,2024-03-29,,,19904,1.9.2.1.1.6.22(IP ECONOMISER SUPPORTS & SUSPENSIONS (PGMA-19904))
1299,ECONOMISER COIL SUPPORTS (PGMA-19905),SUP,2023-01-25,2024-03-29,,,19905,"1.9.2.1.1.6(Economiser Headers, Coils and Components (PG-19))"
1300,Engineering,ENG,2023-01-25,2023-08-14,,,19905,1.9.2.1.1.6.23(ECONOMISER COIL SUPPORTS (PGMA-19905))
1301,Manufacturing,MFG,2023-08-15,2024-02-28,,,19905,1.9.2.1.1.6.23(ECONOMISER COIL SUPPORTS (PGMA-19905))
1302,Dispatch,DIS,2024-02-29,2024-03-29,,,19905,1.9.2.1.1.6.23(ECONOMISER COIL SUPPORTS (PGMA-19905))
1303,HP ECO 4 FRONT MODULE COMPONENTS(LEFT) (PGMA-19906),SUP,2023-01-25,2024-03-29,,,19906,"1.9.2.1.1.6(Economiser Headers, Coils and Components (PG-19))"
1304,Engineering,ENG,2023-01-25,2023-08-14,,,19906,1.9.2.1.1.6.24(HP ECO 4 FRONT MODULE COMPONENTS(LEFT) (PGMA-19906))
1305,Manufacturing,MFG,2023-08-15,2024-02-28,,,19906,1.9.2.1.1.6.24(HP ECO 4 FRONT MODULE COMPONENTS(LEFT) (PGMA-19906))
1306,Dispatch,DIS,2024-02-29,2024-03-29,,,19906,1.9.2.1.1.6.24(HP ECO 4 FRONT MODULE COMPONENTS(LEFT) (PGMA-19906))
1307,LP ECONOMISER SUPPORTS & SUSPENSIONS (PGMA-19907),SUP,2023-01-25,2024-03-29,,,19907,"1.9.2.1.1.6(Economiser Headers, Coils and Components (PG-19))"
1308,Engineering,ENG,2023-01-25,2023-08-14,,,19907,1.9.2.1.1.6.25(LP ECONOMISER SUPPORTS & SUSPENSIONS (PGMA-19907))
1309,Manufacturing,MFG,2023-08-15,2024-02-28,,,19907,1.9.2.1.1.6.25(LP ECONOMISER SUPPORTS & SUSPENSIONS (PGMA-19907))
1310,Dispatch,DIS,2024-02-29,2024-03-29,,,19907,1.9.2.1.1.6.25(LP ECONOMISER SUPPORTS & SUSPENSIONS (PGMA-19907))
1311,HP ECONOMISER-II MODULE SUPPORTS (PGMA-19914),SUP,2023-01-25,2024-07-29,,,19914,"1.9.2.1.1.6(Economiser Headers, Coils and Components (PG-19))"
1312,Engineering,ENG,2023-01-25,2023-10-26,,,19914,1.9.2.1.1.6.26(HP ECONOMISER-II MODULE SUPPORTS (PGMA-19914))
1313,Manufacturing,MFG,2023-10-27,2024-06-29,,,19914,1.9.2.1.1.6.26(HP ECONOMISER-II MODULE SUPPORTS (PGMA-19914))
1314,Dispatch,DIS,2024-06-30,2024-07-29,,,19914,1.9.2.1.1.6.26(HP ECONOMISER-II MODULE SUPPORTS (PGMA-19914))
1315,PLAIN TUBE ECO. LOWER ASSY (RIGHT) (PGMA-19924),SUP,2023-01-25,2024-09-27,,,19924,"1.9.2.1.1.6(Economiser Headers, Coils and Components (PG-19))"
1316,Engineering,ENG,2023-01-25,2023-11-20,,,19924,1.9.2.1.1.6.27(PLAIN TUBE ECO. LOWER ASSY (RIGHT) (PGMA-19924))
1317,Manufacturing,MFG,2023-11-21,2024-08-28,,,19924,1.9.2.1.1.6.27(PLAIN TUBE ECO. LOWER ASSY (RIGHT) (PGMA-19924))
1318,Dispatch,DIS,2024-08-29,2024-09-27,,,19924,1.9.2.1.1.6.27(PLAIN TUBE ECO. LOWER ASSY (RIGHT) (PGMA-19924))
1319,ECO INTER ASSY - RIGHT (PGMA-19984),SUP,2023-01-25,2024-08-29,,,19984,"1.9.2.1.1.6(Economiser Headers, Coils and Components (PG-19))"
1320,Engineering,ENG,2023-01-25,2023-11-05,,,19984,1.9.2.1.1.6.28(ECO INTER ASSY - RIGHT (PGMA-19984))
1321,Manufacturing,MFG,2023-11-06,2024-07-30,,,19984,1.9.2.1.1.6.28(ECO INTER ASSY - RIGHT (PGMA-19984))
1322,Dispatch,DIS,2024-07-31,2024-08-29,,,19984,1.9.2.1.1.6.28(ECO INTER ASSY - RIGHT (PGMA-19984))
1323,ECONOMISER IMPORTED ELECTRODES (PGMA-19991),SUP,2023-01-25,2024-03-29,,,19991,"1.9.2.1.1.6(Economiser Headers, Coils and Components (PG-19))"
1324,Engineering,ENG,2023-01-25,2023-08-14,,,19991,1.9.2.1.1.6.29(ECONOMISER IMPORTED ELECTRODES (PGMA-19991))
1325,Manufacturing,MFG,2023-08-15,2024-02-28,,,19991,1.9.2.1.1.6.29(ECONOMISER IMPORTED ELECTRODES (PGMA-19991))
1326,Dispatch,DIS,2024-02-29,2024-03-29,,,19991,1.9.2.1.1.6.29(ECONOMISER IMPORTED ELECTRODES (PGMA-19991))
1327,IMPORTED ELECTRODES (PGMA-19992),SUP,2023-01-25,2024-11-27,,,19992,"1.9.2.1.1.6(Economiser Headers, Coils and Components (PG-19))"
1328,Engineering,ENG,2023-01-25,2023-12-20,,,19992,1.9.2.1.1.6.30(IMPORTED ELECTRODES (PGMA-19992))
1329,Manufacturing,MFG,2023-12-21,2024-10-28,,,19992,1.9.2.1.1.6.30(IMPORTED ELECTRODES (PGMA-19992))
1330,Dispatch,DIS,2024-10-29,2024-11-27,,,19992,1.9.2.1.1.6.30(IMPORTED ELECTRODES (PGMA-19992))
1331,Boiler Integral Piping and Fittings (PG-24),SUP,2022-09-27,2025-11-11,,,PG24,1.9.2.1.1(Water Circulation System)
1332,BOILER FILLING PIPING (PGMA-24350),SUP,2023-01-25,2024-10-27,,,24350,1.9.2.1.1.7(Boiler Integral Piping and Fittings (PG-24))
1333,Engineering,ENG,2023-01-25,2023-12-05,,,24350,1.9.2.1.1.7.1(BOILER FILLING PIPING (PGMA-24350))
1334,Manufacturing,MFG,2023-12-06,2024-09-27,,,24350,1.9.2.1.1.7.1(BOILER FILLING PIPING (PGMA-24350))
1335,Dispatch,DIS,2024-09-28,2024-10-27,,,24350,1.9.2.1.1.7.1(BOILER FILLING PIPING (PGMA-24350))
1336,HANGERS+SUPPORTS FOR BLR FILLING PIPING (PGMA-24351),SUP,2023-01-25,2024-10-27,,,24351,1.9.2.1.1.7(Boiler Integral Piping and Fittings (PG-24))
1337,Engineering,ENG,2023-01-25,2023-12-05,,,24351,1.9.2.1.1.7.2(HANGERS+SUPPORTS FOR BLR FILLING PIPING (PGMA-24351))
1338,Manufacturing,MFG,2023-12-06,2024-09-27,,,24351,1.9.2.1.1.7.2(HANGERS+SUPPORTS FOR BLR FILLING PIPING (PGMA-24351))
1339,Dispatch,DIS,2024-09-28,2024-10-27,,,24351,1.9.2.1.1.7.2(HANGERS+SUPPORTS FOR BLR FILLING PIPING (PGMA-24351))
1340,BOILER FILL PIPING - DD (PGMA-24352),SUP,2023-01-25,2024-10-27,,,24352,1.9.2.1.1.7(Boiler Integral Piping and Fittings (PG-24))
1341,Engineering,ENG,2023-01-25,2023-12-05,,,24352,1.9.2.1.1.7.3(BOILER FILL PIPING - DD (PGMA-24352))
1342,Manufacturing,MFG,2023-12-06,2024-09-27,,,24352,1.9.2.1.1.7.3(BOILER FILL PIPING - DD (PGMA-24352))
1343,Dispatch,DIS,2024-09-28,2024-10-27,,,24352,1.9.2.1.1.7.3(BOILER FILL PIPING - DD (PGMA-24352))
1344,HANGERS & SUPPORTS FOR BOILER FILL PIPING - OS (PGMA-24353),SUP,2023-01-25,2024-10-27,,,24353,1.9.2.1.1.7(Boiler Integral Piping and Fittings (PG-24))
1345,Engineering,ENG,2023-01-25,2023-12-05,,,24353,1.9.2.1.1.7.4(HANGERS & SUPPORTS FOR BOILER FILL PIPING - OS (PGMA-24353))
1346,Manufacturing,MFG,2023-12-06,2024-09-27,,,24353,1.9.2.1.1.7.4(HANGERS & SUPPORTS FOR BOILER FILL PIPING - OS (PGMA-24353))
1347,Dispatch,DIS,2024-09-28,2024-10-27,,,24353,1.9.2.1.1.7.4(HANGERS & SUPPORTS FOR BOILER FILL PIPING - OS (PGMA-24353))
1348,BOI items for Boiler fill piping (PGMA-24354),SUP,2023-01-25,2024-10-27,,,24354,1.9.2.1.1.7(Boiler Integral Piping and Fittings (PG-24))
1349,Engineering,ENG,2023-01-25,2023-12-05,,,24354,1.9.2.1.1.7.5(BOI items for Boiler fill piping (PGMA-24354))
1350,Manufacturing,MFG,2023-12-06,2024-09-27,,,24354,1.9.2.1.1.7.5(BOI items for Boiler fill piping (PGMA-24354))
1351,Dispatch,DIS,2024-09-28,2024-10-27,,,24354,1.9.2.1.1.7.5(BOI items for Boiler fill piping (PGMA-24354))
1352,BULKED BPS COMPONENTS FOR TRIM PIPES (PGMA-24700),SUP,2023-05-18,2024-11-27,,,24700,1.9.2.1.1.7(Boiler Integral Piping and Fittings (PG-24))
1353,Engineering,ENG,2023-05-18,2024-02-03,,,24700,1.9.2.1.1.7.6(BULKED BPS COMPONENTS FOR TRIM PIPES (PGMA-24700))
1354,Manufacturing,MFG,2024-02-04,2024-10-28,,,24700,1.9.2.1.1.7.6(BULKED BPS COMPONENTS FOR TRIM PIPES (PGMA-24700))
1355,Dispatch,DIS,2024-10-29,2024-11-27,,,24700,1.9.2.1.1.7.6(BULKED BPS COMPONENTS FOR TRIM PIPES (PGMA-24700))
1356,BOILER TRIM PIPING (PGMA-24800),SUP,2023-01-25,2024-10-27,,,24800,1.9.2.1.1.7(Boiler Integral Piping and Fittings (PG-24))
1357,Engineering,ENG,2023-01-25,2023-12-05,,,24800,1.9.2.1.1.7.7(BOILER TRIM PIPING (PGMA-24800))
1358,Manufacturing,MFG,2023-12-06,2024-09-27,,,24800,1.9.2.1.1.7.7(BOILER TRIM PIPING (PGMA-24800))
1359,Dispatch,DIS,2024-09-28,2024-10-27,,,24800,1.9.2.1.1.7.7(BOILER TRIM PIPING (PGMA-24800))
1360,Boiler Trim Piping - Dd Items (PGMA-24803),SUP,2023-01-25,2024-10-27,,,24803,1.9.2.1.1.7(Boiler Integral Piping and Fittings (PG-24))
1361,Engineering,ENG,2023-01-25,2023-12-05,,,24803,1.9.2.1.1.7.8(Boiler Trim Piping - Dd Items (PGMA-24803))
1362,Manufacturing,MFG,2023-12-06,2024-09-27,,,24803,1.9.2.1.1.7.8(Boiler Trim Piping - Dd Items (PGMA-24803))
1363,Dispatch,DIS,2024-09-28,2024-10-27,,,24803,1.9.2.1.1.7.8(Boiler Trim Piping - Dd Items (PGMA-24803))
1364,Supports - Boiler Trim Piping - Os (PGMA-24804),SUP,2023-01-25,2024-10-27,,,24804,1.9.2.1.1.7(Boiler Integral Piping and Fittings (PG-24))
1365,Engineering,ENG,2023-01-25,2023-12-05,,,24804,1.9.2.1.1.7.9(Supports - Boiler Trim Piping - Os (PGMA-24804))
1366,Manufacturing,MFG,2023-12-06,2024-09-27,,,24804,1.9.2.1.1.7.9(Supports - Boiler Trim Piping - Os (PGMA-24804))
1367,Dispatch,DIS,2024-09-28,2024-10-27,,,24804,1.9.2.1.1.7.9(Supports - Boiler Trim Piping - Os (PGMA-24804))
1368,LINK TO BOILER RECIRCULATION SYSTEM (PGMA-24805),SUP,2023-01-25,2024-11-27,,,24805,1.9.2.1.1.7(Boiler Integral Piping and Fittings (PG-24))
1369,Engineering,ENG,2023-01-25,2023-12-20,,,24805,1.9.2.1.1.7.10(LINK TO BOILER RECIRCULATION SYSTEM (PGMA-24805))
1370,Manufacturing,MFG,2023-12-21,2024-10-28,,,24805,1.9.2.1.1.7.10(LINK TO BOILER RECIRCULATION SYSTEM (PGMA-24805))
1371,Dispatch,DIS,2024-10-29,2024-11-27,,,24805,1.9.2.1.1.7.10(LINK TO BOILER RECIRCULATION SYSTEM (PGMA-24805))
1372,MIXING VESSEL (PGMA-24806),SUP,2023-01-25,2024-11-27,,,24806,1.9.2.1.1.7(Boiler Integral Piping and Fittings (PG-24))
1373,Engineering,ENG,2023-01-25,2023-12-20,,,24806,1.9.2.1.1.7.11(MIXING VESSEL (PGMA-24806))
1374,Manufacturing,MFG,2023-12-21,2024-10-28,,,24806,1.9.2.1.1.7.11(MIXING VESSEL (PGMA-24806))
1375,Dispatch,DIS,2024-10-29,2024-11-27,,,24806,1.9.2.1.1.7.11(MIXING VESSEL (PGMA-24806))
1376,RECIRCULATION PUMP SECTION LINE (PGMA-24807),SUP,2023-01-25,2024-11-27,,,24807,1.9.2.1.1.7(Boiler Integral Piping and Fittings (PG-24))
1377,Engineering,ENG,2023-01-25,2023-12-20,,,24807,1.9.2.1.1.7.12(RECIRCULATION PUMP SECTION LINE (PGMA-24807))
1378,Manufacturing,MFG,2023-12-21,2024-10-28,,,24807,1.9.2.1.1.7.12(RECIRCULATION PUMP SECTION LINE (PGMA-24807))
1379,Dispatch,DIS,2024-10-29,2024-11-27,,,24807,1.9.2.1.1.7.12(RECIRCULATION PUMP SECTION LINE (PGMA-24807))
1380,RECIRCULATION PUMP DISCHARGE LINE (PGMA-24808),SUP,2023-01-25,2024-11-27,,,24808,1.9.2.1.1.7(Boiler Integral Piping and Fittings (PG-24))
1381,Engineering,ENG,2023-01-25,2023-12-20,,,24808,1.9.2.1.1.7.13(RECIRCULATION PUMP DISCHARGE LINE (PGMA-24808))
1382,Manufacturing,MFG,2023-12-21,2024-10-28,,,24808,1.9.2.1.1.7.13(RECIRCULATION PUMP DISCHARGE LINE (PGMA-24808))
1383,Dispatch,DIS,2024-10-29,2024-11-27,,,24808,1.9.2.1.1.7.13(RECIRCULATION PUMP DISCHARGE LINE (PGMA-24808))
1384,BOILER RECIRCULATION LINK FROM BF LINE (PGMA-24809),SUP,2023-01-25,2024-11-27,,,24809,1.9.2.1.1.7(Boiler Integral Piping and Fittings (PG-24))
1385,Engineering,ENG,2023-01-25,2023-12-20,,,24809,1.9.2.1.1.7.14(BOILER RECIRCULATION LINK FROM BF LINE (PGMA-24809))
1386,Manufacturing,MFG,2023-12-21,2024-10-28,,,24809,1.9.2.1.1.7.14(BOILER RECIRCULATION LINK FROM BF LINE (PGMA-24809))
1387,Dispatch,DIS,2024-10-29,2024-11-27,,,24809,1.9.2.1.1.7.14(BOILER RECIRCULATION LINK FROM BF LINE (PGMA-24809))
1388,HANGERS + SUPPORTS FOR STARTUP SYSTEM (PGMA-24810),SUP,2023-01-25,2024-11-27,,,24810,1.9.2.1.1.7(Boiler Integral Piping and Fittings (PG-24))
1389,Engineering,ENG,2023-01-25,2023-12-20,,,24810,1.9.2.1.1.7.15(HANGERS + SUPPORTS FOR STARTUP SYSTEM (PGMA-24810))
1390,Manufacturing,MFG,2023-12-21,2024-10-28,,,24810,1.9.2.1.1.7.15(HANGERS + SUPPORTS FOR STARTUP SYSTEM (PGMA-24810))
1391,Dispatch,DIS,2024-10-29,2024-11-27,,,24810,1.9.2.1.1.7.15(HANGERS + SUPPORTS FOR STARTUP SYSTEM (PGMA-24810))
1392,FURNACE LINK TO FLASH TAND/HWL1 TO HWL2 (PGMA-24811),SUP,2023-01-25,2024-11-27,,,24811,1.9.2.1.1.7(Boiler Integral Piping and Fittings (PG-24))
1393,Engineering,ENG,2023-01-25,2023-12-20,,,24811,1.9.2.1.1.7.16(FURNACE LINK TO FLASH TAND/HWL1 TO HWL2 (PGMA-24811))
1394,Manufacturing,MFG,2023-12-21,2024-10-28,,,24811,1.9.2.1.1.7.16(FURNACE LINK TO FLASH TAND/HWL1 TO HWL2 (PGMA-24811))
1395,Dispatch,DIS,2024-10-29,2024-11-27,,,24811,1.9.2.1.1.7.16(FURNACE LINK TO FLASH TAND/HWL1 TO HWL2 (PGMA-24811))
1396,Boiler Trim Piping - Non Ht Items (PGMA-24814),SUP,2023-01-25,2024-10-27,,,24814,1.9.2.1.1.7(Boiler Integral Piping and Fittings (PG-24))
1397,Engineering,ENG,2023-01-25,2023-12-05,,,24814,1.9.2.1.1.7.17(Boiler Trim Piping - Non Ht Items (PGMA-24814))
1398,Manufacturing,MFG,2023-12-06,2024-09-27,,,24814,1.9.2.1.1.7.17(Boiler Trim Piping - Non Ht Items (PGMA-24814))
1399,Dispatch,DIS,2024-09-28,2024-10-27,,,24814,1.9.2.1.1.7.17(Boiler Trim Piping - Non Ht Items (PGMA-24814))
1400,DESUPERHEATER PIPES (PGMA-24815),SUP,2023-01-25,2024-03-29,,,24815,1.9.2.1.1.7(Boiler Integral Piping and Fittings (PG-24))
1401,Engineering,ENG,2023-01-25,2023-08-14,,,24815,1.9.2.1.1.7.18(DESUPERHEATER PIPES (PGMA-24815))
1402,Manufacturing,MFG,2023-08-15,2024-02-28,,,24815,1.9.2.1.1.7.18(DESUPERHEATER PIPES (PGMA-24815))
1403,Dispatch,DIS,2024-02-29,2024-03-29,,,24815,1.9.2.1.1.7.18(DESUPERHEATER PIPES (PGMA-24815))
1404,H&S For Start-Up System - Os Items (PGMA-24817),SUP,2023-01-25,2024-11-27,,,24817,1.9.2.1.1.7(Boiler Integral Piping and Fittings (PG-24))
1405,Engineering,ENG,2023-01-25,2023-12-20,,,24817,1.9.2.1.1.7.19(H&S For Start-Up System - Os Items (PGMA-24817))
1406,Manufacturing,MFG,2023-12-21,2024-10-28,,,24817,1.9.2.1.1.7.19(H&S For Start-Up System - Os Items (PGMA-24817))
1407,Dispatch,DIS,2024-10-29,2024-11-27,,,24817,1.9.2.1.1.7.19(H&S For Start-Up System - Os Items (PGMA-24817))
1408,H&S For Start-Up System - Dd Items (PGMA-24818),SUP,2023-01-25,2024-11-27,,,24818,1.9.2.1.1.7(Boiler Integral Piping and Fittings (PG-24))
1409,Engineering,ENG,2023-01-25,2023-12-20,,,24818,1.9.2.1.1.7.20(H&S For Start-Up System - Dd Items (PGMA-24818))
1410,Manufacturing,MFG,2023-12-21,2024-10-28,,,24818,1.9.2.1.1.7.20(H&S For Start-Up System - Dd Items (PGMA-24818))
1411,Dispatch,DIS,2024-10-29,2024-11-27,,,24818,1.9.2.1.1.7.20(H&S For Start-Up System - Dd Items (PGMA-24818))
1412,EXHAUST PIPE FOR SAFETY VALVES (PGMA-24820),SUP,2023-05-18,2024-11-27,,,24820,1.9.2.1.1.7(Boiler Integral Piping and Fittings (PG-24))
1413,Engineering,ENG,2023-05-18,2024-02-03,,,24820,1.9.2.1.1.7.21(EXHAUST PIPE FOR SAFETY VALVES (PGMA-24820))
1414,Manufacturing,MFG,2024-02-04,2024-10-28,,,24820,1.9.2.1.1.7.21(EXHAUST PIPE FOR SAFETY VALVES (PGMA-24820))
1415,Dispatch,DIS,2024-10-29,2024-11-27,,,24820,1.9.2.1.1.7.21(EXHAUST PIPE FOR SAFETY VALVES (PGMA-24820))
1416,De-Superheater Pipes - Os Items (PGMA-24822),SUP,2023-04-26,2024-06-28,,,24822,1.9.2.1.1.7(Boiler Integral Piping and Fittings (PG-24))
1417,Engineering,ENG,2023-04-26,2023-11-13,,,24822,1.9.2.1.1.7.22(De-Superheater Pipes - Os Items (PGMA-24822))
1418,Manufacturing,MFG,2023-11-14,2024-05-29,,,24822,1.9.2.1.1.7.22(De-Superheater Pipes - Os Items (PGMA-24822))
1419,Dispatch,DIS,2024-05-30,2024-06-28,,,24822,1.9.2.1.1.7.22(De-Superheater Pipes - Os Items (PGMA-24822))
1420,De-Superheater Pipes - Dd Items (PGMA-24823),SUP,2023-04-26,2024-06-28,,,24823,1.9.2.1.1.7(Boiler Integral Piping and Fittings (PG-24))
1421,Engineering,ENG,2023-04-26,2023-11-13,,,24823,1.9.2.1.1.7.23(De-Superheater Pipes - Dd Items (PGMA-24823))
1422,Manufacturing,MFG,2023-11-14,2024-05-29,,,24823,1.9.2.1.1.7.23(De-Superheater Pipes - Dd Items (PGMA-24823))
1423,Dispatch,DIS,2024-05-30,2024-06-28,,,24823,1.9.2.1.1.7.23(De-Superheater Pipes - Dd Items (PGMA-24823))
1424,Exhaust Pipe For Safety Valve - Os Items (PGMA-24824),SUP,2023-05-18,2024-11-27,,,24824,1.9.2.1.1.7(Boiler Integral Piping and Fittings (PG-24))
1425,Engineering,ENG,2023-05-18,2024-02-03,,,24824,1.9.2.1.1.7.24(Exhaust Pipe For Safety Valve - Os Items (PGMA-24824))
1426,Manufacturing,MFG,2024-02-04,2024-10-28,,,24824,1.9.2.1.1.7.24(Exhaust Pipe For Safety Valve - Os Items (PGMA-24824))
1427,Dispatch,DIS,2024-10-29,2024-11-27,,,24824,1.9.2.1.1.7.24(Exhaust Pipe For Safety Valve - Os Items (PGMA-24824))
1428,SILENCER SUPPORTS (PGMA-24825),SUP,2022-09-27,2024-03-14,,,24825,1.9.2.1.1.7(Boiler Integral Piping and Fittings (PG-24))
1429,Engineering,ENG,2022-09-27,2023-07-25,,,24825,1.9.2.1.1.7.25(SILENCER SUPPORTS (PGMA-24825))
1430,Manufacturing,MFG,2023-07-26,2024-02-13,,,24825,1.9.2.1.1.7.25(SILENCER SUPPORTS (PGMA-24825))
1431,Dispatch,DIS,2024-02-14,2024-03-14,,,24825,1.9.2.1.1.7.25(SILENCER SUPPORTS (PGMA-24825))
1432,Silencer Support - Os Items (PGMA-24826),SUP,2022-09-27,2024-03-14,,,24826,1.9.2.1.1.7(Boiler Integral Piping and Fittings (PG-24))
1433,Engineering,ENG,2022-09-27,2023-07-25,,,24826,1.9.2.1.1.7.26(Silencer Support - Os Items (PGMA-24826))
1434,Manufacturing,MFG,2023-07-26,2024-02-13,,,24826,1.9.2.1.1.7.26(Silencer Support - Os Items (PGMA-24826))
1435,Dispatch,DIS,2024-02-14,2024-03-14,,,24826,1.9.2.1.1.7.26(Silencer Support - Os Items (PGMA-24826))
1436,Exhaust Pipe For Safety Valve - Dd Items (PGMA-24827),SUP,2023-05-18,2024-11-27,,,24827,1.9.2.1.1.7(Boiler Integral Piping and Fittings (PG-24))
1437,Engineering,ENG,2023-05-18,2024-02-03,,,24827,1.9.2.1.1.7.27(Exhaust Pipe For Safety Valve - Dd Items (PGMA-24827))
1438,Manufacturing,MFG,2024-02-04,2024-10-28,,,24827,1.9.2.1.1.7.27(Exhaust Pipe For Safety Valve - Dd Items (PGMA-24827))
1439,Dispatch,DIS,2024-10-29,2024-11-27,,,24827,1.9.2.1.1.7.27(Exhaust Pipe For Safety Valve - Dd Items (PGMA-24827))
1440,Exhaust Pipe For Safety Valve - BOI Item (PGMA-24828),SUP,2023-05-18,2024-11-27,,,24828,1.9.2.1.1.7(Boiler Integral Piping and Fittings (PG-24))
1441,Engineering,ENG,2023-05-18,2024-02-03,,,24828,1.9.2.1.1.7.28(Exhaust Pipe For Safety Valve - BOI Item (PGMA-24828))
1442,Manufacturing,MFG,2024-02-04,2024-10-28,,,24828,1.9.2.1.1.7.28(Exhaust Pipe For Safety Valve - BOI Item (PGMA-24828))
1443,Dispatch,DIS,2024-10-29,2024-11-27,,,24828,1.9.2.1.1.7.28(Exhaust Pipe For Safety Valve - BOI Item (PGMA-24828))
1444,STARTUP VENT DIFFUSER AND SILENCER SUPPPORTS (PGMA-24835),SUP,2022-09-27,2023-12-27,,,24835,1.9.2.1.1.7(Boiler Integral Piping and Fittings (PG-24))
1445,Engineering,ENG,2022-09-27,2023-07-25,,,24835,1.9.2.1.1.7.29(STARTUP VENT DIFFUSER AND SILENCER SUPPPORTS (PGMA-24835))
1446,Manufacturing,MFG,2023-05-09,2023-11-27,,,24835,1.9.2.1.1.7.29(STARTUP VENT DIFFUSER AND SILENCER SUPPPORTS (PGMA-24835))
1447,Dispatch,DIS,2023-11-28,2023-12-27,,,24835,1.9.2.1.1.7.29(STARTUP VENT DIFFUSER AND SILENCER SUPPPORTS (PGMA-24835))
1448,"Start-Up Vent, Diffuser, Silencer Support-Os Item (PGMA-24836)",SUP,2022-09-27,2023-12-27,,,24836,1.9.2.1.1.7(Boiler Integral Piping and Fittings (PG-24))
1449,Engineering,ENG,2022-09-27,2023-07-25,,,24836,"1.9.2.1.1.7.30(Start-Up Vent, Diffuser, Silencer Support-Os Item (PGMA-24836))"
1450,Manufacturing,MFG,2023-05-09,2023-11-27,,,24836,"1.9.2.1.1.7.30(Start-Up Vent, Diffuser, Silencer Support-Os Item (PGMA-24836))"
1451,Dispatch,DIS,2023-11-28,2023-12-27,,,24836,"1.9.2.1.1.7.30(Start-Up Vent, Diffuser, Silencer Support-Os Item (PGMA-24836))"
1452,"Start-Up Vent, Diffuser, Silencer Support-Dd Item (PGMA-24837)",SUP,2022-09-27,2023-12-27,,,24837,1.9.2.1.1.7(Boiler Integral Piping and Fittings (PG-24))
1453,Engineering,ENG,2022-09-27,2023-07-25,,,24837,"1.9.2.1.1.7.31(Start-Up Vent, Diffuser, Silencer Support-Dd Item (PGMA-24837))"
1454,Manufacturing,MFG,2023-05-09,2023-11-27,,,24837,"1.9.2.1.1.7.31(Start-Up Vent, Diffuser, Silencer Support-Dd Item (PGMA-24837))"
1455,Dispatch,DIS,2023-11-28,2023-12-27,,,24837,"1.9.2.1.1.7.31(Start-Up Vent, Diffuser, Silencer Support-Dd Item (PGMA-24837))"
1456,SAMPLE COOLER AND SUPPORTS (PGMA-24840),SUP,2023-05-18,2024-11-27,,,24840,1.9.2.1.1.7(Boiler Integral Piping and Fittings (PG-24))
1457,Engineering,ENG,2023-05-18,2024-02-03,,,24840,1.9.2.1.1.7.32(SAMPLE COOLER AND SUPPORTS (PGMA-24840))
1458,Manufacturing,MFG,2024-02-04,2024-10-28,,,24840,1.9.2.1.1.7.32(SAMPLE COOLER AND SUPPORTS (PGMA-24840))
1459,Dispatch,DIS,2024-10-29,2024-11-27,,,24840,1.9.2.1.1.7.32(SAMPLE COOLER AND SUPPORTS (PGMA-24840))
1460,Sample Cooler & Supports - Os Items (PGMA-24841),SUP,2023-05-18,2024-11-27,,,24841,1.9.2.1.1.7(Boiler Integral Piping and Fittings (PG-24))
1461,Engineering,ENG,2023-05-18,2024-02-03,,,24841,1.9.2.1.1.7.33(Sample Cooler & Supports - Os Items (PGMA-24841))
1462,Manufacturing,MFG,2024-02-04,2024-10-28,,,24841,1.9.2.1.1.7.33(Sample Cooler & Supports - Os Items (PGMA-24841))
1463,Dispatch,DIS,2024-10-29,2024-11-27,,,24841,1.9.2.1.1.7.33(Sample Cooler & Supports - Os Items (PGMA-24841))
1464,DD items for Sample Cooler and Supports (PGMA-24842),SUP,2023-05-18,2024-11-27,,,24842,1.9.2.1.1.7(Boiler Integral Piping and Fittings (PG-24))
1465,Engineering,ENG,2023-05-18,2024-02-03,,,24842,1.9.2.1.1.7.34(DD items for Sample Cooler and Supports (PGMA-24842))
1466,Manufacturing,MFG,2024-02-04,2024-10-28,,,24842,1.9.2.1.1.7.34(DD items for Sample Cooler and Supports (PGMA-24842))
1467,Dispatch,DIS,2024-10-29,2024-11-27,,,24842,1.9.2.1.1.7.34(DD items for Sample Cooler and Supports (PGMA-24842))
1468, BOI- HT- RE-CIRCULATING PUMP COMPONENTS-SD (PGMA-24855),SUP,2023-08-23,2024-12-28,,,24855,1.9.2.1.1.7(Boiler Integral Piping and Fittings (PG-24))
1469,NIT,ENQ,2023-08-23,2023-08-23,,,24855,1.9.2.1.1.7.35( BOI- HT- RE-CIRCULATING PUMP COMPONENTS-SD (PGMA-24855))
1470,Ordering,ORD,2023-08-24,2024-01-20,,,24855,1.9.2.1.1.7.35( BOI- HT- RE-CIRCULATING PUMP COMPONENTS-SD (PGMA-24855))
1471,Manufacturing,MFG,2024-01-21,2024-11-28,,,24855,1.9.2.1.1.7.35( BOI- HT- RE-CIRCULATING PUMP COMPONENTS-SD (PGMA-24855))
1472,Dispatch,DIS,2024-11-29,2024-12-28,,,24855,1.9.2.1.1.7.35( BOI- HT- RE-CIRCULATING PUMP COMPONENTS-SD (PGMA-24855))
1473,VALVES (PGMA-24860),SUP,2024-01-12,2025-11-11,,,24860,1.9.2.1.1.7(Boiler Integral Piping and Fittings (PG-24))
1474,Engineering,ENG,2024-01-12,2024-07-09,,,24860,1.9.2.1.1.7.36(VALVES (PGMA-24860))
1475,Manufacturing,MFG,2024-07-10,2025-10-12,,,24860,1.9.2.1.1.7.36(VALVES (PGMA-24860))
1476,Dispatch,DIS,2025-10-13,2025-11-11,,,24860,1.9.2.1.1.7.36(VALVES (PGMA-24860))
1477,BOI-LU-VALVES SUBDELIVERY (PGMA-24865),SUP,2023-08-03,2025-01-14,,,24865,1.9.2.1.1.7(Boiler Integral Piping and Fittings (PG-24))
1478,NIT,ENQ,2023-08-03,2023-08-03,,,24865,1.9.2.1.1.7.37(BOI-LU-VALVES SUBDELIVERY (PGMA-24865))
1479,Ordering,ORD,2023-08-04,2024-01-30,,,24865,1.9.2.1.1.7.37(BOI-LU-VALVES SUBDELIVERY (PGMA-24865))
1480,Manufacturing,MFG,2024-01-31,2024-12-15,,,24865,1.9.2.1.1.7.37(BOI-LU-VALVES SUBDELIVERY (PGMA-24865))
1481,Dispatch,DIS,2024-12-16,2025-01-14,,,24865,1.9.2.1.1.7.37(BOI-LU-VALVES SUBDELIVERY (PGMA-24865))
1482,BOI-LU-VALVES FOR STARTUP RECIRCULATION SYSTEM-SD (PGMA-24867),SUP,2023-10-22,2025-01-12,,,24867,1.9.2.1.1.7(Boiler Integral Piping and Fittings (PG-24))
1483,NIT,ENQ,2023-10-22,2023-10-22,,,24867,1.9.2.1.1.7.38(BOI-LU-VALVES FOR STARTUP RECIRCULATION SYSTEM-SD (PGMA-24867))
1484,Ordering,ORD,2023-10-23,2024-03-20,,,24867,1.9.2.1.1.7.38(BOI-LU-VALVES FOR STARTUP RECIRCULATION SYSTEM-SD (PGMA-24867))
1485,Manufacturing,MFG,2024-03-21,2024-12-13,,,24867,1.9.2.1.1.7.38(BOI-LU-VALVES FOR STARTUP RECIRCULATION SYSTEM-SD (PGMA-24867))
1486,Dispatch,DIS,2024-12-14,2025-01-12,,,24867,1.9.2.1.1.7.38(BOI-LU-VALVES FOR STARTUP RECIRCULATION SYSTEM-SD (PGMA-24867))
1487,SAFETY VALVES (PGMA-24880),SUP,2022-12-26,2024-01-27,,,24880,1.9.2.1.1.7(Boiler Integral Piping and Fittings (PG-24))
1488,Engineering,ENG,2022-12-26,2023-07-05,,,24880,1.9.2.1.1.7.39(SAFETY VALVES (PGMA-24880))
1489,Manufacturing,MFG,2023-07-06,2023-12-28,,,24880,1.9.2.1.1.7.39(SAFETY VALVES (PGMA-24880))
1490,Dispatch,DIS,2023-12-29,2024-01-27,,,24880,1.9.2.1.1.7.39(SAFETY VALVES (PGMA-24880))
1491,SAFETY VALVES AND ERV-SD (PGMA-24881),SUP,2022-12-26,2024-01-27,,,24881,1.9.2.1.1.7(Boiler Integral Piping and Fittings (PG-24))
1492,Engineering,ENG,2022-12-26,2023-07-05,,,24881,1.9.2.1.1.7.40(SAFETY VALVES AND ERV-SD (PGMA-24881))
1493,Manufacturing,MFG,2023-07-06,2023-12-28,,,24881,1.9.2.1.1.7.40(SAFETY VALVES AND ERV-SD (PGMA-24881))
1494,Dispatch,DIS,2023-12-29,2024-01-27,,,24881,1.9.2.1.1.7.40(SAFETY VALVES AND ERV-SD (PGMA-24881))
1495,Safety Valves (BHEL) - Non Ht (PGMA-24883),SUP,2022-12-26,2024-01-27,,,24883,1.9.2.1.1.7(Boiler Integral Piping and Fittings (PG-24))
1496,Engineering,ENG,2022-12-26,2023-07-05,,,24883,1.9.2.1.1.7.41(Safety Valves (BHEL) - Non Ht (PGMA-24883))
1497,Manufacturing,MFG,2023-07-06,2023-12-28,,,24883,1.9.2.1.1.7.41(Safety Valves (BHEL) - Non Ht (PGMA-24883))
1498,Dispatch,DIS,2023-12-29,2024-01-27,,,24883,1.9.2.1.1.7.41(Safety Valves (BHEL) - Non Ht (PGMA-24883))
1499,SILENCERS (PGMA-24885),SUP,2022-09-27,2023-12-27,,,24885,1.9.2.1.1.7(Boiler Integral Piping and Fittings (PG-24))
1500,Engineering,ENG,2022-09-27,2023-07-25,,,24885,1.9.2.1.1.7.42(SILENCERS (PGMA-24885))
1501,Manufacturing,MFG,2023-05-09,2023-11-27,,,24885,1.9.2.1.1.7.42(SILENCERS (PGMA-24885))
1502,Dispatch,DIS,2023-11-28,2023-12-27,,,24885,1.9.2.1.1.7.42(SILENCERS (PGMA-24885))
1503,SPECIAL TOOLS (PGMA-24950),SUP,2023-11-06,2025-06-29,,,24950,1.9.2.1.1.7(Boiler Integral Piping and Fittings (PG-24))
1504,Engineering,ENG,2023-11-06,2024-08-13,,,24950,1.9.2.1.1.7.43(SPECIAL TOOLS (PGMA-24950))
1505,Manufacturing,MFG,2024-08-14,2025-05-30,,,24950,1.9.2.1.1.7.43(SPECIAL TOOLS (PGMA-24950))
1506,Dispatch,DIS,2025-05-31,2025-06-29,,,24950,1.9.2.1.1.7.43(SPECIAL TOOLS (PGMA-24950))
1507,LAPPING TOOLS FOR SV&ERV (PGMA-24955),SUP,2023-11-06,2025-06-29,,,24955,1.9.2.1.1.7(Boiler Integral Piping and Fittings (PG-24))
1508,Engineering,ENG,2023-11-06,2024-08-13,,,24955,1.9.2.1.1.7.44(LAPPING TOOLS FOR SV&ERV (PGMA-24955))
1509,Manufacturing,MFG,2024-08-14,2025-05-30,,,24955,1.9.2.1.1.7.44(LAPPING TOOLS FOR SV&ERV (PGMA-24955))
1510,Dispatch,DIS,2025-05-31,2025-06-29,,,24955,1.9.2.1.1.7.44(LAPPING TOOLS FOR SV&ERV (PGMA-24955))
1511,LAPPING TOOLS FOR CONVENTIONAL VALVES( (PGMA-24960),SUP,2023-11-06,2025-06-29,,,24960,1.9.2.1.1.7(Boiler Integral Piping and Fittings (PG-24))
1512,Engineering,ENG,2023-11-06,2024-08-13,,,24960,1.9.2.1.1.7.45(LAPPING TOOLS FOR CONVENTIONAL VALVES( (PGMA-24960))
1513,Manufacturing,MFG,2024-08-14,2025-05-30,,,24960,1.9.2.1.1.7.45(LAPPING TOOLS FOR CONVENTIONAL VALVES( (PGMA-24960))
1514,Dispatch,DIS,2025-05-31,2025-06-29,,,24960,1.9.2.1.1.7.45(LAPPING TOOLS FOR CONVENTIONAL VALVES( (PGMA-24960))
1515,COMMG SPARES FOR SAFETY VALVES/ERV (PGMA-24987),SUP,2023-11-21,2025-07-29,,,24987,1.9.2.1.1.7(Boiler Integral Piping and Fittings (PG-24))
1516,Engineering,ENG,2023-11-21,2024-09-10,,,24987,1.9.2.1.1.7.46(COMMG SPARES FOR SAFETY VALVES/ERV (PGMA-24987))
1517,Manufacturing,MFG,2024-09-11,2025-06-29,,,24987,1.9.2.1.1.7.46(COMMG SPARES FOR SAFETY VALVES/ERV (PGMA-24987))
1518,Dispatch,DIS,2025-06-30,2025-07-29,,,24987,1.9.2.1.1.7.46(COMMG SPARES FOR SAFETY VALVES/ERV (PGMA-24987))
1519,COMMG SPARES FOR IMPORTED SUB-DELY (PGMA-24988),SUP,2023-11-21,2025-07-29,,,24988,1.9.2.1.1.7(Boiler Integral Piping and Fittings (PG-24))
1520,Engineering,ENG,2023-11-21,2024-09-10,,,24988,1.9.2.1.1.7.47(COMMG SPARES FOR IMPORTED SUB-DELY (PGMA-24988))
1521,Manufacturing,MFG,2024-09-11,2025-06-29,,,24988,1.9.2.1.1.7.47(COMMG SPARES FOR IMPORTED SUB-DELY (PGMA-24988))
1522,Dispatch,DIS,2025-06-30,2025-07-29,,,24988,1.9.2.1.1.7.47(COMMG SPARES FOR IMPORTED SUB-DELY (PGMA-24988))
1523,COMMG SPARES FOR CONVENTIONAL VALVES (PGMA-24989),SUP,2023-11-21,2025-07-29,,,24989,1.9.2.1.1.7(Boiler Integral Piping and Fittings (PG-24))
1524,Engineering,ENG,2023-11-21,2024-09-10,,,24989,1.9.2.1.1.7.48(COMMG SPARES FOR CONVENTIONAL VALVES (PGMA-24989))
1525,Manufacturing,MFG,2024-09-11,2025-06-29,,,24989,1.9.2.1.1.7.48(COMMG SPARES FOR CONVENTIONAL VALVES (PGMA-24989))
1526,Dispatch,DIS,2025-06-30,2025-07-29,,,24989,1.9.2.1.1.7.48(COMMG SPARES FOR CONVENTIONAL VALVES (PGMA-24989))
1527,IMPORTED ELECTRODES (PGMA-24992),SUP,2023-01-25,2024-10-27,,,24992,1.9.2.1.1.7(Boiler Integral Piping and Fittings (PG-24))
1528,Engineering,ENG,2023-01-25,2023-12-05,,,24992,1.9.2.1.1.7.49(IMPORTED ELECTRODES (PGMA-24992))
1529,Manufacturing,MFG,2023-12-06,2024-09-27,,,24992,1.9.2.1.1.7.49(IMPORTED ELECTRODES (PGMA-24992))
1530,Dispatch,DIS,2024-09-28,2024-10-27,,,24992,1.9.2.1.1.7.49(IMPORTED ELECTRODES (PGMA-24992))
1531,CONSUMABLES &Erection MATERIALS (PGMA-24993),SUP,2023-01-25,2024-10-27,,,24993,1.9.2.1.1.7(Boiler Integral Piping and Fittings (PG-24))
1532,Engineering,ENG,2023-01-25,2023-12-05,,,24993,1.9.2.1.1.7.50(CONSUMABLES &Erection MATERIALS (PGMA-24993))
1533,Manufacturing,MFG,2023-12-06,2024-09-27,,,24993,1.9.2.1.1.7.50(CONSUMABLES &Erection MATERIALS (PGMA-24993))
1534,Dispatch,DIS,2024-09-28,2024-10-27,,,24993,1.9.2.1.1.7.50(CONSUMABLES &Erection MATERIALS (PGMA-24993))
1535,NAME PLATES (PGMA-24994),SUP,2023-11-06,2025-06-29,,,24994,1.9.2.1.1.7(Boiler Integral Piping and Fittings (PG-24))
1536,Engineering,ENG,2023-11-06,2024-08-13,,,24994,1.9.2.1.1.7.51(NAME PLATES (PGMA-24994))
1537,Manufacturing,MFG,2024-08-14,2025-05-30,,,24994,1.9.2.1.1.7.51(NAME PLATES (PGMA-24994))
1538,Dispatch,DIS,2025-05-31,2025-06-29,,,24994,1.9.2.1.1.7.51(NAME PLATES (PGMA-24994))
1539,Super Heaters and Re-Heaters ,SUP,2022-12-26,2024-09-27,,,,1.9.2.1(Supply (BHEL TRY))
1540,Superheater Headers (PG-10),SUP,2023-01-25,2024-08-29,,,PG10,1.9.2.1.2(Super Heaters and Re-Heaters )
1541,SH VERTICAL SPACED INLET HEADER (PGMA-10174),SUP,2023-01-25,2024-04-28,,,10174,1.9.2.1.2.1(Superheater Headers (PG-10))
1542,Engineering,ENG,2023-01-25,2023-09-05,,,10174,1.9.2.1.2.1.1(SH VERTICAL SPACED INLET HEADER (PGMA-10174))
1543,Manufacturing,MFG,2023-09-06,2024-03-29,,,10174,1.9.2.1.2.1.1(SH VERTICAL SPACED INLET HEADER (PGMA-10174))
1544,Dispatch,DIS,2024-03-30,2024-04-28,,,10174,1.9.2.1.2.1.1(SH VERTICAL SPACED INLET HEADER (PGMA-10174))
1545,SH.VERTICAL PLATEN SH 1NLET HEADER (PGMA-10178),SUP,2023-01-25,2024-03-29,,,10178,1.9.2.1.2.1(Superheater Headers (PG-10))
1546,Engineering,ENG,2023-01-25,2023-08-14,,,10178,1.9.2.1.2.1.2(SH.VERTICAL PLATEN SH 1NLET HEADER (PGMA-10178))
1547,Manufacturing,MFG,2023-08-15,2024-02-28,,,10178,1.9.2.1.2.1.2(SH.VERTICAL PLATEN SH 1NLET HEADER (PGMA-10178))
1548,Dispatch,DIS,2024-02-29,2024-03-29,,,10178,1.9.2.1.2.1.2(SH.VERTICAL PLATEN SH 1NLET HEADER (PGMA-10178))
1549,REAR WALL SUPER HEATER INLET HEADER (PGMA-10182),SUP,2023-01-25,2024-08-29,,,10182,1.9.2.1.2.1(Superheater Headers (PG-10))
1550,Engineering,ENG,2023-01-25,2023-11-05,,,10182,1.9.2.1.2.1.3(REAR WALL SUPER HEATER INLET HEADER (PGMA-10182))
1551,Manufacturing,MFG,2023-11-06,2024-07-30,,,10182,1.9.2.1.2.1.3(REAR WALL SUPER HEATER INLET HEADER (PGMA-10182))
1552,Dispatch,DIS,2024-07-31,2024-08-29,,,10182,1.9.2.1.2.1.3(REAR WALL SUPER HEATER INLET HEADER (PGMA-10182))
1553,FRONT WALL SUPER HEATER INLET HEADER (PGMA-10183),SUP,2023-01-25,2024-03-29,,,10183,1.9.2.1.2.1(Superheater Headers (PG-10))
1554,Engineering,ENG,2023-01-25,2023-08-14,,,10183,1.9.2.1.2.1.4(FRONT WALL SUPER HEATER INLET HEADER (PGMA-10183))
1555,Manufacturing,MFG,2023-08-15,2024-02-28,,,10183,1.9.2.1.2.1.4(FRONT WALL SUPER HEATER INLET HEADER (PGMA-10183))
1556,Dispatch,DIS,2024-02-29,2024-03-29,,,10183,1.9.2.1.2.1.4(FRONT WALL SUPER HEATER INLET HEADER (PGMA-10183))
1557,SIDE WALL SUPER HEATER INLET HEADER (PGMA-10184),SUP,2023-01-25,2024-05-29,,,10184,1.9.2.1.2.1(Superheater Headers (PG-10))
1558,Engineering,ENG,2023-01-25,2023-09-26,,,10184,1.9.2.1.2.1.5(SIDE WALL SUPER HEATER INLET HEADER (PGMA-10184))
1559,Manufacturing,MFG,2023-09-27,2024-04-29,,,10184,1.9.2.1.2.1.5(SIDE WALL SUPER HEATER INLET HEADER (PGMA-10184))
1560,Dispatch,DIS,2024-04-30,2024-05-29,,,10184,1.9.2.1.2.1.5(SIDE WALL SUPER HEATER INLET HEADER (PGMA-10184))
1561,BP BOTTOM RING HDRS (PGMA-10185),SUP,2023-01-25,2024-03-29,,,10185,1.9.2.1.2.1(Superheater Headers (PG-10))
1562,Engineering,ENG,2023-01-25,2023-08-14,,,10185,1.9.2.1.2.1.6(BP BOTTOM RING HDRS (PGMA-10185))
1563,Manufacturing,MFG,2023-08-15,2024-02-28,,,10185,1.9.2.1.2.1.6(BP BOTTOM RING HDRS (PGMA-10185))
1564,Dispatch,DIS,2024-02-29,2024-03-29,,,10185,1.9.2.1.2.1.6(BP BOTTOM RING HDRS (PGMA-10185))
1565,BACK PASS RING HEADER (PGMA-10191),SUP,2023-01-25,2024-02-26,,,10191,1.9.2.1.2.1(Superheater Headers (PG-10))
1566,Engineering,ENG,2023-01-25,2023-08-04,,,10191,1.9.2.1.2.1.7(BACK PASS RING HEADER (PGMA-10191))
1567,Manufacturing,MFG,2023-08-05,2024-01-27,,,10191,1.9.2.1.2.1.7(BACK PASS RING HEADER (PGMA-10191))
1568,Dispatch,DIS,2024-01-28,2024-02-26,,,10191,1.9.2.1.2.1.7(BACK PASS RING HEADER (PGMA-10191))
1569,SH. VERTICAL SPACED OUTLET HEADER (PGMA-10274),SUP,2023-01-25,2024-04-28,,,10274,1.9.2.1.2.1(Superheater Headers (PG-10))
1570,Engineering,ENG,2023-01-25,2023-09-05,,,10274,1.9.2.1.2.1.8(SH. VERTICAL SPACED OUTLET HEADER (PGMA-10274))
1571,Manufacturing,MFG,2023-09-06,2024-03-29,,,10274,1.9.2.1.2.1.8(SH. VERTICAL SPACED OUTLET HEADER (PGMA-10274))
1572,Dispatch,DIS,2024-03-30,2024-04-28,,,10274,1.9.2.1.2.1.8(SH. VERTICAL SPACED OUTLET HEADER (PGMA-10274))
1573,SH.VERTICAL PLATEN OUTLET HEADER (PGMA-10278),SUP,2023-01-25,2024-03-29,,,10278,1.9.2.1.2.1(Superheater Headers (PG-10))
1574,Engineering,ENG,2023-01-25,2023-08-14,,,10278,1.9.2.1.2.1.9(SH.VERTICAL PLATEN OUTLET HEADER (PGMA-10278))
1575,Manufacturing,MFG,2023-08-15,2024-02-28,,,10278,1.9.2.1.2.1.9(SH.VERTICAL PLATEN OUTLET HEADER (PGMA-10278))
1576,Dispatch,DIS,2024-02-29,2024-03-29,,,10278,1.9.2.1.2.1.9(SH.VERTICAL PLATEN OUTLET HEADER (PGMA-10278))
1577,SH. BACKPASS SIDE WALL FRONT OUTLET HDR. (PGMA-10283),SUP,2023-01-25,2024-03-29,,,10283,1.9.2.1.2.1(Superheater Headers (PG-10))
1578,Engineering,ENG,2023-01-25,2023-08-14,,,10283,1.9.2.1.2.1.10(SH. BACKPASS SIDE WALL FRONT OUTLET HDR. (PGMA-10283))
1579,Manufacturing,MFG,2023-08-15,2024-02-28,,,10283,1.9.2.1.2.1.10(SH. BACKPASS SIDE WALL FRONT OUTLET HDR. (PGMA-10283))
1580,Dispatch,DIS,2024-02-29,2024-03-29,,,10283,1.9.2.1.2.1.10(SH. BACKPASS SIDE WALL FRONT OUTLET HDR. (PGMA-10283))
1581,SIDE WALL SUPER HEATER OUTLET HEADER (PGMA-10284),SUP,2023-01-25,2024-06-28,,,10284,1.9.2.1.2.1(Superheater Headers (PG-10))
1582,Engineering,ENG,2023-01-25,2023-10-06,,,10284,1.9.2.1.2.1.11(SIDE WALL SUPER HEATER OUTLET HEADER (PGMA-10284))
1583,Manufacturing,MFG,2023-10-07,2024-05-29,,,10284,1.9.2.1.2.1.11(SIDE WALL SUPER HEATER OUTLET HEADER (PGMA-10284))
1584,Dispatch,DIS,2024-05-30,2024-06-28,,,10284,1.9.2.1.2.1.11(SIDE WALL SUPER HEATER OUTLET HEADER (PGMA-10284))
1585,SH front wall outlet header (PGMA-10285),SUP,2023-01-25,2024-04-28,,,10285,1.9.2.1.2.1(Superheater Headers (PG-10))
1586,Engineering,ENG,2023-01-25,2023-09-05,,,10285,1.9.2.1.2.1.12(SH front wall outlet header (PGMA-10285))
1587,Manufacturing,MFG,2023-09-06,2024-03-29,,,10285,1.9.2.1.2.1.12(SH front wall outlet header (PGMA-10285))
1588,Dispatch,DIS,2024-03-30,2024-04-28,,,10285,1.9.2.1.2.1.12(SH front wall outlet header (PGMA-10285))
1589,SH RADIANT ROOF OUTLET HDR (PGMA-10291),SUP,2023-01-25,2024-04-28,,,10291,1.9.2.1.2.1(Superheater Headers (PG-10))
1590,Engineering,ENG,2023-01-25,2023-09-05,,,10291,1.9.2.1.2.1.13(SH RADIANT ROOF OUTLET HDR (PGMA-10291))
1591,Manufacturing,MFG,2023-09-06,2024-03-29,,,10291,1.9.2.1.2.1.13(SH RADIANT ROOF OUTLET HDR (PGMA-10291))
1592,Dispatch,DIS,2024-03-30,2024-04-28,,,10291,1.9.2.1.2.1.13(SH RADIANT ROOF OUTLET HDR (PGMA-10291))
1593,Superheater Coils and Walls (PG-11),SUP,2023-01-25,2024-08-29,,,PG11,1.9.2.1.2(Super Heaters and Re-Heaters )
1594,FINISH SH FRNT ASSY WITH I/T TER & CROSSOVERTUBES (PGMA-11074),SUP,2023-01-25,2024-04-28,,,11074,1.9.2.1.2.2(Superheater Coils and Walls (PG-11))
1595,Engineering,ENG,2023-01-25,2023-09-05,,,11074,1.9.2.1.2.2.1(FINISH SH FRNT ASSY WITH I/T TER & CROSSOVERTUBES (PGMA-11074))
1596,Manufacturing,MFG,2023-09-06,2024-03-29,,,11074,1.9.2.1.2.2.1(FINISH SH FRNT ASSY WITH I/T TER & CROSSOVERTUBES (PGMA-11074))
1597,Dispatch,DIS,2024-03-30,2024-04-28,,,11074,1.9.2.1.2.2.1(FINISH SH FRNT ASSY WITH I/T TER & CROSSOVERTUBES (PGMA-11074))
1598,SH PLATEN ASSY WITH TERM TUBES - LEFT (PGMA-11078),SUP,2023-01-25,2024-04-28,,,11078,1.9.2.1.2.2(Superheater Coils and Walls (PG-11))
1599,Engineering,ENG,2023-01-25,2023-09-05,,,11078,1.9.2.1.2.2.2(SH PLATEN ASSY WITH TERM TUBES - LEFT (PGMA-11078))
1600,Manufacturing,MFG,2023-09-06,2024-03-29,,,11078,1.9.2.1.2.2.2(SH PLATEN ASSY WITH TERM TUBES - LEFT (PGMA-11078))
1601,Dispatch,DIS,2024-03-30,2024-04-28,,,11078,1.9.2.1.2.2.2(SH PLATEN ASSY WITH TERM TUBES - LEFT (PGMA-11078))
1602,FINISH SH REAR ASSY WITH O/T TER & CROSSOVERTUBES (PGMA-11374),SUP,2023-01-25,2024-04-28,,,11374,1.9.2.1.2.2(Superheater Coils and Walls (PG-11))
1603,Engineering,ENG,2023-01-25,2023-09-05,,,11374,1.9.2.1.2.2.3(FINISH SH REAR ASSY WITH O/T TER & CROSSOVERTUBES (PGMA-11374))
1604,Manufacturing,MFG,2023-09-06,2024-03-29,,,11374,1.9.2.1.2.2.3(FINISH SH REAR ASSY WITH O/T TER & CROSSOVERTUBES (PGMA-11374))
1605,Dispatch,DIS,2024-03-30,2024-04-28,,,11374,1.9.2.1.2.2.3(FINISH SH REAR ASSY WITH O/T TER & CROSSOVERTUBES (PGMA-11374))
1606,SH PLATEN ASSY WITH TERM TUBES - RIGHT (PGMA-11378),SUP,2023-01-25,2024-04-28,,,11378,1.9.2.1.2.2(Superheater Coils and Walls (PG-11))
1607,Engineering,ENG,2023-01-25,2023-09-05,,,11378,1.9.2.1.2.2.4(SH PLATEN ASSY WITH TERM TUBES - RIGHT (PGMA-11378))
1608,Manufacturing,MFG,2023-09-06,2024-03-29,,,11378,1.9.2.1.2.2.4(SH PLATEN ASSY WITH TERM TUBES - RIGHT (PGMA-11378))
1609,Dispatch,DIS,2024-03-30,2024-04-28,,,11378,1.9.2.1.2.2.4(SH PLATEN ASSY WITH TERM TUBES - RIGHT (PGMA-11378))
1610,SH. FRONT WALL PANELS UPPER- OS (PGMA-11406),SUP,2023-01-25,2024-04-28,,,11406,1.9.2.1.2.2(Superheater Coils and Walls (PG-11))
1611,Engineering,ENG,2023-01-25,2023-09-05,,,11406,1.9.2.1.2.2.5(SH. FRONT WALL PANELS UPPER- OS (PGMA-11406))
1612,Manufacturing,MFG,2023-09-06,2024-03-29,,,11406,1.9.2.1.2.2.5(SH. FRONT WALL PANELS UPPER- OS (PGMA-11406))
1613,Dispatch,DIS,2024-03-30,2024-04-28,,,11406,1.9.2.1.2.2.5(SH. FRONT WALL PANELS UPPER- OS (PGMA-11406))
1614,SH LOWER PNL ATTACHMENT (PGMA-11408),SUP,2023-01-25,2024-07-29,,,11408,1.9.2.1.2.2(Superheater Coils and Walls (PG-11))
1615,Engineering,ENG,2023-01-25,2023-10-26,,,11408,1.9.2.1.2.2.6(SH LOWER PNL ATTACHMENT (PGMA-11408))
1616,Manufacturing,MFG,2023-10-27,2024-06-29,,,11408,1.9.2.1.2.2.6(SH LOWER PNL ATTACHMENT (PGMA-11408))
1617,Dispatch,DIS,2024-06-30,2024-07-29,,,11408,1.9.2.1.2.2.6(SH LOWER PNL ATTACHMENT (PGMA-11408))
1618,SH REAR WALL PANELS UPPER (LEFT)-OS (PGMA-11416),SUP,2023-01-25,2024-07-29,,,,1.9.2.1.2.2(Superheater Coils and Walls (PG-11))
1619,Engineering,ENG,2023-01-25,2023-10-26,,,11416,1.9.2.1.2.2.7(SH REAR WALL PANELS UPPER (LEFT)-OS (PGMA-11416))
1620,Manufacturing,MFG,2023-10-27,2024-06-29,,,11416,1.9.2.1.2.2.7(SH REAR WALL PANELS UPPER (LEFT)-OS (PGMA-11416))
1621,Dispatch,DIS,2024-06-30,2024-07-29,,,11416,1.9.2.1.2.2.7(SH REAR WALL PANELS UPPER (LEFT)-OS (PGMA-11416))
1622,SH SW PANELS UPPER REAR (L&R)-OS (PGMA-11467),SUP,2023-01-25,2024-03-29,,,,1.9.2.1.2.2(Superheater Coils and Walls (PG-11))
1623,Engineering,ENG,2023-01-25,2023-08-14,,,11467,1.9.2.1.2.2.8(SH SW PANELS UPPER REAR (L&R)-OS (PGMA-11467))
1624,Manufacturing,MFG,2023-08-15,2024-02-28,,,11467,1.9.2.1.2.2.8(SH SW PANELS UPPER REAR (L&R)-OS (PGMA-11467))
1625,Dispatch,DIS,2024-02-29,2024-03-29,,,11467,1.9.2.1.2.2.8(SH SW PANELS UPPER REAR (L&R)-OS (PGMA-11467))
1626,SH REAR ROOF PANELS (RIGHT)-OS (PGMA-11487),SUP,2023-01-25,2024-03-29,,,,1.9.2.1.2.2(Superheater Coils and Walls (PG-11))
1627,Engineering,ENG,2023-01-25,2023-08-14,,,11487,1.9.2.1.2.2.9(SH REAR ROOF PANELS (RIGHT)-OS (PGMA-11487))
1628,Manufacturing,MFG,2023-08-15,2024-02-28,,,11487,1.9.2.1.2.2.9(SH REAR ROOF PANELS (RIGHT)-OS (PGMA-11487))
1629,Dispatch,DIS,2024-02-29,2024-03-29,,,11487,1.9.2.1.2.2.9(SH REAR ROOF PANELS (RIGHT)-OS (PGMA-11487))
1630,SH. RADIENT ROOF TUBES -OS (PGMA-11491),SUP,2023-01-25,2024-02-26,,,11491,1.9.2.1.2.2(Superheater Coils and Walls (PG-11))
1631,Engineering,ENG,2023-01-25,2023-08-04,,,11491,1.9.2.1.2.2.10(SH. RADIENT ROOF TUBES -OS (PGMA-11491))
1632,Manufacturing,MFG,2023-08-05,2024-01-27,,,11491,1.9.2.1.2.2.10(SH. RADIENT ROOF TUBES -OS (PGMA-11491))
1633,Dispatch,DIS,2024-01-28,2024-02-26,,,11491,1.9.2.1.2.2.10(SH. RADIENT ROOF TUBES -OS (PGMA-11491))
1634,SH. FRONT WALL PANELS UPPER (PGMA-11606),SUP,2023-01-25,2024-04-28,,,11606,1.9.2.1.2.2(Superheater Coils and Walls (PG-11))
1635,Engineering,ENG,2023-01-25,2023-09-05,,,11606,1.9.2.1.2.2.11(SH. FRONT WALL PANELS UPPER (PGMA-11606))
1636,Manufacturing,MFG,2023-09-06,2024-03-29,,,11606,1.9.2.1.2.2.11(SH. FRONT WALL PANELS UPPER (PGMA-11606))
1637,Dispatch,DIS,2024-03-30,2024-04-28,,,11606,1.9.2.1.2.2.11(SH. FRONT WALL PANELS UPPER (PGMA-11606))
1638,SH.FRONT WALL PANELS LOWER (PGMA-11608),SUP,2023-01-25,2024-07-29,,,11608,1.9.2.1.2.2(Superheater Coils and Walls (PG-11))
1639,Engineering,ENG,2023-01-25,2023-10-26,,,11608,1.9.2.1.2.2.12(SH.FRONT WALL PANELS LOWER (PGMA-11608))
1640,Manufacturing,MFG,2023-10-27,2024-06-29,,,11608,1.9.2.1.2.2.12(SH.FRONT WALL PANELS LOWER (PGMA-11608))
1641,Dispatch,DIS,2024-06-30,2024-07-29,,,11608,1.9.2.1.2.2.12(SH.FRONT WALL PANELS LOWER (PGMA-11608))
1642,SH EXTENDED SIDE WALL PANELS (PGMA-11684),SUP,2023-01-25,2024-05-29,,,11684,1.9.2.1.2.2(Superheater Coils and Walls (PG-11))
1643,Engineering,ENG,2023-01-25,2023-09-26,,,11684,1.9.2.1.2.2.13(SH EXTENDED SIDE WALL PANELS (PGMA-11684))
1644,Manufacturing,MFG,2023-09-27,2024-04-29,,,11684,1.9.2.1.2.2.13(SH EXTENDED SIDE WALL PANELS (PGMA-11684))
1645,Dispatch,DIS,2024-04-30,2024-05-29,,,11684,1.9.2.1.2.2.13(SH EXTENDED SIDE WALL PANELS (PGMA-11684))
1646,SH.EXTENDED BOTTOM PANELS (PGMA-11694),SUP,2023-01-25,2024-05-29,,,11694,1.9.2.1.2.2(Superheater Coils and Walls (PG-11))
1647,Engineering,ENG,2023-01-25,2023-09-26,,,11694,1.9.2.1.2.2.14(SH.EXTENDED BOTTOM PANELS (PGMA-11694))
1648,Manufacturing,MFG,2023-09-27,2024-04-29,,,11694,1.9.2.1.2.2.14(SH.EXTENDED BOTTOM PANELS (PGMA-11694))
1649,Dispatch,DIS,2024-04-30,2024-05-29,,,11694,1.9.2.1.2.2.14(SH.EXTENDED BOTTOM PANELS (PGMA-11694))
1650,SH REAR WALL PANELS UPPER (LEFT) (PGMA-11716),SUP,2023-01-25,2024-07-29,,,11716,1.9.2.1.2.2(Superheater Coils and Walls (PG-11))
1651,Engineering,ENG,2023-01-25,2023-10-26,,,11716,1.9.2.1.2.2.15(SH REAR WALL PANELS UPPER (LEFT) (PGMA-11716))
1652,Manufacturing,MFG,2023-10-27,2024-06-29,,,11716,1.9.2.1.2.2.15(SH REAR WALL PANELS UPPER (LEFT) (PGMA-11716))
1653,Dispatch,DIS,2024-06-30,2024-07-29,,,11716,1.9.2.1.2.2.15(SH REAR WALL PANELS UPPER (LEFT) (PGMA-11716))
1654,SH. REAR WALL PANELS LOWER (LEFT) (PGMA-11718),SUP,2023-01-25,2024-07-29,,,11718,1.9.2.1.2.2(Superheater Coils and Walls (PG-11))
1655,Engineering,ENG,2023-01-25,2023-10-26,,,11718,1.9.2.1.2.2.16(SH. REAR WALL PANELS LOWER (LEFT) (PGMA-11718))
1656,Manufacturing,MFG,2023-10-27,2024-06-29,,,11718,1.9.2.1.2.2.16(SH. REAR WALL PANELS LOWER (LEFT) (PGMA-11718))
1657,Dispatch,DIS,2024-06-30,2024-07-29,,,11718,1.9.2.1.2.2.16(SH. REAR WALL PANELS LOWER (LEFT) (PGMA-11718))
1658,SH SIDE WALL PANELS UPPER FRONT (L&R) (PGMA-11767),SUP,2023-01-25,2024-03-29,,,11767,1.9.2.1.2.2(Superheater Coils and Walls (PG-11))
1659,Engineering,ENG,2023-01-25,2023-08-14,,,11767,1.9.2.1.2.2.17(SH SIDE WALL PANELS UPPER FRONT (L&R) (PGMA-11767))
1660,Manufacturing,MFG,2023-08-15,2024-02-28,,,11767,1.9.2.1.2.2.17(SH SIDE WALL PANELS UPPER FRONT (L&R) (PGMA-11767))
1661,Dispatch,DIS,2024-02-29,2024-03-29,,,11767,1.9.2.1.2.2.17(SH SIDE WALL PANELS UPPER FRONT (L&R) (PGMA-11767))
1662,SH. SIDE WALL PANELS LOWER FRONT (L&R) (PGMA-11769),SUP,2023-01-25,2024-08-29,,,11769,1.9.2.1.2.2(Superheater Coils and Walls (PG-11))
1663,Engineering,ENG,2023-01-25,2023-11-05,,,11769,1.9.2.1.2.2.18(SH. SIDE WALL PANELS LOWER FRONT (L&R) (PGMA-11769))
1664,Manufacturing,MFG,2023-11-06,2024-07-30,,,11769,1.9.2.1.2.2.18(SH. SIDE WALL PANELS LOWER FRONT (L&R) (PGMA-11769))
1665,Dispatch,DIS,2024-07-31,2024-08-29,,,11769,1.9.2.1.2.2.18(SH. SIDE WALL PANELS LOWER FRONT (L&R) (PGMA-11769))
1666,SH REAR ROOF PANELS (LEFT) (PGMA-11787),SUP,2023-01-25,2024-08-29,,,11787,1.9.2.1.2.2(Superheater Coils and Walls (PG-11))
1667,Engineering,ENG,2023-01-25,2023-11-05,,,11787,1.9.2.1.2.2.19(SH REAR ROOF PANELS (LEFT) (PGMA-11787))
1668,Manufacturing,MFG,2023-11-06,2024-07-30,,,11787,1.9.2.1.2.2.19(SH REAR ROOF PANELS (LEFT) (PGMA-11787))
1669,Dispatch,DIS,2024-07-31,2024-08-29,,,11787,1.9.2.1.2.2.19(SH REAR ROOF PANELS (LEFT) (PGMA-11787))
1670,SH. RADIENT ROOF TUBES (LEFT) (PGMA-11791),SUP,2023-01-25,2024-02-26,,,11791,1.9.2.1.2.2(Superheater Coils and Walls (PG-11))
1671,Engineering,ENG,2023-01-25,2023-08-04,,,11791,1.9.2.1.2.2.20(SH. RADIENT ROOF TUBES (LEFT) (PGMA-11791))
1672,Manufacturing,MFG,2023-08-05,2024-01-27,,,11791,1.9.2.1.2.2.20(SH. RADIENT ROOF TUBES (LEFT) (PGMA-11791))
1673,Dispatch,DIS,2024-01-28,2024-02-26,,,11791,1.9.2.1.2.2.20(SH. RADIENT ROOF TUBES (LEFT) (PGMA-11791))
1674,SH. REAR WALL PANEL UPPER (RIGHT) (PGMA-11916),SUP,2023-01-25,2024-07-29,,,11916,1.9.2.1.2.2(Superheater Coils and Walls (PG-11))
1675,Engineering,ENG,2023-01-25,2023-10-26,,,11916,1.9.2.1.2.2.21(SH. REAR WALL PANEL UPPER (RIGHT) (PGMA-11916))
1676,Manufacturing,MFG,2023-10-27,2024-06-29,,,11916,1.9.2.1.2.2.21(SH. REAR WALL PANEL UPPER (RIGHT) (PGMA-11916))
1677,Dispatch,DIS,2024-06-30,2024-07-29,,,11916,1.9.2.1.2.2.21(SH. REAR WALL PANEL UPPER (RIGHT) (PGMA-11916))
1678,SH. REAR WALL PANELS LOWER (RIGHT) (PGMA-11918),SUP,2023-01-25,2024-08-29,,,11918,1.9.2.1.2.2(Superheater Coils and Walls (PG-11))
1679,Engineering,ENG,2023-01-25,2023-11-05,,,11918,1.9.2.1.2.2.22(SH. REAR WALL PANELS LOWER (RIGHT) (PGMA-11918))
1680,Manufacturing,MFG,2023-11-06,2024-07-30,,,11918,1.9.2.1.2.2.22(SH. REAR WALL PANELS LOWER (RIGHT) (PGMA-11918))
1681,Dispatch,DIS,2024-07-31,2024-08-29,,,11918,1.9.2.1.2.2.22(SH. REAR WALL PANELS LOWER (RIGHT) (PGMA-11918))
1682,SH. SIDE WALL PANELS UPPER REAR (L&R) (PGMA-11967),SUP,2023-01-25,2024-03-29,,,11967,1.9.2.1.2.2(Superheater Coils and Walls (PG-11))
1683,Engineering,ENG,2023-01-25,2023-08-14,,,11967,1.9.2.1.2.2.23(SH. SIDE WALL PANELS UPPER REAR (L&R) (PGMA-11967))
1684,Manufacturing,MFG,2023-08-15,2024-02-28,,,11967,1.9.2.1.2.2.23(SH. SIDE WALL PANELS UPPER REAR (L&R) (PGMA-11967))
1685,Dispatch,DIS,2024-02-29,2024-03-29,,,11967,1.9.2.1.2.2.23(SH. SIDE WALL PANELS UPPER REAR (L&R) (PGMA-11967))
1686,SH. SIDE WALL PANELS LOWER REAR ( L&R) (PGMA-11969),SUP,2023-01-25,2024-08-29,,,11969,1.9.2.1.2.2(Superheater Coils and Walls (PG-11))
1687,Engineering,ENG,2023-01-25,2023-11-05,,,11969,1.9.2.1.2.2.24(SH. SIDE WALL PANELS LOWER REAR ( L&R) (PGMA-11969))
1688,Manufacturing,MFG,2023-11-06,2024-07-30,,,11969,1.9.2.1.2.2.24(SH. SIDE WALL PANELS LOWER REAR ( L&R) (PGMA-11969))
1689,Dispatch,DIS,2024-07-31,2024-08-29,,,11969,1.9.2.1.2.2.24(SH. SIDE WALL PANELS LOWER REAR ( L&R) (PGMA-11969))
1690,SH REAR ROOF PANELS (RIGHT) (PGMA-11987),SUP,2023-01-25,2024-03-29,,,11987,1.9.2.1.2.2(Superheater Coils and Walls (PG-11))
1691,Engineering,ENG,2023-01-25,2023-08-14,,,11987,1.9.2.1.2.2.25(SH REAR ROOF PANELS (RIGHT) (PGMA-11987))
1692,Manufacturing,MFG,2023-08-15,2024-02-28,,,11987,1.9.2.1.2.2.25(SH REAR ROOF PANELS (RIGHT) (PGMA-11987))
1693,Dispatch,DIS,2024-02-29,2024-03-29,,,11987,1.9.2.1.2.2.25(SH REAR ROOF PANELS (RIGHT) (PGMA-11987))
1694,SH. RADIENT ROOF TUBES (RIGHT) (PGMA-11991),SUP,2023-01-25,2024-05-29,,,11991,1.9.2.1.2.2(Superheater Coils and Walls (PG-11))
1695,Engineering,ENG,2023-01-25,2023-09-26,,,11991,1.9.2.1.2.2.26(SH. RADIENT ROOF TUBES (RIGHT) (PGMA-11991))
1696,Manufacturing,MFG,2023-09-27,2024-04-29,,,11991,1.9.2.1.2.2.26(SH. RADIENT ROOF TUBES (RIGHT) (PGMA-11991))
1697,Dispatch,DIS,2024-04-30,2024-05-29,,,11991,1.9.2.1.2.2.26(SH. RADIENT ROOF TUBES (RIGHT) (PGMA-11991))
1698,Superheater Components (PG-12),SUP,2022-12-26,2024-06-28,,,PG12,1.9.2.1.2(Super Heaters and Re-Heaters )
1699,LP SH CROSSOVERS(RIGHT) (PGMA-12178),SUP,2023-01-25,2024-04-28,,,12178,1.9.2.1.2.3(Superheater Components (PG-12))
1700,Engineering,ENG,2023-01-25,2023-09-05,,,12178,1.9.2.1.2.3.1(LP SH CROSSOVERS(RIGHT) (PGMA-12178))
1701,Manufacturing,MFG,2023-09-06,2024-03-29,,,12178,1.9.2.1.2.3.1(LP SH CROSSOVERS(RIGHT) (PGMA-12178))
1702,Dispatch,DIS,2024-03-30,2024-04-28,,,12178,1.9.2.1.2.3.1(LP SH CROSSOVERS(RIGHT) (PGMA-12178))
1703,SH.EXTD. SIDE WALL INLET PIPE (PGMA-12184),SUP,2023-01-25,2024-03-29,,,12184,1.9.2.1.2.3(Superheater Components (PG-12))
1704,Engineering,ENG,2023-01-25,2023-08-14,,,12184,1.9.2.1.2.3.2(SH.EXTD. SIDE WALL INLET PIPE (PGMA-12184))
1705,Manufacturing,MFG,2023-08-15,2024-02-28,,,12184,1.9.2.1.2.3.2(SH.EXTD. SIDE WALL INLET PIPE (PGMA-12184))
1706,Dispatch,DIS,2024-02-29,2024-03-29,,,12184,1.9.2.1.2.3.2(SH.EXTD. SIDE WALL INLET PIPE (PGMA-12184))
1707,SH. EXTD.SIDE WALL OUTLET PIPE (PGMA-12187),SUP,2023-01-25,2024-04-28,,,12187,1.9.2.1.2.3(Superheater Components (PG-12))
1708,Engineering,ENG,2023-01-25,2023-09-05,,,12187,1.9.2.1.2.3.3(SH. EXTD.SIDE WALL OUTLET PIPE (PGMA-12187))
1709,Manufacturing,MFG,2023-09-06,2024-03-29,,,12187,1.9.2.1.2.3.3(SH. EXTD.SIDE WALL OUTLET PIPE (PGMA-12187))
1710,Dispatch,DIS,2024-03-30,2024-04-28,,,12187,1.9.2.1.2.3.3(SH. EXTD.SIDE WALL OUTLET PIPE (PGMA-12187))
1711,SH SUPPORT FOR LINES AND LINKS DD ITEM (PGMA-12306),SUP,2023-01-25,2024-03-29,,,12306,1.9.2.1.2.3(Superheater Components (PG-12))
1712,Engineering,ENG,2023-01-25,2023-08-14,,,12306,1.9.2.1.2.3.4(SH SUPPORT FOR LINES AND LINKS DD ITEM (PGMA-12306))
1713,Manufacturing,MFG,2023-08-15,2024-02-28,,,12306,1.9.2.1.2.3.4(SH SUPPORT FOR LINES AND LINKS DD ITEM (PGMA-12306))
1714,Dispatch,DIS,2024-02-29,2024-03-29,,,12306,1.9.2.1.2.3.4(SH SUPPORT FOR LINES AND LINKS DD ITEM (PGMA-12306))
1715,SUSPN OF SH RAD ROOF HDRS-DD (PGMA-12314),SUP,2022-12-26,2024-01-27,,,12314,1.9.2.1.2.3(Superheater Components (PG-12))
1716,Engineering,ENG,2022-12-26,2023-07-05,,,12314,1.9.2.1.2.3.5(SUSPN OF SH RAD ROOF HDRS-DD (PGMA-12314))
1717,Manufacturing,MFG,2023-07-06,2023-12-28,,,12314,1.9.2.1.2.3.5(SUSPN OF SH RAD ROOF HDRS-DD (PGMA-12314))
1718,Dispatch,DIS,2023-12-29,2024-01-27,,,12314,1.9.2.1.2.3.5(SUSPN OF SH RAD ROOF HDRS-DD (PGMA-12314))
1719,SUSPN OF RADIANT ROOF-DD (PGMA-12317),SUP,2023-01-25,2024-02-26,,,12317,1.9.2.1.2.3(Superheater Components (PG-12))
1720,Engineering,ENG,2023-01-25,2023-08-04,,,12317,1.9.2.1.2.3.6(SUSPN OF RADIANT ROOF-DD (PGMA-12317))
1721,Manufacturing,MFG,2023-08-05,2024-01-27,,,12317,1.9.2.1.2.3.6(SUSPN OF RADIANT ROOF-DD (PGMA-12317))
1722,Dispatch,DIS,2024-01-28,2024-02-26,,,12317,1.9.2.1.2.3.6(SUSPN OF RADIANT ROOF-DD (PGMA-12317))
1723,SUSPN OF BP TOP HEADERS-DD (PGMA-12324),SUP,2022-12-26,2024-01-27,,,12324,1.9.2.1.2.3(Superheater Components (PG-12))
1724,Engineering,ENG,2022-12-26,2023-07-05,,,12324,1.9.2.1.2.3.7(SUSPN OF BP TOP HEADERS-DD (PGMA-12324))
1725,Manufacturing,MFG,2023-07-06,2023-12-28,,,12324,1.9.2.1.2.3.7(SUSPN OF BP TOP HEADERS-DD (PGMA-12324))
1726,Dispatch,DIS,2023-12-29,2024-01-27,,,12324,1.9.2.1.2.3.7(SUSPN OF BP TOP HEADERS-DD (PGMA-12324))
1727,SUSPN OF REAR ROOF-DD (PGMA-12327),SUP,2023-01-25,2024-02-26,,,12327,1.9.2.1.2.3(Superheater Components (PG-12))
1728,Engineering,ENG,2023-01-25,2023-08-04,,,12327,1.9.2.1.2.3.8(SUSPN OF REAR ROOF-DD (PGMA-12327))
1729,Manufacturing,MFG,2023-08-05,2024-01-27,,,12327,1.9.2.1.2.3.8(SUSPN OF REAR ROOF-DD (PGMA-12327))
1730,Dispatch,DIS,2024-01-28,2024-02-26,,,12327,1.9.2.1.2.3.8(SUSPN OF REAR ROOF-DD (PGMA-12327))
1731,SUSPN SH H.TUBES FT&REAR WL-DD (PGMA-12328),SUP,2023-01-25,2024-03-29,,,12328,1.9.2.1.2.3(Superheater Components (PG-12))
1732,Engineering,ENG,2023-01-25,2023-08-14,,,12328,1.9.2.1.2.3.9(SUSPN SH H.TUBES FT&REAR WL-DD (PGMA-12328))
1733,Manufacturing,MFG,2023-08-15,2024-02-28,,,12328,1.9.2.1.2.3.9(SUSPN SH H.TUBES FT&REAR WL-DD (PGMA-12328))
1734,Dispatch,DIS,2024-02-29,2024-03-29,,,12328,1.9.2.1.2.3.9(SUSPN SH H.TUBES FT&REAR WL-DD (PGMA-12328))
1735,SUSPN OF SH PLA&SH DIVI PANTE HDR-DD (PGMA-12344),SUP,2022-12-26,2024-01-27,,,12344,1.9.2.1.2.3(Superheater Components (PG-12))
1736,Engineering,ENG,2022-12-26,2023-07-05,,,12344,1.9.2.1.2.3.10(SUSPN OF SH PLA&SH DIVI PANTE HDR-DD (PGMA-12344))
1737,Manufacturing,MFG,2023-07-06,2023-12-28,,,12344,1.9.2.1.2.3.10(SUSPN OF SH PLA&SH DIVI PANTE HDR-DD (PGMA-12344))
1738,Dispatch,DIS,2023-12-29,2024-01-27,,,12344,1.9.2.1.2.3.10(SUSPN OF SH PLA&SH DIVI PANTE HDR-DD (PGMA-12344))
1739,SUSPN OF SHFL.SHSPD.CL.ASY&SH TT.SPD-DD (PGMA-12348),SUP,2023-01-25,2024-02-26,,,12348,1.9.2.1.2.3(Superheater Components (PG-12))
1740,Engineering,ENG,2023-01-25,2023-08-04,,,12348,1.9.2.1.2.3.11(SUSPN OF SHFL.SHSPD.CL.ASY&SH TT.SPD-DD (PGMA-12348))
1741,Manufacturing,MFG,2023-08-05,2024-01-27,,,12348,1.9.2.1.2.3.11(SUSPN OF SHFL.SHSPD.CL.ASY&SH TT.SPD-DD (PGMA-12348))
1742,Dispatch,DIS,2024-01-28,2024-02-26,,,12348,1.9.2.1.2.3.11(SUSPN OF SHFL.SHSPD.CL.ASY&SH TT.SPD-DD (PGMA-12348))
1743,SUSPN OF SH PLN &FINAL SPD. HDR-DD (PGMA-12354),SUP,2022-12-26,2024-01-27,,,12354,1.9.2.1.2.3(Superheater Components (PG-12))
1744,Engineering,ENG,2022-12-26,2023-07-05,,,12354,1.9.2.1.2.3.12(SUSPN OF SH PLN &FINAL SPD. HDR-DD (PGMA-12354))
1745,Manufacturing,MFG,2023-07-06,2023-12-28,,,12354,1.9.2.1.2.3.12(SUSPN OF SH PLN &FINAL SPD. HDR-DD (PGMA-12354))
1746,Dispatch,DIS,2023-12-29,2024-01-27,,,12354,1.9.2.1.2.3.12(SUSPN OF SH PLN &FINAL SPD. HDR-DD (PGMA-12354))
1747,SUSPN OF SH PLATEN COIL ASSY-DD (PGMA-12368),SUP,2023-01-25,2024-02-26,,,12368,1.9.2.1.2.3(Superheater Components (PG-12))
1748,Engineering,ENG,2023-01-25,2023-08-04,,,12368,1.9.2.1.2.3.13(SUSPN OF SH PLATEN COIL ASSY-DD (PGMA-12368))
1749,Manufacturing,MFG,2023-08-05,2024-01-27,,,12368,1.9.2.1.2.3.13(SUSPN OF SH PLATEN COIL ASSY-DD (PGMA-12368))
1750,Dispatch,DIS,2024-01-28,2024-02-26,,,12368,1.9.2.1.2.3.13(SUSPN OF SH PLATEN COIL ASSY-DD (PGMA-12368))
1751,ERECTION MATERIALS & CONSLE-DD (PGMA-12393),SUP,2022-12-26,2023-12-27,,,12393,1.9.2.1.2.3(Superheater Components (PG-12))
1752,Engineering,ENG,2022-12-26,2023-05-26,,,12393,1.9.2.1.2.3.14(ERECTION MATERIALS & CONSLE-DD (PGMA-12393))
1753,Manufacturing,MFG,2023-05-27,2023-11-27,,,12393,1.9.2.1.2.3.14(ERECTION MATERIALS & CONSLE-DD (PGMA-12393))
1754,Dispatch,DIS,2023-11-28,2023-12-27,,,12393,1.9.2.1.2.3.14(ERECTION MATERIALS & CONSLE-DD (PGMA-12393))
1755,SH. HANGER TUBES-OS (PGMA-12405),SUP,2023-01-25,2024-03-29,,,12405,1.9.2.1.2.3(Superheater Components (PG-12))
1756,Engineering,ENG,2023-01-25,2023-08-14,,,12405,1.9.2.1.2.3.15(SH. HANGER TUBES-OS (PGMA-12405))
1757,Manufacturing,MFG,2023-08-15,2024-02-28,,,12405,1.9.2.1.2.3.15(SH. HANGER TUBES-OS (PGMA-12405))
1758,Dispatch,DIS,2024-02-29,2024-03-29,,,12405,1.9.2.1.2.3.15(SH. HANGER TUBES-OS (PGMA-12405))
1759,SH SUPPORT FOR LINES AND LINKS SHOP ITEM (PGMA-12506),SUP,2023-01-25,2024-03-29,,,12506,1.9.2.1.2.3(Superheater Components (PG-12))
1760,Engineering,ENG,2023-01-25,2023-08-14,,,12506,1.9.2.1.2.3.16(SH SUPPORT FOR LINES AND LINKS SHOP ITEM (PGMA-12506))
1761,Manufacturing,MFG,2023-08-15,2024-02-28,,,12506,1.9.2.1.2.3.16(SH SUPPORT FOR LINES AND LINKS SHOP ITEM (PGMA-12506))
1762,Dispatch,DIS,2024-02-29,2024-03-29,,,12506,1.9.2.1.2.3.16(SH SUPPORT FOR LINES AND LINKS SHOP ITEM (PGMA-12506))
1763,SUSPEN OF SH RAD ROOF HDRS-SHOP (PGMA-12514),SUP,2022-12-26,2024-01-27,,,12514,1.9.2.1.2.3(Superheater Components (PG-12))
1764,Engineering,ENG,2022-12-26,2023-07-05,,,12514,1.9.2.1.2.3.17(SUSPEN OF SH RAD ROOF HDRS-SHOP (PGMA-12514))
1765,Manufacturing,MFG,2023-07-06,2023-12-28,,,12514,1.9.2.1.2.3.17(SUSPEN OF SH RAD ROOF HDRS-SHOP (PGMA-12514))
1766,Dispatch,DIS,2023-12-29,2024-01-27,,,12514,1.9.2.1.2.3.17(SUSPEN OF SH RAD ROOF HDRS-SHOP (PGMA-12514))
1767,BP STEAM COOLED HANGER TUBES (PGMA-12515),SUP,2023-01-25,2024-03-29,,,12515,1.9.2.1.2.3(Superheater Components (PG-12))
1768,Engineering,ENG,2023-01-25,2023-08-14,,,12515,1.9.2.1.2.3.18(BP STEAM COOLED HANGER TUBES (PGMA-12515))
1769,Manufacturing,MFG,2023-08-15,2024-02-28,,,12515,1.9.2.1.2.3.18(BP STEAM COOLED HANGER TUBES (PGMA-12515))
1770,Dispatch,DIS,2024-02-29,2024-03-29,,,12515,1.9.2.1.2.3.18(BP STEAM COOLED HANGER TUBES (PGMA-12515))
1771,Suspension Of Sh Back Pass Headers-SH (PGMA-12524),SUP,2022-12-26,2024-01-27,,,12524,1.9.2.1.2.3(Superheater Components (PG-12))
1772,Engineering,ENG,2022-12-26,2023-07-05,,,12524,1.9.2.1.2.3.19(Suspension Of Sh Back Pass Headers-SH (PGMA-12524))
1773,Manufacturing,MFG,2023-07-06,2023-12-28,,,12524,1.9.2.1.2.3.19(Suspension Of Sh Back Pass Headers-SH (PGMA-12524))
1774,Dispatch,DIS,2023-12-29,2024-01-27,,,12524,1.9.2.1.2.3.19(Suspension Of Sh Back Pass Headers-SH (PGMA-12524))
1775,SUSPN OF SH PLA&SH DIVI PANTE HDR-SHOP (PGMA-12544),SUP,2022-12-26,2024-01-27,,,12544,1.9.2.1.2.3(Superheater Components (PG-12))
1776,Engineering,ENG,2022-12-26,2023-07-05,,,12544,1.9.2.1.2.3.20(SUSPN OF SH PLA&SH DIVI PANTE HDR-SHOP (PGMA-12544))
1777,Manufacturing,MFG,2023-07-06,2023-12-28,,,12544,1.9.2.1.2.3.20(SUSPN OF SH PLA&SH DIVI PANTE HDR-SHOP (PGMA-12544))
1778,Dispatch,DIS,2023-12-29,2024-01-27,,,12544,1.9.2.1.2.3.20(SUSPN OF SH PLA&SH DIVI PANTE HDR-SHOP (PGMA-12544))
1779,SUSPN OF SH PLN &FINAL SPD. HDR-SHOP (PGMA-12554),SUP,2022-12-26,2024-01-27,,,12554,1.9.2.1.2.3(Superheater Components (PG-12))
1780,Engineering,ENG,2022-12-26,2023-07-05,,,12554,1.9.2.1.2.3.21(SUSPN OF SH PLN &FINAL SPD. HDR-SHOP (PGMA-12554))
1781,Manufacturing,MFG,2023-07-06,2023-12-28,,,12554,1.9.2.1.2.3.21(SUSPN OF SH PLN &FINAL SPD. HDR-SHOP (PGMA-12554))
1782,Dispatch,DIS,2023-12-29,2024-01-27,,,12554,1.9.2.1.2.3.21(SUSPN OF SH PLN &FINAL SPD. HDR-SHOP (PGMA-12554))
1783,SH STEAM COOLED SPACER TUBES (PGMA-12803),SUP,2023-01-25,2024-05-29,,,12803,1.9.2.1.2.3(Superheater Components (PG-12))
1784,Engineering,ENG,2023-01-25,2023-09-26,,,12803,1.9.2.1.2.3.22(SH STEAM COOLED SPACER TUBES (PGMA-12803))
1785,Manufacturing,MFG,2023-09-27,2024-04-29,,,12803,1.9.2.1.2.3.22(SH STEAM COOLED SPACER TUBES (PGMA-12803))
1786,Dispatch,DIS,2024-04-30,2024-05-29,,,12803,1.9.2.1.2.3.22(SH STEAM COOLED SPACER TUBES (PGMA-12803))
1787,SH. HANGER TUBES (PGMA-12805),SUP,2023-01-25,2024-03-29,,,12805,1.9.2.1.2.3(Superheater Components (PG-12))
1788,Engineering,ENG,2023-01-25,2023-08-14,,,12805,1.9.2.1.2.3.23(SH. HANGER TUBES (PGMA-12805))
1789,Manufacturing,MFG,2023-08-15,2024-02-28,,,12805,1.9.2.1.2.3.23(SH. HANGER TUBES (PGMA-12805))
1790,Dispatch,DIS,2024-02-29,2024-03-29,,,12805,1.9.2.1.2.3.23(SH. HANGER TUBES (PGMA-12805))
1791,SATURATED STEAM CONNECTING PIPE (PGMA-12850),SUP,2023-01-25,2024-03-29,,,12850,1.9.2.1.2.3(Superheater Components (PG-12))
1792,Engineering,ENG,2023-01-25,2023-08-14,,,12850,1.9.2.1.2.3.24(SATURATED STEAM CONNECTING PIPE (PGMA-12850))
1793,Manufacturing,MFG,2023-08-15,2024-02-28,,,12850,1.9.2.1.2.3.24(SATURATED STEAM CONNECTING PIPE (PGMA-12850))
1794,Dispatch,DIS,2024-02-29,2024-03-29,,,12850,1.9.2.1.2.3.24(SATURATED STEAM CONNECTING PIPE (PGMA-12850))
1795,SUPER HEATER DESH LINKS (PGMA-12852),SUP,2023-01-25,2024-03-29,,,12852,1.9.2.1.2.3(Superheater Components (PG-12))
1796,Engineering,ENG,2023-01-25,2023-08-14,,,12852,1.9.2.1.2.3.25(SUPER HEATER DESH LINKS (PGMA-12852))
1797,Manufacturing,MFG,2023-08-15,2024-02-28,,,12852,1.9.2.1.2.3.25(SUPER HEATER DESH LINKS (PGMA-12852))
1798,Dispatch,DIS,2024-02-29,2024-03-29,,,12852,1.9.2.1.2.3.25(SUPER HEATER DESH LINKS (PGMA-12852))
1799,SUPER HEATER DESH (PGMA-12900),SUP,2023-01-25,2024-04-28,,,12900,1.9.2.1.2.3(Superheater Components (PG-12))
1800,Engineering,ENG,2023-01-25,2023-09-05,,,12900,1.9.2.1.2.3.26(SUPER HEATER DESH (PGMA-12900))
1801,Manufacturing,MFG,2023-09-06,2024-03-29,,,12900,1.9.2.1.2.3.26(SUPER HEATER DESH (PGMA-12900))
1802,Dispatch,DIS,2024-03-30,2024-04-28,,,12900,1.9.2.1.2.3.26(SUPER HEATER DESH (PGMA-12900))
1803,SUPER HEATER MISCELLANEOUS COMPONENTS (PGMA-12903),SUP,2023-01-25,2024-06-28,,,12903,1.9.2.1.2.3(Superheater Components (PG-12))
1804,Engineering,ENG,2023-01-25,2023-10-06,,,12903,1.9.2.1.2.3.27(SUPER HEATER MISCELLANEOUS COMPONENTS (PGMA-12903))
1805,Manufacturing,MFG,2023-10-07,2024-05-29,,,12903,1.9.2.1.2.3.27(SUPER HEATER MISCELLANEOUS COMPONENTS (PGMA-12903))
1806,Dispatch,DIS,2024-05-30,2024-06-28,,,12903,1.9.2.1.2.3.27(SUPER HEATER MISCELLANEOUS COMPONENTS (PGMA-12903))
1807,SUPER HEATER LINK SUPPORTS (PGMA-12906),SUP,2023-01-25,2024-03-29,,,12906,1.9.2.1.2.3(Superheater Components (PG-12))
1808,Engineering,ENG,2023-01-25,2023-08-14,,,12906,1.9.2.1.2.3.28(SUPER HEATER LINK SUPPORTS (PGMA-12906))
1809,Manufacturing,MFG,2023-08-15,2024-02-28,,,12906,1.9.2.1.2.3.28(SUPER HEATER LINK SUPPORTS (PGMA-12906))
1810,Dispatch,DIS,2024-02-29,2024-03-29,,,12906,1.9.2.1.2.3.28(SUPER HEATER LINK SUPPORTS (PGMA-12906))
1811,BACKPASS ROOF SUPPORTS (PGMA-12907),SUP,2022-12-26,2024-01-27,,,12907,1.9.2.1.2.3(Superheater Components (PG-12))
1812,Engineering,ENG,2022-12-26,2023-07-05,,,12907,1.9.2.1.2.3.29(BACKPASS ROOF SUPPORTS (PGMA-12907))
1813,Manufacturing,MFG,2023-07-06,2023-12-28,,,12907,1.9.2.1.2.3.29(BACKPASS ROOF SUPPORTS (PGMA-12907))
1814,Dispatch,DIS,2023-12-29,2024-01-27,,,12907,1.9.2.1.2.3.29(BACKPASS ROOF SUPPORTS (PGMA-12907))
1815,SUSPENSION OF SH RADIANT ROOF HEADERS (PGMA-12914),SUP,2022-12-26,2024-01-27,,,12914,1.9.2.1.2.3(Superheater Components (PG-12))
1816,Engineering,ENG,2022-12-26,2023-07-05,,,12914,1.9.2.1.2.3.30(SUSPENSION OF SH RADIANT ROOF HEADERS (PGMA-12914))
1817,Manufacturing,MFG,2023-07-06,2023-12-28,,,12914,1.9.2.1.2.3.30(SUSPENSION OF SH RADIANT ROOF HEADERS (PGMA-12914))
1818,Dispatch,DIS,2023-12-29,2024-01-27,,,12914,1.9.2.1.2.3.30(SUSPENSION OF SH RADIANT ROOF HEADERS (PGMA-12914))
1819,SUSPENSION OF RADIANT ROOF (PGMA-12917),SUP,2023-01-25,2024-02-26,,,12917,1.9.2.1.2.3(Superheater Components (PG-12))
1820,Engineering,ENG,2023-01-25,2023-08-04,,,12917,1.9.2.1.2.3.31(SUSPENSION OF RADIANT ROOF (PGMA-12917))
1821,Manufacturing,MFG,2023-08-05,2024-01-27,,,12917,1.9.2.1.2.3.31(SUSPENSION OF RADIANT ROOF (PGMA-12917))
1822,Dispatch,DIS,2024-01-28,2024-02-26,,,12917,1.9.2.1.2.3.31(SUSPENSION OF RADIANT ROOF (PGMA-12917))
1823,SUPER HEATER BACK PASS HEADER SUSPENSION (PGMA-12924),SUP,2022-12-26,2024-01-27,,,12924,1.9.2.1.2.3(Superheater Components (PG-12))
1824,Engineering,ENG,2022-12-26,2023-07-05,,,12924,1.9.2.1.2.3.32(SUPER HEATER BACK PASS HEADER SUSPENSION (PGMA-12924))
1825,Manufacturing,MFG,2023-07-06,2023-12-28,,,12924,1.9.2.1.2.3.32(SUPER HEATER BACK PASS HEADER SUSPENSION (PGMA-12924))
1826,Dispatch,DIS,2023-12-29,2024-01-27,,,12924,1.9.2.1.2.3.32(SUPER HEATER BACK PASS HEADER SUSPENSION (PGMA-12924))
1827,SUSPENSION OF REAR ROOF (PGMA-12927),SUP,2023-01-25,2024-02-26,,,12927,1.9.2.1.2.3(Superheater Components (PG-12))
1828,Engineering,ENG,2023-01-25,2023-08-04,,,12927,1.9.2.1.2.3.33(SUSPENSION OF REAR ROOF (PGMA-12927))
1829,Manufacturing,MFG,2023-08-05,2024-01-27,,,12927,1.9.2.1.2.3.33(SUSPENSION OF REAR ROOF (PGMA-12927))
1830,Dispatch,DIS,2024-01-28,2024-02-26,,,12927,1.9.2.1.2.3.33(SUSPENSION OF REAR ROOF (PGMA-12927))
1831,SUSPENSIONOFSH HAN.TUBES FT.WL.&REAR WL. (PGMA-12928),SUP,2023-01-25,2024-03-29,,,12928,1.9.2.1.2.3(Superheater Components (PG-12))
1832,Engineering,ENG,2023-01-25,2023-08-14,,,12928,1.9.2.1.2.3.34(SUSPENSIONOFSH HAN.TUBES FT.WL.&REAR WL. (PGMA-12928))
1833,Manufacturing,MFG,2023-08-15,2024-02-28,,,12928,1.9.2.1.2.3.34(SUSPENSIONOFSH HAN.TUBES FT.WL.&REAR WL. (PGMA-12928))
1834,Dispatch,DIS,2024-02-29,2024-03-29,,,12928,1.9.2.1.2.3.34(SUSPENSIONOFSH HAN.TUBES FT.WL.&REAR WL. (PGMA-12928))
1835,SUSPENSION OF SH PLA.&SH DIVI.PANTE. HDR (PGMA-12944),SUP,2022-12-26,2024-01-27,,,12944,1.9.2.1.2.3(Superheater Components (PG-12))
1836,Engineering,ENG,2022-12-26,2023-07-05,,,12944,1.9.2.1.2.3.35(SUSPENSION OF SH PLA.&SH DIVI.PANTE. HDR (PGMA-12944))
1837,Manufacturing,MFG,2023-07-06,2023-12-28,,,12944,1.9.2.1.2.3.35(SUSPENSION OF SH PLA.&SH DIVI.PANTE. HDR (PGMA-12944))
1838,Dispatch,DIS,2023-12-29,2024-01-27,,,12944,1.9.2.1.2.3.35(SUSPENSION OF SH PLA.&SH DIVI.PANTE. HDR (PGMA-12944))
1839,SUSPN.OFSHFL.SHSPD.CL.ASY&LTSHTER.TE.SPD (PGMA-12948),SUP,2023-01-25,2024-02-26,,,12948,1.9.2.1.2.3(Superheater Components (PG-12))
1840,Engineering,ENG,2023-01-25,2023-08-04,,,12948,1.9.2.1.2.3.36(SUSPN.OFSHFL.SHSPD.CL.ASY&LTSHTER.TE.SPD (PGMA-12948))
1841,Manufacturing,MFG,2023-08-05,2024-01-27,,,12948,1.9.2.1.2.3.36(SUSPN.OFSHFL.SHSPD.CL.ASY&LTSHTER.TE.SPD (PGMA-12948))
1842,Dispatch,DIS,2024-01-28,2024-02-26,,,12948,1.9.2.1.2.3.36(SUSPN.OFSHFL.SHSPD.CL.ASY&LTSHTER.TE.SPD (PGMA-12948))
1843,SUSPENSION OF SH PLN HDR&FINAL SPD. HDR (PGMA-12954),SUP,2022-12-26,2024-01-27,,,12954,1.9.2.1.2.3(Superheater Components (PG-12))
1844,Engineering,ENG,2022-12-26,2023-07-05,,,12954,1.9.2.1.2.3.37(SUSPENSION OF SH PLN HDR&FINAL SPD. HDR (PGMA-12954))
1845,Manufacturing,MFG,2023-07-06,2023-12-28,,,12954,1.9.2.1.2.3.37(SUSPENSION OF SH PLN HDR&FINAL SPD. HDR (PGMA-12954))
1846,Dispatch,DIS,2023-12-29,2024-01-27,,,12954,1.9.2.1.2.3.37(SUSPENSION OF SH PLN HDR&FINAL SPD. HDR (PGMA-12954))
1847,SUSPENSION OF SH PLATEN COIL ASSY (PGMA-12968),SUP,2023-01-25,2024-02-26,,,12968,1.9.2.1.2.3(Superheater Components (PG-12))
1848,Engineering,ENG,2023-01-25,2023-08-04,,,12968,1.9.2.1.2.3.38(SUSPENSION OF SH PLATEN COIL ASSY (PGMA-12968))
1849,Manufacturing,MFG,2023-08-05,2024-01-27,,,12968,1.9.2.1.2.3.38(SUSPENSION OF SH PLATEN COIL ASSY (PGMA-12968))
1850,Dispatch,DIS,2024-01-28,2024-02-26,,,12968,1.9.2.1.2.3.38(SUSPENSION OF SH PLATEN COIL ASSY (PGMA-12968))
1851,SH. IMPORTED ELECTRODES (PGMA-12991),SUP,2022-12-26,2023-12-27,,,12991,1.9.2.1.2.3(Superheater Components (PG-12))
1852,Engineering,ENG,2022-12-26,2023-05-26,,,12991,1.9.2.1.2.3.39(SH. IMPORTED ELECTRODES (PGMA-12991))
1853,Manufacturing,MFG,2023-05-27,2023-11-27,,,12991,1.9.2.1.2.3.39(SH. IMPORTED ELECTRODES (PGMA-12991))
1854,Dispatch,DIS,2023-11-28,2023-12-27,,,12991,1.9.2.1.2.3.39(SH. IMPORTED ELECTRODES (PGMA-12991))
1855,IMPORTED ELECTRODES (PGMA-12992),SUP,2023-01-25,2024-03-29,,,12992,1.9.2.1.2.3(Superheater Components (PG-12))
1856,Engineering,ENG,2023-01-25,2023-08-14,,,12992,1.9.2.1.2.3.40(IMPORTED ELECTRODES (PGMA-12992))
1857,Manufacturing,MFG,2023-08-15,2024-02-28,,,12992,1.9.2.1.2.3.40(IMPORTED ELECTRODES (PGMA-12992))
1858,Dispatch,DIS,2024-02-29,2024-03-29,,,12992,1.9.2.1.2.3.40(IMPORTED ELECTRODES (PGMA-12992))
1859,ERECTION MATERIALS (PGMA-12993),SUP,2022-12-26,2023-12-27,,,12993,1.9.2.1.2.3(Superheater Components (PG-12))
1860,Engineering,ENG,2022-12-26,2023-05-26,,,12993,1.9.2.1.2.3.41(ERECTION MATERIALS (PGMA-12993))
1861,Manufacturing,MFG,2023-05-27,2023-11-27,,,12993,1.9.2.1.2.3.41(ERECTION MATERIALS (PGMA-12993))
1862,Dispatch,DIS,2023-11-28,2023-12-27,,,12993,1.9.2.1.2.3.41(ERECTION MATERIALS (PGMA-12993))
1863,Reheater Headers (PG-15),SUP,2023-01-25,2024-07-29,,,PG15,1.9.2.1.2(Super Heaters and Re-Heaters )
1864,REHEATER-I INLET HEADER (PGMA-15136),SUP,2023-01-25,2024-07-29,,,15136,1.9.2.1.2.4(Reheater Headers (PG-15))
1865,Engineering,ENG,2023-01-25,2023-10-26,,,15136,1.9.2.1.2.4.1(REHEATER-I INLET HEADER (PGMA-15136))
1866,Manufacturing,MFG,2023-10-27,2024-06-29,,,15136,1.9.2.1.2.4.1(REHEATER-I INLET HEADER (PGMA-15136))
1867,Dispatch,DIS,2024-06-30,2024-07-29,,,15136,1.9.2.1.2.4.1(REHEATER-I INLET HEADER (PGMA-15136))
1868,FINISH RH I/L HDR (PGMA-15178),SUP,2023-01-25,2024-03-29,,,15178,1.9.2.1.2.4(Reheater Headers (PG-15))
1869,Engineering,ENG,2023-01-25,2023-08-14,,,15178,1.9.2.1.2.4.2(FINISH RH I/L HDR (PGMA-15178))
1870,Manufacturing,MFG,2023-08-15,2024-02-28,,,15178,1.9.2.1.2.4.2(FINISH RH I/L HDR (PGMA-15178))
1871,Dispatch,DIS,2024-02-29,2024-03-29,,,15178,1.9.2.1.2.4.2(FINISH RH I/L HDR (PGMA-15178))
1872,REHEATER-I OUTLET HEADER (PGMA-15236),SUP,2023-01-25,2024-03-29,,,15236,1.9.2.1.2.4(Reheater Headers (PG-15))
1873,Engineering,ENG,2023-01-25,2023-08-14,,,15236,1.9.2.1.2.4.3(REHEATER-I OUTLET HEADER (PGMA-15236))
1874,Manufacturing,MFG,2023-08-15,2024-02-28,,,15236,1.9.2.1.2.4.3(REHEATER-I OUTLET HEADER (PGMA-15236))
1875,Dispatch,DIS,2024-02-29,2024-03-29,,,15236,1.9.2.1.2.4.3(REHEATER-I OUTLET HEADER (PGMA-15236))
1876,REHEATER VERT PLATEN OUTLET HEADER RHH (PGMA-15278),SUP,2023-01-25,2024-03-29,,,15278,1.9.2.1.2.4(Reheater Headers (PG-15))
1877,Engineering,ENG,2023-01-25,2023-08-14,,,15278,1.9.2.1.2.4.4(REHEATER VERT PLATEN OUTLET HEADER RHH (PGMA-15278))
1878,Manufacturing,MFG,2023-08-15,2024-02-28,,,15278,1.9.2.1.2.4.4(REHEATER VERT PLATEN OUTLET HEADER RHH (PGMA-15278))
1879,Dispatch,DIS,2024-02-29,2024-03-29,,,15278,1.9.2.1.2.4.4(REHEATER VERT PLATEN OUTLET HEADER RHH (PGMA-15278))
1880,Reheater Coils and Walls (PG-16),SUP,2023-01-25,2024-06-28,,,PG16,1.9.2.1.2(Super Heaters and Re-Heaters )
1881,RH VER PLATEN FRONT COIL ASY LEFT (PGMA-16079),SUP,2023-01-25,2024-03-29,,,16079,1.9.2.1.2.5(Reheater Coils and Walls (PG-16))
1882,Engineering,ENG,2023-01-25,2023-08-14,,,16079,1.9.2.1.2.5.1(RH VER PLATEN FRONT COIL ASY LEFT (PGMA-16079))
1883,Manufacturing,MFG,2023-08-15,2024-02-28,,,16079,1.9.2.1.2.5.1(RH VER PLATEN FRONT COIL ASY LEFT (PGMA-16079))
1884,Dispatch,DIS,2024-02-29,2024-03-29,,,16079,1.9.2.1.2.5.1(RH VER PLATEN FRONT COIL ASY LEFT (PGMA-16079))
1885,LTRH UPPER ASSY (PGMA-16201),SUP,2023-01-25,2024-04-28,,,16201,1.9.2.1.2.5(Reheater Coils and Walls (PG-16))
1886,Engineering,ENG,2023-01-25,2023-09-05,,,16201,1.9.2.1.2.5.2(LTRH UPPER ASSY (PGMA-16201))
1887,Manufacturing,MFG,2023-09-06,2024-03-29,,,16201,1.9.2.1.2.5.2(LTRH UPPER ASSY (PGMA-16201))
1888,Dispatch,DIS,2024-03-30,2024-04-28,,,16201,1.9.2.1.2.5.2(LTRH UPPER ASSY (PGMA-16201))
1889,LTRH INTERMEDIATE ASSY (PGMA-16202),SUP,2023-01-25,2024-04-28,,,16202,1.9.2.1.2.5(Reheater Coils and Walls (PG-16))
1890,Engineering,ENG,2023-01-25,2023-09-05,,,16202,1.9.2.1.2.5.3(LTRH INTERMEDIATE ASSY (PGMA-16202))
1891,Manufacturing,MFG,2023-09-06,2024-03-29,,,16202,1.9.2.1.2.5.3(LTRH INTERMEDIATE ASSY (PGMA-16202))
1892,Dispatch,DIS,2024-03-30,2024-04-28,,,16202,1.9.2.1.2.5.3(LTRH INTERMEDIATE ASSY (PGMA-16202))
1893,LTRH coils lower (PGMA-16203),SUP,2023-01-25,2024-06-28,,,16203,1.9.2.1.2.5(Reheater Coils and Walls (PG-16))
1894,Engineering,ENG,2023-01-25,2023-10-06,,,16203,1.9.2.1.2.5.4(LTRH coils lower (PGMA-16203))
1895,Manufacturing,MFG,2023-10-07,2024-05-29,,,16203,1.9.2.1.2.5.4(LTRH coils lower (PGMA-16203))
1896,Dispatch,DIS,2024-05-30,2024-06-28,,,16203,1.9.2.1.2.5.4(LTRH coils lower (PGMA-16203))
1897,LTRH PENDANT ASSY WITH OUTLET TERM TUBES (PGMA-16270),SUP,2023-01-25,2024-06-28,,,16270,1.9.2.1.2.5(Reheater Coils and Walls (PG-16))
1898,Engineering,ENG,2023-01-25,2023-10-06,,,16270,1.9.2.1.2.5.5(LTRH PENDANT ASSY WITH OUTLET TERM TUBES (PGMA-16270))
1899,Manufacturing,MFG,2023-10-07,2024-05-29,,,16270,1.9.2.1.2.5.5(LTRH PENDANT ASSY WITH OUTLET TERM TUBES (PGMA-16270))
1900,Dispatch,DIS,2024-05-30,2024-06-28,,,16270,1.9.2.1.2.5.5(LTRH PENDANT ASSY WITH OUTLET TERM TUBES (PGMA-16270))
1901,RHVERTICAL PLATEN FRONT COIL ASSY. (RIT) (PGMA-16379),SUP,2023-01-25,2024-03-29,,,16379,1.9.2.1.2.5(Reheater Coils and Walls (PG-16))
1902,Engineering,ENG,2023-01-25,2023-08-14,,,16379,1.9.2.1.2.5.6(RHVERTICAL PLATEN FRONT COIL ASSY. (RIT) (PGMA-16379))
1903,Manufacturing,MFG,2023-08-15,2024-02-28,,,16379,1.9.2.1.2.5.6(RHVERTICAL PLATEN FRONT COIL ASSY. (RIT) (PGMA-16379))
1904,Dispatch,DIS,2024-02-29,2024-03-29,,,16379,1.9.2.1.2.5.6(RHVERTICAL PLATEN FRONT COIL ASSY. (RIT) (PGMA-16379))
1905,Reheater Components (PG-17),SUP,2023-01-25,2024-09-27,,,PG17,1.9.2.1.2(Super Heaters and Re-Heaters )
1906,LINK TO RH DESUPERHEATER (PGMA-17174),SUP,2023-01-25,2024-03-29,,,17174,1.9.2.1.2.6(Reheater Components (PG-17))
1907,Engineering,ENG,2023-01-25,2023-08-14,,,17174,1.9.2.1.2.6.1(LINK TO RH DESUPERHEATER (PGMA-17174))
1908,Manufacturing,MFG,2023-08-15,2024-02-28,,,17174,1.9.2.1.2.6.1(LINK TO RH DESUPERHEATER (PGMA-17174))
1909,Dispatch,DIS,2024-02-29,2024-03-29,,,17174,1.9.2.1.2.6.1(LINK TO RH DESUPERHEATER (PGMA-17174))
1910,Rh Hdr Supports & Suspensions Above Roof-DD (PGMA-17304),SUP,2023-01-25,2024-02-26,,,17304,1.9.2.1.2.6(Reheater Components (PG-17))
1911,Engineering,ENG,2023-01-25,2023-08-04,,,17304,1.9.2.1.2.6.2(Rh Hdr Supports & Suspensions Above Roof-DD (PGMA-17304))
1912,Manufacturing,MFG,2023-08-05,2024-01-27,,,17304,1.9.2.1.2.6.2(Rh Hdr Supports & Suspensions Above Roof-DD (PGMA-17304))
1913,Dispatch,DIS,2024-01-28,2024-02-26,,,17304,1.9.2.1.2.6.2(Rh Hdr Supports & Suspensions Above Roof-DD (PGMA-17304))
1914,RH LINKS SUPPORTS-DD (PGMA-17306),SUP,2023-01-25,2024-03-29,,,17306,1.9.2.1.2.6(Reheater Components (PG-17))
1915,Engineering,ENG,2023-01-25,2023-08-14,,,17306,1.9.2.1.2.6.3(RH LINKS SUPPORTS-DD (PGMA-17306))
1916,Manufacturing,MFG,2023-08-15,2024-02-28,,,17306,1.9.2.1.2.6.3(RH LINKS SUPPORTS-DD (PGMA-17306))
1917,Dispatch,DIS,2024-02-29,2024-03-29,,,17306,1.9.2.1.2.6.3(RH LINKS SUPPORTS-DD (PGMA-17306))
1918,RH FRONT COIL SUSPENSION-DD (PGMA-17319),SUP,2023-01-25,2024-02-26,,,17319,1.9.2.1.2.6(Reheater Components (PG-17))
1919,Engineering,ENG,2023-01-25,2023-08-04,,,17319,1.9.2.1.2.6.4(RH FRONT COIL SUSPENSION-DD (PGMA-17319))
1920,Manufacturing,MFG,2023-08-05,2024-01-27,,,17319,1.9.2.1.2.6.4(RH FRONT COIL SUSPENSION-DD (PGMA-17319))
1921,Dispatch,DIS,2024-01-28,2024-02-26,,,17319,1.9.2.1.2.6.4(RH FRONT COIL SUSPENSION-DD (PGMA-17319))
1922,SC SPACER TUBES FOR RH. COIL-OS (PGMA-17407),SUP,2023-01-25,2024-03-29,,,17407,1.9.2.1.2.6(Reheater Components (PG-17))
1923,Engineering,ENG,2023-01-25,2023-08-14,,,17407,1.9.2.1.2.6.5(SC SPACER TUBES FOR RH. COIL-OS (PGMA-17407))
1924,Manufacturing,MFG,2023-08-15,2024-02-28,,,17407,1.9.2.1.2.6.5(SC SPACER TUBES FOR RH. COIL-OS (PGMA-17407))
1925,Dispatch,DIS,2024-02-29,2024-03-29,,,17407,1.9.2.1.2.6.5(SC SPACER TUBES FOR RH. COIL-OS (PGMA-17407))
1926,RH HEADER SUPPORTS-SHOP (PGMA-17504),SUP,2023-01-25,2024-02-26,,,17504,1.9.2.1.2.6(Reheater Components (PG-17))
1927,Engineering,ENG,2023-01-25,2023-08-04,,,17504,1.9.2.1.2.6.6(RH HEADER SUPPORTS-SHOP (PGMA-17504))
1928,Manufacturing,MFG,2023-08-05,2024-01-27,,,17504,1.9.2.1.2.6.6(RH HEADER SUPPORTS-SHOP (PGMA-17504))
1929,Dispatch,DIS,2024-01-28,2024-02-26,,,17504,1.9.2.1.2.6.6(RH HEADER SUPPORTS-SHOP (PGMA-17504))
1930,RH LINKS SUPPORTS-SHOP (PGMA-17506),SUP,2023-01-25,2024-03-29,,,17506,1.9.2.1.2.6(Reheater Components (PG-17))
1931,Engineering,ENG,2023-01-25,2023-08-14,,,17506,1.9.2.1.2.6.7(RH LINKS SUPPORTS-SHOP (PGMA-17506))
1932,Manufacturing,MFG,2023-08-15,2024-02-28,,,17506,1.9.2.1.2.6.7(RH LINKS SUPPORTS-SHOP (PGMA-17506))
1933,Dispatch,DIS,2024-02-29,2024-03-29,,,17506,1.9.2.1.2.6.7(RH LINKS SUPPORTS-SHOP (PGMA-17506))
1934,STEAM COOLED SPACER TUBES FOR RH. COIL (PGMA-17807),SUP,2023-01-25,2024-08-29,,,17807,1.9.2.1.2.6(Reheater Components (PG-17))
1935,Engineering,ENG,2023-01-25,2023-11-05,,,17807,1.9.2.1.2.6.8(STEAM COOLED SPACER TUBES FOR RH. COIL (PGMA-17807))
1936,Manufacturing,MFG,2023-11-06,2024-07-30,,,17807,1.9.2.1.2.6.8(STEAM COOLED SPACER TUBES FOR RH. COIL (PGMA-17807))
1937,Dispatch,DIS,2024-07-31,2024-08-29,,,17807,1.9.2.1.2.6.8(STEAM COOLED SPACER TUBES FOR RH. COIL (PGMA-17807))
1938,REHEATER DE-SUPER HEATER (PGMA-17900),SUP,2023-01-25,2024-03-29,,,17900,1.9.2.1.2.6(Reheater Components (PG-17))
1939,Engineering,ENG,2023-01-25,2023-08-14,,,17900,1.9.2.1.2.6.9(REHEATER DE-SUPER HEATER (PGMA-17900))
1940,Manufacturing,MFG,2023-08-15,2024-02-28,,,17900,1.9.2.1.2.6.9(REHEATER DE-SUPER HEATER (PGMA-17900))
1941,Dispatch,DIS,2024-02-29,2024-03-29,,,17900,1.9.2.1.2.6.9(REHEATER DE-SUPER HEATER (PGMA-17900))
1942,RH HEADER SUPPORTS (PGMA-17904),SUP,2023-01-25,2024-02-26,,,17904,1.9.2.1.2.6(Reheater Components (PG-17))
1943,Engineering,ENG,2023-01-25,2023-08-04,,,17904,1.9.2.1.2.6.10(RH HEADER SUPPORTS (PGMA-17904))
1944,Manufacturing,MFG,2023-08-05,2024-01-27,,,17904,1.9.2.1.2.6.10(RH HEADER SUPPORTS (PGMA-17904))
1945,Dispatch,DIS,2024-01-28,2024-02-26,,,17904,1.9.2.1.2.6.10(RH HEADER SUPPORTS (PGMA-17904))
1946,RH LINKS SUPPORTS (PGMA-17906),SUP,2023-01-25,2024-03-29,,,17906,1.9.2.1.2.6(Reheater Components (PG-17))
1947,Engineering,ENG,2023-01-25,2023-08-14,,,17906,1.9.2.1.2.6.11(RH LINKS SUPPORTS (PGMA-17906))
1948,Manufacturing,MFG,2023-08-15,2024-02-28,,,17906,1.9.2.1.2.6.11(RH LINKS SUPPORTS (PGMA-17906))
1949,Dispatch,DIS,2024-02-29,2024-03-29,,,17906,1.9.2.1.2.6.11(RH LINKS SUPPORTS (PGMA-17906))
1950,RH FRONT COIL SUSPENSION (PGMA-17919),SUP,2023-01-25,2024-02-26,,,17919,1.9.2.1.2.6(Reheater Components (PG-17))
1951,Engineering,ENG,2023-01-25,2023-08-04,,,17919,1.9.2.1.2.6.12(RH FRONT COIL SUSPENSION (PGMA-17919))
1952,Manufacturing,MFG,2023-08-05,2024-01-27,,,17919,1.9.2.1.2.6.12(RH FRONT COIL SUSPENSION (PGMA-17919))
1953,Dispatch,DIS,2024-01-28,2024-02-26,,,17919,1.9.2.1.2.6.12(RH FRONT COIL SUSPENSION (PGMA-17919))
1954,RH IMPORTED ELECTRODES (PGMA-17991),SUP,2023-01-25,2024-03-29,,,17991,1.9.2.1.2.6(Reheater Components (PG-17))
1955,Engineering,ENG,2023-01-25,2023-08-14,,,17991,1.9.2.1.2.6.13(RH IMPORTED ELECTRODES (PGMA-17991))
1956,Manufacturing,MFG,2023-08-15,2024-02-28,,,17991,1.9.2.1.2.6.13(RH IMPORTED ELECTRODES (PGMA-17991))
1957,Dispatch,DIS,2024-02-29,2024-03-29,,,17991,1.9.2.1.2.6.13(RH IMPORTED ELECTRODES (PGMA-17991))
1958,RH SITE ELECTRODES IMPORTED (PGMA-17992),SUP,2023-01-25,2024-09-27,,,17992,1.9.2.1.2.6(Reheater Components (PG-17))
1959,Engineering,ENG,2023-01-25,2023-11-20,,,17992,1.9.2.1.2.6.14(RH SITE ELECTRODES IMPORTED (PGMA-17992))
1960,Manufacturing,MFG,2023-11-21,2024-08-28,,,17992,1.9.2.1.2.6.14(RH SITE ELECTRODES IMPORTED (PGMA-17992))
1961,Dispatch,DIS,2024-08-29,2024-09-27,,,17992,1.9.2.1.2.6.14(RH SITE ELECTRODES IMPORTED (PGMA-17992))
1962,Erection,ERC,2024-07-26,2026-02-27,,,,"1.9.2(Water Circulation System, Super Heaters and Re-Heaters )"
1963,"Erection: Separator, Storage Tanks including Supports",ERC,2024-07-26,2024-09-23,,,,1.9.2.2(Erection)
1964,Erection & commissioning of Boiler Re-circulation pump,ERC,2025-01-28,2025-07-21,,,,1.9.2.2(Erection)
1965,Erection: PP complete,ERC,2025-06-10,2025-06-10,,,,1.9.2.2(Erection)
1966,"Water Circulation system, Super Heaters and Re-Heaters ",ERC,2024-08-30,2025-11-29,,,,1.9.2.2(Erection)
1967,BACKPASS,ERC,2024-08-30,2025-06-10,,,,"1.9.2.2.4(Water Circulation system, Super Heaters and Re-Heaters )"
1968, BACKPASS: Erection of Pressure Part Support Steel and Hanger Rods,ERC,2024-08-30,2024-10-08,,,,1.9.2.2.4.1(BACKPASS)
1969," BACKPASS: Erection of Headers, Links and Connecting Tubes above the Roof Line.",ERC,2024-09-29,2024-11-12,,,,1.9.2.2.4.1(BACKPASS)
1970, BACKPASS: Erection of BP Front Outlet Header and BP Front Screen Tubes,ERC,2024-11-10,2024-11-24,,,,1.9.2.2.4.1(BACKPASS)
1971, BACKPASS: Erection of Backpass Front Fin Weld Panel,ERC,2024-11-22,2024-12-03,,,,1.9.2.2.4.1(BACKPASS)
1972, Back pass of LTRH Outlet Header and Terminal Tubes,ERC,2024-12-04,2024-12-21,,,,1.9.2.2.4.1(BACKPASS)
1973, Back pass of Backpass SC Support Outlet Header and Hanger Tubes,ERC,2024-12-22,2025-01-08,,,,1.9.2.2.4.1(BACKPASS)
1974," Back pass of Finish SH Inlet Header, SH Outlet Header and Terminal Tubes",ERC,2025-01-06,2025-01-14,,,,1.9.2.2.4.1(BACKPASS)
1975, Back pass of BP Upper Side Fin Weld Panels,ERC,2025-01-12,2025-01-20,,,,1.9.2.2.4.1(BACKPASS)
1976, Back pass of BP Roof Panels and BP Hanger tubes,ERC,2025-01-21,2025-02-07,,,,1.9.2.2.4.1(BACKPASS)
1977, Back pass of LTRH Pendant Assembly,ERC,2025-02-08,2025-02-19,,,,1.9.2.2.4.1(BACKPASS)
1978, Back pass of BP Rear FW Panels and BP Lower Side FW Panels,ERC,2025-02-20,2025-03-03,,,,1.9.2.2.4.1(BACKPASS)
1979, Back pass of LTRH Upper and Upper Intermediate Horizontal Assemblies,ERC,2025-03-04,2025-03-15,,,,1.9.2.2.4.1(BACKPASS)
1980, Back pass of LTRH Lower and Lower Intermediate Horizontal Assemblies,ERC,2025-03-16,2025-03-27,,,,1.9.2.2.4.1(BACKPASS)
1981, Back pass of LTRH Inlet Header Assembly,ERC,2025-03-28,2025-04-06,,,,1.9.2.2.4.1(BACKPASS)
1982, Back pass of Economizer Outlet Header Assembly,ERC,2025-04-07,2025-04-15,,,,1.9.2.2.4.1(BACKPASS)
1983, Back pass of Economizer Assemblies,ERC,2025-04-11,2025-04-24,,,,1.9.2.2.4.1(BACKPASS)
1984, Back pass of Economizer Outlet Link,ERC,2025-04-25,2025-04-30,,,,1.9.2.2.4.1(BACKPASS)
1985, Back pass of BP Lower Headers,ERC,2025-05-01,2025-05-12,,,,1.9.2.2.4.1(BACKPASS)
1986, Back pass of Economizer Inlet Header,ERC,2025-05-13,2025-05-21,,,,1.9.2.2.4.1(BACKPASS)
1987, BACKPASS: Final weld out of BP,ERC,2025-05-22,2025-06-10,,,,1.9.2.2.4.1(BACKPASS)
1988, FURNACE PASS AND BP EXTENDED,ERC,2024-11-03,2025-06-05,,,,"1.9.2.2.4(Water Circulation system, Super Heaters and Re-Heaters )"
1989, FURNACE PASS AND BP EXTENDED: Erection of Superheater Connecting Pipe,ERC,2024-11-03,2024-11-16,,,,1.9.2.2.4.2( FURNACE PASS AND BP EXTENDED)
1990, FURNACE PASS AND BP EXTENDED: Erection of BP Extended Side Inlet Headers,ERC,2024-11-14,2024-11-22,,,,1.9.2.2.4.2( FURNACE PASS AND BP EXTENDED)
1991, FURNACE PASS AND BP EXTENDED: Erection of BP Extended Side Panels,ERC,2024-11-18,2024-12-01,,,,1.9.2.2.4.2( FURNACE PASS AND BP EXTENDED)
1992, FURNACE PASS AND BP EXTENDED: Erection of Furnace Roof Panels,ERC,2024-11-30,2024-12-09,,,,1.9.2.2.4.2( FURNACE PASS AND BP EXTENDED)
1993, FURNACE PASS AND BP Back pass of Furnace Upper Sidewall Panels,ERC,2024-12-10,2024-12-19,,,,1.9.2.2.4.2( FURNACE PASS AND BP EXTENDED)
1994, FURNACE PASS AND BP Back pass of Finishing Superheater Rear Assembly,ERC,2024-12-17,2024-12-28,,,,1.9.2.2.4.2( FURNACE PASS AND BP EXTENDED)
1995, FURNACE PASS AND BP Back pass of Finishing Superheater Front Assembly,ERC,2024-12-26,2025-01-06,,,,1.9.2.2.4.2( FURNACE PASS AND BP EXTENDED)
1996, FURNACE PASS AND BP Back pass of Furnace Rear Screen Tubes and Furnace Rear Hanger tubes,ERC,2025-01-04,2025-01-15,,,,1.9.2.2.4.2( FURNACE PASS AND BP EXTENDED)
1997, FURNACE PASS AND BP Back pass of Finish Reheater Inlet Header and Finish Reheater Outlet Header Assemblies,ERC,2025-01-13,2025-01-24,,,,1.9.2.2.4.2( FURNACE PASS AND BP EXTENDED)
1998, FURNACE PASS AND BP Back pass of SH Platen Inlet Header and SH Platen Outlet Assemblies,ERC,2025-01-20,2025-02-02,,,,1.9.2.2.4.2( FURNACE PASS AND BP EXTENDED)
1999, FURNACE PASS AND BP Back pass of Finishing Reheater Assembly,ERC,2025-01-29,2025-02-11,,,,1.9.2.2.4.2( FURNACE PASS AND BP EXTENDED)
2000, FURNACE PASS AND BP Back pass of SH Platen Assembly,ERC,2025-02-09,2025-02-20,,,,1.9.2.2.4.2( FURNACE PASS AND BP EXTENDED)
2001, FURNACE PASS AND BP Back pass of Furnace Upper Front Panels,ERC,2025-02-18,2025-03-01,,,,1.9.2.2.4.2( FURNACE PASS AND BP EXTENDED)
2002, FURNACE PASS AND BP Back pass of Backpass Extended Side Floor Assembly,ERC,2025-02-25,2025-03-10,,,,1.9.2.2.4.2( FURNACE PASS AND BP EXTENDED)
2003, FURNACE PASS AND BP Back pass of Furnace Rear Arch,ERC,2025-03-06,2025-03-17,,,,1.9.2.2.4.2( FURNACE PASS AND BP EXTENDED)
2004, FURNACE PASS AND BP Back pass of Buckstays and levellers,ERC,2025-03-15,2025-03-24,,,,1.9.2.2.4.2( FURNACE PASS AND BP EXTENDED)
2005, FURNACE PASS AND BP levellers of SOFA panel,ERC,2025-03-22,2025-04-04,,,,1.9.2.2.4.2( FURNACE PASS AND BP EXTENDED)
2006, FURNACE PASS AND BP levellers of Transition Headers,ERC,2025-03-31,2025-04-15,,,,1.9.2.2.4.2( FURNACE PASS AND BP EXTENDED)
2007, FURNACE PASS AND BP levellers of windbox and burner panel,ERC,2025-03-27,2025-04-20,,,,1.9.2.2.4.2( FURNACE PASS AND BP EXTENDED)
2008, FURNACE PASS AND BP winebox of Upper Spiral Wall Panels,ERC,2025-04-16,2025-04-25,,,,1.9.2.2.4.2( FURNACE PASS AND BP EXTENDED)
2009, FURNACE PASS AND BP winebox of Lower Spiral Walls and Ring Header,ERC,2025-04-14,2025-05-03,,,,1.9.2.2.4.2( FURNACE PASS AND BP EXTENDED)
2010, FURNACE PASS AND BP winebox of Hopper panel,ERC,2025-04-22,2025-05-11,,,,1.9.2.2.4.2( FURNACE PASS AND BP EXTENDED)
2011, FURNACE PASS AND BP EXTENDED: Final welding of the furnace,ERC,2025-05-12,2025-06-05,,,,1.9.2.2.4.2( FURNACE PASS AND BP EXTENDED)
2012,Erection of Boiler Fill Piping and Trim Piping,ERC,2025-04-05,2025-06-03,,,,"1.9.2.2.4(Water Circulation system, Super Heaters and Re-Heaters )"
2013,Erection of Startup system and Safety Valve (Required for Drainable HT),ERC,2025-04-05,2025-06-03,,,,"1.9.2.2.4(Water Circulation system, Super Heaters and Re-Heaters )"
2014,Erection: Balance welding of PP for Non Drainable HT,ERC,2025-06-14,2025-11-29,,,,"1.9.2.2.4(Water Circulation system, Super Heaters and Re-Heaters )"
2015,DRAINABLE Hydro TEST,ERC,2025-06-11,2025-06-19,,,,1.9.2.2(Erection)
2016,DRAINABLE Hydro TEST: Air fill test,ERC,2025-06-11,2025-06-13,,,,1.9.2.2.5(DRAINABLE Hydro TEST)
2017,DRAINABLE Hydro TEST: Readiness of Boiler for HT,ERC,2025-06-14,2025-06-19,,,,1.9.2.2.5(DRAINABLE Hydro TEST)
2018,Non Drainable HT,ERC,2025-11-29,2025-11-29,,,,1.9.2.2(Erection)
2019,FOR CHEMICAL CLEANING AND EDTA,ERC,2026-01-05,2026-01-24,,,,1.9.2.2(Erection)
2020, FOR CHEMICAL CLEANING AND EDTA: Placememnt of temporary tanks,ERC,2026-01-05,2026-01-09,,,,1.9.2.2.7(FOR CHEMICAL CLEANING AND EDTA)
2021, FOR CHEMICAL CLEANING AND EDTA: Erection of temporary piping for bulk chemicals,ERC,2026-01-10,2026-01-24,,,,1.9.2.2.7(FOR CHEMICAL CLEANING AND EDTA)
2022,FOR STEAM BLOWING,ERC,2026-02-08,2026-02-27,,,,1.9.2.2(Erection)
2023, FOR STEAM BLOWING: Erection of temporary piping,ERC,2026-02-08,2026-02-27,,,,1.9.2.2.8(FOR STEAM BLOWING)
2024,Soot Blower,OTH,2023-08-22,2026-01-25,,,,1.9(Boiler & Auxiliaries)
2025,Supply (BHEL TRY),SUP,2023-08-22,2025-09-27,,,,1.9.3(Soot Blower)
2026,Soot Blowers (PG-20),SUP,2023-08-22,2025-07-29,,,PG20,1.9.3.1(Supply (BHEL TRY))
2027,LONG RETRACTABLE SOO (PGMA-20051),SUP,2023-11-06,2025-06-29,,,20051,1.9.3.1.1(Soot Blowers (PG-20))
2028,Engineering,ENG,2023-11-06,2024-08-13,,,20051,1.9.3.1.1.1(LONG RETRACTABLE SOO (PGMA-20051))
2029,Manufacturing,MFG,2024-08-14,2025-05-30,,,20051,1.9.3.1.1.1(LONG RETRACTABLE SOO (PGMA-20051))
2030,Dispatch,DIS,2025-05-31,2025-06-29,,,20051,1.9.3.1.1.1(LONG RETRACTABLE SOO (PGMA-20051))
2031,WALL BOX NON PRESSUR (PGMA-20054),SUP,2023-09-27,2025-04-29,,,20054,1.9.3.1.1(Soot Blowers (PG-20))
2032,Engineering,ENG,2023-09-27,2024-06-21,,,20054,1.9.3.1.1.2(WALL BOX NON PRESSUR (PGMA-20054))
2033,Manufacturing,MFG,2024-06-22,2025-03-30,,,20054,1.9.3.1.1.2(WALL BOX NON PRESSUR (PGMA-20054))
2034,Dispatch,DIS,2025-03-31,2025-04-29,,,20054,1.9.3.1.1.2(WALL BOX NON PRESSUR (PGMA-20054))
2035,WALL DESLAGGER RW5E (PGMA-20201),SUP,2023-11-06,2025-06-29,,,20201,1.9.3.1.1(Soot Blowers (PG-20))
2036,Engineering,ENG,2023-11-06,2024-08-13,,,20201,1.9.3.1.1.3(WALL DESLAGGER RW5E (PGMA-20201))
2037,Manufacturing,MFG,2024-08-14,2025-05-30,,,20201,1.9.3.1.1.3(WALL DESLAGGER RW5E (PGMA-20201))
2038,Dispatch,DIS,2025-05-31,2025-06-29,,,20201,1.9.3.1.1.3(WALL DESLAGGER RW5E (PGMA-20201))
2039,WALL BOX NON PRESSUR (PGMA-20204),SUP,2023-09-12,2025-03-30,,,20204,1.9.3.1.1(Soot Blowers (PG-20))
2040,Engineering,ENG,2023-09-12,2024-05-30,,,20204,1.9.3.1.1.4(WALL BOX NON PRESSUR (PGMA-20204))
2041,Manufacturing,MFG,2024-05-31,2025-02-28,,,20204,1.9.3.1.1.4(WALL BOX NON PRESSUR (PGMA-20204))
2042,Dispatch,DIS,2025-03-01,2025-03-30,,,20204,1.9.3.1.1.4(WALL BOX NON PRESSUR (PGMA-20204))
2043,DA HEAD VALVE ASSY (PGMA-20511),SUP,2023-11-06,2025-06-29,,,20511,1.9.3.1.1(Soot Blowers (PG-20))
2044,Engineering,ENG,2023-11-06,2024-08-13,,,20511,1.9.3.1.1.5(DA HEAD VALVE ASSY (PGMA-20511))
2045,Manufacturing,MFG,2024-08-14,2025-05-30,,,20511,1.9.3.1.1.5(DA HEAD VALVE ASSY (PGMA-20511))
2046,Dispatch,DIS,2025-05-31,2025-06-29,,,20511,1.9.3.1.1.5(DA HEAD VALVE ASSY (PGMA-20511))
2047,WALL BOX NON PRESSUR (PGMA-20794),SUP,2023-09-27,2025-04-29,,,20794,1.9.3.1.1(Soot Blowers (PG-20))
2048,Engineering,ENG,2023-09-27,2024-06-21,,,20794,1.9.3.1.1.6(WALL BOX NON PRESSUR (PGMA-20794))
2049,Manufacturing,MFG,2024-06-22,2025-03-30,,,20794,1.9.3.1.1.6(WALL BOX NON PRESSUR (PGMA-20794))
2050,Dispatch,DIS,2025-03-31,2025-04-29,,,20794,1.9.3.1.1.6(WALL BOX NON PRESSUR (PGMA-20794))
2051,TEMP PROBE DUPLEX WI (PGMA-20962),SUP,2023-08-22,2025-04-29,,,20962,1.9.3.1.1(Soot Blowers (PG-20))
2052,Engineering,ENG,2023-08-22,2024-06-11,,,20962,1.9.3.1.1.7(TEMP PROBE DUPLEX WI (PGMA-20962))
2053,Manufacturing,MFG,2024-06-12,2025-03-30,,,20962,1.9.3.1.1.7(TEMP PROBE DUPLEX WI (PGMA-20962))
2054,Dispatch,DIS,2025-03-31,2025-04-29,,,20962,1.9.3.1.1.7(TEMP PROBE DUPLEX WI (PGMA-20962))
2055,SOOT BLOWER COMMISSIONING SPARES (PGMA-20988),SUP,2023-11-21,2025-07-29,,,20988,1.9.3.1.1(Soot Blowers (PG-20))
2056,Engineering,ENG,2023-11-21,2024-09-10,,,20988,1.9.3.1.1.8(SOOT BLOWER COMMISSIONING SPARES (PGMA-20988))
2057,Manufacturing,MFG,2024-09-11,2025-06-29,,,20988,1.9.3.1.1.8(SOOT BLOWER COMMISSIONING SPARES (PGMA-20988))
2058,Dispatch,DIS,2025-06-30,2025-07-29,,,20988,1.9.3.1.1.8(SOOT BLOWER COMMISSIONING SPARES (PGMA-20988))
2059,SPECIAL TOOLS FOR SO (PGMA-20998),SUP,2023-09-12,2025-03-30,,,20998,1.9.3.1.1(Soot Blowers (PG-20))
2060,Engineering,ENG,2023-09-12,2024-05-30,,,20998,1.9.3.1.1.9(SPECIAL TOOLS FOR SO (PGMA-20998))
2061,Manufacturing,MFG,2024-05-31,2025-02-28,,,20998,1.9.3.1.1.9(SPECIAL TOOLS FOR SO (PGMA-20998))
2062,Dispatch,DIS,2025-03-01,2025-03-30,,,20998,1.9.3.1.1.9(SPECIAL TOOLS FOR SO (PGMA-20998))
2063,Soot Blowing system (PG-21),SUP,2023-09-12,2025-09-27,,,PG21,1.9.3.1(Supply (BHEL TRY))
2064,SOOT BLOWER PIPING AND FITTINGS (PGMA-21600),SUP,2023-09-12,2025-03-30,,,21600,1.9.3.1.2(Soot Blowing system (PG-21))
2065,Engineering,ENG,2023-09-12,2024-05-30,,,21600,1.9.3.1.2.1(SOOT BLOWER PIPING AND FITTINGS (PGMA-21600))
2066,Manufacturing,MFG,2024-05-31,2025-02-28,,,21600,1.9.3.1.2.1(SOOT BLOWER PIPING AND FITTINGS (PGMA-21600))
2067,Dispatch,DIS,2025-03-01,2025-03-30,,,21600,1.9.3.1.2.1(SOOT BLOWER PIPING AND FITTINGS (PGMA-21600))
2068,SOOTBLOWER PIPING SUPPORTS (PGMA-21601),SUP,2023-09-12,2025-03-30,,,21601,1.9.3.1.2(Soot Blowing system (PG-21))
2069,Engineering,ENG,2023-09-12,2024-05-30,,,21601,1.9.3.1.2.2(SOOTBLOWER PIPING SUPPORTS (PGMA-21601))
2070,Manufacturing,MFG,2024-05-31,2025-02-28,,,21601,1.9.3.1.2.2(SOOTBLOWER PIPING SUPPORTS (PGMA-21601))
2071,Dispatch,DIS,2025-03-01,2025-03-30,,,21601,1.9.3.1.2.2(SOOTBLOWER PIPING SUPPORTS (PGMA-21601))
2072,SOOT BLOWER PIPING & FITTINGS - DD (PGMA-21602),SUP,2023-09-12,2025-03-30,,,21602,1.9.3.1.2(Soot Blowing system (PG-21))
2073,Engineering,ENG,2023-09-12,2024-05-30,,,21602,1.9.3.1.2.3(SOOT BLOWER PIPING & FITTINGS - DD (PGMA-21602))
2074,Manufacturing,MFG,2024-05-31,2025-02-28,,,21602,1.9.3.1.2.3(SOOT BLOWER PIPING & FITTINGS - DD (PGMA-21602))
2075,Dispatch,DIS,2025-03-01,2025-03-30,,,21602,1.9.3.1.2.3(SOOT BLOWER PIPING & FITTINGS - DD (PGMA-21602))
2076,SOOT BLOWER PIPING & FITTINGS - BOI (PGMA-21603),SUP,2023-09-12,2025-03-30,,,21603,1.9.3.1.2(Soot Blowing system (PG-21))
2077,Engineering,ENG,2023-09-12,2024-05-30,,,21603,1.9.3.1.2.4(SOOT BLOWER PIPING & FITTINGS - BOI (PGMA-21603))
2078,Manufacturing,MFG,2024-05-31,2025-02-28,,,21603,1.9.3.1.2.4(SOOT BLOWER PIPING & FITTINGS - BOI (PGMA-21603))
2079,Dispatch,DIS,2025-03-01,2025-03-30,,,21603,1.9.3.1.2.4(SOOT BLOWER PIPING & FITTINGS - BOI (PGMA-21603))
2080,SOOT BLOWER PIPING SUPPORTS - OS (PGMA-21604),SUP,2023-09-12,2025-03-30,,,21604,1.9.3.1.2(Soot Blowing system (PG-21))
2081,Engineering,ENG,2023-09-12,2024-05-30,,,21604,1.9.3.1.2.5(SOOT BLOWER PIPING SUPPORTS - OS (PGMA-21604))
2082,Manufacturing,MFG,2024-05-31,2025-02-28,,,21604,1.9.3.1.2.5(SOOT BLOWER PIPING SUPPORTS - OS (PGMA-21604))
2083,Dispatch,DIS,2025-03-01,2025-03-30,,,21604,1.9.3.1.2.5(SOOT BLOWER PIPING SUPPORTS - OS (PGMA-21604))
2084,Soot Blower Piping Supports - Dd (PGMA-21605),SUP,2023-09-12,2025-03-30,,,21605,1.9.3.1.2(Soot Blowing system (PG-21))
2085,Engineering,ENG,2023-09-12,2024-05-30,,,21605,1.9.3.1.2.6(Soot Blower Piping Supports - Dd (PGMA-21605))
2086,Manufacturing,MFG,2024-05-31,2025-02-28,,,21605,1.9.3.1.2.6(Soot Blower Piping Supports - Dd (PGMA-21605))
2087,Dispatch,DIS,2025-03-01,2025-03-30,,,21605,1.9.3.1.2.6(Soot Blower Piping Supports - Dd (PGMA-21605))
2088,Soot Blower Piping Supports - BOI (PGMA-21606),SUP,2023-09-12,2025-03-30,,,21606,1.9.3.1.2(Soot Blowing system (PG-21))
2089,Engineering,ENG,2023-09-12,2024-05-30,,,21606,1.9.3.1.2.7(Soot Blower Piping Supports - BOI (PGMA-21606))
2090,Manufacturing,MFG,2024-05-31,2025-02-28,,,21606,1.9.3.1.2.7(Soot Blower Piping Supports - BOI (PGMA-21606))
2091,Dispatch,DIS,2025-03-01,2025-03-30,,,21606,1.9.3.1.2.7(Soot Blower Piping Supports - BOI (PGMA-21606))
2092,BULKED BPS COMPONENTS FOR SB PIPING (PGMA-21700),SUP,2023-09-27,2025-04-29,,,21700,1.9.3.1.2(Soot Blowing system (PG-21))
2093,Engineering,ENG,2023-09-27,2024-06-21,,,21700,1.9.3.1.2.8(BULKED BPS COMPONENTS FOR SB PIPING (PGMA-21700))
2094,Manufacturing,MFG,2024-06-22,2025-03-30,,,21700,1.9.3.1.2.8(BULKED BPS COMPONENTS FOR SB PIPING (PGMA-21700))
2095,Dispatch,DIS,2025-03-31,2025-04-29,,,21700,1.9.3.1.2.8(BULKED BPS COMPONENTS FOR SB PIPING (PGMA-21700))
2096,SB VALVES (BHEL) (PGMA-21800),SUP,2023-09-27,2025-04-29,,,21800,1.9.3.1.2(Soot Blowing system (PG-21))
2097,Engineering,ENG,2023-09-27,2024-06-21,,,21800,1.9.3.1.2.9(SB VALVES (BHEL) (PGMA-21800))
2098,Manufacturing,MFG,2024-06-22,2025-03-30,,,21800,1.9.3.1.2.9(SB VALVES (BHEL) (PGMA-21800))
2099,Dispatch,DIS,2025-03-31,2025-04-29,,,21800,1.9.3.1.2.9(SB VALVES (BHEL) (PGMA-21800))
2100,SB VALVES (SUB DELIVERY) (PGMA-21825),SUP,2023-10-17,2025-05-30,,,21825,1.9.3.1.2(Soot Blowing system (PG-21))
2101,Ordering & Engineering,ENG,2023-10-17,2024-07-22,,,21825,1.9.3.1.2.10(SB VALVES (SUB DELIVERY) (PGMA-21825))
2102,Manufacturing,MFG,2024-07-23,2025-04-30,,,21825,1.9.3.1.2.10(SB VALVES (SUB DELIVERY) (PGMA-21825))
2103,Dispatch,DIS,2025-05-01,2025-05-30,,,21825,1.9.3.1.2.10(SB VALVES (SUB DELIVERY) (PGMA-21825))
2104,SOOT BLOWER SAFETY VALVE (BHEL) (PGMA-21850),SUP,2023-10-17,2025-05-30,,,21850,1.9.3.1.2(Soot Blowing system (PG-21))
2105,Engineering,ENG,2023-10-17,2024-07-22,,,21850,1.9.3.1.2.11(SOOT BLOWER SAFETY VALVE (BHEL) (PGMA-21850))
2106,Manufacturing,MFG,2024-07-23,2025-04-30,,,21850,1.9.3.1.2.11(SOOT BLOWER SAFETY VALVE (BHEL) (PGMA-21850))
2107,Dispatch,DIS,2025-05-01,2025-05-30,,,21850,1.9.3.1.2.11(SOOT BLOWER SAFETY VALVE (BHEL) (PGMA-21850))
2108,COMMG SPARES FOR SB SAFETY VALVE (PGMA-21987),SUP,2023-12-09,2025-09-27,,,21987,1.9.3.1.2(Soot Blowing system (PG-21))
2109,Engineering,ENG,2023-12-09,2024-10-23,,,21987,1.9.3.1.2.12(COMMG SPARES FOR SB SAFETY VALVE (PGMA-21987))
2110,Manufacturing,MFG,2024-10-24,2025-08-28,,,21987,1.9.3.1.2.12(COMMG SPARES FOR SB SAFETY VALVE (PGMA-21987))
2111,Dispatch,DIS,2025-08-29,2025-09-27,,,21987,1.9.3.1.2.12(COMMG SPARES FOR SB SAFETY VALVE (PGMA-21987))
2112,COMMG SPARES FOR SUB DELIVERIES (PGMA-21988),SUP,2023-12-09,2025-09-27,,,21988,1.9.3.1.2(Soot Blowing system (PG-21))
2113,Engineering,ENG,2023-12-09,2024-10-23,,,21988,1.9.3.1.2.13(COMMG SPARES FOR SUB DELIVERIES (PGMA-21988))
2114,Manufacturing,MFG,2024-10-24,2025-08-28,,,21988,1.9.3.1.2.13(COMMG SPARES FOR SUB DELIVERIES (PGMA-21988))
2115,Dispatch,DIS,2025-08-29,2025-09-27,,,21988,1.9.3.1.2.13(COMMG SPARES FOR SUB DELIVERIES (PGMA-21988))
2116,IMPORTED ELECTRODES (PGMA-21992),SUP,2023-09-12,2025-03-30,,,21992,1.9.3.1.2(Soot Blowing system (PG-21))
2117,Engineering,ENG,2023-09-12,2024-05-30,,,21992,1.9.3.1.2.14(IMPORTED ELECTRODES (PGMA-21992))
2118,Manufacturing,MFG,2024-05-31,2025-02-28,,,21992,1.9.3.1.2.14(IMPORTED ELECTRODES (PGMA-21992))
2119,Dispatch,DIS,2025-03-01,2025-03-30,,,21992,1.9.3.1.2.14(IMPORTED ELECTRODES (PGMA-21992))
2120,Erection,ERC,2025-06-30,2026-01-25,,,,1.9.3(Soot Blower)
2121,"Erection of wall blowers, soot blowers & piping",ERC,2025-06-30,2025-12-26,,,,1.9.3.2(Erection)
2122,Mineral wool for soot blowing piping,ERC,2025-12-27,2026-01-25,,,,1.9.3.2(Erection)
2123,Lining and Insulation System,ERC,2023-01-25,2026-01-15,,,,1.9(Boiler & Auxiliaries)
2124,Supply (BHEL TRY),SUP,2023-01-25,2025-04-27,,,,1.9.4(Lining and Insulation System)
2125,Seal Boxes (PG-09),SUP,2023-06-04,2024-09-26,,,PG09,1.9.4.1(Supply (BHEL TRY))
2126,MATERIAL FOR INSTRUMENT INSERTS (PGMA-9003),SUP,2023-06-04,2024-09-26,,,9003,1.9.4.1.1(Seal Boxes (PG-09))
2127,Engineering,ENG,2023-06-04,2024-02-23,,,09003,1.9.4.1.1.1(MATERIAL FOR INSTRUMENT INSERTS (PGMA-9003))
2128,Manufacturing,MFG,2024-02-24,2024-08-27,,,09003,1.9.4.1.1.1(MATERIAL FOR INSTRUMENT INSERTS (PGMA-9003))
2129,Dispatch,DIS,2024-08-28,2024-09-26,,,09003,1.9.4.1.1.1(MATERIAL FOR INSTRUMENT INSERTS (PGMA-9003))
2130,Seal boxes for Furnace Openings (PGMA-9004),SUP,2023-06-12,2024-09-26,,,9004,1.9.4.1.1(Seal Boxes (PG-09))
2131,Engineering,ENG,2023-06-12,2024-02-28,,,09004,1.9.4.1.1.2(Seal boxes for Furnace Openings (PGMA-9004))
2132,Manufacturing,MFG,2024-02-29,2024-08-27,,,09004,1.9.4.1.1.2(Seal boxes for Furnace Openings (PGMA-9004))
2133,Dispatch,DIS,2024-08-28,2024-09-26,,,09004,1.9.4.1.1.2(Seal boxes for Furnace Openings (PGMA-9004))
2134,Seal boxes for Instrument Tappings (PGMA-9005),SUP,2023-06-04,2024-09-26,,,9005,1.9.4.1.1(Seal Boxes (PG-09))
2135,Engineering,ENG,2023-06-04,2024-02-28,,,09005,1.9.4.1.1.3(Seal boxes for Instrument Tappings (PGMA-9005))
2136,Manufacturing,MFG,2024-02-29,2024-08-27,,,09005,1.9.4.1.1.3(Seal boxes for Instrument Tappings (PGMA-9005))
2137,Dispatch,DIS,2024-08-28,2024-09-26,,,09005,1.9.4.1.1.3(Seal boxes for Instrument Tappings (PGMA-9005))
2138,Material For Instrument Inserts-DD (PGMA-9303),SUP,2023-06-04,2024-09-26,,,9303,1.9.4.1.1(Seal Boxes (PG-09))
2139,Engineering,ENG,2023-06-04,2024-02-23,,,09303,1.9.4.1.1.4(Material For Instrument Inserts-DD (PGMA-9303))
2140,Manufacturing,MFG,2024-02-24,2024-08-27,,,09303,1.9.4.1.1.4(Material For Instrument Inserts-DD (PGMA-9303))
2141,Dispatch,DIS,2024-08-28,2024-09-26,,,09303,1.9.4.1.1.4(Material For Instrument Inserts-DD (PGMA-9303))
2142,SEAL BOXES FOR FURNACE OPENINGS-DD (PGMA-9304),SUP,2023-06-12,2024-09-26,,,9304,1.9.4.1.1(Seal Boxes (PG-09))
2143,Engineering,ENG,2023-06-12,2024-02-28,,,09304,1.9.4.1.1.5(SEAL BOXES FOR FURNACE OPENINGS-DD (PGMA-9304))
2144,Manufacturing,MFG,2024-02-29,2024-08-27,,,09304,1.9.4.1.1.5(SEAL BOXES FOR FURNACE OPENINGS-DD (PGMA-9304))
2145,Dispatch,DIS,2024-08-28,2024-09-26,,,09304,1.9.4.1.1.5(SEAL BOXES FOR FURNACE OPENINGS-DD (PGMA-9304))
2146,Material For Instrument Inserts-SH (PGMA-9503),SUP,2023-06-04,2024-09-26,,,9503,1.9.4.1.1(Seal Boxes (PG-09))
2147,Engineering,ENG,2023-06-04,2024-02-23,,,09503,1.9.4.1.1.6(Material For Instrument Inserts-SH (PGMA-9503))
2148,Manufacturing,MFG,2024-02-24,2024-08-27,,,09503,1.9.4.1.1.6(Material For Instrument Inserts-SH (PGMA-9503))
2149,Dispatch,DIS,2024-08-28,2024-09-26,,,09503,1.9.4.1.1.6(Material For Instrument Inserts-SH (PGMA-9503))
2150,Roof Skin Casing (PG-18),SUP,2023-01-25,2024-08-28,,,PG18,1.9.4.1(Supply (BHEL TRY))
2151,ROOF SKIN CASING (PGMA-18001),SUP,2023-06-12,2024-08-28,,,18001,1.9.4.1.2(Roof Skin Casing (PG-18))
2152,Engineering,ENG,2023-06-12,2023-12-28,,,18001,1.9.4.1.2.1(ROOF SKIN CASING (PGMA-18001))
2153,Manufacturing,MFG,2023-12-29,2024-07-29,,,18001,1.9.4.1.2.1(ROOF SKIN CASING (PGMA-18001))
2154,Dispatch,DIS,2024-07-30,2024-08-28,,,18001,1.9.4.1.2.1(ROOF SKIN CASING (PGMA-18001))
2155,PR PTS ATTACHMNTS IN FURN ROOF SKN CAS (PGMA-18010),SUP,2023-01-25,2024-08-28,,,18010,1.9.4.1.2(Roof Skin Casing (PG-18))
2156,Engineering,ENG,2023-01-25,2023-12-05,,,18010,1.9.4.1.2.2(PR PTS ATTACHMNTS IN FURN ROOF SKN CAS (PGMA-18010))
2157,Manufacturing,MFG,2023-12-06,2024-07-29,,,18010,1.9.4.1.2.2(PR PTS ATTACHMNTS IN FURN ROOF SKN CAS (PGMA-18010))
2158,Dispatch,DIS,2024-07-30,2024-08-28,,,18010,1.9.4.1.2.2(PR PTS ATTACHMNTS IN FURN ROOF SKN CAS (PGMA-18010))
2159,FURN ROO SKIN CASING - BOI (PGMA-18701),SUP,2023-06-12,2024-08-28,,,18701,1.9.4.1.2(Roof Skin Casing (PG-18))
2160,Engineering,ENG,2023-06-12,2023-12-28,,,18701,1.9.4.1.2.3(FURN ROO SKIN CASING - BOI (PGMA-18701))
2161,Manufacturing,MFG,2023-12-29,2024-07-29,,,18701,1.9.4.1.2.3(FURN ROO SKIN CASING - BOI (PGMA-18701))
2162,Dispatch,DIS,2024-07-30,2024-08-28,,,18701,1.9.4.1.2.3(FURN ROO SKIN CASING - BOI (PGMA-18701))
2163,Fixing Components for Main Boiler Lining and Insulation (PG-30),SUP,2023-01-25,2025-01-25,,,PG30,1.9.4.1(Supply (BHEL TRY))
2164,SEAL PLATE ASSY (PGMA-30103),SUP,2023-07-02,2025-01-25,,,30103,1.9.4.1.3(Fixing Components for Main Boiler Lining and Insulation (PG-30))
2165,Engineering,ENG,2023-07-02,2024-03-22,,,30103,1.9.4.1.3.1(SEAL PLATE ASSY (PGMA-30103))
2166,Manufacturing,MFG,2024-03-23,2024-12-26,,,30103,1.9.4.1.3.1(SEAL PLATE ASSY (PGMA-30103))
2167,Dispatch,DIS,2024-12-27,2025-01-25,,,30103,1.9.4.1.3.1(SEAL PLATE ASSY (PGMA-30103))
2168,MAIN BOILER INSULATION (PGMA-30215),SUP,2023-07-02,2025-01-25,,,30215,1.9.4.1.3(Fixing Components for Main Boiler Lining and Insulation (PG-30))
2169,Engineering,ENG,2023-07-02,2024-03-22,,,30215,1.9.4.1.3.2(MAIN BOILER INSULATION (PGMA-30215))
2170,Manufacturing,MFG,2024-03-23,2024-12-26,,,30215,1.9.4.1.3.2(MAIN BOILER INSULATION (PGMA-30215))
2171,Dispatch,DIS,2024-12-27,2025-01-25,,,30215,1.9.4.1.3.2(MAIN BOILER INSULATION (PGMA-30215))
2172,VERTICAL ROOF ENCLOSURE FRAMING (PGMA-30219),SUP,2023-06-12,2024-12-26,,,30219,1.9.4.1.3(Fixing Components for Main Boiler Lining and Insulation (PG-30))
2173,Engineering,ENG,2023-06-12,2024-02-28,,,30219,1.9.4.1.3.3(VERTICAL ROOF ENCLOSURE FRAMING (PGMA-30219))
2174,Manufacturing,MFG,2024-02-29,2024-11-26,,,30219,1.9.4.1.3.3(VERTICAL ROOF ENCLOSURE FRAMING (PGMA-30219))
2175,Dispatch,DIS,2024-11-27,2024-12-26,,,30219,1.9.4.1.3.3(VERTICAL ROOF ENCLOSURE FRAMING (PGMA-30219))
2176,GAS DISTRIBUTION BAFFLES (PGMA-30223),SUP,2023-05-18,2024-11-25,,,30223,1.9.4.1.3(Fixing Components for Main Boiler Lining and Insulation (PG-30))
2177,Engineering,ENG,2023-05-18,2024-02-03,,,30223,1.9.4.1.3.4(GAS DISTRIBUTION BAFFLES (PGMA-30223))
2178,Manufacturing,MFG,2024-02-04,2024-10-26,,,30223,1.9.4.1.3.4(GAS DISTRIBUTION BAFFLES (PGMA-30223))
2179,Dispatch,DIS,2024-10-27,2024-11-25,,,30223,1.9.4.1.3.4(GAS DISTRIBUTION BAFFLES (PGMA-30223))
2180,Antivibration Baffles (PGMA-30224),SUP,2023-01-25,2024-08-27,,,30224,1.9.4.1.3(Fixing Components for Main Boiler Lining and Insulation (PG-30))
2181,Engineering,ENG,2023-01-25,2023-11-05,,,30224,1.9.4.1.3.5(Antivibration Baffles (PGMA-30224))
2182,Manufacturing,MFG,2023-11-06,2024-07-28,,,30224,1.9.4.1.3.5(Antivibration Baffles (PGMA-30224))
2183,Dispatch,DIS,2024-07-29,2024-08-27,,,30224,1.9.4.1.3.5(Antivibration Baffles (PGMA-30224))
2184,FIRST PASS DECK SPRT AND SEAL (PGMA-30233),SUP,2023-07-02,2025-01-25,,,30233,1.9.4.1.3(Fixing Components for Main Boiler Lining and Insulation (PG-30))
2185,Engineering,ENG,2023-07-02,2024-03-22,,,30233,1.9.4.1.3.6(FIRST PASS DECK SPRT AND SEAL (PGMA-30233))
2186,Manufacturing,MFG,2024-03-23,2024-12-26,,,30233,1.9.4.1.3.6(FIRST PASS DECK SPRT AND SEAL (PGMA-30233))
2187,Dispatch,DIS,2024-12-27,2025-01-25,,,30233,1.9.4.1.3.6(FIRST PASS DECK SPRT AND SEAL (PGMA-30233))
2188,SECOND PASS DECK SPRT AND SEAL (PGMA-30234),SUP,2023-07-02,2025-01-25,,,30234,1.9.4.1.3(Fixing Components for Main Boiler Lining and Insulation (PG-30))
2189,Engineering,ENG,2023-07-02,2024-03-22,,,30234,1.9.4.1.3.7(SECOND PASS DECK SPRT AND SEAL (PGMA-30234))
2190,Manufacturing,MFG,2024-03-23,2024-12-26,,,30234,1.9.4.1.3.7(SECOND PASS DECK SPRT AND SEAL (PGMA-30234))
2191,Dispatch,DIS,2024-12-27,2025-01-25,,,30234,1.9.4.1.3.7(SECOND PASS DECK SPRT AND SEAL (PGMA-30234))
2192,ENCLOSURE SUPPORT STEEL (PGMA-30235),SUP,2023-06-12,2024-12-26,,,30235,1.9.4.1.3(Fixing Components for Main Boiler Lining and Insulation (PG-30))
2193,Engineering,ENG,2023-06-12,2024-02-28,,,30235,1.9.4.1.3.8(ENCLOSURE SUPPORT STEEL (PGMA-30235))
2194,Manufacturing,MFG,2024-02-29,2024-11-26,,,30235,1.9.4.1.3.8(ENCLOSURE SUPPORT STEEL (PGMA-30235))
2195,Dispatch,DIS,2024-11-27,2024-12-26,,,30235,1.9.4.1.3.8(ENCLOSURE SUPPORT STEEL (PGMA-30235))
2196,Boiler Skin Casing (PG-31),SUP,2023-01-25,2024-12-26,,,PG31,1.9.4.1(Supply (BHEL TRY))
2197,SKIN CASING COMPS WELDED TO PR. PARTS (PGMA-31010),SUP,2023-01-25,2024-11-25,,,31010,1.9.4.1.4(Boiler Skin Casing (PG-31))
2198,Engineering,ENG,2023-01-25,2023-12-20,,,31010,1.9.4.1.4.1(SKIN CASING COMPS WELDED TO PR. PARTS (PGMA-31010))
2199,Manufacturing,MFG,2023-12-21,2024-10-26,,,31010,1.9.4.1.4.1(SKIN CASING COMPS WELDED TO PR. PARTS (PGMA-31010))
2200,Dispatch,DIS,2024-10-27,2024-11-25,,,31010,1.9.4.1.4.1(SKIN CASING COMPS WELDED TO PR. PARTS (PGMA-31010))
2201,FURNACE REAR ARCH SKIN CASING (PGMA-31104),SUP,2023-06-12,2024-12-26,,,31104,1.9.4.1.4(Boiler Skin Casing (PG-31))
2202,Engineering,ENG,2023-06-12,2024-02-28,,,31104,1.9.4.1.4.2(FURNACE REAR ARCH SKIN CASING (PGMA-31104))
2203,Manufacturing,MFG,2024-02-29,2024-11-26,,,31104,1.9.4.1.4.2(FURNACE REAR ARCH SKIN CASING (PGMA-31104))
2204,Dispatch,DIS,2024-11-27,2024-12-26,,,31104,1.9.4.1.4.2(FURNACE REAR ARCH SKIN CASING (PGMA-31104))
2205,Fixing Components for Boiler Auxiliaries Insulation (PG-32),SUP,2023-07-02,2025-01-27,,,PG32,1.9.4.1(Supply (BHEL TRY))
2206,FIXING COMPONENTS FOR BLR PR PARTS INSUL (PGMA-32010),SUP,2023-07-02,2025-01-25,,,32010,1.9.4.1.5(Fixing Components for Boiler Auxiliaries Insulation (PG-32))
2207,Engineering,ENG,2023-07-02,2024-03-22,,,32010,1.9.4.1.5.1(FIXING COMPONENTS FOR BLR PR PARTS INSUL (PGMA-32010))
2208,Manufacturing,MFG,2024-03-23,2024-12-26,,,32010,1.9.4.1.5.1(FIXING COMPONENTS FOR BLR PR PARTS INSUL (PGMA-32010))
2209,Dispatch,DIS,2024-12-27,2025-01-25,,,32010,1.9.4.1.5.1(FIXING COMPONENTS FOR BLR PR PARTS INSUL (PGMA-32010))
2210,FIXING COMPONENTS FOR DUCT INSUL (PGMA-32210),SUP,2023-07-02,2025-01-25,,,32210,1.9.4.1.5(Fixing Components for Boiler Auxiliaries Insulation (PG-32))
2211,Engineering,ENG,2023-07-02,2024-03-22,,,32210,1.9.4.1.5.2(FIXING COMPONENTS FOR DUCT INSUL (PGMA-32210))
2212,Manufacturing,MFG,2024-03-23,2024-12-26,,,32210,1.9.4.1.5.2(FIXING COMPONENTS FOR DUCT INSUL (PGMA-32210))
2213,Dispatch,DIS,2024-12-27,2025-01-25,,,32210,1.9.4.1.5.2(FIXING COMPONENTS FOR DUCT INSUL (PGMA-32210))
2214,BULKED BPS COMPONENT (PGMA-32700),SUP,2023-07-02,2025-01-25,,,32700,1.9.4.1.5(Fixing Components for Boiler Auxiliaries Insulation (PG-32))
2215,Engineering,ENG,2023-07-02,2024-03-22,,,32700,1.9.4.1.5.3(BULKED BPS COMPONENT (PGMA-32700))
2216,Manufacturing,MFG,2024-03-23,2024-12-26,,,32700,1.9.4.1.5.3(BULKED BPS COMPONENT (PGMA-32700))
2217,Dispatch,DIS,2024-12-27,2025-01-25,,,32700,1.9.4.1.5.3(BULKED BPS COMPONENT (PGMA-32700))
2218,FIXING COMPONENT FOR OUTLET DUCT (PGMA-32810),SUP,2023-07-02,2025-01-27,,,32810,1.9.4.1.5(Fixing Components for Boiler Auxiliaries Insulation (PG-32))
2219,Engineering,ENG,2023-07-02,2024-03-22,,,32810,1.9.4.1.5.4(FIXING COMPONENT FOR OUTLET DUCT (PGMA-32810))
2220,Manufacturing,MFG,2024-03-23,2024-12-28,,,32810,1.9.4.1.5.4(FIXING COMPONENT FOR OUTLET DUCT (PGMA-32810))
2221,Dispatch,DIS,2024-12-29,2025-01-27,,,32810,1.9.4.1.5.4(FIXING COMPONENT FOR OUTLET DUCT (PGMA-32810))
2222,Lining and Insulation Materials (PG-33),SUP,2023-06-12,2025-04-27,,,PG33,1.9.4.1(Supply (BHEL TRY))
2223,BLR PR PARTS MINERAL WOOL (PGMA-33021),SUP,2023-07-02,2025-01-25,,,33021,1.9.4.1.6(Lining and Insulation Materials (PG-33))
2224,Engineering,ENG,2023-07-02,2024-03-22,,,33021,1.9.4.1.6.1(BLR PR PARTS MINERAL WOOL (PGMA-33021))
2225,Manufacturing,MFG,2024-03-23,2024-12-26,,,33021,1.9.4.1.6.1(BLR PR PARTS MINERAL WOOL (PGMA-33021))
2226,Dispatch,DIS,2024-12-27,2025-01-25,,,33021,1.9.4.1.6.1(BLR PR PARTS MINERAL WOOL (PGMA-33021))
2227,MAIN BLR CASTABLE REFRACTORY GR A (PGMA-33210),SUP,2023-06-12,2024-12-26,,,33210,1.9.4.1.6(Lining and Insulation Materials (PG-33))
2228,Engineering,ENG,2023-06-12,2024-02-28,,,33210,1.9.4.1.6.2(MAIN BLR CASTABLE REFRACTORY GR A (PGMA-33210))
2229,Manufacturing,MFG,2024-02-29,2024-11-26,,,33210,1.9.4.1.6.2(MAIN BLR CASTABLE REFRACTORY GR A (PGMA-33210))
2230,Dispatch,DIS,2024-11-27,2024-12-26,,,33210,1.9.4.1.6.2(MAIN BLR CASTABLE REFRACTORY GR A (PGMA-33210))
2231,DUCT MINERAL WOOL (PGMA-33221),SUP,2023-08-07,2025-03-27,,,33221,1.9.4.1.6(Lining and Insulation Materials (PG-33))
2232,Engineering,ENG,2023-08-07,2024-05-14,,,33221,1.9.4.1.6.3(DUCT MINERAL WOOL (PGMA-33221))
2233,Manufacturing,MFG,2024-05-15,2025-02-25,,,33221,1.9.4.1.6.3(DUCT MINERAL WOOL (PGMA-33221))
2234,Dispatch,DIS,2025-02-26,2025-03-27,,,33221,1.9.4.1.6.3(DUCT MINERAL WOOL (PGMA-33221))
2235,MAIN BLR POURABLE INSULATION (PGMA-33230),SUP,2023-06-12,2024-12-26,,,33230,1.9.4.1.6(Lining and Insulation Materials (PG-33))
2236,Engineering,ENG,2023-06-12,2024-02-28,,,33230,1.9.4.1.6.4(MAIN BLR POURABLE INSULATION (PGMA-33230))
2237,Manufacturing,MFG,2024-02-29,2024-11-26,,,33230,1.9.4.1.6.4(MAIN BLR POURABLE INSULATION (PGMA-33230))
2238,Dispatch,DIS,2024-11-27,2024-12-26,,,33230,1.9.4.1.6.4(MAIN BLR POURABLE INSULATION (PGMA-33230))
2239,MISC EQPTS SEAL MATERIALS (PGMA-33924),SUP,2023-08-22,2025-04-27,,,33924,1.9.4.1.6(Lining and Insulation Materials (PG-33))
2240,Engineering,ENG,2023-08-22,2024-06-11,,,33924,1.9.4.1.6.5(MISC EQPTS SEAL MATERIALS (PGMA-33924))
2241,Manufacturing,MFG,2024-06-12,2025-03-28,,,33924,1.9.4.1.6.5(MISC EQPTS SEAL MATERIALS (PGMA-33924))
2242,Dispatch,DIS,2025-03-29,2025-04-27,,,33924,1.9.4.1.6.5(MISC EQPTS SEAL MATERIALS (PGMA-33924))
2243,MISC EQPTS EXPANDED METAL (PGMA-33970),SUP,2023-07-02,2025-01-25,,,33970,1.9.4.1.6(Lining and Insulation Materials (PG-33))
2244,Engineering,ENG,2023-07-02,2024-03-22,,,33970,1.9.4.1.6.6(MISC EQPTS EXPANDED METAL (PGMA-33970))
2245,Manufacturing,MFG,2024-03-23,2024-12-26,,,33970,1.9.4.1.6.6(MISC EQPTS EXPANDED METAL (PGMA-33970))
2246,Dispatch,DIS,2024-12-27,2025-01-25,,,33970,1.9.4.1.6.6(MISC EQPTS EXPANDED METAL (PGMA-33970))
2247,MISC EQPTS WOVEN WIRE CLOTH (PGMA-33971),SUP,2023-06-12,2024-12-26,,,33971,1.9.4.1.6(Lining and Insulation Materials (PG-33))
2248,Engineering,ENG,2023-06-12,2024-02-28,,,33971,1.9.4.1.6.7(MISC EQPTS WOVEN WIRE CLOTH (PGMA-33971))
2249,Manufacturing,MFG,2024-02-29,2024-11-26,,,33971,1.9.4.1.6.7(MISC EQPTS WOVEN WIRE CLOTH (PGMA-33971))
2250,Dispatch,DIS,2024-11-27,2024-12-26,,,33971,1.9.4.1.6.7(MISC EQPTS WOVEN WIRE CLOTH (PGMA-33971))
2251,MISC EQPTS SEALING COMPOUND (PGMA-33975),SUP,2023-08-22,2025-04-27,,,33975,1.9.4.1.6(Lining and Insulation Materials (PG-33))
2252,Engineering,ENG,2023-08-22,2024-06-11,,,33975,1.9.4.1.6.8(MISC EQPTS SEALING COMPOUND (PGMA-33975))
2253,Manufacturing,MFG,2024-06-12,2025-03-28,,,33975,1.9.4.1.6.8(MISC EQPTS SEALING COMPOUND (PGMA-33975))
2254,Dispatch,DIS,2025-03-29,2025-04-27,,,33975,1.9.4.1.6.8(MISC EQPTS SEALING COMPOUND (PGMA-33975))
2255,Boiler Outer Casing (PG-37),SUP,2023-06-12,2024-08-28,,,PG37,1.9.4.1(Supply (BHEL TRY))
2256,BLR OUTER CASING COMPONENTS (PGMA-37010),SUP,2023-06-12,2024-08-28,,,37010,1.9.4.1.7(Boiler Outer Casing (PG-37))
2257,Engineering,ENG,2023-06-12,2023-12-28,,,37010,1.9.4.1.7.1(BLR OUTER CASING COMPONENTS (PGMA-37010))
2258,Manufacturing,MFG,2023-12-29,2024-07-29,,,37010,1.9.4.1.7.1(BLR OUTER CASING COMPONENTS (PGMA-37010))
2259,Dispatch,DIS,2024-07-30,2024-08-28,,,37010,1.9.4.1.7.1(BLR OUTER CASING COMPONENTS (PGMA-37010))
2260,BLR OUTER CASING (PGMA-37810),SUP,2023-06-12,2024-08-28,,,37810,1.9.4.1.7(Boiler Outer Casing (PG-37))
2261,Engineering,ENG,2023-06-12,2023-12-28,,,37810,1.9.4.1.7.2(BLR OUTER CASING (PGMA-37810))
2262,Manufacturing,MFG,2023-12-29,2024-07-29,,,37810,1.9.4.1.7.2(BLR OUTER CASING (PGMA-37810))
2263,Dispatch,DIS,2024-07-30,2024-08-28,,,37810,1.9.4.1.7.2(BLR OUTER CASING (PGMA-37810))
2264,Erection,ERC,2025-04-01,2026-01-15,,,,1.9.4(Lining and Insulation System)
2265,Seal Boxes (PG-09),ERC,2025-04-01,2025-05-30,,,PG09,1.9.4.2(Erection)
2266,Erection: Seal Boxes for Furnace Opening,ERC,2025-04-21,2025-05-30,,,,1.9.4.2.1(Seal Boxes (PG-09))
2267,Erection: Seal Boxes for Instrument tapping,ERC,2025-04-01,2025-05-19,,,,1.9.4.2.1(Seal Boxes (PG-09))
2268,Roof Skin Casing (PG-18),ERC,2025-06-30,2025-11-16,,,PG18,1.9.4.2(Erection)
2269,Erection: Roof Skin Casing and PP attachment,ERC,2025-06-30,2025-11-16,,,,1.9.4.2.2(Roof Skin Casing (PG-18))
2270,Fixing Components for Main Boiler Lining and Insulation (PG-30),ERC,2025-08-19,2025-11-16,,,PG30,1.9.4.2(Erection)
2271,Erection: SEAL PLATE ASSY,ERC,2025-10-18,2025-11-16,,,,1.9.4.2.3(Fixing Components for Main Boiler Lining and Insulation (PG-30))
2272,Erection: MAIN BOILER INSULATION,ERC,2025-08-19,2025-11-16,,,,1.9.4.2.3(Fixing Components for Main Boiler Lining and Insulation (PG-30))
2273,Erection: VERTICAL ROOF ENCLOSURE FRAMING,ERC,2025-08-19,2025-11-16,,,,1.9.4.2.3(Fixing Components for Main Boiler Lining and Insulation (PG-30))
2274,Erection: GAS DISTRIBUTION BAFFLES,ERC,2025-08-19,2025-09-17,,,,1.9.4.2.3(Fixing Components for Main Boiler Lining and Insulation (PG-30))
2275,Erection: Antivibration Baffles,ERC,2025-08-19,2025-09-17,,,,1.9.4.2.3(Fixing Components for Main Boiler Lining and Insulation (PG-30))
2276,Erection: FIRST PASS DECK SPRT AND SEAL,ERC,2025-08-19,2025-11-16,,,,1.9.4.2.3(Fixing Components for Main Boiler Lining and Insulation (PG-30))
2277,Erection: SECOND PASS DECK SPRT AND SEAL,ERC,2025-08-19,2025-11-16,,,,1.9.4.2.3(Fixing Components for Main Boiler Lining and Insulation (PG-30))
2278,Erection: ENCLOSURE SUPPORT STEEL,ERC,2025-08-19,2025-11-16,,,,1.9.4.2.3(Fixing Components for Main Boiler Lining and Insulation (PG-30))
2279,Boiler Skin Casing (PG-31),ERC,2025-07-05,2025-08-03,,,PG31,1.9.4.2(Erection)
2280,Erection: SKIN CASING COMPS WELDED TO PR. PARTS,ERC,2025-07-05,2025-08-03,,,,1.9.4.2.4(Boiler Skin Casing (PG-31))
2281,Erection: FURNACE REAR ARCH SKIN CASING,ERC,2025-07-05,2025-08-03,,,,1.9.4.2.4(Boiler Skin Casing (PG-31))
2282,Fixing Components for Boiler Auxiliaries Insulation (PG-32),ERC,2025-07-20,2025-11-16,,,PG32,1.9.4.2(Erection)
2283,Erection: FIXING COMPONENTS FOR BLR PR PARTS INSUL,ERC,2025-07-20,2025-11-16,,,,1.9.4.2.5(Fixing Components for Boiler Auxiliaries Insulation (PG-32))
2284,Lining and Insulation Materials (PG-33),ERC,2025-08-09,2026-01-15,,,PG33,1.9.4.2(Erection)
2285,Erection: BLR PR PARTS MINERAL WOOL,ERC,2025-08-19,2025-12-16,,,,1.9.4.2.6(Lining and Insulation Materials (PG-33))
2286,Erection: MAIN BLR CASTABLE REFRACTORY GR A,ERC,2025-08-09,2025-12-06,,,,1.9.4.2.6(Lining and Insulation Materials (PG-33))
2287,Erection: MAIN BLR POURABLE INSULATION,ERC,2025-08-09,2026-01-15,,,,1.9.4.2.6(Lining and Insulation Materials (PG-33))
2288,Boiler Outer Casing (PG-37),ERC,2025-07-20,2025-12-06,,,PG37,1.9.4.2(Erection)
2289,Erection: BLR OUTER CASING COMPONENTS,ERC,2025-07-20,2025-12-06,,,,1.9.4.2.7(Boiler Outer Casing (PG-37))
2290,Erection: BLR OUTER CASING ,ERC,2025-07-20,2025-12-06,,,,1.9.4.2.7(Boiler Outer Casing (PG-37))
2291,Ignition and Burning System,ERC,2023-01-25,2025-12-09,,,,1.9(Boiler & Auxiliaries)
2292,Supply (BHEL TRY),SUP,2023-01-25,2025-04-29,,,,1.9.5(Ignition and Burning System)
2293,Oil & Gas Burners and Ignitors & Scanners (PG-41),SUP,2023-06-12,2025-01-27,,,PG41,1.9.5.1(Supply (BHEL TRY))
2294,"AIR COOLED OIL GUN ASSY, (PGMA-41350)",SUP,2023-06-12,2024-12-26,,,41350,1.9.5.1.1(Oil & Gas Burners and Ignitors & Scanners (PG-41))
2295,Engineering,ENG,2023-06-12,2024-02-28,,,41350,"1.9.5.1.1.1(AIR COOLED OIL GUN ASSY, (PGMA-41350))"
2296,Manufacturing,MFG,2024-02-29,2024-11-26,,,41350,"1.9.5.1.1.1(AIR COOLED OIL GUN ASSY, (PGMA-41350))"
2297,Dispatch,DIS,2024-11-27,2024-12-26,,,41350,"1.9.5.1.1.1(AIR COOLED OIL GUN ASSY, (PGMA-41350))"
2298,OIL GUN VICE ASSEMBLY AND RACK (PGMA-41390),SUP,2023-06-12,2024-12-26,,,41390,1.9.5.1.1(Oil & Gas Burners and Ignitors & Scanners (PG-41))
2299,Engineering,ENG,2023-06-12,2024-02-28,,,41390,1.9.5.1.1.2(OIL GUN VICE ASSEMBLY AND RACK (PGMA-41390))
2300,Manufacturing,MFG,2024-02-29,2024-11-26,,,41390,1.9.5.1.1.2(OIL GUN VICE ASSEMBLY AND RACK (PGMA-41390))
2301,Dispatch,DIS,2024-11-27,2024-12-26,,,41390,1.9.5.1.1.2(OIL GUN VICE ASSEMBLY AND RACK (PGMA-41390))
2302,HIGH ENERGY ARC IGNITOR (PGMA-41500),SUP,2023-06-12,2024-12-28,,,41500,1.9.5.1.1(Oil & Gas Burners and Ignitors & Scanners (PG-41))
2303,Engineering,ENG,2023-06-12,2024-02-28,,,41500,1.9.5.1.1.3(HIGH ENERGY ARC IGNITOR (PGMA-41500))
2304,Manufacturing,MFG,2024-02-29,2024-11-28,,,41500,1.9.5.1.1.3(HIGH ENERGY ARC IGNITOR (PGMA-41500))
2305,Dispatch,DIS,2024-11-29,2024-12-28,,,41500,1.9.5.1.1.3(HIGH ENERGY ARC IGNITOR (PGMA-41500))
2306,Oil Gun Assembly - DD items (PGMA-41710),SUP,2023-06-12,2024-12-28,,,41710,1.9.5.1.1(Oil & Gas Burners and Ignitors & Scanners (PG-41))
2307,Engineering,ENG,2023-06-12,2024-02-28,,,41710,1.9.5.1.1.4(Oil Gun Assembly - DD items (PGMA-41710))
2308,Manufacturing,MFG,2024-02-29,2024-11-28,,,41710,1.9.5.1.1.4(Oil Gun Assembly - DD items (PGMA-41710))
2309,Dispatch,DIS,2024-11-29,2024-12-28,,,41710,1.9.5.1.1.4(Oil Gun Assembly - DD items (PGMA-41710))
2310,OIL&GAS BURNER COMMISSIONING SPARE (PGMA-41988),SUP,2023-07-02,2025-01-27,,,41988,1.9.5.1.1(Oil & Gas Burners and Ignitors & Scanners (PG-41))
2311,Engineering,ENG,2023-07-02,2024-03-22,,,41988,1.9.5.1.1.5(OIL&GAS BURNER COMMISSIONING SPARE (PGMA-41988))
2312,Manufacturing,MFG,2024-03-23,2024-12-28,,,41988,1.9.5.1.1.5(OIL&GAS BURNER COMMISSIONING SPARE (PGMA-41988))
2313,Dispatch,DIS,2024-12-29,2025-01-27,,,41988,1.9.5.1.1.5(OIL&GAS BURNER COMMISSIONING SPARE (PGMA-41988))
2314,OIL/GAS BURNER MANDATORY SPARES (PGMA-41997),SUP,2023-07-02,2025-01-27,,,41997,1.9.5.1.1(Oil & Gas Burners and Ignitors & Scanners (PG-41))
2315,Engineering,ENG,2023-07-02,2024-03-22,,,41997,1.9.5.1.1.6(OIL/GAS BURNER MANDATORY SPARES (PGMA-41997))
2316,Manufacturing,MFG,2024-03-23,2024-12-28,,,41997,1.9.5.1.1.6(OIL/GAS BURNER MANDATORY SPARES (PGMA-41997))
2317,Dispatch,DIS,2024-12-29,2025-01-27,,,41997,1.9.5.1.1.6(OIL/GAS BURNER MANDATORY SPARES (PGMA-41997))
2318,Oil & Gas Systems (PG-42),OTH,2023-06-12,2025-04-29,,,PG42,1.9.5.1(Supply (BHEL TRY))
2319,PNEUMATIC FITTINGS (PGMA-42001),SUP,2023-08-07,2025-03-30,,,42001,1.9.5.1.2(Oil & Gas Systems (PG-42))
2320,Engineering,ENG,2023-08-07,2024-05-14,,,42001,1.9.5.1.2.1(PNEUMATIC FITTINGS (PGMA-42001))
2321,Manufacturing,MFG,2024-05-15,2025-02-28,,,42001,1.9.5.1.2.1(PNEUMATIC FITTINGS (PGMA-42001))
2322,Dispatch,DIS,2025-03-01,2025-03-30,,,42001,1.9.5.1.2.1(PNEUMATIC FITTINGS (PGMA-42001))
2323,STEAM BLOW MATERIALS (PGMA-42002),SUP,2023-07-23,2025-02-27,,,42002,1.9.5.1.2(Oil & Gas Systems (PG-42))
2324,Engineering,ENG,2023-07-23,2024-04-17,,,42002,1.9.5.1.2.2(STEAM BLOW MATERIALS (PGMA-42002))
2325,Manufacturing,MFG,2024-04-18,2025-01-28,,,42002,1.9.5.1.2.2(STEAM BLOW MATERIALS (PGMA-42002))
2326,Dispatch,DIS,2025-01-29,2025-02-27,,,42002,1.9.5.1.2.2(STEAM BLOW MATERIALS (PGMA-42002))
2327,INSTRUMENT FITTINGS (PGMA-42005),SUP,2023-08-07,2025-03-30,,,42005,1.9.5.1.2(Oil & Gas Systems (PG-42))
2328,Engineering,ENG,2023-08-07,2024-05-14,,,42005,1.9.5.1.2.3(INSTRUMENT FITTINGS (PGMA-42005))
2329,Manufacturing,MFG,2024-05-15,2025-02-28,,,42005,1.9.5.1.2.3(INSTRUMENT FITTINGS (PGMA-42005))
2330,Dispatch,DIS,2025-03-01,2025-03-30,,,42005,1.9.5.1.2.3(INSTRUMENT FITTINGS (PGMA-42005))
2331,BOI-LU-LIGHT FUEL OIL PUMP SET (PGMA-42010),SUP,2023-12-01,2025-02-04,,,42010,1.9.5.1.2(Oil & Gas Systems (PG-42))
2332,NIT,ENQ,2023-12-01,2023-12-01,,,42010,1.9.5.1.2.4(BOI-LU-LIGHT FUEL OIL PUMP SET (PGMA-42010))
2333,Ordering,ORD,2023-12-02,2024-03-30,,,42010,1.9.5.1.2.4(BOI-LU-LIGHT FUEL OIL PUMP SET (PGMA-42010))
2334,Manufacturing,MFG,2024-03-31,2025-01-05,,,42010,1.9.5.1.2.4(BOI-LU-LIGHT FUEL OIL PUMP SET (PGMA-42010))
2335,Dispatch,DIS,2025-01-06,2025-02-04,,,42010,1.9.5.1.2.4(BOI-LU-LIGHT FUEL OIL PUMP SET (PGMA-42010))
2336,BOI-LU-DRAIN OIL PUMP-MOTOR ASSY (PGMA-42046),SUP,2023-08-03,2025-02-07,,,42046,1.9.5.1.2(Oil & Gas Systems (PG-42))
2337,NIT,ENQ,2023-08-03,2023-08-03,,,42046,1.9.5.1.2.5(BOI-LU-DRAIN OIL PUMP-MOTOR ASSY (PGMA-42046))
2338,Ordering,ORD,2023-08-04,2023-12-31,,,42046,1.9.5.1.2.5(BOI-LU-DRAIN OIL PUMP-MOTOR ASSY (PGMA-42046))
2339,Manufacturing,MFG,2024-04-10,2025-01-08,,,42046,1.9.5.1.2.5(BOI-LU-DRAIN OIL PUMP-MOTOR ASSY (PGMA-42046))
2340,Dispatch,DIS,2025-01-09,2025-02-07,,,42046,1.9.5.1.2.5(BOI-LU-DRAIN OIL PUMP-MOTOR ASSY (PGMA-42046))
2341,DRAIN OIL TANK (PGMA-42065),SUP,2023-06-12,2024-12-28,,,42065,1.9.5.1.2(Oil & Gas Systems (PG-42))
2342,Engineering,ENG,2023-06-12,2024-02-28,,,42065,1.9.5.1.2.6(DRAIN OIL TANK (PGMA-42065))
2343,Manufacturing,MFG,2024-02-29,2024-11-28,,,42065,1.9.5.1.2.6(DRAIN OIL TANK (PGMA-42065))
2344,Dispatch,DIS,2024-11-29,2024-12-28,,,42065,1.9.5.1.2.6(DRAIN OIL TANK (PGMA-42065))
2345,BURNER STATION SKID ASSY (PGMA-42070),SUP,2023-08-07,2025-03-30,,,42070,1.9.5.1.2(Oil & Gas Systems (PG-42))
2346,Engineering,ENG,2023-08-07,2024-05-14,,,42070,1.9.5.1.2.7(BURNER STATION SKID ASSY (PGMA-42070))
2347,Manufacturing,MFG,2024-05-15,2025-02-28,,,42070,1.9.5.1.2.7(BURNER STATION SKID ASSY (PGMA-42070))
2348,Dispatch,DIS,2025-03-01,2025-03-30,,,42070,1.9.5.1.2.7(BURNER STATION SKID ASSY (PGMA-42070))
2349,"PIPING, PUMP HOUSE-FUEL OIL (PGMA-42120)",SUP,2023-07-23,2025-02-27,,,42120,1.9.5.1.2(Oil & Gas Systems (PG-42))
2350,Engineering,ENG,2023-07-23,2024-04-17,,,42120,"1.9.5.1.2.8(PIPING, PUMP HOUSE-FUEL OIL (PGMA-42120))"
2351,Manufacturing,MFG,2024-04-18,2025-01-28,,,42120,"1.9.5.1.2.8(PIPING, PUMP HOUSE-FUEL OIL (PGMA-42120))"
2352,Dispatch,DIS,2025-01-29,2025-02-27,,,42120,"1.9.5.1.2.8(PIPING, PUMP HOUSE-FUEL OIL (PGMA-42120))"
2353,"PIPING,PUMP HOUSE STEAM - IBR (PGMA-42128)",SUP,2023-07-23,2025-02-27,,,42128,1.9.5.1.2(Oil & Gas Systems (PG-42))
2354,Engineering,ENG,2023-07-23,2024-04-17,,,42128,"1.9.5.1.2.9(PIPING,PUMP HOUSE STEAM - IBR (PGMA-42128))"
2355,Manufacturing,MFG,2024-04-18,2025-01-28,,,42128,"1.9.5.1.2.9(PIPING,PUMP HOUSE STEAM - IBR (PGMA-42128))"
2356,Dispatch,DIS,2025-01-29,2025-02-27,,,42128,"1.9.5.1.2.9(PIPING,PUMP HOUSE STEAM - IBR (PGMA-42128))"
2357,"PIPING,OPERATING FLOOR LIGHT FUEL OIL (PGMA-42152)",SUP,2023-08-07,2025-03-30,,,42152,1.9.5.1.2(Oil & Gas Systems (PG-42))
2358,Engineering,ENG,2023-08-07,2024-05-14,,,42152,"1.9.5.1.2.10(PIPING,OPERATING FLOOR LIGHT FUEL OIL (PGMA-42152))"
2359,Manufacturing,MFG,2024-05-15,2025-02-28,,,42152,"1.9.5.1.2.10(PIPING,OPERATING FLOOR LIGHT FUEL OIL (PGMA-42152))"
2360,Dispatch,DIS,2025-03-01,2025-03-30,,,42152,"1.9.5.1.2.10(PIPING,OPERATING FLOOR LIGHT FUEL OIL (PGMA-42152))"
2361,"PIPING,OPRG FLOOR DRAIN OIL (PGMA-42154)",SUP,2023-08-07,2025-03-30,,,42154,1.9.5.1.2(Oil & Gas Systems (PG-42))
2362,Engineering,ENG,2023-08-07,2024-05-14,,,42154,"1.9.5.1.2.11(PIPING,OPRG FLOOR DRAIN OIL (PGMA-42154))"
2363,Manufacturing,MFG,2024-05-15,2025-02-28,,,42154,"1.9.5.1.2.11(PIPING,OPRG FLOOR DRAIN OIL (PGMA-42154))"
2364,Dispatch,DIS,2025-03-01,2025-03-30,,,42154,"1.9.5.1.2.11(PIPING,OPRG FLOOR DRAIN OIL (PGMA-42154))"
2365,"PIPING,OPERATING FLOOR ATOMIZING AIR (PGMA-42157)",SUP,2023-06-12,2024-12-28,,,42157,1.9.5.1.2(Oil & Gas Systems (PG-42))
2366,Engineering,ENG,2023-06-12,2024-02-28,,,42157,"1.9.5.1.2.12(PIPING,OPERATING FLOOR ATOMIZING AIR (PGMA-42157))"
2367,Manufacturing,MFG,2024-02-29,2024-11-28,,,42157,"1.9.5.1.2.12(PIPING,OPERATING FLOOR ATOMIZING AIR (PGMA-42157))"
2368,Dispatch,DIS,2024-11-29,2024-12-28,,,42157,"1.9.5.1.2.12(PIPING,OPERATING FLOOR ATOMIZING AIR (PGMA-42157))"
2369,"PIPING,OPERATING FLOOR STEAM-IBR (PGMA-42158)",SUP,2023-08-07,2025-03-30,,,42158,1.9.5.1.2(Oil & Gas Systems (PG-42))
2370,Engineering,ENG,2023-08-07,2024-05-14,,,42158,"1.9.5.1.2.13(PIPING,OPERATING FLOOR STEAM-IBR (PGMA-42158))"
2371,Manufacturing,MFG,2024-05-15,2025-02-28,,,42158,"1.9.5.1.2.13(PIPING,OPERATING FLOOR STEAM-IBR (PGMA-42158))"
2372,Dispatch,DIS,2025-03-01,2025-03-30,,,42158,"1.9.5.1.2.13(PIPING,OPERATING FLOOR STEAM-IBR (PGMA-42158))"
2373,BOI-LU-SUBDELIVERY FUEL OIL SYSTEM (PGMA-42200),SUP,2023-11-01,2025-02-04,,,42200,1.9.5.1.2(Oil & Gas Systems (PG-42))
2374,NIT,ENQ,2023-11-01,2023-11-01,,,42200,1.9.5.1.2.14(BOI-LU-SUBDELIVERY FUEL OIL SYSTEM (PGMA-42200))
2375,Ordering,ORD,2023-11-02,2024-03-30,,,42200,1.9.5.1.2.14(BOI-LU-SUBDELIVERY FUEL OIL SYSTEM (PGMA-42200))
2376,Manufacturing,MFG,2024-03-31,2025-01-05,,,42200,1.9.5.1.2.14(BOI-LU-SUBDELIVERY FUEL OIL SYSTEM (PGMA-42200))
2377,Dispatch,DIS,2025-01-06,2025-02-04,,,42200,1.9.5.1.2.14(BOI-LU-SUBDELIVERY FUEL OIL SYSTEM (PGMA-42200))
2378,BHEL VALVE F.O. SYSTEM (PGMA-42300),SUP,2023-07-02,2025-01-27,,,42300,1.9.5.1.2(Oil & Gas Systems (PG-42))
2379,Engineering,ENG,2023-07-02,2024-03-22,,,42300,1.9.5.1.2.15(BHEL VALVE F.O. SYSTEM (PGMA-42300))
2380,Manufacturing,MFG,2024-03-23,2024-12-28,,,42300,1.9.5.1.2.15(BHEL VALVE F.O. SYSTEM (PGMA-42300))
2381,Dispatch,DIS,2024-12-29,2025-01-27,,,42300,1.9.5.1.2.15(BHEL VALVE F.O. SYSTEM (PGMA-42300))
2382,"BHEL VALVE,OPERATING FLOOR STM-IBR (PGMA-42358)",SUP,2023-07-02,2025-01-27,,,42358,1.9.5.1.2(Oil & Gas Systems (PG-42))
2383,Engineering,ENG,2023-07-02,2024-03-22,,,42358,"1.9.5.1.2.16(BHEL VALVE,OPERATING FLOOR STM-IBR (PGMA-42358))"
2384,Manufacturing,MFG,2024-03-23,2024-12-28,,,42358,"1.9.5.1.2.16(BHEL VALVE,OPERATING FLOOR STM-IBR (PGMA-42358))"
2385,Dispatch,DIS,2024-12-29,2025-01-27,,,42358,"1.9.5.1.2.16(BHEL VALVE,OPERATING FLOOR STM-IBR (PGMA-42358))"
2386,BULKED BPS COMPONENTS (PGMA-42700),SUP,2023-07-23,2025-02-27,,,42700,1.9.5.1.2(Oil & Gas Systems (PG-42))
2387,Engineering,ENG,2023-07-23,2024-04-17,,,42700,1.9.5.1.2.17(BULKED BPS COMPONENTS (PGMA-42700))
2388,Manufacturing,MFG,2024-04-18,2025-01-28,,,42700,1.9.5.1.2.17(BULKED BPS COMPONENTS (PGMA-42700))
2389,Dispatch,DIS,2025-01-29,2025-02-27,,,42700,1.9.5.1.2.17(BULKED BPS COMPONENTS (PGMA-42700))
2390,Fuel Oil System - DD Items (PGMA-42710),SUP,2023-07-23,2025-02-27,,,42710,1.9.5.1.2(Oil & Gas Systems (PG-42))
2391,Engineering,ENG,2023-07-23,2024-04-17,,,42710,1.9.5.1.2.18(Fuel Oil System - DD Items (PGMA-42710))
2392,Manufacturing,MFG,2024-04-18,2025-01-28,,,42710,1.9.5.1.2.18(Fuel Oil System - DD Items (PGMA-42710))
2393,Dispatch,DIS,2025-01-29,2025-02-27,,,42710,1.9.5.1.2.18(Fuel Oil System - DD Items (PGMA-42710))
2394,Fuel Oil System - Shop items (PGMA-42858),SUP,2023-08-07,2025-03-30,,,42858,1.9.5.1.2(Oil & Gas Systems (PG-42))
2395,Engineering,ENG,2023-08-07,2024-05-14,,,42858,1.9.5.1.2.19(Fuel Oil System - Shop items (PGMA-42858))
2396,Manufacturing,MFG,2024-05-15,2025-02-28,,,42858,1.9.5.1.2.19(Fuel Oil System - Shop items (PGMA-42858))
2397,Dispatch,DIS,2025-03-01,2025-03-30,,,42858,1.9.5.1.2.19(Fuel Oil System - Shop items (PGMA-42858))
2398,OIL&GAS SYSTEM COMMISSIONING SPARE (PGMA-42988),SUP,2023-08-22,2025-04-29,,,42988,1.9.5.1.2(Oil & Gas Systems (PG-42))
2399,Engineering,ENG,2023-08-22,2024-06-11,,,42988,1.9.5.1.2.20(OIL&GAS SYSTEM COMMISSIONING SPARE (PGMA-42988))
2400,Manufacturing,MFG,2024-06-12,2025-03-30,,,42988,1.9.5.1.2.20(OIL&GAS SYSTEM COMMISSIONING SPARE (PGMA-42988))
2401,Dispatch,DIS,2025-03-31,2025-04-29,,,42988,1.9.5.1.2.20(OIL&GAS SYSTEM COMMISSIONING SPARE (PGMA-42988))
2402,IMPORTED ELECTRODES (PGMA-42992),SUP,2023-07-23,2025-02-27,,,42992,1.9.5.1.2(Oil & Gas Systems (PG-42))
2403,Engineering,ENG,2023-07-23,2024-04-17,,,42992,1.9.5.1.2.21(IMPORTED ELECTRODES (PGMA-42992))
2404,Manufacturing,MFG,2024-04-18,2025-01-28,,,42992,1.9.5.1.2.21(IMPORTED ELECTRODES (PGMA-42992))
2405,Dispatch,DIS,2025-01-29,2025-02-27,,,42992,1.9.5.1.2.21(IMPORTED ELECTRODES (PGMA-42992))
2406,OIL SYSTEM-MANDATORY SPARES (PGMA-42997),SUP,2023-08-22,2025-04-29,,,42997,1.9.5.1.2(Oil & Gas Systems (PG-42))
2407,Engineering,ENG,2023-08-22,2024-06-11,,,42997,1.9.5.1.2.22(OIL SYSTEM-MANDATORY SPARES (PGMA-42997))
2408,Manufacturing,MFG,2024-06-12,2025-03-30,,,42997,1.9.5.1.2.22(OIL SYSTEM-MANDATORY SPARES (PGMA-42997))
2409,Dispatch,DIS,2025-03-31,2025-04-29,,,42997,1.9.5.1.2.22(OIL SYSTEM-MANDATORY SPARES (PGMA-42997))
2410,Ignitor and Scanner Air System (PG-43),OTH,2023-08-07,2025-04-29,,,PG43,1.9.5.1(Supply (BHEL TRY))
2411,ASSY COMP SCANNER & GUN AIR SYSTEM (PGMA-43004),SUP,2023-08-07,2025-03-30,,,43004,1.9.5.1.3(Ignitor and Scanner Air System (PG-43))
2412,Engineering,ENG,2023-08-07,2024-05-14,,,43004,1.9.5.1.3.1(ASSY COMP SCANNER & GUN AIR SYSTEM (PGMA-43004))
2413,Manufacturing,MFG,2024-05-15,2025-02-28,,,43004,1.9.5.1.3.1(ASSY COMP SCANNER & GUN AIR SYSTEM (PGMA-43004))
2414,Dispatch,DIS,2025-03-01,2025-03-30,,,43004,1.9.5.1.3.1(ASSY COMP SCANNER & GUN AIR SYSTEM (PGMA-43004))
2415,ASSY COMP MILL SEAL AIR SYSTEM (PGMA-43005),SUP,2023-08-22,2025-04-29,,,43005,1.9.5.1.3(Ignitor and Scanner Air System (PG-43))
2416,Engineering,ENG,2023-08-22,2024-06-11,,,43005,1.9.5.1.3.2(ASSY COMP MILL SEAL AIR SYSTEM (PGMA-43005))
2417,Manufacturing,MFG,2024-06-12,2025-03-30,,,43005,1.9.5.1.3.2(ASSY COMP MILL SEAL AIR SYSTEM (PGMA-43005))
2418,Dispatch,DIS,2025-03-31,2025-04-29,,,43005,1.9.5.1.3.2(ASSY COMP MILL SEAL AIR SYSTEM (PGMA-43005))
2419,M/C COMP SCANNER & GUN AIR SYSTEM (PGMA-43104),SUP,2023-08-07,2025-03-30,,,43104,1.9.5.1.3(Ignitor and Scanner Air System (PG-43))
2420,Engineering,ENG,2023-08-07,2024-05-14,,,43104,1.9.5.1.3.3(M/C COMP SCANNER & GUN AIR SYSTEM (PGMA-43104))
2421,Manufacturing,MFG,2024-05-15,2025-02-28,,,43104,1.9.5.1.3.3(M/C COMP SCANNER & GUN AIR SYSTEM (PGMA-43104))
2422,Dispatch,DIS,2025-03-01,2025-03-30,,,43104,1.9.5.1.3.3(M/C COMP SCANNER & GUN AIR SYSTEM (PGMA-43104))
2423,M/C COMP MILL SEAL AIR SYSTEM (PGMA-43105),SUP,2023-08-22,2025-04-29,,,43105,1.9.5.1.3(Ignitor and Scanner Air System (PG-43))
2424,Engineering,ENG,2023-08-22,2024-06-11,,,43105,1.9.5.1.3.4(M/C COMP MILL SEAL AIR SYSTEM (PGMA-43105))
2425,Manufacturing,MFG,2024-06-12,2025-03-30,,,43105,1.9.5.1.3.4(M/C COMP MILL SEAL AIR SYSTEM (PGMA-43105))
2426,Dispatch,DIS,2025-03-31,2025-04-29,,,43105,1.9.5.1.3.4(M/C COMP MILL SEAL AIR SYSTEM (PGMA-43105))
2427,"BOI-LU-SUBDEL, AIR SYSTEM (PGMA-43200)",SUP,2023-09-22,2025-03-15,,,43200,1.9.5.1.3(Ignitor and Scanner Air System (PG-43))
2428,NIT,ENQ,2023-09-22,2023-09-22,,,43200,"1.9.5.1.3.5(BOI-LU-SUBDEL, AIR SYSTEM (PGMA-43200))"
2429,Ordering,ORD,2023-09-23,2024-04-09,,,43200,"1.9.5.1.3.5(BOI-LU-SUBDEL, AIR SYSTEM (PGMA-43200))"
2430,Manufacturing,MFG,2024-04-10,2025-02-13,,,43200,"1.9.5.1.3.5(BOI-LU-SUBDEL, AIR SYSTEM (PGMA-43200))"
2431,Dispatch,DIS,2025-02-14,2025-03-15,,,43200,"1.9.5.1.3.5(BOI-LU-SUBDEL, AIR SYSTEM (PGMA-43200))"
2432,Seal Air & Scanner Air System - DD items (PGMA-43710),SUP,2023-08-07,2025-03-30,,,43710,1.9.5.1.3(Ignitor and Scanner Air System (PG-43))
2433,Engineering,ENG,2023-08-07,2024-05-14,,,43710,1.9.5.1.3.6(Seal Air & Scanner Air System - DD items (PGMA-43710))
2434,Manufacturing,MFG,2024-05-15,2025-02-28,,,43710,1.9.5.1.3.6(Seal Air & Scanner Air System - DD items (PGMA-43710))
2435,Dispatch,DIS,2025-03-01,2025-03-30,,,43710,1.9.5.1.3.6(Seal Air & Scanner Air System - DD items (PGMA-43710))
2436,Coal Burner System (PG-45),OTH,2023-01-25,2025-04-29,,,PG45,1.9.5.1(Supply (BHEL TRY))
2437,SA DAMPER & BURNER TILT ACTUATORS (PGMA-45200),SUP,2023-04-09,2024-08-29,,,45200,1.9.5.1.4(Coal Burner System (PG-45))
2438,Engineering,ENG,2023-04-09,2023-11-29,,,45200,1.9.5.1.4.1(SA DAMPER & BURNER TILT ACTUATORS (PGMA-45200))
2439,Manufacturing,MFG,2023-11-30,2024-07-30,,,45200,1.9.5.1.4.1(SA DAMPER & BURNER TILT ACTUATORS (PGMA-45200))
2440,Dispatch,DIS,2024-07-31,2024-08-29,,,45200,1.9.5.1.4.1(SA DAMPER & BURNER TILT ACTUATORS (PGMA-45200))
2441,Wind Box & SOFA Assembly - DD items (PGMA-45710),SUP,2023-01-25,2024-08-29,,,45710,1.9.5.1.4(Coal Burner System (PG-45))
2442,Engineering,ENG,2023-01-25,2023-11-05,,,45710,1.9.5.1.4.2(Wind Box & SOFA Assembly - DD items (PGMA-45710))
2443,Manufacturing,MFG,2023-11-06,2024-07-30,,,45710,1.9.5.1.4.2(Wind Box & SOFA Assembly - DD items (PGMA-45710))
2444,Dispatch,DIS,2024-07-31,2024-08-29,,,45710,1.9.5.1.4.2(Wind Box & SOFA Assembly - DD items (PGMA-45710))
2445,Windbox assembly and SOFA tube attachment (PGMA-45801),SUP,2023-01-25,2024-07-29,,,45801,1.9.5.1.4(Coal Burner System (PG-45))
2446,Engineering,ENG,2023-01-25,2023-10-26,,,45801,1.9.5.1.4.3(Windbox assembly and SOFA tube attachment (PGMA-45801))
2447,Manufacturing,MFG,2023-10-27,2024-06-29,,,45801,1.9.5.1.4.3(Windbox assembly and SOFA tube attachment (PGMA-45801))
2448,Dispatch,DIS,2024-06-30,2024-07-29,,,45801,1.9.5.1.4.3(Windbox assembly and SOFA tube attachment (PGMA-45801))
2449,"Windbox assembly - 32"" width (PGMA-45802)",SUP,2023-01-25,2024-07-29,,,45802,1.9.5.1.4(Coal Burner System (PG-45))
2450,Engineering,ENG,2023-01-25,2023-10-26,,,45802,"1.9.5.1.4.4(Windbox assembly - 32"" width (PGMA-45802))"
2451,Manufacturing,MFG,2023-10-27,2024-06-29,,,45802,"1.9.5.1.4.4(Windbox assembly - 32"" width (PGMA-45802))"
2452,Dispatch,DIS,2024-06-30,2024-07-29,,,45802,"1.9.5.1.4.4(Windbox assembly - 32"" width (PGMA-45802))"
2453,Windbox assembly - SOFA (PGMA-45804),SUP,2023-01-25,2024-07-29,,,45804,1.9.5.1.4(Coal Burner System (PG-45))
2454,Engineering,ENG,2023-01-25,2023-10-26,,,45804,1.9.5.1.4.5(Windbox assembly - SOFA (PGMA-45804))
2455,Manufacturing,MFG,2023-10-27,2024-06-29,,,45804,1.9.5.1.4.5(Windbox assembly - SOFA (PGMA-45804))
2456,Dispatch,DIS,2024-06-30,2024-07-29,,,45804,1.9.5.1.4.5(Windbox assembly - SOFA (PGMA-45804))
2457,Windbox support and air cylinder mounting (PGMA-45805),SUP,2023-01-25,2024-07-29,,,45805,1.9.5.1.4(Coal Burner System (PG-45))
2458,Engineering,ENG,2023-01-25,2023-10-26,,,45805,1.9.5.1.4.6(Windbox support and air cylinder mounting (PGMA-45805))
2459,Manufacturing,MFG,2023-10-27,2024-06-29,,,45805,1.9.5.1.4.6(Windbox support and air cylinder mounting (PGMA-45805))
2460,Dispatch,DIS,2024-06-30,2024-07-29,,,45805,1.9.5.1.4.6(Windbox support and air cylinder mounting (PGMA-45805))
2461,Wind Box & SOFA Assy - Shop items (PGMA-45858),SUP,2023-01-25,2024-07-29,,,45858,1.9.5.1.4(Coal Burner System (PG-45))
2462,Engineering,ENG,2023-01-25,2023-10-26,,,45858,1.9.5.1.4.7(Wind Box & SOFA Assy - Shop items (PGMA-45858))
2463,Manufacturing,MFG,2023-10-27,2024-06-29,,,45858,1.9.5.1.4.7(Wind Box & SOFA Assy - Shop items (PGMA-45858))
2464,Dispatch,DIS,2024-06-30,2024-07-29,,,45858,1.9.5.1.4.7(Wind Box & SOFA Assy - Shop items (PGMA-45858))
2465,COAL BURNER-MANDATORY SPARES (PGMA-45997),SUP,2023-08-22,2025-04-29,,,45997,1.9.5.1.4(Coal Burner System (PG-45))
2466,Engineering,ENG,2023-08-22,2024-06-11,,,45997,1.9.5.1.4.8(COAL BURNER-MANDATORY SPARES (PGMA-45997))
2467,Manufacturing,MFG,2024-06-12,2025-03-30,,,45997,1.9.5.1.4.8(COAL BURNER-MANDATORY SPARES (PGMA-45997))
2468,Dispatch,DIS,2025-03-31,2025-04-29,,,45997,1.9.5.1.4.8(COAL BURNER-MANDATORY SPARES (PGMA-45997))
2469,Erection,ERC,2024-08-30,2025-12-09,,,,1.9.5(Ignition and Burning System)
2470,Oil & Gas Burners and Ignitors & Scanners (PG-41),ERC,2025-12-02,2025-12-09,,,PG41,1.9.5.2(Erection)
2471,Erection: AIR COOLED OIL GUN ASSY,ERC,2025-12-02,2025-12-09,,,,1.9.5.2.1(Oil & Gas Burners and Ignitors & Scanners (PG-41))
2472,Erection: OIL GUN VICE ASSEMBLY AND RACK,ERC,2025-12-02,2025-12-09,,,,1.9.5.2.1(Oil & Gas Burners and Ignitors & Scanners (PG-41))
2473,Erection: HIGH ENERGY ARC IGNITOR,ERC,2025-12-02,2025-12-09,,,,1.9.5.2.1(Oil & Gas Burners and Ignitors & Scanners (PG-41))
2474,Oil & Gas Systems (PG-42),ERC,2025-09-01,2025-10-30,,,PG42,1.9.5.2(Erection)
2475,Erection: PNEUMATIC FITTINGS,ERC,2025-10-01,2025-10-08,,,,1.9.5.2.2(Oil & Gas Systems (PG-42))
2476,Erection: STEAM BLOW MATERIALS,ERC,2025-10-01,2025-10-08,,,,1.9.5.2.2(Oil & Gas Systems (PG-42))
2477,Erection: INSTRUMENT FITTINGS,ERC,2025-10-01,2025-10-08,,,,1.9.5.2.2(Oil & Gas Systems (PG-42))
2478,Erection: BURNER STATION SKID ASSY,ERC,2025-09-01,2025-09-30,,,,1.9.5.2.2(Oil & Gas Systems (PG-42))
2479,"Erection: PIPING & Valves, OPERATING FLOOR  & TRACER",ERC,2025-10-01,2025-10-30,,,,1.9.5.2.2(Oil & Gas Systems (PG-42))
2480,"Erection: PIPING & Valves, OPERATING FLOOR LIGHT FUEL OIL",ERC,2025-10-01,2025-10-30,,,,1.9.5.2.2(Oil & Gas Systems (PG-42))
2481,"Erection: PIPING & Valves,OPRG FLOOR DRAIN OIL",ERC,2025-10-01,2025-10-30,,,,1.9.5.2.2(Oil & Gas Systems (PG-42))
2482,"Erection: PIPING & Valves, OPERATING FLOOR ATOMIZING AIR",ERC,2025-10-01,2025-10-30,,,,1.9.5.2.2(Oil & Gas Systems (PG-42))
2483,"Erection: PIPING & Valves, OPERATING FLOOR STEAM-IBR",ERC,2025-10-01,2025-10-30,,,,1.9.5.2.2(Oil & Gas Systems (PG-42))
2484,Ignitor and Scanner Air System (PG-43),ERC,2025-04-30,2025-10-15,,,PG43,1.9.5.2(Erection)
2485,Erection: ASSY COMP SCANNER & GUN AIR SYSTEM,ERC,2025-10-01,2025-10-15,,,,1.9.5.2.3(Ignitor and Scanner Air System (PG-43))
2486,Erection: ASSY COMP MILL SEAL AIR SYSTEM,ERC,2025-04-30,2025-05-14,,,,1.9.5.2.3(Ignitor and Scanner Air System (PG-43))
2487,Erection: M/C COMP SCANNER & GUN AIR SYSTEM,ERC,2025-10-01,2025-10-15,,,,1.9.5.2.3(Ignitor and Scanner Air System (PG-43))
2488,Erection: M/C COMP MILL SEAL AIR SYSTEM,ERC,2025-05-15,2025-05-29,,,,1.9.5.2.3(Ignitor and Scanner Air System (PG-43))
2489,Erection: Seal Air & Scanner Air System,ERC,2025-09-01,2025-09-30,,,,1.9.5.2.3(Ignitor and Scanner Air System (PG-43))
2490,Coal Burner System (PG-45),ERC,2024-08-30,2024-09-13,,,PG45,1.9.5.2(Erection)
2491,Erection: SA DAMPER & BURNER TILT ACTUATORS,ERC,2024-08-30,2024-09-13,,,,1.9.5.2.4(Coal Burner System (PG-45))
2492,Air & Flue Gas System,OTH,2022-09-27,2026-05-28,,,,1.9(Boiler & Auxiliaries)
2493, Rel of DWG for Duct Boiler to ESP,PE - RFC,2023-11-03,2023-11-03,,,PCE-00400,1.9.6(Air & Flue Gas System)
2494, Rel of DWG for Duct ESP to Chimney,PE - RFC,2023-12-29,2023-12-29,,,PCE-00450,1.9.6(Air & Flue Gas System)
2495,Civil Work,CIV,2023-11-04,2025-04-20,,,,1.9.6(Air & Flue Gas System)
2496, BOF to ESP Duct Foundation,CIV,2023-11-04,2025-04-20,,,,1.9.6.3(Civil Work)
2497,Priority (First) Pass,CIV,2023-11-04,2025-04-20,,,,1.9.6.3.1( BOF to ESP Duct Foundation)
2498,BOF to ESP Duct Foundation (PP):- Excavation,CIV,2023-11-04,2023-12-03,,,,1.9.6.3.1.1(Priority (First) Pass)
2499,BOF to ESP Duct Foundation (PP):- RCC in substructure including PCC,CIV,2023-12-04,2024-02-01,,,,1.9.6.3.1.1(Priority (First) Pass)
2500,BOF to ESP Duct Foundation (PP):- RCC in superstructure,CIV,2024-12-02,2025-03-31,,,,1.9.6.3.1.1(Priority (First) Pass)
2501,BOF to ESP Duct Foundation (PP):- Backfilling,CIV,2025-04-01,2025-04-10,,,,1.9.6.3.1.1(Priority (First) Pass)
2502,BOF to ESP Duct Foundation (PP):- Finishing works,CIV,2025-04-11,2025-04-20,,,,1.9.6.3.1.1(Priority (First) Pass)
2503,Second Pass,CIV,2023-11-04,2025-04-20,,,,1.9.6.3.1( BOF to ESP Duct Foundation)
2504,BOF to ESP Duct Foundation (SP):- Excavation,CIV,2023-11-04,2023-12-03,,,,1.9.6.3.1.2(Second Pass)
2505,BOF to ESP Duct Foundation (SP):- RCC in substructure including PCC,CIV,2023-12-04,2024-02-01,,,,1.9.6.3.1.2(Second Pass)
2506,BOF to ESP Duct Foundation (SP):- RCC in superstructure,CIV,2024-12-02,2025-03-31,,,,1.9.6.3.1.2(Second Pass)
2507,BOF to ESP Duct Foundation (SP):-  Backfilling,CIV,2025-04-01,2025-04-10,,,,1.9.6.3.1.2(Second Pass)
2508,BOF to ESP Duct Foundation (SP):- Finishing works,CIV,2025-04-11,2025-04-20,,,,1.9.6.3.1.2(Second Pass)
2509, ESP Outlet to ID Fan Inlet Duct Foundation,CIV,2024-02-13,2024-09-26,,,,1.9.6.3(Civil Work)
2510,Priority (First) Pass,CIV,2024-02-13,2024-08-26,,,,1.9.6.3.2( ESP Outlet to ID Fan Inlet Duct Foundation)
2511,ESP Outlet to ID Fan Inlet Duct Foundation (PP) :- EXCAVATION,CIV,2024-02-13,2024-04-07,,,,1.9.6.3.2.1(Priority (First) Pass)
2512,ESP Outlet to ID Fan Inlet Duct Foundation (PP) :- RCC in substructure including PCC,CIV,2024-02-28,2024-05-22,,,,1.9.6.3.2.1(Priority (First) Pass)
2513,ESP Outlet to ID Fan Inlet Duct Foundation (PP) :- RCC in superstructure,CIV,2024-04-13,2024-08-10,,,,1.9.6.3.2.1(Priority (First) Pass)
2514,ESP Outlet to ID Fan Inlet Duct Foundation (PP) :- Backfilling,CIV,2024-08-11,2024-08-22,,,,1.9.6.3.2.1(Priority (First) Pass)
2515,ESP Outlet to ID Fan Inlet Duct Foundation (PP) :- Finishing works,CIV,2024-08-23,2024-08-26,,,,1.9.6.3.2.1(Priority (First) Pass)
2516,Second Pass,CIV,2024-03-14,2024-09-26,,,,1.9.6.3.2( ESP Outlet to ID Fan Inlet Duct Foundation)
2517,ESP Outlet to ID Fan Inlet Duct Foundation (SP) :- Excavation,CIV,2024-03-14,2024-05-07,,,,1.9.6.3.2.2(Second Pass)
2518,ESP Outlet to ID Fan Inlet Duct Foundation (SP) :- RCC in substructure including PCC,CIV,2024-03-29,2024-06-21,,,,1.9.6.3.2.2(Second Pass)
2519,ESP Outlet to ID Fan Inlet Duct Foundation (SP) :- RCC in superstructure,CIV,2024-05-13,2024-09-09,,,,1.9.6.3.2.2(Second Pass)
2520,ESP Outlet to ID Fan Inlet Duct Foundation (SP) :- Backfilling,CIV,2024-09-10,2024-09-21,,,,1.9.6.3.2.2(Second Pass)
2521,ESP Outlet to ID Fan Inlet Duct Foundation (SP) :- Finishing works,CIV,2024-09-22,2024-09-26,,,,1.9.6.3.2.2(Second Pass)
2522, ID Fan Outlet to Chimney Duct Foundation,CIV,2024-05-08,2024-11-27,,,,1.9.6.3(Civil Work)
2523,Priority (First) Pass,CIV,2024-05-08,2024-10-27,,,,1.9.6.3.3( ID Fan Outlet to Chimney Duct Foundation)
2524,ID Fan Outlet to Chimney Duct Foundation (PP):- EXCAVATION,CIV,2024-05-08,2024-06-21,,,,1.9.6.3.3.1(Priority (First) Pass)
2525,ID Fan Outlet to Chimney Duct Foundation (PP):- RCC in substructure including PCC,CIV,2024-05-24,2024-08-06,,,,1.9.6.3.3.1(Priority (First) Pass)
2526,ID Fan Outlet to Chimney Duct Foundation (PP):- RCC in superstructure,CIV,2024-07-08,2024-10-10,,,,1.9.6.3.3.1(Priority (First) Pass)
2527,ID Fan Outlet to Chimney Duct Foundation (PP):- Backfilling,CIV,2024-10-11,2024-10-22,,,,1.9.6.3.3.1(Priority (First) Pass)
2528,ID Fan Outlet to Chimney Duct Foundation (PP):- Finishing works,CIV,2024-10-23,2024-10-27,,,,1.9.6.3.3.1(Priority (First) Pass)
2529,Second Pass,CIV,2024-06-08,2024-11-27,,,,1.9.6.3.3( ID Fan Outlet to Chimney Duct Foundation)
2530,ID Fan Outlet to Chimney Duct Foundation (SP):- Excavation,CIV,2024-06-08,2024-07-22,,,,1.9.6.3.3.2(Second Pass)
2531,ID Fan Outlet to Chimney Duct Foundation (SP):- RCC in substructure including PCC,CIV,2024-06-24,2024-09-06,,,,1.9.6.3.3.2(Second Pass)
2532,ID Fan Outlet to Chimney Duct Foundation (SP):- RCC in superstructure,CIV,2024-08-08,2024-11-10,,,,1.9.6.3.3.2(Second Pass)
2533,ID Fan Outlet to Chimney Duct Foundation (SP):- Backfilling,CIV,2024-11-11,2024-11-22,,,,1.9.6.3.3.2(Second Pass)
2534,ID Fan Outlet to Chimney Duct Foundation (SP):- Finishing works,CIV,2024-11-23,2024-11-27,,,,1.9.6.3.3.2(Second Pass)
2535,Supply ,SUP,2022-09-27,2025-04-29,,,,1.9.6(Air & Flue Gas System)
2536,BHEL TRY,SUP,2022-09-27,2025-04-29,,,,1.9.6.4(Supply )
2537,"External Structures ( Supporting Structures for Duct, PG-39 )",OTH,2022-09-27,2025-01-27,,,PG39,1.9.6.4.1(BHEL TRY)
2538,FOUNDATION MATERIALS (PGMA-39010),SUP,2022-09-27,2023-05-28,,,39010,"1.9.6.4.1.1(External Structures ( Supporting Structures for Duct, PG-39 ))"
2539,Engineering,ENG,2022-09-27,2022-12-20,,,39010,1.9.6.4.1.1.1(FOUNDATION MATERIALS (PGMA-39010))
2540,Manufacturing,MFG,2022-12-21,2023-03-28,,,39010,1.9.6.4.1.1.1(FOUNDATION MATERIALS (PGMA-39010))
2541,Dispatch,DIS,2023-03-29,2023-05-28,,,39010,1.9.6.4.1.1.1(FOUNDATION MATERIALS (PGMA-39010))
2542,FOUNDATION MATERIALS I.D.DUCT SUPPORTS (PGMA-39012),SUP,2022-09-27,2023-05-28,,,39012,"1.9.6.4.1.1(External Structures ( Supporting Structures for Duct, PG-39 ))"
2543,Engineering,ENG,2022-09-27,2022-12-20,,,39012,1.9.6.4.1.1.2(FOUNDATION MATERIALS I.D.DUCT SUPPORTS (PGMA-39012))
2544,Manufacturing,MFG,2022-12-21,2023-03-28,,,39012,1.9.6.4.1.1.2(FOUNDATION MATERIALS I.D.DUCT SUPPORTS (PGMA-39012))
2545,Dispatch,DIS,2023-03-29,2023-05-28,,,39012,1.9.6.4.1.1.2(FOUNDATION MATERIALS I.D.DUCT SUPPORTS (PGMA-39012))
2546,COLUMNS/FRAMES BEFORE ESP- LEFT (PGMA-39101),SUP,2023-05-18,2024-10-28,,,39101,"1.9.6.4.1.1(External Structures ( Supporting Structures for Duct, PG-39 ))"
2547,Engineering,ENG,2023-05-18,2024-01-17,,,39101,1.9.6.4.1.1.3(COLUMNS/FRAMES BEFORE ESP- LEFT (PGMA-39101))
2548,Manufacturing,MFG,2024-01-18,2024-09-28,,,39101,1.9.6.4.1.1.3(COLUMNS/FRAMES BEFORE ESP- LEFT (PGMA-39101))
2549,Dispatch,DIS,2024-09-29,2024-10-28,,,39101,1.9.6.4.1.1.3(COLUMNS/FRAMES BEFORE ESP- LEFT (PGMA-39101))
2550,COLUMNS/FRAMES BEFORE ESP- RIGHT (PGMA-39102),SUP,2023-05-18,2024-10-28,,,39102,"1.9.6.4.1.1(External Structures ( Supporting Structures for Duct, PG-39 ))"
2551,Engineering,ENG,2023-05-18,2024-01-17,,,39102,1.9.6.4.1.1.4(COLUMNS/FRAMES BEFORE ESP- RIGHT (PGMA-39102))
2552,Manufacturing,MFG,2024-01-18,2024-09-28,,,39102,1.9.6.4.1.1.4(COLUMNS/FRAMES BEFORE ESP- RIGHT (PGMA-39102))
2553,Dispatch,DIS,2024-09-29,2024-10-28,,,39102,1.9.6.4.1.1.4(COLUMNS/FRAMES BEFORE ESP- RIGHT (PGMA-39102))
2554,COLS/FRAMES NEAR I.D.FAN -LEFT (PGMA-39141),SUP,2023-01-09,2024-04-28,,,39141,"1.9.6.4.1.1(External Structures ( Supporting Structures for Duct, PG-39 ))"
2555,Engineering,ENG,2023-01-09,2023-07-27,,,39141,1.9.6.4.1.1.5(COLS/FRAMES NEAR I.D.FAN -LEFT (PGMA-39141))
2556,Manufacturing,MFG,2023-07-28,2024-03-29,,,39141,1.9.6.4.1.1.5(COLS/FRAMES NEAR I.D.FAN -LEFT (PGMA-39141))
2557,Dispatch,DIS,2024-03-30,2024-04-28,,,39141,1.9.6.4.1.1.5(COLS/FRAMES NEAR I.D.FAN -LEFT (PGMA-39141))
2558,COLS/FRAMES NEAR ID FAN-RIGHT (PGMA-39142),SUP,2023-01-09,2024-04-28,,,39142,"1.9.6.4.1.1(External Structures ( Supporting Structures for Duct, PG-39 ))"
2559,Engineering,ENG,2023-01-09,2023-07-27,,,39142,1.9.6.4.1.1.6(COLS/FRAMES NEAR ID FAN-RIGHT (PGMA-39142))
2560,Manufacturing,MFG,2023-07-28,2024-03-29,,,39142,1.9.6.4.1.1.6(COLS/FRAMES NEAR ID FAN-RIGHT (PGMA-39142))
2561,Dispatch,DIS,2024-03-30,2024-04-28,,,39142,1.9.6.4.1.1.6(COLS/FRAMES NEAR ID FAN-RIGHT (PGMA-39142))
2562,COL/FRAMES BETN I.D.FAN AND Chimney (PGMA-39150),SUP,2023-01-09,2024-04-28,,,39150,"1.9.6.4.1.1(External Structures ( Supporting Structures for Duct, PG-39 ))"
2563,Engineering,ENG,2023-01-09,2023-07-27,,,39150,1.9.6.4.1.1.7(COL/FRAMES BETN I.D.FAN AND Chimney (PGMA-39150))
2564,Manufacturing,MFG,2023-07-28,2024-03-29,,,39150,1.9.6.4.1.1.7(COL/FRAMES BETN I.D.FAN AND Chimney (PGMA-39150))
2565,Dispatch,DIS,2024-03-30,2024-04-28,,,39150,1.9.6.4.1.1.7(COL/FRAMES BETN I.D.FAN AND Chimney (PGMA-39150))
2566,PLATFORMS EXTL STRUC BOF TO ESP (PGMA-39299),SUP,2023-05-18,2024-11-27,,,39299,"1.9.6.4.1.1(External Structures ( Supporting Structures for Duct, PG-39 ))"
2567,Engineering,ENG,2023-05-18,2024-02-03,,,39299,1.9.6.4.1.1.8(PLATFORMS EXTL STRUC BOF TO ESP (PGMA-39299))
2568,Manufacturing,MFG,2024-02-04,2024-10-28,,,39299,1.9.6.4.1.1.8(PLATFORMS EXTL STRUC BOF TO ESP (PGMA-39299))
2569,Dispatch,DIS,2024-10-29,2024-11-27,,,39299,1.9.6.4.1.1.8(PLATFORMS EXTL STRUC BOF TO ESP (PGMA-39299))
2570,PLATFORMS -EXTERNAL STRUCTURE (PGMA-39300),SUP,2023-05-18,2024-11-27,,,39300,"1.9.6.4.1.1(External Structures ( Supporting Structures for Duct, PG-39 ))"
2571,Engineering,ENG,2023-05-18,2024-02-03,,,39300,1.9.6.4.1.1.9(PLATFORMS -EXTERNAL STRUCTURE (PGMA-39300))
2572,Manufacturing,MFG,2024-02-04,2024-10-28,,,39300,1.9.6.4.1.1.9(PLATFORMS -EXTERNAL STRUCTURE (PGMA-39300))
2573,Dispatch,DIS,2024-10-29,2024-11-27,,,39300,1.9.6.4.1.1.9(PLATFORMS -EXTERNAL STRUCTURE (PGMA-39300))
2574,STRUC AND PLATFORM/FOR FANS (PGMA-39301),SUP,2023-07-02,2024-11-27,,,39301,"1.9.6.4.1.1(External Structures ( Supporting Structures for Duct, PG-39 ))"
2575,Engineering,ENG,2023-07-02,2024-03-22,,,39301,1.9.6.4.1.1.10(STRUC AND PLATFORM/FOR FANS (PGMA-39301))
2576,Manufacturing,MFG,2024-03-23,2024-10-28,,,39301,1.9.6.4.1.1.10(STRUC AND PLATFORM/FOR FANS (PGMA-39301))
2577,Dispatch,DIS,2024-10-29,2024-11-27,,,39301,1.9.6.4.1.1.10(STRUC AND PLATFORM/FOR FANS (PGMA-39301))
2578,STRUC FOR MOTOR HOOD/COVERING (PGMA-39302),SUP,2023-07-02,2025-01-27,,,39302,"1.9.6.4.1.1(External Structures ( Supporting Structures for Duct, PG-39 ))"
2579,Engineering,ENG,2023-07-02,2024-03-22,,,39302,1.9.6.4.1.1.11(STRUC FOR MOTOR HOOD/COVERING (PGMA-39302))
2580,Manufacturing,MFG,2024-03-23,2024-12-28,,,39302,1.9.6.4.1.1.11(STRUC FOR MOTOR HOOD/COVERING (PGMA-39302))
2581,Dispatch,DIS,2024-12-29,2025-01-27,,,39302,1.9.6.4.1.1.11(STRUC FOR MOTOR HOOD/COVERING (PGMA-39302))
2582,FAN HANDLING STRUCTURE FOR FD FAN (PGMA-39304),SUP,2023-06-12,2024-12-28,,,39304,"1.9.6.4.1.1(External Structures ( Supporting Structures for Duct, PG-39 ))"
2583,Engineering,ENG,2023-06-12,2024-02-28,,,39304,1.9.6.4.1.1.12(FAN HANDLING STRUCTURE FOR FD FAN (PGMA-39304))
2584,Manufacturing,MFG,2024-02-29,2024-11-28,,,39304,1.9.6.4.1.1.12(FAN HANDLING STRUCTURE FOR FD FAN (PGMA-39304))
2585,Dispatch,DIS,2024-11-29,2024-12-28,,,39304,1.9.6.4.1.1.12(FAN HANDLING STRUCTURE FOR FD FAN (PGMA-39304))
2586,FAN HANDLING STRUCTURE FOR PA FAN (PGMA-39305),SUP,2023-06-12,2024-12-28,,,39305,"1.9.6.4.1.1(External Structures ( Supporting Structures for Duct, PG-39 ))"
2587,Engineering,ENG,2023-06-12,2024-02-28,,,39305,1.9.6.4.1.1.13(FAN HANDLING STRUCTURE FOR PA FAN (PGMA-39305))
2588,Manufacturing,MFG,2024-02-29,2024-11-28,,,39305,1.9.6.4.1.1.13(FAN HANDLING STRUCTURE FOR PA FAN (PGMA-39305))
2589,Dispatch,DIS,2024-11-29,2024-12-28,,,39305,1.9.6.4.1.1.13(FAN HANDLING STRUCTURE FOR PA FAN (PGMA-39305))
2590,FAN HANDLING STRUCTURE FOR ID FAN (PGMA-39306),SUP,2023-06-12,2024-12-28,,,39306,"1.9.6.4.1.1(External Structures ( Supporting Structures for Duct, PG-39 ))"
2591,Engineering,ENG,2023-06-12,2024-02-28,,,39306,1.9.6.4.1.1.14(FAN HANDLING STRUCTURE FOR ID FAN (PGMA-39306))
2592,Manufacturing,MFG,2024-02-29,2024-11-28,,,39306,1.9.6.4.1.1.14(FAN HANDLING STRUCTURE FOR ID FAN (PGMA-39306))
2593,Dispatch,DIS,2024-11-29,2024-12-28,,,39306,1.9.6.4.1.1.14(FAN HANDLING STRUCTURE FOR ID FAN (PGMA-39306))
2594,HSFG FASTENERS FOR PG 39 (PGMA-39700),SUP,2023-02-08,2024-05-29,,,39700,"1.9.6.4.1.1(External Structures ( Supporting Structures for Duct, PG-39 ))"
2595,Engineering,ENG,2023-02-08,2023-09-10,,,39700,1.9.6.4.1.1.15(HSFG FASTENERS FOR PG 39 (PGMA-39700))
2596,Manufacturing,MFG,2023-09-11,2024-04-29,,,39700,1.9.6.4.1.1.15(HSFG FASTENERS FOR PG 39 (PGMA-39700))
2597,Dispatch,DIS,2024-04-30,2024-05-29,,,39700,1.9.6.4.1.1.15(HSFG FASTENERS FOR PG 39 (PGMA-39700))
2598,FLOOR GRILL (PGMA-39810),SUP,2023-05-18,2024-11-27,,,39810,"1.9.6.4.1.1(External Structures ( Supporting Structures for Duct, PG-39 ))"
2599,Engineering,ENG,2023-05-18,2024-02-03,,,39810,1.9.6.4.1.1.16(FLOOR GRILL (PGMA-39810))
2600,Manufacturing,MFG,2024-02-04,2024-10-28,,,39810,1.9.6.4.1.1.16(FLOOR GRILL (PGMA-39810))
2601,Dispatch,DIS,2024-10-29,2024-11-27,,,39810,1.9.6.4.1.1.16(FLOOR GRILL (PGMA-39810))
2602,STAIRS (PGMA-39820),SUP,2023-05-18,2024-11-27,,,39820,"1.9.6.4.1.1(External Structures ( Supporting Structures for Duct, PG-39 ))"
2603,Engineering,ENG,2023-05-18,2024-02-03,,,39820,1.9.6.4.1.1.17(STAIRS (PGMA-39820))
2604,Manufacturing,MFG,2024-02-04,2024-10-28,,,39820,1.9.6.4.1.1.17(STAIRS (PGMA-39820))
2605,Dispatch,DIS,2024-10-29,2024-11-27,,,39820,1.9.6.4.1.1.17(STAIRS (PGMA-39820))
2606,HAND RAIL AND HAND RAIL POSTS (PGMA-39850),SUP,2023-05-18,2024-11-27,,,39850,"1.9.6.4.1.1(External Structures ( Supporting Structures for Duct, PG-39 ))"
2607,Engineering,ENG,2023-05-18,2024-02-03,,,39850,1.9.6.4.1.1.18(HAND RAIL AND HAND RAIL POSTS (PGMA-39850))
2608,Manufacturing,MFG,2024-02-04,2024-10-28,,,39850,1.9.6.4.1.1.18(HAND RAIL AND HAND RAIL POSTS (PGMA-39850))
2609,Dispatch,DIS,2024-10-29,2024-11-27,,,39850,1.9.6.4.1.1.18(HAND RAIL AND HAND RAIL POSTS (PGMA-39850))
2610,CONSUMABLES &Erection MATERIALS (PGMA-39993),SUP,2023-01-09,2024-04-28,,,39993,"1.9.6.4.1.1(External Structures ( Supporting Structures for Duct, PG-39 ))"
2611,Engineering,ENG,2023-01-09,2023-07-27,,,39993,1.9.6.4.1.1.19(CONSUMABLES &Erection MATERIALS (PGMA-39993))
2612,Manufacturing,MFG,2023-07-28,2024-03-29,,,39993,1.9.6.4.1.1.19(CONSUMABLES &Erection MATERIALS (PGMA-39993))
2613,Dispatch,DIS,2024-03-30,2024-04-28,,,39993,1.9.6.4.1.1.19(CONSUMABLES &Erection MATERIALS (PGMA-39993))
2614,"Duct., Dampers and Expn. Joints (PG-48)",SUP,2022-09-27,2025-04-29,,,PG48,1.9.6.4.1(BHEL TRY)
2615,RECT DUCT BET F.D FAN AND AIRHEATER (PGMA-48012),SUP,2023-05-18,2024-10-28,,,48012,"1.9.6.4.1.2(Duct., Dampers and Expn. Joints (PG-48))"
2616,Engineering,ENG,2023-05-18,2024-01-17,,,48012,1.9.6.4.1.2.1(RECT DUCT BET F.D FAN AND AIRHEATER (PGMA-48012))
2617,Manufacturing,MFG,2024-01-18,2024-09-28,,,48012,1.9.6.4.1.2.1(RECT DUCT BET F.D FAN AND AIRHEATER (PGMA-48012))
2618,Dispatch,DIS,2024-09-29,2024-10-28,,,48012,1.9.6.4.1.2.1(RECT DUCT BET F.D FAN AND AIRHEATER (PGMA-48012))
2619,EXPN PIECESBET F.D FAN AND AIRHEATER (PGMA-48014),SUP,2023-05-18,2024-10-28,,,48014,"1.9.6.4.1.2(Duct., Dampers and Expn. Joints (PG-48))"
2620,Engineering,ENG,2023-05-18,2024-01-17,,,48014,1.9.6.4.1.2.2(EXPN PIECESBET F.D FAN AND AIRHEATER (PGMA-48014))
2621,Manufacturing,MFG,2024-01-18,2024-09-28,,,48014,1.9.6.4.1.2.2(EXPN PIECESBET F.D FAN AND AIRHEATER (PGMA-48014))
2622,Dispatch,DIS,2024-09-29,2024-10-28,,,48014,1.9.6.4.1.2.2(EXPN PIECESBET F.D FAN AND AIRHEATER (PGMA-48014))
2623,SUPPORTSETCBET F.D FAN AND AIRHEATER (PGMA-48015),SUP,2023-05-18,2024-10-28,,,48015,"1.9.6.4.1.2(Duct., Dampers and Expn. Joints (PG-48))"
2624,Engineering,ENG,2023-05-18,2024-01-17,,,48015,1.9.6.4.1.2.3(SUPPORTSETCBET F.D FAN AND AIRHEATER (PGMA-48015))
2625,Manufacturing,MFG,2024-01-18,2024-09-28,,,48015,1.9.6.4.1.2.3(SUPPORTSETCBET F.D FAN AND AIRHEATER (PGMA-48015))
2626,Dispatch,DIS,2024-09-29,2024-10-28,,,48015,1.9.6.4.1.2.3(SUPPORTSETCBET F.D FAN AND AIRHEATER (PGMA-48015))
2627,DUCTS - SCAPH TO SAH (PGMA-48018),SUP,2023-01-09,2024-04-28,,,48018,"1.9.6.4.1.2(Duct., Dampers and Expn. Joints (PG-48))"
2628,Engineering,ENG,2023-01-09,2023-07-27,,,48018,1.9.6.4.1.2.4(DUCTS - SCAPH TO SAH (PGMA-48018))
2629,Manufacturing,MFG,2023-07-28,2024-03-29,,,48018,1.9.6.4.1.2.4(DUCTS - SCAPH TO SAH (PGMA-48018))
2630,Dispatch,DIS,2024-03-30,2024-04-28,,,48018,1.9.6.4.1.2.4(DUCTS - SCAPH TO SAH (PGMA-48018))
2631,FOUNDATION MATERIALS (PGMA-48019),SUP,2022-09-27,2023-10-27,,,48019,"1.9.6.4.1.2(Duct., Dampers and Expn. Joints (PG-48))"
2632,Engineering,ENG,2022-09-27,2023-03-26,,,48019,1.9.6.4.1.2.5(FOUNDATION MATERIALS (PGMA-48019))
2633,Manufacturing,MFG,2023-03-27,2023-09-27,,,48019,1.9.6.4.1.2.5(FOUNDATION MATERIALS (PGMA-48019))
2634,Dispatch,DIS,2023-09-28,2023-10-27,,,48019,1.9.6.4.1.2.5(FOUNDATION MATERIALS (PGMA-48019))
2635,RECT DUCTS PRI FAN TO AIRHEATER PRISID (PGMA-48112),SUP,2023-08-17,2025-01-27,,,48112,"1.9.6.4.1.2(Duct., Dampers and Expn. Joints (PG-48))"
2636,Engineering,ENG,2023-08-17,2024-04-17,,,48112,1.9.6.4.1.2.6(RECT DUCTS PRI FAN TO AIRHEATER PRISID (PGMA-48112))
2637,Manufacturing,MFG,2024-04-18,2024-12-28,,,48112,1.9.6.4.1.2.6(RECT DUCTS PRI FAN TO AIRHEATER PRISID (PGMA-48112))
2638,Dispatch,DIS,2024-12-29,2025-01-27,,,48112,1.9.6.4.1.2.6(RECT DUCTS PRI FAN TO AIRHEATER PRISID (PGMA-48112))
2639,EXPN PIECESPRI FAN TO AIRHEATER PRISID (PGMA-48114),SUP,2023-08-17,2025-01-27,,,48114,"1.9.6.4.1.2(Duct., Dampers and Expn. Joints (PG-48))"
2640,Engineering,ENG,2023-08-17,2024-04-17,,,48114,1.9.6.4.1.2.7(EXPN PIECESPRI FAN TO AIRHEATER PRISID (PGMA-48114))
2641,Manufacturing,MFG,2024-04-18,2024-12-28,,,48114,1.9.6.4.1.2.7(EXPN PIECESPRI FAN TO AIRHEATER PRISID (PGMA-48114))
2642,Dispatch,DIS,2024-12-29,2025-01-27,,,48114,1.9.6.4.1.2.7(EXPN PIECESPRI FAN TO AIRHEATER PRISID (PGMA-48114))
2643,SUPPORTSETCPRI FAN TO AIRHEATER PRISID (PGMA-48115),SUP,2023-08-17,2025-01-27,,,48115,"1.9.6.4.1.2(Duct., Dampers and Expn. Joints (PG-48))"
2644,Engineering,ENG,2023-08-17,2024-04-17,,,48115,1.9.6.4.1.2.8(SUPPORTSETCPRI FAN TO AIRHEATER PRISID (PGMA-48115))
2645,Manufacturing,MFG,2024-04-18,2024-12-28,,,48115,1.9.6.4.1.2.8(SUPPORTSETCPRI FAN TO AIRHEATER PRISID (PGMA-48115))
2646,Dispatch,DIS,2024-12-29,2025-01-27,,,48115,1.9.6.4.1.2.8(SUPPORTSETCPRI FAN TO AIRHEATER PRISID (PGMA-48115))
2647,SEAL AIR HAG AND ID FAN OUTGATE (PGMA-48141),SUP,2023-08-17,2025-01-27,,,48141,"1.9.6.4.1.2(Duct., Dampers and Expn. Joints (PG-48))"
2648,Engineering,ENG,2023-08-17,2024-04-17,,,48141,1.9.6.4.1.2.9(SEAL AIR HAG AND ID FAN OUTGATE (PGMA-48141))
2649,Manufacturing,MFG,2024-04-18,2024-12-28,,,48141,1.9.6.4.1.2.9(SEAL AIR HAG AND ID FAN OUTGATE (PGMA-48141))
2650,Dispatch,DIS,2024-12-29,2025-01-27,,,48141,1.9.6.4.1.2.9(SEAL AIR HAG AND ID FAN OUTGATE (PGMA-48141))
2651,RECT DUCT COLDAIRBUS(TEMP AIR TO MILL (PGMA-48142),SUP,2023-08-17,2025-01-27,,,48142,"1.9.6.4.1.2(Duct., Dampers and Expn. Joints (PG-48))"
2652,Engineering,ENG,2023-08-17,2024-04-17,,,48142,1.9.6.4.1.2.10(RECT DUCT COLDAIRBUS(TEMP AIR TO MILL (PGMA-48142))
2653,Manufacturing,MFG,2024-04-18,2024-12-28,,,48142,1.9.6.4.1.2.10(RECT DUCT COLDAIRBUS(TEMP AIR TO MILL (PGMA-48142))
2654,Dispatch,DIS,2024-12-29,2025-01-27,,,48142,1.9.6.4.1.2.10(RECT DUCT COLDAIRBUS(TEMP AIR TO MILL (PGMA-48142))
2655,EXPN PIECESCOLDAIRBUS(TEMP AIR TO MILL (PGMA-48144),SUP,2023-08-17,2025-01-27,,,48144,"1.9.6.4.1.2(Duct., Dampers and Expn. Joints (PG-48))"
2656,Engineering,ENG,2023-08-17,2024-04-17,,,48144,1.9.6.4.1.2.11(EXPN PIECESCOLDAIRBUS(TEMP AIR TO MILL (PGMA-48144))
2657,Manufacturing,MFG,2024-04-18,2024-12-28,,,48144,1.9.6.4.1.2.11(EXPN PIECESCOLDAIRBUS(TEMP AIR TO MILL (PGMA-48144))
2658,Dispatch,DIS,2024-12-29,2025-01-27,,,48144,1.9.6.4.1.2.11(EXPN PIECESCOLDAIRBUS(TEMP AIR TO MILL (PGMA-48144))
2659,SUPPORTSETCCOLDAIRBUS(TEMP AIR TO MILL (PGMA-48145),SUP,2023-08-17,2025-01-27,,,48145,"1.9.6.4.1.2(Duct., Dampers and Expn. Joints (PG-48))"
2660,Engineering,ENG,2023-08-17,2024-04-17,,,48145,1.9.6.4.1.2.12(SUPPORTSETCCOLDAIRBUS(TEMP AIR TO MILL (PGMA-48145))
2661,Manufacturing,MFG,2024-04-18,2024-12-28,,,48145,1.9.6.4.1.2.12(SUPPORTSETCCOLDAIRBUS(TEMP AIR TO MILL (PGMA-48145))
2662,Dispatch,DIS,2024-12-29,2025-01-27,,,48145,1.9.6.4.1.2.12(SUPPORTSETCCOLDAIRBUS(TEMP AIR TO MILL (PGMA-48145))
2663,INSTRUMENT TAPPINGS ON DUCTING (PGMA-48200),SUP,2023-08-22,2025-04-29,,,48200,"1.9.6.4.1.2(Duct., Dampers and Expn. Joints (PG-48))"
2664,Engineering,ENG,2023-08-22,2024-06-11,,,48200,1.9.6.4.1.2.13(INSTRUMENT TAPPINGS ON DUCTING (PGMA-48200))
2665,Manufacturing,MFG,2024-06-12,2025-03-30,,,48200,1.9.6.4.1.2.13(INSTRUMENT TAPPINGS ON DUCTING (PGMA-48200))
2666,Dispatch,DIS,2025-03-31,2025-04-29,,,48200,1.9.6.4.1.2.13(INSTRUMENT TAPPINGS ON DUCTING (PGMA-48200))
2667,RECT DUCTSAIRHEATER TO WINDBOXDUCT (PGMA-48202),SUP,2023-08-22,2024-09-20,,,48202,"1.9.6.4.1.2(Duct., Dampers and Expn. Joints (PG-48))"
2668,Engineering,ENG,2023-08-22,2024-02-18,,,48202,1.9.6.4.1.2.14(RECT DUCTSAIRHEATER TO WINDBOXDUCT (PGMA-48202))
2669,Manufacturing,MFG,2024-02-19,2024-08-21,,,48202,1.9.6.4.1.2.14(RECT DUCTSAIRHEATER TO WINDBOXDUCT (PGMA-48202))
2670,Dispatch,DIS,2024-08-22,2024-09-20,,,48202,1.9.6.4.1.2.14(RECT DUCTSAIRHEATER TO WINDBOXDUCT (PGMA-48202))
2671,EXPN PIECESAIRHEATER TO WINDBOXDUCT (PGMA-48204),SUP,2023-08-22,2024-09-20,,,48204,"1.9.6.4.1.2(Duct., Dampers and Expn. Joints (PG-48))"
2672,Engineering,ENG,2023-08-22,2024-02-18,,,48204,1.9.6.4.1.2.15(EXPN PIECESAIRHEATER TO WINDBOXDUCT (PGMA-48204))
2673,Manufacturing,MFG,2024-02-19,2024-08-21,,,48204,1.9.6.4.1.2.15(EXPN PIECESAIRHEATER TO WINDBOXDUCT (PGMA-48204))
2674,Dispatch,DIS,2024-08-22,2024-09-20,,,48204,1.9.6.4.1.2.15(EXPN PIECESAIRHEATER TO WINDBOXDUCT (PGMA-48204))
2675,SUPPORTSETCAIRHEATER TO WINDBOXDUCT (PGMA-48205),SUP,2023-08-22,2024-10-21,,,48205,"1.9.6.4.1.2(Duct., Dampers and Expn. Joints (PG-48))"
2676,Engineering,ENG,2023-08-22,2024-02-25,,,48205,1.9.6.4.1.2.16(SUPPORTSETCAIRHEATER TO WINDBOXDUCT (PGMA-48205))
2677,Manufacturing,MFG,2024-02-26,2024-09-21,,,48205,1.9.6.4.1.2.16(SUPPORTSETCAIRHEATER TO WINDBOXDUCT (PGMA-48205))
2678,Dispatch,DIS,2024-09-22,2024-10-21,,,48205,1.9.6.4.1.2.16(SUPPORTSETCAIRHEATER TO WINDBOXDUCT (PGMA-48205))
2679,CLH/VLH -HOT AIR (PGMA-48206),SUP,2023-08-22,2024-10-21,,,48206,"1.9.6.4.1.2(Duct., Dampers and Expn. Joints (PG-48))"
2680,Engineering,ENG,2023-08-22,2024-02-25,,,48206,1.9.6.4.1.2.17(CLH/VLH -HOT AIR (PGMA-48206))
2681,Manufacturing,MFG,2024-02-26,2024-09-21,,,48206,1.9.6.4.1.2.17(CLH/VLH -HOT AIR (PGMA-48206))
2682,Dispatch,DIS,2024-09-22,2024-10-21,,,48206,1.9.6.4.1.2.17(CLH/VLH -HOT AIR (PGMA-48206))
2683,FLOWMETERS FOR SECONDARY AIR FLOW (PGMA-48207),SUP,2023-08-22,2024-09-20,,,48207,"1.9.6.4.1.2(Duct., Dampers and Expn. Joints (PG-48))"
2684,Engineering,ENG,2023-08-22,2024-02-18,,,48207,1.9.6.4.1.2.18(FLOWMETERS FOR SECONDARY AIR FLOW (PGMA-48207))
2685,Manufacturing,MFG,2024-02-19,2024-08-21,,,48207,1.9.6.4.1.2.18(FLOWMETERS FOR SECONDARY AIR FLOW (PGMA-48207))
2686,Dispatch,DIS,2024-08-22,2024-09-20,,,48207,1.9.6.4.1.2.18(FLOWMETERS FOR SECONDARY AIR FLOW (PGMA-48207))
2687,DUCT-SEC.AIR TO WB (PGMA-48208),SUP,2023-08-22,2024-09-20,,,48208,"1.9.6.4.1.2(Duct., Dampers and Expn. Joints (PG-48))"
2688,Engineering,ENG,2023-08-22,2024-02-18,,,48208,1.9.6.4.1.2.19(DUCT-SEC.AIR TO WB (PGMA-48208))
2689,Manufacturing,MFG,2024-02-19,2024-08-21,,,48208,1.9.6.4.1.2.19(DUCT-SEC.AIR TO WB (PGMA-48208))
2690,Dispatch,DIS,2024-08-22,2024-09-20,,,48208,1.9.6.4.1.2.19(DUCT-SEC.AIR TO WB (PGMA-48208))
2691,WIND BOX CONNECTING DUCTS - RECTANGULA (PGMA-48212),SUP,2023-08-22,2024-11-21,,,48212,"1.9.6.4.1.2(Duct., Dampers and Expn. Joints (PG-48))"
2692,Engineering,ENG,2023-08-22,2024-02-25,,,48212,1.9.6.4.1.2.20(WIND BOX CONNECTING DUCTS - RECTANGULA (PGMA-48212))
2693,Manufacturing,MFG,2024-02-26,2024-10-22,,,48212,1.9.6.4.1.2.20(WIND BOX CONNECTING DUCTS - RECTANGULA (PGMA-48212))
2694,Dispatch,DIS,2024-10-23,2024-11-21,,,48212,1.9.6.4.1.2.20(WIND BOX CONNECTING DUCTS - RECTANGULA (PGMA-48212))
2695,EXPN PIECESWINDBOX CONNECTING DUCT (PGMA-48214),SUP,2023-08-22,2024-11-21,,,48214,"1.9.6.4.1.2(Duct., Dampers and Expn. Joints (PG-48))"
2696,Engineering,ENG,2023-08-22,2024-02-25,,,48214,1.9.6.4.1.2.21(EXPN PIECESWINDBOX CONNECTING DUCT (PGMA-48214))
2697,Manufacturing,MFG,2024-02-26,2024-10-22,,,48214,1.9.6.4.1.2.21(EXPN PIECESWINDBOX CONNECTING DUCT (PGMA-48214))
2698,Dispatch,DIS,2024-10-23,2024-11-21,,,48214,1.9.6.4.1.2.21(EXPN PIECESWINDBOX CONNECTING DUCT (PGMA-48214))
2699,RECT DUCT-AIRHEATER PRISIDETOHOTAIR B (PGMA-48222),SUP,2023-05-18,2024-10-28,,,48222,"1.9.6.4.1.2(Duct., Dampers and Expn. Joints (PG-48))"
2700,Engineering,ENG,2023-05-18,2024-01-17,,,48222,1.9.6.4.1.2.22(RECT DUCT-AIRHEATER PRISIDETOHOTAIR B (PGMA-48222))
2701,Manufacturing,MFG,2024-01-18,2024-09-28,,,48222,1.9.6.4.1.2.22(RECT DUCT-AIRHEATER PRISIDETOHOTAIR B (PGMA-48222))
2702,Dispatch,DIS,2024-09-29,2024-10-28,,,48222,1.9.6.4.1.2.22(RECT DUCT-AIRHEATER PRISIDETOHOTAIR B (PGMA-48222))
2703,EXPN PIECES AIRHEATER PREECEDE TO HOTAIR B (PGMA-48224),SUP,2023-05-18,2024-10-28,,,48224,"1.9.6.4.1.2(Duct., Dampers and Expn. Joints (PG-48))"
2704,Engineering,ENG,2023-05-18,2024-01-17,,,48224,1.9.6.4.1.2.23(EXPN PIECES AIRHEATER PREECEDE TO HOTAIR B (PGMA-48224))
2705,Manufacturing,MFG,2024-01-18,2024-09-28,,,48224,1.9.6.4.1.2.23(EXPN PIECES AIRHEATER PREECEDE TO HOTAIR B (PGMA-48224))
2706,Dispatch,DIS,2024-09-29,2024-10-28,,,48224,1.9.6.4.1.2.23(EXPN PIECES AIRHEATER PREECEDE TO HOTAIR B (PGMA-48224))
2707,SUPPORTS FOR HOT P.A (AH TO HOT BUS) (PGMA-48225),SUP,2023-05-18,2024-10-28,,,,"1.9.6.4.1.2(Duct., Dampers and Expn. Joints (PG-48))"
2708,Engineering,ENG,2023-05-18,2024-01-17,,,48225,1.9.6.4.1.2.24(SUPPORTS FOR HOT P.A (AH TO HOT BUS) (PGMA-48225))
2709,Manufacturing,MFG,2024-01-18,2024-09-28,,,48225,1.9.6.4.1.2.24(SUPPORTS FOR HOT P.A (AH TO HOT BUS) (PGMA-48225))
2710,Dispatch,DIS,2024-09-29,2024-10-28,,,48225,1.9.6.4.1.2.24(SUPPORTS FOR HOT P.A (AH TO HOT BUS) (PGMA-48225))
2711,RECT DUCTS HOT AIR BUSDUCT(HOTAIRTOMIL (PGMA-48232),SUP,2023-08-17,2025-01-27,,,48232,"1.9.6.4.1.2(Duct., Dampers and Expn. Joints (PG-48))"
2712,Engineering,ENG,2023-08-17,2024-04-17,,,48232,1.9.6.4.1.2.25(RECT DUCTS HOT AIR BUSDUCT(HOTAIRTOMIL (PGMA-48232))
2713,Manufacturing,MFG,2024-04-18,2024-12-28,,,48232,1.9.6.4.1.2.25(RECT DUCTS HOT AIR BUSDUCT(HOTAIRTOMIL (PGMA-48232))
2714,Dispatch,DIS,2024-12-29,2025-01-27,,,48232,1.9.6.4.1.2.25(RECT DUCTS HOT AIR BUSDUCT(HOTAIRTOMIL (PGMA-48232))
2715,EXPN PIECESHOT AIR BUSDUCT(HOTAIRTOMIL (PGMA-48234),SUP,2023-08-17,2025-01-27,,,48234,"1.9.6.4.1.2(Duct., Dampers and Expn. Joints (PG-48))"
2716,Engineering,ENG,2023-08-17,2024-04-17,,,48234,1.9.6.4.1.2.26(EXPN PIECESHOT AIR BUSDUCT(HOTAIRTOMIL (PGMA-48234))
2717,Manufacturing,MFG,2024-04-18,2024-12-28,,,48234,1.9.6.4.1.2.26(EXPN PIECESHOT AIR BUSDUCT(HOTAIRTOMIL (PGMA-48234))
2718,Dispatch,DIS,2024-12-29,2025-01-27,,,48234,1.9.6.4.1.2.26(EXPN PIECESHOT AIR BUSDUCT(HOTAIRTOMIL (PGMA-48234))
2719,SUPPORT HOT AIR BUS (PGMA-48235),SUP,2023-08-17,2025-01-27,,,48235,"1.9.6.4.1.2(Duct., Dampers and Expn. Joints (PG-48))"
2720,Engineering,ENG,2023-08-17,2024-04-17,,,48235,1.9.6.4.1.2.27(SUPPORT HOT AIR BUS (PGMA-48235))
2721,Manufacturing,MFG,2024-04-18,2024-12-28,,,48235,1.9.6.4.1.2.27(SUPPORT HOT AIR BUS (PGMA-48235))
2722,Dispatch,DIS,2024-12-29,2025-01-27,,,48235,1.9.6.4.1.2.27(SUPPORT HOT AIR BUS (PGMA-48235))
2723,RECT DUCT AIRHTR TOPRINOZZLE AND SECA (PGMA-48262),SUP,2023-05-18,2024-10-28,,,48262,"1.9.6.4.1.2(Duct., Dampers and Expn. Joints (PG-48))"
2724,Engineering,ENG,2023-05-18,2024-01-17,,,48262,1.9.6.4.1.2.28(RECT DUCT AIRHTR TOPRINOZZLE AND SECA (PGMA-48262))
2725,Manufacturing,MFG,2024-01-18,2024-09-28,,,48262,1.9.6.4.1.2.28(RECT DUCT AIRHTR TOPRINOZZLE AND SECA (PGMA-48262))
2726,Dispatch,DIS,2024-09-29,2024-10-28,,,48262,1.9.6.4.1.2.28(RECT DUCT AIRHTR TOPRINOZZLE AND SECA (PGMA-48262))
2727,EXPN PIECESAIRHTR TOPRINOZZLE AND SECA (PGMA-48264),SUP,2023-05-18,2024-10-28,,,48264,"1.9.6.4.1.2(Duct., Dampers and Expn. Joints (PG-48))"
2728,Engineering,ENG,2023-05-18,2024-01-17,,,48264,1.9.6.4.1.2.29(EXPN PIECESAIRHTR TOPRINOZZLE AND SECA (PGMA-48264))
2729,Manufacturing,MFG,2024-01-18,2024-09-28,,,48264,1.9.6.4.1.2.29(EXPN PIECESAIRHTR TOPRINOZZLE AND SECA (PGMA-48264))
2730,Dispatch,DIS,2024-09-29,2024-10-28,,,48264,1.9.6.4.1.2.29(EXPN PIECESAIRHTR TOPRINOZZLE AND SECA (PGMA-48264))
2731,SUPPORTSETCAIRHTR TOPRINOZZLE AND SECA (PGMA-48265),SUP,2023-05-18,2024-10-28,,,48265,"1.9.6.4.1.2(Duct., Dampers and Expn. Joints (PG-48))"
2732,Engineering,ENG,2023-05-18,2024-01-17,,,48265,1.9.6.4.1.2.30(SUPPORTSETCAIRHTR TOPRINOZZLE AND SECA (PGMA-48265))
2733,Manufacturing,MFG,2024-01-18,2024-09-28,,,48265,1.9.6.4.1.2.30(SUPPORTSETCAIRHTR TOPRINOZZLE AND SECA (PGMA-48265))
2734,Dispatch,DIS,2024-09-29,2024-10-28,,,48265,1.9.6.4.1.2.30(SUPPORTSETCAIRHTR TOPRINOZZLE AND SECA (PGMA-48265))
2735,FLOW METER (PGMA-48267),SUP,2023-05-18,2024-10-28,,,48267,"1.9.6.4.1.2(Duct., Dampers and Expn. Joints (PG-48))"
2736,Engineering,ENG,2023-05-18,2024-01-17,,,48267,1.9.6.4.1.2.31(FLOW METER (PGMA-48267))
2737,Manufacturing,MFG,2024-01-18,2024-09-28,,,48267,1.9.6.4.1.2.31(FLOW METER (PGMA-48267))
2738,Dispatch,DIS,2024-09-29,2024-10-28,,,48267,1.9.6.4.1.2.31(FLOW METER (PGMA-48267))
2739,RECT DUCT CASCADE EVAPORATOR TO EP (PGMA-48372),SUP,2023-05-18,2024-10-28,,,48372,"1.9.6.4.1.2(Duct., Dampers and Expn. Joints (PG-48))"
2740,Engineering,ENG,2023-05-18,2024-01-17,,,48372,1.9.6.4.1.2.32(RECT DUCT CASCADE EVAPORATOR TO EP (PGMA-48372))
2741,Manufacturing,MFG,2024-01-18,2024-09-28,,,48372,1.9.6.4.1.2.32(RECT DUCT CASCADE EVAPORATOR TO EP (PGMA-48372))
2742,Dispatch,DIS,2024-09-29,2024-10-28,,,48372,1.9.6.4.1.2.32(RECT DUCT CASCADE EVAPORATOR TO EP (PGMA-48372))
2743,RECT DUCT ECONOMISER TO AIRHEATER2NOP (PGMA-48382),SUP,2023-05-18,2024-10-28,,,48382,"1.9.6.4.1.2(Duct., Dampers and Expn. Joints (PG-48))"
2744,Engineering,ENG,2023-05-18,2024-01-17,,,48382,1.9.6.4.1.2.33(RECT DUCT ECONOMISER TO AIRHEATER2NOP (PGMA-48382))
2745,Manufacturing,MFG,2024-01-18,2024-09-28,,,48382,1.9.6.4.1.2.33(RECT DUCT ECONOMISER TO AIRHEATER2NOP (PGMA-48382))
2746,Dispatch,DIS,2024-09-29,2024-10-28,,,48382,1.9.6.4.1.2.33(RECT DUCT ECONOMISER TO AIRHEATER2NOP (PGMA-48382))
2747,EXPN PIECESECONOMISER TO AIRHEATER2NOP (PGMA-48384),SUP,2023-05-18,2024-10-28,,,48384,"1.9.6.4.1.2(Duct., Dampers and Expn. Joints (PG-48))"
2748,Engineering,ENG,2023-05-18,2024-01-17,,,48384,1.9.6.4.1.2.34(EXPN PIECESECONOMISER TO AIRHEATER2NOP (PGMA-48384))
2749,Manufacturing,MFG,2024-01-18,2024-09-28,,,48384,1.9.6.4.1.2.34(EXPN PIECESECONOMISER TO AIRHEATER2NOP (PGMA-48384))
2750,Dispatch,DIS,2024-09-29,2024-10-28,,,48384,1.9.6.4.1.2.34(EXPN PIECESECONOMISER TO AIRHEATER2NOP (PGMA-48384))
2751,SUPPORTSETCECONOMISER TO AIRHEATER2NOP (PGMA-48385),SUP,2023-05-18,2024-10-28,,,48385,"1.9.6.4.1.2(Duct., Dampers and Expn. Joints (PG-48))"
2752,Engineering,ENG,2023-05-18,2024-01-17,,,48385,1.9.6.4.1.2.35(SUPPORTSETCECONOMISER TO AIRHEATER2NOP (PGMA-48385))
2753,Manufacturing,MFG,2024-01-18,2024-09-28,,,48385,1.9.6.4.1.2.35(SUPPORTSETCECONOMISER TO AIRHEATER2NOP (PGMA-48385))
2754,Dispatch,DIS,2024-09-29,2024-10-28,,,48385,1.9.6.4.1.2.35(SUPPORTSETCECONOMISER TO AIRHEATER2NOP (PGMA-48385))
2755,DUCT BELOW DIVERTOR & SCR SYSTEM(PGMA-48386),SUP,2023-05-18,2024-10-28,,,48386,"1.9.6.4.1.2(Duct., Dampers and Expn. Joints (PG-48))"
2756,Engineering,ENG,2023-05-18,2024-01-17,,,48386,1.9.6.4.1.2.36(DUCT BELOW DIVERTOR & SCR SYSTEM(PGMA-48386))
2757,Manufacturing,MFG,2024-01-18,2024-09-28,,,48386,1.9.6.4.1.2.36(DUCT BELOW DIVERTOR & SCR SYSTEM(PGMA-48386))
2758,Dispatch,DIS,2024-09-29,2024-10-28,,,48386,1.9.6.4.1.2.36(DUCT BELOW DIVERTOR & SCR SYSTEM(PGMA-48386))
2759,CLH/VLH-FLUE GAS (PGMA-48395),SUP,2023-05-18,2024-10-28,,,48395,"1.9.6.4.1.2(Duct., Dampers and Expn. Joints (PG-48))"
2760,Engineering,ENG,2023-05-18,2024-01-17,,,48395,1.9.6.4.1.2.37(CLH/VLH-FLUE GAS (PGMA-48395))
2761,Manufacturing,MFG,2024-01-18,2024-09-28,,,48395,1.9.6.4.1.2.37(CLH/VLH-FLUE GAS (PGMA-48395))
2762,Dispatch,DIS,2024-09-29,2024-10-28,,,48395,1.9.6.4.1.2.37(CLH/VLH-FLUE GAS (PGMA-48395))
2763,RECT DUCT AIRHEATER BOILER OUTLET-GAS (PGMA-48432),SUP,2023-06-12,2024-12-28,,,48432,"1.9.6.4.1.2(Duct., Dampers and Expn. Joints (PG-48))"
2764,Engineering,ENG,2023-06-12,2024-02-28,,,48432,1.9.6.4.1.2.38(RECT DUCT AIRHEATER BOILER OUTLET-GAS (PGMA-48432))
2765,Manufacturing,MFG,2024-02-29,2024-11-28,,,48432,1.9.6.4.1.2.38(RECT DUCT AIRHEATER BOILER OUTLET-GAS (PGMA-48432))
2766,Dispatch,DIS,2024-11-29,2024-12-28,,,48432,1.9.6.4.1.2.38(RECT DUCT AIRHEATER BOILER OUTLET-GAS (PGMA-48432))
2767,EXPN PIECESAIRHEATER BOILER OUTLET-GAS (PGMA-48434),SUP,2023-06-12,2024-12-28,,,48434,"1.9.6.4.1.2(Duct., Dampers and Expn. Joints (PG-48))"
2768,Engineering,ENG,2023-06-12,2024-02-28,,,48434,1.9.6.4.1.2.39(EXPN PIECESAIRHEATER BOILER OUTLET-GAS (PGMA-48434))
2769,Manufacturing,MFG,2024-02-29,2024-11-28,,,48434,1.9.6.4.1.2.39(EXPN PIECESAIRHEATER BOILER OUTLET-GAS (PGMA-48434))
2770,Dispatch,DIS,2024-11-29,2024-12-28,,,48434,1.9.6.4.1.2.39(EXPN PIECESAIRHEATER BOILER OUTLET-GAS (PGMA-48434))
2771,SUPPORTSETCAIRHEATER BOILER OUTLET-GAS (PGMA-48435),SUP,2023-06-12,2024-12-28,,,48435,"1.9.6.4.1.2(Duct., Dampers and Expn. Joints (PG-48))"
2772,Engineering,ENG,2023-06-12,2024-02-28,,,48435,1.9.6.4.1.2.40(SUPPORTSETCAIRHEATER BOILER OUTLET-GAS (PGMA-48435))
2773,Manufacturing,MFG,2024-02-29,2024-11-28,,,48435,1.9.6.4.1.2.40(SUPPORTSETCAIRHEATER BOILER OUTLET-GAS (PGMA-48435))
2774,Dispatch,DIS,2024-11-29,2024-12-28,,,48435,1.9.6.4.1.2.40(SUPPORTSETCAIRHEATER BOILER OUTLET-GAS (PGMA-48435))
2775,RECT DUCT BOILER OUTLET TO ELEC PRECP (PGMA-48462),SUP,2023-06-12,2024-12-28,,,48462,"1.9.6.4.1.2(Duct., Dampers and Expn. Joints (PG-48))"
2776,Engineering,ENG,2023-06-12,2024-02-28,,,48462,1.9.6.4.1.2.41(RECT DUCT BOILER OUTLET TO ELEC PRECP (PGMA-48462))
2777,Manufacturing,MFG,2024-02-29,2024-11-28,,,48462,1.9.6.4.1.2.41(RECT DUCT BOILER OUTLET TO ELEC PRECP (PGMA-48462))
2778,Dispatch,DIS,2024-11-29,2024-12-28,,,48462,1.9.6.4.1.2.41(RECT DUCT BOILER OUTLET TO ELEC PRECP (PGMA-48462))
2779,EXPN PIECESBOILER OUTLET TO ELEC PRECP (PGMA-48464),SUP,2023-06-12,2024-12-28,,,48464,"1.9.6.4.1.2(Duct., Dampers and Expn. Joints (PG-48))"
2780,Engineering,ENG,2023-06-12,2024-02-28,,,48464,1.9.6.4.1.2.42(EXPN PIECESBOILER OUTLET TO ELEC PRECP (PGMA-48464))
2781,Manufacturing,MFG,2024-02-29,2024-11-28,,,48464,1.9.6.4.1.2.42(EXPN PIECESBOILER OUTLET TO ELEC PRECP (PGMA-48464))
2782,Dispatch,DIS,2024-11-29,2024-12-28,,,48464,1.9.6.4.1.2.42(EXPN PIECESBOILER OUTLET TO ELEC PRECP (PGMA-48464))
2783,BOF TO EP DUCTING SUPPORTS (PGMA-48465),SUP,2023-06-12,2024-10-28,,,48465,"1.9.6.4.1.2(Duct., Dampers and Expn. Joints (PG-48))"
2784,Engineering,ENG,2023-06-12,2024-02-28,,,48465,1.9.6.4.1.2.43(BOF TO EP DUCTING SUPPORTS (PGMA-48465))
2785,Manufacturing,MFG,2024-02-29,2024-09-28,,,48465,1.9.6.4.1.2.43(BOF TO EP DUCTING SUPPORTS (PGMA-48465))
2786,Dispatch,DIS,2024-09-29,2024-10-28,,,48465,1.9.6.4.1.2.43(BOF TO EP DUCTING SUPPORTS (PGMA-48465))
2787,RECT DUCTS-ELEC PRPTR/M.S TO INDDRAFTF (PGMA-48482),SUP,2023-01-09,2024-04-28,,,48482,"1.9.6.4.1.2(Duct., Dampers and Expn. Joints (PG-48))"
2788,Engineering,ENG,2023-01-09,2023-07-27,,,48482,1.9.6.4.1.2.44(RECT DUCTS-ELEC PRPTR/M.S TO INDDRAFTF (PGMA-48482))
2789,Manufacturing,MFG,2023-07-28,2024-03-29,,,48482,1.9.6.4.1.2.44(RECT DUCTS-ELEC PRPTR/M.S TO INDDRAFTF (PGMA-48482))
2790,Dispatch,DIS,2024-03-30,2024-04-28,,,48482,1.9.6.4.1.2.44(RECT DUCTS-ELEC PRPTR/M.S TO INDDRAFTF (PGMA-48482))
2791,EXPN PIECESELEC PRPTR/M.S TO INDDRAFTF (PGMA-48484),SUP,2023-01-09,2024-04-28,,,48484,"1.9.6.4.1.2(Duct., Dampers and Expn. Joints (PG-48))"
2792,Engineering,ENG,2023-01-09,2023-07-27,,,48484,1.9.6.4.1.2.45(EXPN PIECESELEC PRPTR/M.S TO INDDRAFTF (PGMA-48484))
2793,Manufacturing,MFG,2023-07-28,2024-03-29,,,48484,1.9.6.4.1.2.45(EXPN PIECESELEC PRPTR/M.S TO INDDRAFTF (PGMA-48484))
2794,Dispatch,DIS,2024-03-30,2024-04-28,,,48484,1.9.6.4.1.2.45(EXPN PIECESELEC PRPTR/M.S TO INDDRAFTF (PGMA-48484))
2795,SUPPORTSETCELEC PRPTR/M.S TO INDDRAFTF (PGMA-48485),SUP,2023-01-09,2024-04-28,,,48485,"1.9.6.4.1.2(Duct., Dampers and Expn. Joints (PG-48))"
2796,Engineering,ENG,2023-01-09,2023-07-27,,,48485,1.9.6.4.1.2.46(SUPPORTSETCELEC PRPTR/M.S TO INDDRAFTF (PGMA-48485))
2797,Manufacturing,MFG,2023-07-28,2024-03-29,,,48485,1.9.6.4.1.2.46(SUPPORTSETCELEC PRPTR/M.S TO INDDRAFTF (PGMA-48485))
2798,Dispatch,DIS,2024-03-30,2024-04-28,,,48485,1.9.6.4.1.2.46(SUPPORTSETCELEC PRPTR/M.S TO INDDRAFTF (PGMA-48485))
2799,RECT DUCT IND DRAFT FAN TO Chimney (PGMA-48492),SUP,2023-01-09,2024-04-28,,,48492,"1.9.6.4.1.2(Duct., Dampers and Expn. Joints (PG-48))"
2800,Engineering,ENG,2023-01-09,2023-07-27,,,48492,1.9.6.4.1.2.47(RECT DUCT IND DRAFT FAN TO Chimney (PGMA-48492))
2801,Manufacturing,MFG,2023-07-28,2024-03-29,,,48492,1.9.6.4.1.2.47(RECT DUCT IND DRAFT FAN TO Chimney (PGMA-48492))
2802,Dispatch,DIS,2024-03-30,2024-04-28,,,48492,1.9.6.4.1.2.47(RECT DUCT IND DRAFT FAN TO Chimney (PGMA-48492))
2803,EXPN PIECESIND DRAFT FAN TO Chimney (PGMA-48494),SUP,2023-01-09,2024-04-28,,,48494,"1.9.6.4.1.2(Duct., Dampers and Expn. Joints (PG-48))"
2804,Engineering,ENG,2023-01-09,2023-07-27,,,48494,1.9.6.4.1.2.48(EXPN PIECESIND DRAFT FAN TO Chimney (PGMA-48494))
2805,Manufacturing,MFG,2023-07-28,2024-03-29,,,48494,1.9.6.4.1.2.48(EXPN PIECESIND DRAFT FAN TO Chimney (PGMA-48494))
2806,Dispatch,DIS,2024-03-30,2024-04-28,,,48494,1.9.6.4.1.2.48(EXPN PIECESIND DRAFT FAN TO Chimney (PGMA-48494))
2807,I.D.SYSTEM DUCT SUPPORTS (PGMA-48495),SUP,2023-01-09,2024-04-28,,,48495,"1.9.6.4.1.2(Duct., Dampers and Expn. Joints (PG-48))"
2808,Engineering,ENG,2023-01-09,2023-07-27,,,48495,1.9.6.4.1.2.49(I.D.SYSTEM DUCT SUPPORTS (PGMA-48495))
2809,Manufacturing,MFG,2023-07-28,2024-03-29,,,48495,1.9.6.4.1.2.49(I.D.SYSTEM DUCT SUPPORTS (PGMA-48495))
2810,Dispatch,DIS,2024-03-30,2024-04-28,,,48495,1.9.6.4.1.2.49(I.D.SYSTEM DUCT SUPPORTS (PGMA-48495))
2811,RECT DUCT HOT AIR BUS TO MILLS (PGMA-48662),SUP,2023-05-18,2024-11-27,,,48662,"1.9.6.4.1.2(Duct., Dampers and Expn. Joints (PG-48))"
2812,Engineering,ENG,2023-05-18,2024-02-03,,,48662,1.9.6.4.1.2.50(RECT DUCT HOT AIR BUS TO MILLS (PGMA-48662))
2813,Manufacturing,MFG,2024-02-04,2024-10-28,,,48662,1.9.6.4.1.2.50(RECT DUCT HOT AIR BUS TO MILLS (PGMA-48662))
2814,Dispatch,DIS,2024-10-29,2024-11-27,,,48662,1.9.6.4.1.2.50(RECT DUCT HOT AIR BUS TO MILLS (PGMA-48662))
2815,EXPN PIECESHOT AIR BUS TO MILLS (PGMA-48664),SUP,2023-05-18,2024-11-27,,,48664,"1.9.6.4.1.2(Duct., Dampers and Expn. Joints (PG-48))"
2816,Engineering,ENG,2023-05-18,2024-02-03,,,48664,1.9.6.4.1.2.51(EXPN PIECESHOT AIR BUS TO MILLS (PGMA-48664))
2817,Manufacturing,MFG,2024-02-04,2024-10-28,,,48664,1.9.6.4.1.2.51(EXPN PIECESHOT AIR BUS TO MILLS (PGMA-48664))
2818,Dispatch,DIS,2024-10-29,2024-11-27,,,48664,1.9.6.4.1.2.51(EXPN PIECESHOT AIR BUS TO MILLS (PGMA-48664))
2819,SUPPORTS FOR HOT PA TO MILLS (PGMA-48665),SUP,2023-05-18,2024-11-27,,,48665,"1.9.6.4.1.2(Duct., Dampers and Expn. Joints (PG-48))"
2820,Engineering,ENG,2023-05-18,2024-02-03,,,48665,1.9.6.4.1.2.52(SUPPORTS FOR HOT PA TO MILLS (PGMA-48665))
2821,Manufacturing,MFG,2024-02-04,2024-10-28,,,48665,1.9.6.4.1.2.52(SUPPORTS FOR HOT PA TO MILLS (PGMA-48665))
2822,Dispatch,DIS,2024-10-29,2024-11-27,,,48665,1.9.6.4.1.2.52(SUPPORTS FOR HOT PA TO MILLS (PGMA-48665))
2823,VENTURI-PRIMARY AIR FLOW (PGMA-48667),SUP,2023-05-18,2024-11-27,,,48667,"1.9.6.4.1.2(Duct., Dampers and Expn. Joints (PG-48))"
2824,Engineering,ENG,2023-05-18,2024-02-03,,,48667,1.9.6.4.1.2.53(VENTURI-PRIMARY AIR FLOW (PGMA-48667))
2825,Manufacturing,MFG,2024-02-04,2024-10-28,,,48667,1.9.6.4.1.2.53(VENTURI-PRIMARY AIR FLOW (PGMA-48667))
2826,Dispatch,DIS,2024-10-29,2024-11-27,,,48667,1.9.6.4.1.2.53(VENTURI-PRIMARY AIR FLOW (PGMA-48667))
2827,BULKED BPS COMPONENTS (PGMA-48700),SUP,2022-09-27,2023-10-27,,,48700,"1.9.6.4.1.2(Duct., Dampers and Expn. Joints (PG-48))"
2828,Engineering,ENG,2022-09-27,2023-03-26,,,48700,1.9.6.4.1.2.54(BULKED BPS COMPONENTS (PGMA-48700))
2829,Manufacturing,MFG,2023-03-27,2023-09-27,,,48700,1.9.6.4.1.2.54(BULKED BPS COMPONENTS (PGMA-48700))
2830,Dispatch,DIS,2023-09-28,2023-10-27,,,48700,1.9.6.4.1.2.54(BULKED BPS COMPONENTS (PGMA-48700))
2831,SLIDE BRG PLATE & PACIFIC BELLOW-BOILER (PGMA-48911),SUP,2023-01-09,2024-04-28,,,48911,"1.9.6.4.1.2(Duct., Dampers and Expn. Joints (PG-48))"
2832,Engineering,ENG,2023-01-09,2023-07-27,,,48911,1.9.6.4.1.2.55(SLIDE BRG PLATE & PACIFIC BELLOW-BOILER (PGMA-48911))
2833,Manufacturing,MFG,2023-07-28,2024-03-29,,,48911,1.9.6.4.1.2.55(SLIDE BRG PLATE & PACIFIC BELLOW-BOILER (PGMA-48911))
2834,Dispatch,DIS,2024-03-30,2024-04-28,,,48911,1.9.6.4.1.2.55(SLIDE BRG PLATE & PACIFIC BELLOW-BOILER (PGMA-48911))
2835,SLIDE BRG PLATE-ID SYSTEM (PGMA-48912),SUP,2023-01-09,2024-04-28,,,48912,"1.9.6.4.1.2(Duct., Dampers and Expn. Joints (PG-48))"
2836,Engineering,ENG,2023-01-09,2023-07-27,,,48912,1.9.6.4.1.2.56(SLIDE BRG PLATE-ID SYSTEM (PGMA-48912))
2837,Manufacturing,MFG,2023-07-28,2024-03-29,,,48912,1.9.6.4.1.2.56(SLIDE BRG PLATE-ID SYSTEM (PGMA-48912))
2838,Dispatch,DIS,2024-03-30,2024-04-28,,,48912,1.9.6.4.1.2.56(SLIDE BRG PLATE-ID SYSTEM (PGMA-48912))
2839,MAN HOLE DOORS (450x450) (PGMA-48915),SUP,2023-05-18,2024-10-28,,,,"1.9.6.4.1.2(Duct., Dampers and Expn. Joints (PG-48))"
2840,Engineering,ENG,2023-05-18,2024-01-17,,,48915,1.9.6.4.1.2.57(MAN HOLE DOORS (450x450) (PGMA-48915))
2841,Manufacturing,MFG,2024-01-18,2024-09-28,,,48915,1.9.6.4.1.2.57(MAN HOLE DOORS (450x450) (PGMA-48915))
2842,Dispatch,DIS,2024-09-29,2024-10-28,,,48915,1.9.6.4.1.2.57(MAN HOLE DOORS (450x450) (PGMA-48915))
2843,ERECTION MATERIALS (PGMA-48993),SUP,2023-01-09,2024-04-28,,,48993,"1.9.6.4.1.2(Duct., Dampers and Expn. Joints (PG-48))"
2844,Engineering,ENG,2023-01-09,2023-07-27,,,48993,1.9.6.4.1.2.58(ERECTION MATERIALS (PGMA-48993))
2845,Manufacturing,MFG,2023-07-28,2024-03-29,,,48993,1.9.6.4.1.2.58(ERECTION MATERIALS (PGMA-48993))
2846,Dispatch,DIS,2024-03-30,2024-04-28,,,48993,1.9.6.4.1.2.58(ERECTION MATERIALS (PGMA-48993))
2847,BHEL BAP,SUP,2023-03-16,2024-11-04,,,,1.9.6.4(Supply )
2848, GATES AND DAMPERS,SUP,2023-03-16,2024-11-04,,,PG57,1.9.6.4.2(BHEL BAP)
2849,BAP - GATE-ESP OUTLET(PGMA 57470),SUP,2023-03-16,2023-12-10,,,57470,1.9.6.4.2.1( GATES AND DAMPERS)
2850,Engineering,ENG,2023-03-16,2023-04-14,,,57470,1.9.6.4.2.1.1(BAP - GATE-ESP OUTLET(PGMA 57470))
2851,Manufacturing ,MFG,2023-04-15,2023-07-23,,,57470,1.9.6.4.2.1.1(BAP - GATE-ESP OUTLET(PGMA 57470))
2852,Dispatch,DIS,2023-07-24,2023-12-10,,,57470,1.9.6.4.2.1.1(BAP - GATE-ESP OUTLET(PGMA 57470))
2853,BAP - GATE-ID FAN OUTLET(PGMA 57490),SUP,2023-03-16,2023-12-10,,,57490,1.9.6.4.2.1( GATES AND DAMPERS)
2854,Engineering,ENG,2023-03-16,2023-04-14,,,57490,1.9.6.4.2.1.2(BAP - GATE-ID FAN OUTLET(PGMA 57490))
2855,Manufacturing ,MFG,2023-04-15,2023-07-23,,,57490,1.9.6.4.2.1.2(BAP - GATE-ID FAN OUTLET(PGMA 57490))
2856,Dispatch,DIS,2023-07-24,2023-12-10,,,57490,1.9.6.4.2.1.2(BAP - GATE-ID FAN OUTLET(PGMA 57490))
2857,BAP - GATE-ID FAN INLET(PGMA 57480),SUP,2023-03-16,2023-12-10,,,57480,1.9.6.4.2.1( GATES AND DAMPERS)
2858,Engineering,ENG,2023-03-16,2023-04-14,,,57480,1.9.6.4.2.1.3(BAP - GATE-ID FAN INLET(PGMA 57480))
2859,Manufacturing ,MFG,2023-04-15,2023-07-23,,,57480,1.9.6.4.2.1.3(BAP - GATE-ID FAN INLET(PGMA 57480))
2860,Dispatch,DIS,2023-07-24,2023-12-10,,,57480,1.9.6.4.2.1.3(BAP - GATE-ID FAN INLET(PGMA 57480))
2861,BAP - DAMPER-SCR BYPASS(PGMA 57620),SUP,2023-06-04,2024-02-08,,,57620,1.9.6.4.2.1( GATES AND DAMPERS)
2862,Engineering,ENG,2023-06-04,2023-07-03,,,57620,1.9.6.4.2.1.4(BAP - DAMPER-SCR BYPASS(PGMA 57620))
2863,Manufacturing ,MFG,2023-07-04,2023-10-11,,,57620,1.9.6.4.2.1.4(BAP - DAMPER-SCR BYPASS(PGMA 57620))
2864,Dispatch,DIS,2023-10-12,2024-02-08,,,57620,1.9.6.4.2.1.4(BAP - DAMPER-SCR BYPASS(PGMA 57620))
2865,BAP - PLATFORMS AND LADDERS? SCR GD(PGMA 57666),SUP,2023-06-04,2024-02-08,,,57666,1.9.6.4.2.1( GATES AND DAMPERS)
2866,Engineering,ENG,2023-06-04,2023-07-03,,,57666,1.9.6.4.2.1.5(BAP - PLATFORMS AND LADDERS? SCR GD(PGMA 57666))
2867,Manufacturing ,MFG,2023-07-04,2023-10-11,,,57666,1.9.6.4.2.1.5(BAP - PLATFORMS AND LADDERS? SCR GD(PGMA 57666))
2868,Dispatch,DIS,2023-10-12,2024-02-08,,,57666,1.9.6.4.2.1.5(BAP - PLATFORMS AND LADDERS? SCR GD(PGMA 57666))
2869,BAP - SPL MTL ELECTRODES(PGMA 57992),SUP,2023-06-04,2024-02-08,,,57992,1.9.6.4.2.1( GATES AND DAMPERS)
2870,Engineering,ENG,2023-06-04,2023-07-03,,,57992,1.9.6.4.2.1.6(BAP - SPL MTL ELECTRODES(PGMA 57992))
2871,Manufacturing ,MFG,2023-07-04,2023-10-11,,,57992,1.9.6.4.2.1.6(BAP - SPL MTL ELECTRODES(PGMA 57992))
2872,Dispatch,DIS,2023-10-12,2024-02-08,,,57992,1.9.6.4.2.1.6(BAP - SPL MTL ELECTRODES(PGMA 57992))
2873,BAP - GATE-FD FAN OUTLET(PGMA 57010),SUP,2023-06-04,2024-02-08,,,57010,1.9.6.4.2.1( GATES AND DAMPERS)
2874,Engineering,ENG,2023-06-04,2023-07-03,,,57010,1.9.6.4.2.1.7(BAP - GATE-FD FAN OUTLET(PGMA 57010))
2875,Manufacturing ,MFG,2023-07-04,2023-10-11,,,57010,1.9.6.4.2.1.7(BAP - GATE-FD FAN OUTLET(PGMA 57010))
2876,Dispatch,DIS,2023-10-12,2024-02-08,,,57010,1.9.6.4.2.1.7(BAP - GATE-FD FAN OUTLET(PGMA 57010))
2877,BAP - FLUE GAS AH OUT GATE(PGMA 57430),SUP,2023-08-13,2024-04-08,,,57430,1.9.6.4.2.1( GATES AND DAMPERS)
2878,Engineering,ENG,2023-08-13,2023-09-11,,,57430,1.9.6.4.2.1.8(BAP - FLUE GAS AH OUT GATE(PGMA 57430))
2879,Manufacturing ,MFG,2023-09-12,2023-12-20,,,57430,1.9.6.4.2.1.8(BAP - FLUE GAS AH OUT GATE(PGMA 57430))
2880,Dispatch,DIS,2023-12-21,2024-04-08,,,57430,1.9.6.4.2.1.8(BAP - FLUE GAS AH OUT GATE(PGMA 57430))
2881,BAP - GATE-ESP INLET(PGMA 57460),SUP,2023-08-13,2024-04-08,,,57460,1.9.6.4.2.1( GATES AND DAMPERS)
2882,Engineering,ENG,2023-08-13,2023-09-11,,,57460,1.9.6.4.2.1.9(BAP - GATE-ESP INLET(PGMA 57460))
2883,Manufacturing ,MFG,2023-09-12,2023-12-20,,,57460,1.9.6.4.2.1.9(BAP - GATE-ESP INLET(PGMA 57460))
2884,Dispatch,DIS,2023-12-21,2024-04-08,,,57460,1.9.6.4.2.1.9(BAP - GATE-ESP INLET(PGMA 57460))
2885,BAP - DAMPER-SA SCAPH INLET(PGMA 57033),SUP,2024-01-10,2024-09-05,,,57033,1.9.6.4.2.1( GATES AND DAMPERS)
2886,Engineering,ENG,2024-01-10,2024-02-08,,,57033,1.9.6.4.2.1.10(BAP - DAMPER-SA SCAPH INLET(PGMA 57033))
2887,Manufacturing ,MFG,2024-02-09,2024-05-18,,,57033,1.9.6.4.2.1.10(BAP - DAMPER-SA SCAPH INLET(PGMA 57033))
2888,Dispatch,DIS,2024-05-19,2024-09-05,,,57033,1.9.6.4.2.1.10(BAP - DAMPER-SA SCAPH INLET(PGMA 57033))
2889,BAP - DAMPER-SA SCAPH OUTLET(PGMA 57063),SUP,2024-01-10,2024-09-05,,,57063,1.9.6.4.2.1( GATES AND DAMPERS)
2890,Engineering,ENG,2024-01-10,2024-02-08,,,57063,1.9.6.4.2.1.11(BAP - DAMPER-SA SCAPH OUTLET(PGMA 57063))
2891,Manufacturing ,MFG,2024-02-09,2024-05-18,,,57063,1.9.6.4.2.1.11(BAP - DAMPER-SA SCAPH OUTLET(PGMA 57063))
2892,Dispatch,DIS,2024-05-19,2024-09-05,,,57063,1.9.6.4.2.1.11(BAP - DAMPER-SA SCAPH OUTLET(PGMA 57063))
2893,BAP - DAMPER-SA APH OUTLET(PGMA 57203),SUP,2024-02-29,2024-10-05,,,57203,1.9.6.4.2.1( GATES AND DAMPERS)
2894,Engineering,ENG,2024-02-29,2024-03-29,,,57203,1.9.6.4.2.1.12(BAP - DAMPER-SA APH OUTLET(PGMA 57203))
2895,Manufacturing ,MFG,2024-03-30,2024-07-07,,,57203,1.9.6.4.2.1.12(BAP - DAMPER-SA APH OUTLET(PGMA 57203))
2896,Dispatch,DIS,2024-07-08,2024-10-05,,,57203,1.9.6.4.2.1.12(BAP - DAMPER-SA APH OUTLET(PGMA 57203))
2897,BAP - MTG BKT FOR CL DAMPER AIR CYL(PGMA 57209),SUP,2024-02-29,2024-10-05,,,57209,1.9.6.4.2.1( GATES AND DAMPERS)
2898,Engineering,ENG,2024-02-29,2024-03-29,,,57209,1.9.6.4.2.1.13(BAP - MTG BKT FOR CL DAMPER AIR CYL(PGMA 57209))
2899,Manufacturing ,MFG,2024-03-30,2024-07-07,,,57209,1.9.6.4.2.1.13(BAP - MTG BKT FOR CL DAMPER AIR CYL(PGMA 57209))
2900,Dispatch,DIS,2024-07-08,2024-10-05,,,57209,1.9.6.4.2.1.13(BAP - MTG BKT FOR CL DAMPER AIR CYL(PGMA 57209))
2901,BAP - PLATFORMS AND LADDERS(PGMA 57466),SUP,2024-02-29,2024-10-05,,,57466,1.9.6.4.2.1( GATES AND DAMPERS)
2902,Engineering,ENG,2024-02-29,2024-03-29,,,57466,1.9.6.4.2.1.14(BAP - PLATFORMS AND LADDERS(PGMA 57466))
2903,Manufacturing ,MFG,2024-03-30,2024-07-07,,,57466,1.9.6.4.2.1.14(BAP - PLATFORMS AND LADDERS(PGMA 57466))
2904,Dispatch,DIS,2024-07-08,2024-10-05,,,57466,1.9.6.4.2.1.14(BAP - PLATFORMS AND LADDERS(PGMA 57466))
2905,BAP - ACTUATORS FOR G&D(PGMA 57577),SUP,2023-07-24,2024-08-06,,,57577,1.9.6.4.2.1( GATES AND DAMPERS)
2906,Engineering,ENG,2023-07-24,2023-12-20,,,57577,1.9.6.4.2.1.15(BAP - ACTUATORS FOR G&D(PGMA 57577))
2907,Manufacturing ,MFG,2023-12-21,2024-06-17,,,57577,1.9.6.4.2.1.15(BAP - ACTUATORS FOR G&D(PGMA 57577))
2908,Dispatch,DIS,2024-06-18,2024-08-06,,,57577,1.9.6.4.2.1.15(BAP - ACTUATORS FOR G&D(PGMA 57577))
2909,BAP - GATE ?FGD INLET(PGMA 57560),SUP,2023-07-24,2024-08-06,,,57560,1.9.6.4.2.1( GATES AND DAMPERS)
2910,Engineering,ENG,2023-07-24,2023-12-20,,,57560,1.9.6.4.2.1.16(BAP - GATE ?FGD INLET(PGMA 57560))
2911,Manufacturing ,MFG,2023-12-21,2024-06-17,,,57560,1.9.6.4.2.1.16(BAP - GATE ?FGD INLET(PGMA 57560))
2912,Dispatch,DIS,2024-06-18,2024-08-06,,,57560,1.9.6.4.2.1.16(BAP - GATE ?FGD INLET(PGMA 57560))
2913,BAP - GATE ?FGD OUTLET(PGMA 57C70),SUP,2023-07-24,2024-08-06,,,57C70,1.9.6.4.2.1( GATES AND DAMPERS)
2914,Engineering,ENG,2023-07-24,2023-12-20,,,57C70,1.9.6.4.2.1.17(BAP - GATE ?FGD OUTLET(PGMA 57C70))
2915,Manufacturing ,MFG,2023-12-21,2024-06-17,,,57C70,1.9.6.4.2.1.17(BAP - GATE ?FGD OUTLET(PGMA 57C70))
2916,Dispatch,DIS,2024-06-18,2024-08-06,,,57C70,1.9.6.4.2.1.17(BAP - GATE ?FGD OUTLET(PGMA 57C70))
2917,BAP - DAMPER ?FGD BYPASS(PGMA 57C83),SUP,2023-07-24,2024-08-06,,,57C83,1.9.6.4.2.1( GATES AND DAMPERS)
2918,Engineering,ENG,2023-07-24,2023-12-20,,,57C83,1.9.6.4.2.1.18(BAP - DAMPER ?FGD BYPASS(PGMA 57C83))
2919,Manufacturing ,MFG,2023-12-21,2024-06-17,,,57C83,1.9.6.4.2.1.18(BAP - DAMPER ?FGD BYPASS(PGMA 57C83))
2920,Dispatch,DIS,2024-06-18,2024-08-06,,,57C83,1.9.6.4.2.1.18(BAP - DAMPER ?FGD BYPASS(PGMA 57C83))
2921,BAP - PLAT FORM AND LADDER ?FGD GD(PGMA 57566),SUP,2023-07-24,2024-08-06,,,57566,1.9.6.4.2.1( GATES AND DAMPERS)
2922,Engineering,ENG,2023-07-24,2023-12-20,,,57566,1.9.6.4.2.1.19(BAP - PLAT FORM AND LADDER ?FGD GD(PGMA 57566))
2923,Manufacturing ,MFG,2023-12-21,2024-06-17,,,57566,1.9.6.4.2.1.19(BAP - PLAT FORM AND LADDER ?FGD GD(PGMA 57566))
2924,Dispatch,DIS,2024-06-18,2024-08-06,,,57566,1.9.6.4.2.1.19(BAP - PLAT FORM AND LADDER ?FGD GD(PGMA 57566))
2925,BAP - GATE WITH CLADDING FOR CO2 TO METHANOL SYSTEM (PGMA 57CX0),SUP,2023-07-24,2024-08-06,,,57CX0,1.9.6.4.2.1( GATES AND DAMPERS)
2926,Engineering,ENG,2023-07-24,2023-12-20,,,57CX0,1.9.6.4.2.1.20(BAP - GATE WITH CLADDING FOR CO2 TO METHANOL SYSTEM (PGMA 57CX0))
2927,Manufacturing ,MFG,2023-12-21,2024-06-17,,,57CX0,1.9.6.4.2.1.20(BAP - GATE WITH CLADDING FOR CO2 TO METHANOL SYSTEM (PGMA 57CX0))
2928,Dispatch,DIS,2024-06-18,2024-08-06,,,57CX0,1.9.6.4.2.1.20(BAP - GATE WITH CLADDING FOR CO2 TO METHANOL SYSTEM (PGMA 57CX0))
2929,BAP - PLATFORMS AND LADDERS-SCR GD (PGMA 57CX0),SUP,2023-07-24,2024-08-06,,,57CX0,1.9.6.4.2.1( GATES AND DAMPERS)
2930,Engineering,ENG,2023-07-24,2023-12-20,,,57CX0,1.9.6.4.2.1.21(BAP - PLATFORMS AND LADDERS-SCR GD (PGMA 57CX0))
2931,Manufacturing ,MFG,2023-12-21,2024-06-17,,,57CX0,1.9.6.4.2.1.21(BAP - PLATFORMS AND LADDERS-SCR GD (PGMA 57CX0))
2932,Dispatch,DIS,2024-06-18,2024-08-06,,,57CX0,1.9.6.4.2.1.21(BAP - PLATFORMS AND LADDERS-SCR GD (PGMA 57CX0))
2933,BAP - DAMPER-PA APH INLET(PGMA 57173),SUP,2024-01-10,2024-10-05,,,57173,1.9.6.4.2.1( GATES AND DAMPERS)
2934,Engineering,ENG,2024-01-10,2024-02-08,,,57173,1.9.6.4.2.1.22(BAP - DAMPER-PA APH INLET(PGMA 57173))
2935,Manufacturing ,MFG,2024-02-09,2024-05-18,,,57173,1.9.6.4.2.1.22(BAP - DAMPER-PA APH INLET(PGMA 57173))
2936,Dispatch,DIS,2024-05-19,2024-10-05,,,57173,1.9.6.4.2.1.22(BAP - DAMPER-PA APH INLET(PGMA 57173))
2937,BAP - DAMPER-PA APH OUTLET(PGMA 57223),SUP,2024-01-10,2024-10-05,,,57223,1.9.6.4.2.1( GATES AND DAMPERS)
2938,Engineering,ENG,2024-01-10,2024-02-08,,,57223,1.9.6.4.2.1.23(BAP - DAMPER-PA APH OUTLET(PGMA 57223))
2939,Manufacturing ,MFG,2024-02-09,2024-05-18,,,57223,1.9.6.4.2.1.23(BAP - DAMPER-PA APH OUTLET(PGMA 57223))
2940,Dispatch,DIS,2024-05-19,2024-10-05,,,57223,1.9.6.4.2.1.23(BAP - DAMPER-PA APH OUTLET(PGMA 57223))
2941,BAP - DAMPER-COLD AIR TO MIL(PGMA 57143),SUP,2024-01-10,2024-10-05,,,57143,1.9.6.4.2.1( GATES AND DAMPERS)
2942,Engineering,ENG,2024-01-10,2024-02-08,,,57143,1.9.6.4.2.1.24(BAP - DAMPER-COLD AIR TO MIL(PGMA 57143))
2943,Manufacturing ,MFG,2024-02-09,2024-05-18,,,57143,1.9.6.4.2.1.24(BAP - DAMPER-COLD AIR TO MIL(PGMA 57143))
2944,Dispatch,DIS,2024-05-19,2024-10-05,,,57143,1.9.6.4.2.1.24(BAP - DAMPER-COLD AIR TO MIL(PGMA 57143))
2945,"BAP - ELECTRICAL ITEMS FOR GATE,DAMP(PGMA 57578)",SUP,2024-01-10,2024-10-05,,,57578,1.9.6.4.2.1( GATES AND DAMPERS)
2946,Engineering,ENG,2024-01-10,2024-02-08,,,57578,"1.9.6.4.2.1.25(BAP - ELECTRICAL ITEMS FOR GATE,DAMP(PGMA 57578))"
2947,Manufacturing ,MFG,2024-02-09,2024-05-18,,,57578,"1.9.6.4.2.1.25(BAP - ELECTRICAL ITEMS FOR GATE,DAMP(PGMA 57578))"
2948,Dispatch,DIS,2024-05-19,2024-10-05,,,57578,"1.9.6.4.2.1.25(BAP - ELECTRICAL ITEMS FOR GATE,DAMP(PGMA 57578))"
2949,BAP - SEAL AIR HAG AND ID FA(PGMA 57141),SUP,2024-01-10,2024-10-05,,,57141,1.9.6.4.2.1( GATES AND DAMPERS)
2950,Engineering,ENG,2024-01-10,2024-02-08,,,57141,1.9.6.4.2.1.26(BAP - SEAL AIR HAG AND ID FA(PGMA 57141))
2951,Manufacturing ,MFG,2024-02-09,2024-05-18,,,57141,1.9.6.4.2.1.26(BAP - SEAL AIR HAG AND ID FA(PGMA 57141))
2952,Dispatch,DIS,2024-05-19,2024-10-05,,,57141,1.9.6.4.2.1.26(BAP - SEAL AIR HAG AND ID FA(PGMA 57141))
2953,BAP - DAMPER-PA FAN OUTLET(PGMA 57113),SUP,2023-12-21,2024-09-05,,,57113,1.9.6.4.2.1( GATES AND DAMPERS)
2954,Engineering,ENG,2023-12-21,2024-01-19,,,57113,1.9.6.4.2.1.27(BAP - DAMPER-PA FAN OUTLET(PGMA 57113))
2955,Manufacturing ,MFG,2024-01-20,2024-04-28,,,57113,1.9.6.4.2.1.27(BAP - DAMPER-PA FAN OUTLET(PGMA 57113))
2956,Dispatch,DIS,2024-04-29,2024-09-05,,,57113,1.9.6.4.2.1.27(BAP - DAMPER-PA FAN OUTLET(PGMA 57113))
2957,BAP - GATE-PA FAN OUTLET(PGMA 57110),SUP,2023-12-21,2024-09-05,,,57110,1.9.6.4.2.1( GATES AND DAMPERS)
2958,Engineering,ENG,2023-12-21,2024-01-19,,,57110,1.9.6.4.2.1.28(BAP - GATE-PA FAN OUTLET(PGMA 57110))
2959,Manufacturing ,MFG,2024-01-20,2024-04-28,,,57110,1.9.6.4.2.1.28(BAP - GATE-PA FAN OUTLET(PGMA 57110))
2960,Dispatch,DIS,2024-04-29,2024-09-05,,,57110,1.9.6.4.2.1.28(BAP - GATE-PA FAN OUTLET(PGMA 57110))
2961,BAP - BLOWER WITH MOTOR(PGMA 57491),SUP,2024-02-29,2024-11-04,,,57491,1.9.6.4.2.1( GATES AND DAMPERS)
2962,Engineering,ENG,2024-02-29,2024-03-29,,,57491,1.9.6.4.2.1.29(BAP - BLOWER WITH MOTOR(PGMA 57491))
2963,Manufacturing ,MFG,2024-03-30,2024-07-07,,,57491,1.9.6.4.2.1.29(BAP - BLOWER WITH MOTOR(PGMA 57491))
2964,Dispatch,DIS,2024-07-08,2024-11-04,,,57491,1.9.6.4.2.1.29(BAP - BLOWER WITH MOTOR(PGMA 57491))
2965,BAP - GATE-COLD AIR TO MILLS(PGMA 57160),SUP,2024-02-29,2024-11-04,,,57160,1.9.6.4.2.1( GATES AND DAMPERS)
2966,Engineering,ENG,2024-02-29,2024-03-29,,,57160,1.9.6.4.2.1.30(BAP - GATE-COLD AIR TO MILLS(PGMA 57160))
2967,Manufacturing ,MFG,2024-03-30,2024-07-07,,,57160,1.9.6.4.2.1.30(BAP - GATE-COLD AIR TO MILLS(PGMA 57160))
2968,Dispatch,DIS,2024-07-08,2024-11-04,,,57160,1.9.6.4.2.1.30(BAP - GATE-COLD AIR TO MILLS(PGMA 57160))
2969,BAP - KNIFE GATE VALVE(PGMA 57497),SUP,2024-02-29,2024-11-04,,,57497,1.9.6.4.2.1( GATES AND DAMPERS)
2970,Engineering,ENG,2024-02-29,2024-03-29,,,57497,1.9.6.4.2.1.31(BAP - KNIFE GATE VALVE(PGMA 57497))
2971,Manufacturing ,MFG,2024-03-30,2024-07-07,,,57497,1.9.6.4.2.1.31(BAP - KNIFE GATE VALVE(PGMA 57497))
2972,Dispatch,DIS,2024-07-08,2024-11-04,,,57497,1.9.6.4.2.1.31(BAP - KNIFE GATE VALVE(PGMA 57497))
2973,BAP - GATE-HOT AIR TO MILLS(PGMA 57270),SUP,2024-02-29,2024-11-04,,,57270,1.9.6.4.2.1( GATES AND DAMPERS)
2974,Engineering,ENG,2024-02-29,2024-03-29,,,57270,1.9.6.4.2.1.32(BAP - GATE-HOT AIR TO MILLS(PGMA 57270))
2975,Manufacturing ,MFG,2024-03-30,2024-07-07,,,57270,1.9.6.4.2.1.32(BAP - GATE-HOT AIR TO MILLS(PGMA 57270))
2976,Dispatch,DIS,2024-07-08,2024-11-04,,,57270,1.9.6.4.2.1.32(BAP - GATE-HOT AIR TO MILLS(PGMA 57270))
2977,BAP - DAMPER-HOT AIR TO MILL(PGMA 57273),SUP,2024-02-29,2024-11-04,,,57273,1.9.6.4.2.1( GATES AND DAMPERS)
2978,Engineering,ENG,2024-02-29,2024-03-29,,,57273,1.9.6.4.2.1.33(BAP - DAMPER-HOT AIR TO MILL(PGMA 57273))
2979,Manufacturing ,MFG,2024-03-30,2024-07-07,,,57273,1.9.6.4.2.1.33(BAP - DAMPER-HOT AIR TO MILL(PGMA 57273))
2980,Dispatch,DIS,2024-07-08,2024-11-04,,,57273,1.9.6.4.2.1.33(BAP - DAMPER-HOT AIR TO MILL(PGMA 57273))
2981,BAP - DAMPER-SA SCAPH BYPASS(PGMA 57083),SUP,2024-02-29,2024-11-04,,,57083,1.9.6.4.2.1( GATES AND DAMPERS)
2982,Engineering,ENG,2024-02-29,2024-03-29,,,57083,1.9.6.4.2.1.34(BAP - DAMPER-SA SCAPH BYPASS(PGMA 57083))
2983,Manufacturing ,MFG,2024-03-30,2024-07-07,,,57083,1.9.6.4.2.1.34(BAP - DAMPER-SA SCAPH BYPASS(PGMA 57083))
2984,Dispatch,DIS,2024-07-08,2024-11-04,,,57083,1.9.6.4.2.1.34(BAP - DAMPER-SA SCAPH BYPASS(PGMA 57083))
2985,BAP - DUCTS COMMISSIONING SPARES(PGMA 57988),SUP,2024-02-29,2024-11-04,,,57988,1.9.6.4.2.1( GATES AND DAMPERS)
2986,Engineering,ENG,2024-02-29,2024-03-29,,,57988,1.9.6.4.2.1.35(BAP - DUCTS COMMISSIONING SPARES(PGMA 57988))
2987,Manufacturing ,MFG,2024-03-30,2024-07-07,,,57988,1.9.6.4.2.1.35(BAP - DUCTS COMMISSIONING SPARES(PGMA 57988))
2988,Dispatch,DIS,2024-07-08,2024-11-04,,,57988,1.9.6.4.2.1.35(BAP - DUCTS COMMISSIONING SPARES(PGMA 57988))
2989,Erection,ERC,2024-08-07,2026-05-28,,,,1.9.6(Air & Flue Gas System)
2990,"External Structures ( Supporting Structures for Duct, PG-39 )",ERC,2024-08-27,2026-03-16,,,PG39,1.9.6.5(Erection)
2991,Erection:- Columns/Frames Before ESP (PP),ERC,2025-04-21,2025-10-17,,,,"1.9.6.5.1(External Structures ( Supporting Structures for Duct, PG-39 ))"
2992,Erection:- Columns/Frames Before ESP (SP),ERC,2025-04-21,2025-12-16,,,,"1.9.6.5.1(External Structures ( Supporting Structures for Duct, PG-39 ))"
2993,Erection:- Columns/Frames Near I.D. Fan  (PP),ERC,2024-08-27,2025-02-22,,,,"1.9.6.5.1(External Structures ( Supporting Structures for Duct, PG-39 ))"
2994,Erection:- Columns/Frames Near TO Chimney  (SP),ERC,2024-09-27,2025-05-24,,,,"1.9.6.5.1(External Structures ( Supporting Structures for Duct, PG-39 ))"
2995,Erection:- Columns/Frames Between TO Chimney and Chimney,ERC,2024-11-28,2025-04-26,,,,"1.9.6.5.1(External Structures ( Supporting Structures for Duct, PG-39 ))"
2996,Erection:- Platforms External Structure BOF TO ESP,ERC,2025-06-20,2026-02-14,,,,"1.9.6.5.1(External Structures ( Supporting Structures for Duct, PG-39 ))"
2997,Erection:- Platform - External Structure,ERC,2025-07-20,2026-03-16,,,,"1.9.6.5.1(External Structures ( Supporting Structures for Duct, PG-39 ))"
2998,Erection:- Structure and Platform for Fans,ERC,2025-12-17,2026-01-15,,,,"1.9.6.5.1(External Structures ( Supporting Structures for Duct, PG-39 ))"
2999,Erection :- Structure for Motor Hood/Covering,ERC,2026-01-30,2026-02-13,,,,"1.9.6.5.1(External Structures ( Supporting Structures for Duct, PG-39 ))"
3000,Erection:- Fan Handling Structure for FD Fan,ERC,2025-10-18,2025-12-16,,,,"1.9.6.5.1(External Structures ( Supporting Structures for Duct, PG-39 ))"
3001,Erection:- Fan Handling Structure for PA Fan,ERC,2025-09-24,2025-11-22,,,,"1.9.6.5.1(External Structures ( Supporting Structures for Duct, PG-39 ))"
3002,Erection:- Fan Handling Structure for ID Fan,ERC,2025-10-18,2025-12-16,,,,"1.9.6.5.1(External Structures ( Supporting Structures for Duct, PG-39 ))"
3003,Erection:- Floor Grill,ERC,2025-07-20,2025-11-16,,,,"1.9.6.5.1(External Structures ( Supporting Structures for Duct, PG-39 ))"
3004,Erection:- Stairs,ERC,2025-07-20,2025-11-16,,,,"1.9.6.5.1(External Structures ( Supporting Structures for Duct, PG-39 ))"
3005,Erection:- Hand Rail and Post,ERC,2025-07-20,2025-12-16,,,,"1.9.6.5.1(External Structures ( Supporting Structures for Duct, PG-39 ))"
3006,"Duct., Dampers and Expn. Joints",ERC,2024-08-07,2026-05-28,,,,1.9.6.5(Erection)
3007, AIR DUCTING,ERC,2024-10-29,2026-01-18,,,,"1.9.6.5.2(Duct., Dampers and Expn. Joints)"
3008, FORCED DRAFT AIR,ERC,2024-10-29,2025-12-22,,,,1.9.6.5.2.1( AIR DUCTING)
3009, FORCED DRAFT AIR: Pre-assembly of FD duct pieces,ERC,2024-10-29,2025-03-27,,,,1.9.6.5.2.1.1( FORCED DRAFT AIR)
3010, FORCED DRAFT AIR: Erection and suspension of ducts on supports,ERC,2024-12-28,2025-05-26,,,,1.9.6.5.2.1.1( FORCED DRAFT AIR)
3011, FORCED DRAFT Reresection of gates and actuators,ERC,2025-05-27,2025-08-24,,,,1.9.6.5.2.1.1( FORCED DRAFT AIR)
3012, FORCED DRAFT AIR:FD ducting ready after insulation,ERC,2025-08-25,2025-12-22,,,,1.9.6.5.2.1.1( FORCED DRAFT AIR)
3013, PRIMARY AIR,ERC,2025-04-27,2026-01-18,,,,1.9.6.5.2.1( AIR DUCTING)
3014, PRIMARY AIR: Preassembly of PA duct pieces,ERC,2025-04-27,2025-10-23,,,,1.9.6.5.2.1.2( PRIMARY AIR)
3015, PRIMARY AIR: Preassembly and suspension of ducts on supports,ERC,2025-05-27,2025-10-23,,,,1.9.6.5.2.1.2( PRIMARY AIR)
3016, PRIMARY AIR: Preassembly of gates and actuators,ERC,2025-06-03,2025-09-20,,,,1.9.6.5.2.1.2( PRIMARY AIR)
3017, PRIMARY AIR:PA ducting ready after insulation,ERC,2025-09-21,2026-01-18,,,,1.9.6.5.2.1.2( PRIMARY AIR)
3018, FLUE GAS DUCTING,ERC,2024-08-07,2026-05-28,,,,"1.9.6.5.2(Duct., Dampers and Expn. Joints)"
3019, ID TO COMMON DUCT TO Chimney - Priority Pass,ERC,2024-08-07,2026-01-01,,,,1.9.6.5.2.2( FLUE GAS DUCTING)
3020, ID-B TO Chimney: Preassembly of duct pieces,ERC,2024-08-07,2025-02-02,,,,1.9.6.5.2.2.1( ID TO COMMON DUCT TO Chimney - Priority Pass)
3021, ID-B TO Chimney: Erection and welding of square ducts and expansion pieces,ERC,2025-04-07,2025-09-03,,,,1.9.6.5.2.2.1( ID TO COMMON DUCT TO Chimney - Priority Pass)
3022, ID-B TO Chimney: Erection of gates and actuators,ERC,2025-09-04,2025-10-03,,,,1.9.6.5.2.2.1( ID TO COMMON DUCT TO Chimney - Priority Pass)
3023, ID-B TO Chimney: Ducting ready after insulation,COM,2025-10-04,2026-01-01,,,,1.9.6.5.2.2.1( ID TO COMMON DUCT TO Chimney - Priority Pass)
3024, ID to COMMON DUCT TO Chimney - Second Pass,ERC,2024-12-05,2026-02-22,,,,1.9.6.5.2.2( FLUE GAS DUCTING)
3025, ID-A to Chimney: Preassembly of duct pieces,ERC,2024-12-05,2025-06-02,,,,1.9.6.5.2.2.2( ID to COMMON DUCT TO Chimney - Second Pass)
3026, ID-A to Chimney: Erection and welding of square ducts and expansion pieces,ERC,2025-04-29,2025-09-25,,,,1.9.6.5.2.2.2( ID to COMMON DUCT TO Chimney - Second Pass)
3027, ID-A to Chimney: Erection of gates and actuators,ERC,2025-09-26,2025-10-25,,,,1.9.6.5.2.2.2( ID to COMMON DUCT TO Chimney - Second Pass)
3028, ID-A to Chimney: Ducting ready after insulation,COM,2025-10-26,2026-02-22,,,,1.9.6.5.2.2.2( ID to COMMON DUCT TO Chimney - Second Pass)
3029, ECO TO APH,ERC,2025-08-01,2026-01-07,,,,1.9.6.5.2.2( FLUE GAS DUCTING)
3030, ECO TO APH: Preassembly of duct pieces,ERC,2025-08-01,2025-09-14,,,,1.9.6.5.2.2.3( ECO TO APH)
3031, ECO TO APH: Erection and welding of square ducts and expansion pieces,ERC,2025-09-15,2025-11-08,,,,1.9.6.5.2.2.3( ECO TO APH)
3032, ECO TO Perfection of gates and actuators,ERC,2025-11-09,2025-11-23,,,,1.9.6.5.2.2.3( ECO TO APH)
3033, ECO TO APH: Ducting ready after insulation,COM,2025-11-24,2026-01-07,,,,1.9.6.5.2.2.3( ECO TO APH)
3034, APH TO BOF,ERC,2025-08-01,2026-01-21,,,,1.9.6.5.2.2( FLUE GAS DUCTING)
3035, APH TO BOF: Erection of supports,ERC,2025-08-01,2025-09-08,,,,1.9.6.5.2.2.4( APH TO BOF)
3036, APH TO BOF: Preassembly of duct pieces,ERC,2025-08-01,2025-10-16,,,,1.9.6.5.2.2.4( APH TO BOF)
3037, APH TO Federation and welding of square ducts and expansion pieces,ERC,2025-09-07,2025-11-22,,,,1.9.6.5.2.2.4( APH TO BOF)
3038, APH TO Federation of gates and actuators,ERC,2025-11-23,2025-12-07,,,,1.9.6.5.2.2.4( APH TO BOF)
3039, APH TO BOF: Ducting ready after insulation,COM,2025-12-08,2026-01-21,,,,1.9.6.5.2.2.4( APH TO BOF)
3040, BOF TO ESP - Priority Pass,ERC,2025-08-04,2026-02-27,,,,1.9.6.5.2.2( FLUE GAS DUCTING)
3041, BOF -B TO ESP: Preassembly of duct pieces,ERC,2025-08-04,2025-10-17,,,,1.9.6.5.2.2.5( BOF TO ESP - Priority Pass)
3042, BOF -B TO ESP: Erection and welding of square ducts and expansion pieces,ERC,2025-09-18,2025-12-16,,,,1.9.6.5.2.2.5( BOF TO ESP - Priority Pass)
3043, BOF -B TO Superaction of gates and actuators,ERC,2025-12-17,2025-12-29,,,,1.9.6.5.2.2.5( BOF TO ESP - Priority Pass)
3044, BOF -B TO ESP: Ducting ready after insulation,COM,2025-12-30,2026-02-27,,,,1.9.6.5.2.2.5( BOF TO ESP - Priority Pass)
3045, BOF TO ESP - Second Pass,ERC,2025-10-03,2026-05-28,,,,1.9.6.5.2.2( FLUE GAS DUCTING)
3046, BOF_ATO Seducing of duct pieces,ERC,2025-10-03,2025-12-16,,,,1.9.6.5.2.2.6( BOF TO ESP - Second Pass)
3047, BOF_ATO Seducing and welding of square ducts and expansion pieces,ERC,2025-12-17,2026-03-16,,,,1.9.6.5.2.2.6( BOF TO ESP - Second Pass)
3048, BOF_ATO Seducing of gates and actuators,ERC,2026-03-17,2026-03-29,,,,1.9.6.5.2.2.6( BOF TO ESP - Second Pass)
3049, BOF_ATO Seducing ready after insulation,COM,2026-03-30,2026-05-28,,,,1.9.6.5.2.2.6( BOF TO ESP - Second Pass)
3050, ESP to ID - Priority Pass,ERC,2025-01-09,2025-12-24,,,,1.9.6.5.2.2( FLUE GAS DUCTING)
3051, ESP to ID-A: Preassembly of duct pieces,ERC,2025-01-09,2025-04-08,,,,1.9.6.5.2.2.7( ESP to ID - Priority Pass)
3052, ESP to ID-A: Erection and welding of square ducts and expansion pieces,ERC,2025-04-09,2025-07-27,,,,1.9.6.5.2.2.7( ESP to ID - Priority Pass)
3053, ESP to Dilaceration of gates and actuators,ERC,2025-07-28,2025-09-25,,,,1.9.6.5.2.2.7( ESP to ID - Priority Pass)
3054, ESP to ID-A: Ducting ready after insulation,COM,2025-09-26,2025-12-24,,,,1.9.6.5.2.2.7( ESP to ID - Priority Pass)
3055, ESPTO ID - Second Pass,ERC,2025-04-10,2026-03-25,,,,1.9.6.5.2.2( FLUE GAS DUCTING)
3056, ESPTO ID-B: Preassembly of duct pieces,ERC,2025-04-10,2025-07-08,,,,1.9.6.5.2.2.8( ESPTO ID - Second Pass)
3057, ESPTO ID-B: Erection and welding of square ducts and expansion pieces,ERC,2025-07-09,2025-10-26,,,,1.9.6.5.2.2.8( ESPTO ID - Second Pass)
3058, ESPTO ID-B: Preassembly of gates and actuators,ERC,2025-10-27,2025-12-25,,,,1.9.6.5.2.2.8( ESPTO ID - Second Pass)
3059, ESPTO ID-B: Ducting ready after insulation,COM,2025-12-26,2026-03-25,,,,1.9.6.5.2.2.8( ESPTO ID - Second Pass)
3060,Pulverised Fuel System,OTH,2022-09-27,2025-11-10,,,,1.9(Boiler & Auxiliaries)
3061,Civil Work,CIV,2023-02-24,2025-06-23,,,,1.9.7(Pulverised Fuel System)
3062, Mills Foundation,CIV,2023-02-24,2024-09-15,,,,1.9.7.1(Civil Work)
3063,EXCAVATION,CIV,2023-02-24,2023-05-09,,,,1.9.7.1.1( Mills Foundation)
3064,RCC in substructure including PCC,CIV,2023-05-10,2023-07-13,,,,1.9.7.1.1( Mills Foundation)
3065,RCC in superstructure,CIV,2024-05-04,2024-08-07,,,,1.9.7.1.1( Mills Foundation)
3066,Backfilling,CIV,2024-08-08,2024-09-01,,,,1.9.7.1.1( Mills Foundation)
3067,Finishing works,CIV,2024-09-02,2024-09-15,,,,1.9.7.1.1( Mills Foundation)
3068,Bunker,ERC,2024-04-20,2025-06-23,,,,1.9.7.1(Civil Work)
3069,Pre-Assy of Bunker at Ground,ERC,2024-04-20,2024-09-26,,,,1.9.7.1.2(Bunker)
3070,Coal bunker lift up & welding,ERC,2024-12-16,2025-06-23,,,,1.9.7.1.2(Bunker)
3071,Supply,SUP,2022-09-27,2025-08-27,,,,1.9.7(Pulverised Fuel System)
3072,BHEL TRY,SUP,2023-04-10,2025-08-27,,,,1.9.7.2(Supply)
3073,Pulverised Fuel Piping (PG-47),SUP,2023-04-10,2024-12-26,,,PG47,1.9.7.2.1(BHEL TRY)
3074,Fuel Piping - Sub-delivery (PGMA-47200),SUP,2023-04-10,2024-12-26,,,47200,1.9.7.2.1.1(Pulverised Fuel Piping (PG-47))
3075,Engineering,ENG,2023-04-10,2024-02-15,,,47200,1.9.7.2.1.1.1(Fuel Piping - Sub-delivery (PGMA-47200))
3076,Manufacturing,MFG,2024-02-16,2024-11-26,,,47200,1.9.7.2.1.1.1(Fuel Piping - Sub-delivery (PGMA-47200))
3077,Dispatch,DIS,2024-11-27,2024-12-26,,,47200,1.9.7.2.1.1.1(Fuel Piping - Sub-delivery (PGMA-47200))
3078,FUEL PIPE SUPPORTS (PGMA-47261),SUP,2023-04-10,2024-12-26,,,47261,1.9.7.2.1.1(Pulverised Fuel Piping (PG-47))
3079,Engineering,ENG,2023-04-10,2024-02-15,,,47261,1.9.7.2.1.1.2(FUEL PIPE SUPPORTS (PGMA-47261))
3080,Manufacturing,MFG,2024-02-16,2024-11-26,,,47261,1.9.7.2.1.1.2(FUEL PIPE SUPPORTS (PGMA-47261))
3081,Dispatch,DIS,2024-11-27,2024-12-26,,,47261,1.9.7.2.1.1.2(FUEL PIPE SUPPORTS (PGMA-47261))
3082,FUEL PIPE COUPLING COLLER & ORIFICE (PGMA-47263),SUP,2023-05-18,2024-11-25,,,47263,1.9.7.2.1.1(Pulverised Fuel Piping (PG-47))
3083,Engineering,ENG,2023-05-18,2024-02-03,,,47263,1.9.7.2.1.1.3(FUEL PIPE COUPLING COLLER & ORIFICE (PGMA-47263))
3084,Manufacturing,MFG,2024-02-04,2024-10-26,,,47263,1.9.7.2.1.1.3(FUEL PIPE COUPLING COLLER & ORIFICE (PGMA-47263))
3085,Dispatch,DIS,2024-10-27,2024-11-25,,,47263,1.9.7.2.1.1.3(FUEL PIPE COUPLING COLLER & ORIFICE (PGMA-47263))
3086,FUEL PIPE ST PIPES FOR MILL G (PGMA-47269),SUP,2023-04-10,2024-12-26,,,47269,1.9.7.2.1.1(Pulverised Fuel Piping (PG-47))
3087,Engineering,ENG,2023-04-10,2024-02-15,,,47269,1.9.7.2.1.1.4(FUEL PIPE ST PIPES FOR MILL G (PGMA-47269))
3088,Manufacturing,MFG,2024-02-16,2024-11-26,,,47269,1.9.7.2.1.1.4(FUEL PIPE ST PIPES FOR MILL G (PGMA-47269))
3089,Dispatch,DIS,2024-11-27,2024-12-26,,,47269,1.9.7.2.1.1.4(FUEL PIPE ST PIPES FOR MILL G (PGMA-47269))
3090,Pulverised Fuel Piping - DD items (PGMA-47710),SUP,2023-04-10,2024-12-26,,,47710,1.9.7.2.1.1(Pulverised Fuel Piping (PG-47))
3091,Engineering,ENG,2023-04-10,2024-02-15,,,47710,1.9.7.2.1.1.5(Pulverised Fuel Piping - DD items (PGMA-47710))
3092,Manufacturing,MFG,2024-02-16,2024-11-26,,,47710,1.9.7.2.1.1.5(Pulverised Fuel Piping - DD items (PGMA-47710))
3093,Dispatch,DIS,2024-11-27,2024-12-26,,,47710,1.9.7.2.1.1.5(Pulverised Fuel Piping - DD items (PGMA-47710))
3094,Fuel Piping - Shop Items (PGMA-47858),SUP,2023-04-10,2024-12-26,,,47858,1.9.7.2.1.1(Pulverised Fuel Piping (PG-47))
3095,Engineering,ENG,2023-04-10,2024-02-15,,,47858,1.9.7.2.1.1.6(Fuel Piping - Shop Items (PGMA-47858))
3096,Manufacturing,MFG,2024-02-16,2024-11-26,,,47858,1.9.7.2.1.1.6(Fuel Piping - Shop Items (PGMA-47858))
3097,Dispatch,DIS,2024-11-27,2024-12-26,,,47858,1.9.7.2.1.1.6(Fuel Piping - Shop Items (PGMA-47858))
3098,COAL PIPING MANDATORY SPARES (PGMA-47997),SUP,2023-04-10,2024-12-26,,,47997,1.9.7.2.1.1(Pulverised Fuel Piping (PG-47))
3099,Engineering,ENG,2023-04-10,2024-02-15,,,47997,1.9.7.2.1.1.7(COAL PIPING MANDATORY SPARES (PGMA-47997))
3100,Manufacturing,MFG,2024-02-16,2024-11-26,,,47997,1.9.7.2.1.1.7(COAL PIPING MANDATORY SPARES (PGMA-47997))
3101,Dispatch,DIS,2024-11-27,2024-12-26,,,47997,1.9.7.2.1.1.7(COAL PIPING MANDATORY SPARES (PGMA-47997))
3102,Coal Feeders (PG-65),SUP,2023-11-29,2025-08-27,,,PG65,1.9.7.2.1(BHEL TRY)
3103,Coal Feeder- Sub-Delivery (PGMA-65200),SUP,2023-11-29,2025-08-27,,,65200,1.9.7.2.1.2(Coal Feeders (PG-65))
3104,Ordering & Engineering,ENG,2023-11-29,2024-10-03,,,65200,1.9.7.2.1.2.1(Coal Feeder- Sub-Delivery (PGMA-65200))
3105,Manufacturing,MFG,2024-10-04,2025-07-28,,,65200,1.9.7.2.1.2.1(Coal Feeder- Sub-Delivery (PGMA-65200))
3106,Dispatch,DIS,2025-07-29,2025-08-27,,,65200,1.9.7.2.1.2.1(Coal Feeder- Sub-Delivery (PGMA-65200))
3107,Coal Feeder - DD items (PGMA-65710),SUP,2023-11-29,2025-08-27,,,65710,1.9.7.2.1.2(Coal Feeders (PG-65))
3108,Ordering & Engineering,ENG,2023-11-29,2024-10-03,,,65710,1.9.7.2.1.2.2(Coal Feeder - DD items (PGMA-65710))
3109,Manufacturing,MFG,2024-10-04,2025-07-28,,,65710,1.9.7.2.1.2.2(Coal Feeder - DD items (PGMA-65710))
3110,Dispatch,DIS,2025-07-29,2025-08-27,,,65710,1.9.7.2.1.2.2(Coal Feeder - DD items (PGMA-65710))
3111,36 INCH GRAVIMETRIC FEEDER (PGMA-65736),SUP,2023-11-29,2025-08-27,,,65736,1.9.7.2.1.2(Coal Feeders (PG-65))
3112,Ordering & Engineering,ENG,2023-11-29,2024-10-03,,,65736,1.9.7.2.1.2.3(36 INCH GRAVIMETRIC FEEDER (PGMA-65736))
3113,Manufacturing,MFG,2024-10-04,2025-07-28,,,65736,1.9.7.2.1.2.3(36 INCH GRAVIMETRIC FEEDER (PGMA-65736))
3114,Dispatch,DIS,2025-07-29,2025-08-27,,,65736,1.9.7.2.1.2.3(36 INCH GRAVIMETRIC FEEDER (PGMA-65736))
3115,FEEDER MANDATORY SPARE (PGMA-65997),SUP,2023-11-29,2025-08-27,,,65997,1.9.7.2.1.2(Coal Feeders (PG-65))
3116,Ordering & Engineering,ENG,2023-11-29,2024-10-03,,,65997,1.9.7.2.1.2.4(FEEDER MANDATORY SPARE (PGMA-65997))
3117,Manufacturing,MFG,2024-10-04,2025-07-28,,,65997,1.9.7.2.1.2.4(FEEDER MANDATORY SPARE (PGMA-65997))
3118,Dispatch,DIS,2025-07-29,2025-08-27,,,65997,1.9.7.2.1.2.4(FEEDER MANDATORY SPARE (PGMA-65997))
3119,Coal Valves & Gates (PG-67),SUP,2023-11-06,2025-08-27,,,PG67,1.9.7.2.1(BHEL TRY)
3120,Coal Feeding System- Sub dely. (PGMA-67200),SUP,2023-11-21,2025-07-28,,,67200,1.9.7.2.1.3(Coal Valves & Gates (PG-67))
3121,Ordering & Engineering,ENG,2023-11-21,2024-09-10,,,67200,1.9.7.2.1.3.1(Coal Feeding System- Sub dely. (PGMA-67200))
3122,Manufacturing,MFG,2024-09-11,2025-06-28,,,67200,1.9.7.2.1.3.1(Coal Feeding System- Sub dely. (PGMA-67200))
3123,Dispatch,DIS,2025-06-29,2025-07-28,,,67200,1.9.7.2.1.3.1(Coal Feeding System- Sub dely. (PGMA-67200))
3124,RAW COAL GATES NEEDLE TYPE (PGMA-67204),SUP,2023-11-21,2025-07-28,,,67204,1.9.7.2.1.3(Coal Valves & Gates (PG-67))
3125,Engineering,ENG,2023-11-21,2024-06-02,,,67204,1.9.7.2.1.3.2(RAW COAL GATES NEEDLE TYPE (PGMA-67204))
3126,Manufacturing,MFG,2024-06-03,2025-06-28,,,67204,1.9.7.2.1.3.2(RAW COAL GATES NEEDLE TYPE (PGMA-67204))
3127,Dispatch,DIS,2025-06-29,2025-07-28,,,67204,1.9.7.2.1.3.2(RAW COAL GATES NEEDLE TYPE (PGMA-67204))
3128,COAL VALVE-36 INCH MOTOR OPERATED (PGMA-67272),SUP,2023-11-21,2025-07-28,,,67272,1.9.7.2.1.3(Coal Valves & Gates (PG-67))
3129,Engineering,ENG,2023-11-21,2024-06-02,,,67272,1.9.7.2.1.3.3(COAL VALVE-36 INCH MOTOR OPERATED (PGMA-67272))
3130,Manufacturing,MFG,2024-06-03,2025-06-28,,,67272,1.9.7.2.1.3.3(COAL VALVE-36 INCH MOTOR OPERATED (PGMA-67272))
3131,Dispatch,DIS,2025-06-29,2025-07-28,,,67272,1.9.7.2.1.3.3(COAL VALVE-36 INCH MOTOR OPERATED (PGMA-67272))
3132,"RAW COAL GATE CHAIN OP 36"" CIRCULAR (PGMA-67276)",SUP,2023-11-21,2025-07-28,,,67276,1.9.7.2.1.3(Coal Valves & Gates (PG-67))
3133,Engineering,ENG,2023-11-21,2024-06-02,,,67276,"1.9.7.2.1.3.4(RAW COAL GATE CHAIN OP 36"" CIRCULAR (PGMA-67276))"
3134,Manufacturing,MFG,2024-06-03,2025-06-28,,,67276,"1.9.7.2.1.3.4(RAW COAL GATE CHAIN OP 36"" CIRCULAR (PGMA-67276))"
3135,Dispatch,DIS,2025-06-29,2025-07-28,,,67276,"1.9.7.2.1.3.4(RAW COAL GATE CHAIN OP 36"" CIRCULAR (PGMA-67276))"
3136,FEEDER OUTLET ISOLATION GATE (PGMA-67283),SUP,2023-11-21,2025-07-28,,,67283,1.9.7.2.1.3(Coal Valves & Gates (PG-67))
3137,Engineering,ENG,2023-11-21,2024-06-02,,,67283,1.9.7.2.1.3.5(FEEDER OUTLET ISOLATION GATE (PGMA-67283))
3138,Manufacturing,MFG,2024-06-03,2025-06-28,,,67283,1.9.7.2.1.3.5(FEEDER OUTLET ISOLATION GATE (PGMA-67283))
3139,Dispatch,DIS,2025-06-29,2025-07-28,,,67283,1.9.7.2.1.3.5(FEEDER OUTLET ISOLATION GATE (PGMA-67283))
3140,Coal Feeding System - DD items (PGMA-67710),SUP,2023-11-21,2025-07-28,,,67710,1.9.7.2.1.3(Coal Valves & Gates (PG-67))
3141,Engineering,ENG,2023-11-21,2024-06-02,,,67710,1.9.7.2.1.3.6(Coal Feeding System - DD items (PGMA-67710))
3142,Manufacturing,MFG,2024-06-03,2025-06-28,,,67710,1.9.7.2.1.3.6(Coal Feeding System - DD items (PGMA-67710))
3143,Dispatch,DIS,2025-06-29,2025-07-28,,,67710,1.9.7.2.1.3.6(Coal Feeding System - DD items (PGMA-67710))
3144,DOWN SPOUT (PGMA-67801),SUP,2023-11-06,2025-06-27,,,67801,1.9.7.2.1.3(Coal Valves & Gates (PG-67))
3145,Engineering,ENG,2023-11-06,2024-05-05,,,67801,1.9.7.2.1.3.7(DOWN SPOUT (PGMA-67801))
3146,Manufacturing,MFG,2024-05-06,2025-05-28,,,67801,1.9.7.2.1.3.7(DOWN SPOUT (PGMA-67801))
3147,Dispatch,DIS,2025-05-29,2025-06-27,,,67801,1.9.7.2.1.3.7(DOWN SPOUT (PGMA-67801))
3148,BUNKER EMPTYING CHUTE ARRANGEMENT (PGMA-67802),SUP,2023-11-29,2025-08-27,,,67802,1.9.7.2.1.3(Coal Valves & Gates (PG-67))
3149,Engineering,ENG,2023-11-29,2024-06-25,,,67802,1.9.7.2.1.3.8(BUNKER EMPTYING CHUTE ARRANGEMENT (PGMA-67802))
3150,Manufacturing,MFG,2024-06-26,2025-07-28,,,67802,1.9.7.2.1.3.8(BUNKER EMPTYING CHUTE ARRANGEMENT (PGMA-67802))
3151,Dispatch,DIS,2025-07-29,2025-08-27,,,67802,1.9.7.2.1.3.8(BUNKER EMPTYING CHUTE ARRANGEMENT (PGMA-67802))
3152,FEED PIPE TO MILL (PGMA-67803),SUP,2023-11-06,2025-06-27,,,67803,1.9.7.2.1.3(Coal Valves & Gates (PG-67))
3153,Engineering,ENG,2023-11-06,2024-05-05,,,67803,1.9.7.2.1.3.9(FEED PIPE TO MILL (PGMA-67803))
3154,Manufacturing,MFG,2024-05-06,2025-05-28,,,67803,1.9.7.2.1.3.9(FEED PIPE TO MILL (PGMA-67803))
3155,Dispatch,DIS,2025-05-29,2025-06-27,,,67803,1.9.7.2.1.3.9(FEED PIPE TO MILL (PGMA-67803))
3156,FDR ISOLATION GATE MAND SPARES (PGMA-67997),SUP,2023-11-29,2025-08-27,,,67997,1.9.7.2.1.3(Coal Valves & Gates (PG-67))
3157,Engineering,ENG,2023-11-29,2024-10-03,,,67997,1.9.7.2.1.3.10(FDR ISOLATION GATE MAND SPARES (PGMA-67997))
3158,Manufacturing,MFG,2024-10-04,2025-07-28,,,67997,1.9.7.2.1.3.10(FDR ISOLATION GATE MAND SPARES (PGMA-67997))
3159,Dispatch,DIS,2025-07-29,2025-08-27,,,67997,1.9.7.2.1.3.10(FDR ISOLATION GATE MAND SPARES (PGMA-67997))
3160,BHEL HYD,SUP,2022-09-27,2024-10-20,,,,1.9.7.2(Supply)
3161,MILL and its Components,SUP,2022-09-27,2024-10-20,,,,1.9.7.2.2(BHEL HYD)
3162,MILLS(7 NOS.),SUP,2022-09-27,2024-10-20,,,,1.9.7.2.2.1(MILL and its Components)
3163,Engineering & PROCUREMENT,ENG,2022-09-27,2023-12-25,,,,1.9.7.2.2.1.1(MILLS(7 NOS.))
3164,Manufacturing,MFG,2023-12-26,2024-06-02,,,,1.9.7.2.2.1.1(MILLS(7 NOS.))
3165,ASSEMBLY & TESTING,MFG,2024-02-09,2024-06-17,,,,1.9.7.2.2.1.1(MILLS(7 NOS.))
3166,"Dispatch of Major Mill Components ( Bowl Hub, MSL ,PGB, Separator Body ,Separator Top ,KGV ,Journal Head ,Journal Assly)",DIS,2024-03-05,2024-04-13,,,,1.9.7.2.2.1.1(MILLS(7 NOS.))
3167,DISPATCH OF BALANCE MILLS ITEMS &  ASOCIATED LOOSE ITEMS,DIS,2024-07-13,2024-10-20,,,,1.9.7.2.2.1.1(MILLS(7 NOS.))
3168, BHEL BPL,SUP,2023-07-27,2025-03-23,,,,1.9.7.2(Supply)
3169,Mill Motor,SUP,2023-07-27,2025-03-23,,,,1.9.7.2.3( BHEL BPL)
3170,"Engineering, INDENTING AND PROCUREMENT ",ENG,2023-07-27,2024-05-24,,,,1.9.7.2.3.1(Mill Motor)
3171,Manufacturing & TESTING ,MFG,2024-05-25,2025-02-21,,,,1.9.7.2.3.1(Mill Motor)
3172,Dispatch &RECEIPT at site,DIS,2025-02-22,2025-03-23,,,,1.9.7.2.3.1(Mill Motor)
3173, BHEL IP ,SUP,2023-11-21,2024-06-02,,,,1.9.7.2(Supply)
3174,Ceralin Lined Pulverised Coal Piping items,SUP,2023-11-21,2024-06-02,,,,1.9.7.2.4( BHEL IP )
3175,Engineering & PROCUREMENT,ENG,2023-11-21,2024-02-03,,,,1.9.7.2.4.1(Ceralin Lined Pulverised Coal Piping items)
3176,Manufacturing,MFG,2024-02-04,2024-04-03,,,,1.9.7.2.4.1(Ceralin Lined Pulverised Coal Piping items)
3177,Dispatch,DIS,2024-04-04,2024-06-02,,,,1.9.7.2.4.1(Ceralin Lined Pulverised Coal Piping items)
3178,Erection,ERC,2024-09-16,2025-11-10,,,,1.9.7(Pulverised Fuel System)
3179,Mills,ERC,2024-09-16,2025-10-16,,,,1.9.7.3(Erection)
3180," Foundation checking, cleaning & placement of packers",CIV,2024-09-16,2024-10-10,,,,1.9.7.3.1(Mills)
3181,"Erection, alignment & grouting of sole plate, mounting plate",ERC,2024-10-11,2024-10-30,,,,1.9.7.3.1(Mills)
3182,Erection of planetary gear box & mill side assy. ,ERC,2024-10-31,2024-11-19,,,,1.9.7.3.1(Mills)
3183,"Erection of bullring ASSY, vane wheel ASSY & bowl hub ASSY ",ERC,2024-11-20,2024-12-19,,,,1.9.7.3.1(Mills)
3184,Erection of separator body and valve outlet,ERC,2024-12-20,2025-01-18,,,,1.9.7.3.1(Mills)
3185,Erection of Centre feed pipe,ERC,2025-01-19,2025-02-03,,,,1.9.7.3.1(Mills)
3186,Erection of dynamic classifier ASSY,ERC,2025-02-04,2025-03-20,,,,1.9.7.3.1(Mills)
3187,Erection of roller journal ASSY,ERC,2025-03-21,2025-05-14,,,,1.9.7.3.1(Mills)
3188,Erection and alignment of motors,ERC,2025-05-15,2025-06-03,,,,1.9.7.3.1(Mills)
3189,"Erection of seal air piping, MDV headers",ERC,2025-06-04,2025-08-02,,,,1.9.7.3.1(Mills)
3190, Lube oil system,ERC,2025-08-03,2025-09-01,,,,1.9.7.3.1(Mills)
3191,Erection of labyrinth seal upper and lower,ERC,2025-09-02,2025-10-01,,,,1.9.7.3.1(Mills)
3192, Spring compression and roller gap setting,ERC,2025-10-02,2025-10-16,,,,1.9.7.3.1(Mills)
3193,Pulverised Fuel Piping (PG-47),ERC,2024-12-27,2025-10-29,,,PG47,1.9.7.3(Erection)
3194,First 4 Nos Mills,ERC,2024-12-27,2025-04-25,,,,1.9.7.3.2(Pulverised Fuel Piping (PG-47))
3195,Erection: Fuel Piping,ERC,2024-12-27,2025-04-25,,,,1.9.7.3.2.1(First 4 Nos Mills)
3196,Erection: FUEL PIPE SUPPORTS,ERC,2024-12-27,2025-04-25,,,,1.9.7.3.2.1(First 4 Nos Mills)
3197,Erection: FUEL PIPE COUPLING COLLER & ORIFICE,ERC,2024-12-27,2025-04-25,,,,1.9.7.3.2.1(First 4 Nos Mills)
3198,Last 3 Nos Mills,ERC,2025-07-19,2025-10-29,,,,1.9.7.3.2(Pulverised Fuel Piping (PG-47))
3199,Erection: Fuel Piping,ERC,2025-07-19,2025-10-29,,,,1.9.7.3.2.2(Last 3 Nos Mills)
3200,Erection: FUEL PIPE SUPPORTS,ERC,2025-07-19,2025-10-29,,,,1.9.7.3.2.2(Last 3 Nos Mills)
3201,Erection: FUEL PIPE COUPLING COLLER & ORIFICE,ERC,2025-07-19,2025-10-29,,,,1.9.7.3.2.2(Last 3 Nos Mills)
3202,Coal Feeders (PG-65),ERC,2025-08-28,2025-11-10,,,PG65,1.9.7.3(Erection)
3203,Erection: Placement and alignment of feeders (First 4 Nos),ERC,2025-08-28,2025-11-10,,,,1.9.7.3.3(Coal Feeders (PG-65))
3204,Erection: Placement and alignment of feeders (Last 3 Nos),ERC,2025-08-28,2025-11-10,,,,1.9.7.3.3(Coal Feeders (PG-65))
3205,Coal Valves & Gates (PG-67),ERC,2025-08-28,2025-09-26,,,PG67,1.9.7.3(Erection)
3206, Mills/Feeders,ERC,2025-08-28,2025-09-26,,,,1.9.7.3.4(Coal Valves & Gates (PG-67))
3207,Erection:  RAW COAL GATES NEEDLE TYPE,ERC,2025-08-28,2025-09-26,,,,1.9.7.3.4.1( Mills/Feeders)
3208,Erection: COAL VALVE-36 INCH MOTOR OPERATED,ERC,2025-08-28,2025-09-26,,,,1.9.7.3.4.1( Mills/Feeders)
3209,"Erection: RAW COAL GATE CHAIN OP 36"" CIRCULAR",ERC,2025-08-28,2025-09-26,,,,1.9.7.3.4.1( Mills/Feeders)
3210,Erection: FEEDER OUTLET ISOLATION GATE,ERC,2025-08-28,2025-09-26,,,,1.9.7.3.4.1( Mills/Feeders)
3211,Erection: DOWN SPOUT,ERC,2025-08-28,2025-09-26,,,,1.9.7.3.4.1( Mills/Feeders)
3212,Erection: BUNKER EMPTYING CHUTE ARRANGEMENT,ERC,2025-08-28,2025-09-26,,,,1.9.7.3.4.1( Mills/Feeders)
3213,Erection: FEED PIPE TO MILL,ERC,2025-08-28,2025-09-26,,,,1.9.7.3.4.1( Mills/Feeders)
3214,APH,OTH,2022-12-26,2026-01-01,,,,1.9(Boiler & Auxiliaries)
3215,Supply,SUP,2022-12-26,2024-11-04,,,,1.9.8(APH)
3216,BHEL RPT,SUP,2022-12-26,2024-11-04,,,PG52,1.9.8.1(Supply)
3217,LARG AH-ROTORHOUSING(PGMA-52030),SUP,2022-12-26,2023-05-04,,,52030,1.9.8.1.1(BHEL RPT)
3218,Engineering,ENG,2022-12-26,2023-01-24,,,52030,1.9.8.1.1.1(LARG AH-ROTORHOUSING(PGMA-52030))
3219,Manufacturing ,MFG,2023-01-25,2023-03-05,,,52030,1.9.8.1.1.1(LARG AH-ROTORHOUSING(PGMA-52030))
3220,Dispatch,DIS,2023-03-06,2023-05-04,,,52030,1.9.8.1.1.1(LARG AH-ROTORHOUSING(PGMA-52030))
3221,COLD END CONN PLATE(PGMA-52042),SUP,2022-12-26,2023-05-14,,,52042,1.9.8.1.1(BHEL RPT)
3222,Engineering,ENG,2022-12-26,2023-01-24,,,52042,1.9.8.1.1.2(COLD END CONN PLATE(PGMA-52042))
3223,Manufacturing ,MFG,2023-01-25,2023-03-05,,,52042,1.9.8.1.1.2(COLD END CONN PLATE(PGMA-52042))
3224,Dispatch,DIS,2023-03-06,2023-05-14,,,52042,1.9.8.1.1.2(COLD END CONN PLATE(PGMA-52042))
3225,HOT END CONN PLATE(PGMA-52041),SUP,2022-12-26,2023-06-13,,,52041,1.9.8.1.1(BHEL RPT)
3226,Engineering,ENG,2022-12-26,2023-01-24,,,52041,1.9.8.1.1.3(HOT END CONN PLATE(PGMA-52041))
3227,Manufacturing ,MFG,2023-01-25,2023-03-25,,,52041,1.9.8.1.1.3(HOT END CONN PLATE(PGMA-52041))
3228,Dispatch,DIS,2023-03-26,2023-06-13,,,52041,1.9.8.1.1.3(HOT END CONN PLATE(PGMA-52041))
3229,LARG AH-SUPRT BEARNG(PGMA-52262),SUP,2023-01-15,2023-07-13,,,52262,1.9.8.1.1(BHEL RPT)
3230,Engineering,ENG,2023-01-15,2023-02-13,,,52262,1.9.8.1.1.4(LARG AH-SUPRT BEARNG(PGMA-52262))
3231,Manufacturing ,MFG,2023-02-14,2023-04-14,,,52262,1.9.8.1.1.4(LARG AH-SUPRT BEARNG(PGMA-52262))
3232,Dispatch,DIS,2023-04-15,2023-07-13,,,52262,1.9.8.1.1.4(LARG AH-SUPRT BEARNG(PGMA-52262))
3233,LARG AH-GUIDE BEARNG(PGMA-52261),SUP,2023-01-15,2023-07-13,,,52261,1.9.8.1.1(BHEL RPT)
3234,Engineering,ENG,2023-01-15,2023-02-13,,,52261,1.9.8.1.1.5(LARG AH-GUIDE BEARNG(PGMA-52261))
3235,Manufacturing ,MFG,2023-02-14,2023-04-14,,,52261,1.9.8.1.1.5(LARG AH-GUIDE BEARNG(PGMA-52261))
3236,Dispatch,DIS,2023-04-15,2023-07-13,,,52261,1.9.8.1.1.5(LARG AH-GUIDE BEARNG(PGMA-52261))
3237,LARG AH-ROTOR POST(PGMA-52011),SUP,2023-01-15,2023-08-12,,,52011,1.9.8.1.1(BHEL RPT)
3238,Engineering,ENG,2023-01-15,2023-02-13,,,52011,1.9.8.1.1.6(LARG AH-ROTOR POST(PGMA-52011))
3239,Manufacturing ,MFG,2023-02-14,2023-04-24,,,52011,1.9.8.1.1.6(LARG AH-ROTOR POST(PGMA-52011))
3240,Dispatch,DIS,2023-04-25,2023-08-12,,,52011,1.9.8.1.1.6(LARG AH-ROTOR POST(PGMA-52011))
3241,LARG AH-ROTOR ASSY(PGMA-52010),SUP,2023-01-15,2023-08-12,,,52010,1.9.8.1.1(BHEL RPT)
3242,Engineering,ENG,2023-01-15,2023-02-13,,,52010,1.9.8.1.1.7(LARG AH-ROTOR ASSY(PGMA-52010))
3243,Manufacturing ,MFG,2023-02-14,2023-04-24,,,52010,1.9.8.1.1.7(LARG AH-ROTOR ASSY(PGMA-52010))
3244,Dispatch,DIS,2023-04-25,2023-08-12,,,52010,1.9.8.1.1.7(LARG AH-ROTOR ASSY(PGMA-52010))
3245,LARG AH-ROTORPINRACK(PGMA-52012),SUP,2023-02-04,2023-09-11,,,52012,1.9.8.1.1(BHEL RPT)
3246,Engineering,ENG,2023-02-04,2023-03-05,,,52012,1.9.8.1.1.8(LARG AH-ROTORPINRACK(PGMA-52012))
3247,Manufacturing ,MFG,2023-03-06,2023-05-24,,,52012,1.9.8.1.1.8(LARG AH-ROTORPINRACK(PGMA-52012))
3248,Dispatch,DIS,2023-05-25,2023-09-11,,,52012,1.9.8.1.1.8(LARG AH-ROTORPINRACK(PGMA-52012))
3249,SPECIAL TOOLS/CONTRA(PGMA-52000),SUP,2023-02-04,2023-10-11,,,52000,1.9.8.1.1(BHEL RPT)
3250,Engineering,ENG,2023-02-04,2023-03-05,,,52000,1.9.8.1.1.9(SPECIAL TOOLS/CONTRA(PGMA-52000))
3251,Manufacturing ,MFG,2023-03-06,2023-06-13,,,52000,1.9.8.1.1.9(SPECIAL TOOLS/CONTRA(PGMA-52000))
3252,Dispatch,DIS,2023-06-14,2023-10-11,,,52000,1.9.8.1.1.9(SPECIAL TOOLS/CONTRA(PGMA-52000))
3253,LARGE AH ROTOR DRIVE(PGMA-52100),SUP,2023-02-04,2023-10-11,,,52100,1.9.8.1.1(BHEL RPT)
3254,Engineering,ENG,2023-02-04,2023-03-05,,,52100,1.9.8.1.1.10(LARGE AH ROTOR DRIVE(PGMA-52100))
3255,Manufacturing ,MFG,2023-03-06,2023-06-13,,,52100,1.9.8.1.1.10(LARGE AH ROTOR DRIVE(PGMA-52100))
3256,Dispatch,DIS,2023-06-14,2023-10-11,,,52100,1.9.8.1.1.10(LARGE AH ROTOR DRIVE(PGMA-52100))
3257,LARG AH-AUX ROTDRIVE(PGMA-52101),SUP,2023-06-24,2023-12-10,,,52101,1.9.8.1.1(BHEL RPT)
3258,Engineering,ENG,2023-06-24,2023-07-23,,,52101,1.9.8.1.1.11(LARG AH-AUX ROTDRIVE(PGMA-52101))
3259,Manufacturing ,MFG,2023-07-24,2023-10-21,,,52101,1.9.8.1.1.11(LARG AH-AUX ROTDRIVE(PGMA-52101))
3260,Dispatch,DIS,2023-10-22,2023-12-10,,,52101,1.9.8.1.1.11(LARG AH-AUX ROTDRIVE(PGMA-52101))
3261,LARG AH-AXIAL SEAL(PGMA-52054),SUP,2023-02-24,2023-11-10,,,52054,1.9.8.1.1(BHEL RPT)
3262,Engineering,ENG,2023-02-24,2023-03-25,,,52054,1.9.8.1.1.12(LARG AH-AXIAL SEAL(PGMA-52054))
3263,Manufacturing ,MFG,2023-03-26,2023-07-03,,,52054,1.9.8.1.1.12(LARG AH-AXIAL SEAL(PGMA-52054))
3264,Dispatch,DIS,2023-07-04,2023-11-10,,,52054,1.9.8.1.1.12(LARG AH-AXIAL SEAL(PGMA-52054))
3265,LARG AH-BY PASS SEAL(PGMA-52055),SUP,2023-02-24,2023-11-10,,,52055,1.9.8.1.1(BHEL RPT)
3266,Engineering,ENG,2023-02-24,2023-03-25,,,52055,1.9.8.1.1.13(LARG AH-BY PASS SEAL(PGMA-52055))
3267,Manufacturing ,MFG,2023-03-26,2023-07-03,,,52055,1.9.8.1.1.13(LARG AH-BY PASS SEAL(PGMA-52055))
3268,Dispatch,DIS,2023-07-04,2023-11-10,,,52055,1.9.8.1.1.13(LARG AH-BY PASS SEAL(PGMA-52055))
3269,LARG AH-ROTORSEALS(PGMA-52013),SUP,2023-06-04,2024-02-08,,,52013,1.9.8.1.1(BHEL RPT)
3270,Engineering,ENG,2023-06-04,2023-07-03,,,52013,1.9.8.1.1.14(LARG AH-ROTORSEALS(PGMA-52013))
3271,Manufacturing ,MFG,2023-07-04,2023-10-11,,,52013,1.9.8.1.1.14(LARG AH-ROTORSEALS(PGMA-52013))
3272,Dispatch,DIS,2023-10-12,2024-02-08,,,52013,1.9.8.1.1.14(LARG AH-ROTORSEALS(PGMA-52013))
3273,OIL PIPING GUIDE BRG(PGMA-52271),SUP,2023-08-13,2024-04-08,,,52271,1.9.8.1.1(BHEL RPT)
3274,Engineering,ENG,2023-08-13,2023-09-11,,,52271,1.9.8.1.1.15(OIL PIPING GUIDE BRG(PGMA-52271))
3275,Manufacturing ,MFG,2023-09-12,2023-12-20,,,52271,1.9.8.1.1.15(OIL PIPING GUIDE BRG(PGMA-52271))
3276,Dispatch,DIS,2023-12-21,2024-04-08,,,52271,1.9.8.1.1.15(OIL PIPING GUIDE BRG(PGMA-52271))
3277,OIL PIPING SUPRT BRG(PGMA-52272),SUP,2023-08-13,2024-04-08,,,52272,1.9.8.1.1(BHEL RPT)
3278,Engineering,ENG,2023-08-13,2023-09-11,,,52272,1.9.8.1.1.16(OIL PIPING SUPRT BRG(PGMA-52272))
3279,Manufacturing ,MFG,2023-09-12,2023-12-20,,,52272,1.9.8.1.1.16(OIL PIPING SUPRT BRG(PGMA-52272))
3280,Dispatch,DIS,2023-12-21,2024-04-08,,,52272,1.9.8.1.1.16(OIL PIPING SUPRT BRG(PGMA-52272))
3281,LARG AH-GENS DETAILS(PGMA-52220),SUP,2023-10-02,2024-07-07,,,52220,1.9.8.1.1(BHEL RPT)
3282,Engineering,ENG,2023-10-02,2023-10-31,,,52220,1.9.8.1.1.17(LARG AH-GENS DETAILS(PGMA-52220))
3283,Manufacturing ,MFG,2023-11-01,2024-02-08,,,52220,1.9.8.1.1.17(LARG AH-GENS DETAILS(PGMA-52220))
3284,Dispatch,DIS,2024-02-09,2024-07-07,,,52220,1.9.8.1.1.17(LARG AH-GENS DETAILS(PGMA-52220))
3285,LUB OIL CIRCULATION UN(PGMA-52274),SUP,2023-11-21,2024-08-06,,,52274,1.9.8.1.1(BHEL RPT)
3286,Engineering,ENG,2023-11-21,2023-12-20,,,52274,1.9.8.1.1.18(LUB OIL CIRCULATION UN(PGMA-52274))
3287,Manufacturing ,MFG,2023-12-21,2024-03-29,,,52274,1.9.8.1.1.18(LUB OIL CIRCULATION UN(PGMA-52274))
3288,Dispatch,DIS,2024-03-30,2024-08-06,,,52274,1.9.8.1.1.18(LUB OIL CIRCULATION UN(PGMA-52274))
3289,LARGE AIR HEATER-LUBRI(PGMA-52275),SUP,2023-11-21,2024-08-06,,,52275,1.9.8.1.1(BHEL RPT)
3290,Engineering,ENG,2023-11-21,2023-12-20,,,52275,1.9.8.1.1.19(LARGE AIR HEATER-LUBRI(PGMA-52275))
3291,Manufacturing ,MFG,2023-12-21,2024-03-29,,,52275,1.9.8.1.1.19(LARGE AIR HEATER-LUBRI(PGMA-52275))
3292,Dispatch,DIS,2024-03-30,2024-08-06,,,52275,1.9.8.1.1.19(LARGE AIR HEATER-LUBRI(PGMA-52275))
3293,LARG AH-AIRSEAL PIPE(PGMA-52211),SUP,2023-11-21,2024-08-06,,,52211,1.9.8.1.1(BHEL RPT)
3294,Engineering,ENG,2023-11-21,2023-12-20,,,52211,1.9.8.1.1.20(LARG AH-AIRSEAL PIPE(PGMA-52211))
3295,Manufacturing ,MFG,2023-12-21,2024-03-29,,,52211,1.9.8.1.1.20(LARG AH-AIRSEAL PIPE(PGMA-52211))
3296,Dispatch,DIS,2024-03-30,2024-08-06,,,52211,1.9.8.1.1.20(LARG AH-AIRSEAL PIPE(PGMA-52211))
3297,WASH MANIFLD GAS INL(PGMA-52301),SUP,2024-01-10,2024-09-05,,,52301,1.9.8.1.1(BHEL RPT)
3298,Engineering,ENG,2024-01-10,2024-02-08,,,52301,1.9.8.1.1.21(WASH MANIFLD GAS INL(PGMA-52301))
3299,Manufacturing ,MFG,2024-02-09,2024-05-18,,,52301,1.9.8.1.1.21(WASH MANIFLD GAS INL(PGMA-52301))
3300,Dispatch,DIS,2024-05-19,2024-09-05,,,52301,1.9.8.1.1.21(WASH MANIFLD GAS INL(PGMA-52301))
3301,WASH MANIFLD GAS OUT(PGMA-52302),SUP,2024-01-10,2024-09-05,,,52302,1.9.8.1.1(BHEL RPT)
3302,Engineering,ENG,2024-01-10,2024-02-08,,,52302,1.9.8.1.1.22(WASH MANIFLD GAS OUT(PGMA-52302))
3303,Manufacturing ,MFG,2024-02-09,2024-05-18,,,52302,1.9.8.1.1.22(WASH MANIFLD GAS OUT(PGMA-52302))
3304,Dispatch,DIS,2024-05-19,2024-09-05,,,52302,1.9.8.1.1.22(WASH MANIFLD GAS OUT(PGMA-52302))
3305,CLEANING DEVICE ?RETRACT TYPE (PGMA-52338),SUP,2024-01-10,2024-09-05,,,52338,1.9.8.1.1(BHEL RPT)
3306,Engineering,ENG,2024-01-10,2024-02-08,,,52338,1.9.8.1.1.23(CLEANING DEVICE ?RETRACT TYPE (PGMA-52338))
3307,Manufacturing ,MFG,2024-02-09,2024-05-18,,,52338,1.9.8.1.1.23(CLEANING DEVICE ?RETRACT TYPE (PGMA-52338))
3308,Dispatch,DIS,2024-05-19,2024-09-05,,,52338,1.9.8.1.1.23(CLEANING DEVICE ?RETRACT TYPE (PGMA-52338))
3309,LARGE AH-RETRACT CLNG DEVICE (HE)(PGMA-52339),SUP,2024-01-10,2024-09-05,,,,1.9.8.1.1(BHEL RPT)
3310,Engineering,ENG,2024-01-10,2024-02-08,,,52339,1.9.8.1.1.24(LARGE AH-RETRACT CLNG DEVICE (HE)(PGMA-52339))
3311,Manufacturing ,MFG,2024-02-09,2024-05-18,,,52339,1.9.8.1.1.24(LARGE AH-RETRACT CLNG DEVICE (HE)(PGMA-52339))
3312,Dispatch,DIS,2024-05-19,2024-09-05,,,52339,1.9.8.1.1.24(LARGE AH-RETRACT CLNG DEVICE (HE)(PGMA-52339))
3313,"LARGE AH E,C&I COMPONENETS(PGMA-52600)",SUP,2024-02-29,2024-11-04,,,52600,1.9.8.1.1(BHEL RPT)
3314,Engineering,ENG,2024-02-29,2024-03-29,,,52600,"1.9.8.1.1.25(LARGE AH E,C&I COMPONENETS(PGMA-52600))"
3315,Manufacturing ,MFG,2024-03-30,2024-07-07,,,52600,"1.9.8.1.1.25(LARGE AH E,C&I COMPONENETS(PGMA-52600))"
3316,Dispatch,DIS,2024-07-08,2024-11-04,,,52600,"1.9.8.1.1.25(LARGE AH E,C&I COMPONENETS(PGMA-52600))"
3317,LARG AH COMMISSIONING SPARES (PGMA-52988),SUP,2024-02-29,2024-11-04,,,52988,1.9.8.1.1(BHEL RPT)
3318,Engineering,ENG,2024-02-29,2024-03-29,,,52988,1.9.8.1.1.26(LARG AH COMMISSIONING SPARES (PGMA-52988))
3319,Manufacturing ,MFG,2024-03-30,2024-07-07,,,52988,1.9.8.1.1.26(LARG AH COMMISSIONING SPARES (PGMA-52988))
3320,Dispatch,DIS,2024-07-08,2024-11-04,,,52988,1.9.8.1.1.26(LARG AH COMMISSIONING SPARES (PGMA-52988))
3321,STEAM COIL APH (PGMA-50510)- BOI,SUP,2023-07-24,2024-07-17,,,50510,1.9.8.1.1(BHEL RPT)
3322,Engineering & Ordering,ENG,2023-07-24,2023-12-20,,,50510,1.9.8.1.1.27(STEAM COIL APH (PGMA-50510)- BOI)
3323,Manufacturing ,MFG,2023-12-21,2024-05-18,,,50510,1.9.8.1.1.27(STEAM COIL APH (PGMA-50510)- BOI)
3324,Dispatch,DIS,2024-05-19,2024-07-17,,,50510,1.9.8.1.1.27(STEAM COIL APH (PGMA-50510)- BOI)
3325,Erection,ERC,2025-05-21,2026-01-01,,,,1.9.8(APH)
3326, First APH,ERC,2025-05-21,2025-11-13,,,,1.9.8.2(Erection)
3327,Preparatory works,ERC,2025-05-21,2025-05-27,,,,1.9.8.2.1( First APH)
3328,Main pedestal Erection,ERC,2025-05-28,2025-06-04,,,,1.9.8.2.1( First APH)
3329,Erection of Connecting plates cold & hot end and rotor ASSY,ERC,2025-06-05,2025-06-24,,,,1.9.8.2.1( First APH)
3330,Guide bearings and side panels erection,ERC,2025-06-25,2025-07-16,,,,1.9.8.2.1( First APH)
3331,Erection of Module,ERC,2025-07-17,2025-07-31,,,,1.9.8.2.1( First APH)
3332,"Erection of Rotor drive ASSY-Spacer bar, pin rack and T bar",ERC,2025-08-01,2025-09-09,,,,1.9.8.2.1( First APH)
3333,Seal setting - Axial and radial,OTH,2025-09-10,2025-10-09,,,,1.9.8.2.1( First APH)
3334,Erection of Lube oil system,ERC,2025-10-10,2025-10-29,,,,1.9.8.2.1( First APH)
3335,"Erection of Support systems cleaning device, sensors, alarms etc",ERC,2025-10-30,2025-11-13,,,,1.9.8.2.1( First APH)
3336, Second APH,ERC,2025-06-27,2026-01-01,,,,1.9.8.2(Erection)
3337,Preparatory works,ERC,2025-06-27,2025-07-03,,,,1.9.8.2.2( Second APH)
3338,Main ASSY,ERC,2025-07-04,2025-07-11,,,,1.9.8.2.2( Second APH)
3339,Erection of Connecting plates cold & hot end and rotor ASSY,ERC,2025-07-12,2025-07-31,,,,1.9.8.2.2( Second APH)
3340,Guide bearings and side ASSY,ERC,2025-08-01,2025-08-22,,,,1.9.8.2.2( Second APH)
3341,Erection of Module,ERC,2025-08-23,2025-09-06,,,,1.9.8.2.2( Second APH)
3342,"Erection of Rotor drive ASSY-Spacer bar, pin rack and T bar",ERC,2025-09-07,2025-10-21,,,,1.9.8.2.2( Second APH)
3343,Seal setting - Axial and radial,ERC,2025-10-22,2025-11-25,,,,1.9.8.2.2( Second APH)
3344,Erection of Lube oil system,ERC,2025-11-26,2025-12-17,,,,1.9.8.2.2( Second APH)
3345,"Erection of Support systems cleaning device, sensors, alarms etc",ERC,2025-12-18,2026-01-01,,,,1.9.8.2.2( Second APH)
3346,Various Fans,CIV,2023-01-15,2026-04-30,,,,1.9(Boiler & Auxiliaries)
3347, Rel of DWG for FD Fan,PE - RFC,2023-10-31,2023-10-31,,,PCE-00410,1.9.9(Various Fans)
3348, Rel of DWG for ID Fan,PE - RFC,2023-11-10,2023-11-10,,,PCE-00420,1.9.9(Various Fans)
3349, Rel of DWG for PA Fan,PE - RFC,2023-07-23,2023-07-23,,,PCE-00430,1.9.9(Various Fans)
3350, Rel of DWG for SA Fan,PE - RFC,2023-10-31,2023-10-31,,,PCE-00440,1.9.9(Various Fans)
3351,Civil Work,CIV,2023-08-13,2025-07-27,,,,1.9.9(Various Fans)
3352,First ID Fan foundations,CIV,2024-01-03,2024-05-27,,,,1.9.9.5(Civil Work)
3353,Excavation,CIV,2024-01-03,2024-01-18,,,,1.9.9.5.1(First ID Fan foundations)
3354,RCC Bottom Raft including PCC,CIV,2024-01-19,2024-02-12,,,,1.9.9.5.1(First ID Fan foundations)
3355,RCC wall,CIV,2024-02-13,2024-03-18,,,,1.9.9.5.1(First ID Fan foundations)
3356,RCC Top Deck,CIV,2024-03-19,2024-05-02,,,,1.9.9.5.1(First ID Fan foundations)
3357,Backfilling,CIV,2024-05-03,2024-05-17,,,,1.9.9.5.1(First ID Fan foundations)
3358,Finishing Work,CIV,2024-05-18,2024-05-27,,,,1.9.9.5.1(First ID Fan foundations)
3359,Second ID Fan foundation,CIV,2024-01-30,2024-06-27,,,,1.9.9.5(Civil Work)
3360,Excavation,CIV,2024-01-30,2024-02-13,,,,1.9.9.5.2(Second ID Fan foundation)
3361,RCC Bottom Raft including PCC,CIV,2024-02-14,2024-03-09,,,,1.9.9.5.2(Second ID Fan foundation)
3362,RCC wall,CIV,2024-03-10,2024-04-13,,,,1.9.9.5.2(Second ID Fan foundation)
3363,RCC Top Deck,CIV,2024-04-14,2024-05-28,,,,1.9.9.5.2(Second ID Fan foundation)
3364,Backfilling,CIV,2024-05-29,2024-06-12,,,,1.9.9.5.2(Second ID Fan foundation)
3365,Finishing Work,CIV,2024-06-13,2024-06-27,,,,1.9.9.5.2(Second ID Fan foundation)
3366,First FD Fan Foundation,CIV,2023-11-21,2024-10-20,,,,1.9.9.5(Civil Work)
3367,Excavation,CIV,2023-11-21,2023-12-05,,,,1.9.9.5.3(First FD Fan Foundation)
3368,RCC bottom Raft including PCC,CIV,2023-12-06,2023-12-30,,,,1.9.9.5.3(First FD Fan Foundation)
3369,RCC Top Deck,CIV,2024-08-09,2024-10-02,,,,1.9.9.5.3(First FD Fan Foundation)
3370,Backfilling,CIV,2024-10-03,2024-10-12,,,,1.9.9.5.3(First FD Fan Foundation)
3371,Finishing Work,CIV,2024-10-13,2024-10-20,,,,1.9.9.5.3(First FD Fan Foundation)
3372,Second FD Fan Foundation,CIV,2023-12-26,2025-07-09,,,,1.9.9.5(Civil Work)
3373,Excavation,CIV,2023-12-26,2024-01-09,,,,1.9.9.5.4(Second FD Fan Foundation)
3374,RCC bottom Raft including PCC,CIV,2024-01-10,2024-02-03,,,,1.9.9.5.4(Second FD Fan Foundation)
3375,RCC Top Deck,CIV,2025-05-07,2025-06-25,,,,1.9.9.5.4(Second FD Fan Foundation)
3376,Backfilling,CIV,2025-06-26,2025-07-04,,,,1.9.9.5.4(Second FD Fan Foundation)
3377,Finishing Work,CIV,2025-07-05,2025-07-09,,,,1.9.9.5.4(Second FD Fan Foundation)
3378,First PA Fan Foundation,CIV,2023-08-13,2024-11-19,,,,1.9.9.5(Civil Work)
3379,Excavation,CIV,2023-08-13,2023-08-27,,,,1.9.9.5.5(First PA Fan Foundation)
3380,RCC bottom Raft including PCC,CIV,2023-08-28,2023-09-21,,,,1.9.9.5.5(First PA Fan Foundation)
3381,RCC Top Deck,CIV,2024-08-27,2024-10-30,,,,1.9.9.5.5(First PA Fan Foundation)
3382,Backfilling,CIV,2024-10-31,2024-11-10,,,,1.9.9.5.5(First PA Fan Foundation)
3383,Finishing Work,CIV,2024-11-11,2024-11-19,,,,1.9.9.5.5(First PA Fan Foundation)
3384,Second PA Fan Foundation,CIV,2023-09-17,2025-07-27,,,,1.9.9.5(Civil Work)
3385,Excavation,CIV,2023-09-17,2023-10-01,,,,1.9.9.5.6(Second PA Fan Foundation)
3386,RCC bottom Raft including PCC,CIV,2023-10-02,2023-10-26,,,,1.9.9.5.6(Second PA Fan Foundation)
3387,RCC Top Deck,CIV,2025-05-04,2025-07-07,,,,1.9.9.5.6(Second PA Fan Foundation)
3388,Backfilling,CIV,2025-07-08,2025-07-18,,,,1.9.9.5.6(Second PA Fan Foundation)
3389,Finishing Work,CIV,2025-07-19,2025-07-27,,,,1.9.9.5.6(Second PA Fan Foundation)
3390,SA fan Foundation,CIV,2025-05-04,2025-07-09,,,,1.9.9.5(Civil Work)
3391,Excavation,CIV,2025-05-04,2025-05-11,,,,1.9.9.5.7(SA fan Foundation)
3392,RCC bottom Raft including PCC,CIV,2025-05-12,2025-05-26,,,,1.9.9.5.7(SA fan Foundation)
3393,RCC Top Deck,CIV,2025-05-27,2025-06-28,,,,1.9.9.5.7(SA fan Foundation)
3394,Backfilling,CIV,2025-06-29,2025-07-05,,,,1.9.9.5.7(SA fan Foundation)
3395,Finishing Work,CIV,2025-07-06,2025-07-09,,,,1.9.9.5.7(SA fan Foundation)
3396,Supply,SUP,2023-01-15,2025-04-22,,,,1.9.9(Various Fans)
3397,Fans (PG - 55 & 56) - BHEL BAP,SUP,2023-01-15,2024-12-24,,,PG55/56,1.9.9.6(Supply)
3398,AXL IDFAN FDN MATL(PGMA-55021),SUP,2023-01-15,2023-08-12,,,55021,1.9.9.6.1(Fans (PG - 55 & 56) - BHEL BAP)
3399,Engineering,ENG,2023-01-15,2023-02-13,,,55021,1.9.9.6.1.1(AXL IDFAN FDN MATL(PGMA-55021))
3400,Manufacturing ,MFG,2023-02-14,2023-04-24,,,55021,1.9.9.6.1.1(AXL IDFAN FDN MATL(PGMA-55021))
3401,Dispatch,DIS,2023-04-25,2023-08-12,,,55021,1.9.9.6.1.1(AXL IDFAN FDN MATL(PGMA-55021))
3402, FD FAN FOUNDATION MATL(PGMA-55011),SUP,2023-02-04,2023-09-11,,,55011,1.9.9.6.1(Fans (PG - 55 & 56) - BHEL BAP)
3403,Engineering,ENG,2023-02-04,2023-03-05,,,55011,1.9.9.6.1.2( FD FAN FOUNDATION MATL(PGMA-55011))
3404,Manufacturing ,MFG,2023-03-06,2023-05-24,,,55011,1.9.9.6.1.2( FD FAN FOUNDATION MATL(PGMA-55011))
3405,Dispatch,DIS,2023-05-25,2023-09-11,,,55011,1.9.9.6.1.2( FD FAN FOUNDATION MATL(PGMA-55011))
3406,PA FAN FOUNDATION MATL(PGMA-55031),SUP,2023-06-04,2024-02-08,,,55031,1.9.9.6.1(Fans (PG - 55 & 56) - BHEL BAP)
3407,Engineering,ENG,2023-06-04,2023-07-03,,,55031,1.9.9.6.1.3(PA FAN FOUNDATION MATL(PGMA-55031))
3408,Manufacturing ,MFG,2023-07-04,2023-10-11,,,55031,1.9.9.6.1.3(PA FAN FOUNDATION MATL(PGMA-55031))
3409,Dispatch,DIS,2023-10-12,2024-02-08,,,55031,1.9.9.6.1.3(PA FAN FOUNDATION MATL(PGMA-55031))
3410,AXIAL IDFAN COUPLING(PGMA-55820),SUP,2023-11-21,2024-08-06,,,55820,1.9.9.6.1(Fans (PG - 55 & 56) - BHEL BAP)
3411,Engineering,ENG,2023-11-21,2023-12-20,,,55820,1.9.9.6.1.4(AXIAL IDFAN COUPLING(PGMA-55820))
3412,Manufacturing ,MFG,2023-12-21,2024-03-29,,,55820,1.9.9.6.1.4(AXIAL IDFAN COUPLING(PGMA-55820))
3413,Dispatch,DIS,2024-03-30,2024-08-06,,,55820,1.9.9.6.1.4(AXIAL IDFAN COUPLING(PGMA-55820))
3414,1 STG ID rotor(PGMA-55216),SUP,2023-11-21,2024-08-06,,,55216,1.9.9.6.1(Fans (PG - 55 & 56) - BHEL BAP)
3415,Engineering,ENG,2023-11-21,2023-12-20,,,55216,1.9.9.6.1.5(1 STG ID rotor(PGMA-55216))
3416,Manufacturing ,MFG,2023-12-21,2024-03-29,,,55216,1.9.9.6.1.5(1 STG ID rotor(PGMA-55216))
3417,Dispatch,DIS,2024-03-30,2024-08-06,,,55216,1.9.9.6.1.5(1 STG ID rotor(PGMA-55216))
3418,2 STG ID ROTOR(PGMA-55327),SUP,2024-01-10,2024-09-05,,,55327,1.9.9.6.1(Fans (PG - 55 & 56) - BHEL BAP)
3419,Engineering,ENG,2024-01-10,2024-02-08,,,55327,1.9.9.6.1.6(2 STG ID ROTOR(PGMA-55327))
3420,Manufacturing ,MFG,2024-02-09,2024-05-18,,,55327,1.9.9.6.1.6(2 STG ID ROTOR(PGMA-55327))
3421,Dispatch,DIS,2024-05-19,2024-09-05,,,55327,1.9.9.6.1.6(2 STG ID ROTOR(PGMA-55327))
3422,SECOND STAGE ID HOUSING(PGMA-55627),SUP,2024-01-10,2024-09-05,,,55627,1.9.9.6.1(Fans (PG - 55 & 56) - BHEL BAP)
3423,Engineering,ENG,2024-01-10,2024-02-08,,,55627,1.9.9.6.1.7(SECOND STAGE ID HOUSING(PGMA-55627))
3424,Manufacturing ,MFG,2024-02-09,2024-05-18,,,55627,1.9.9.6.1.7(SECOND STAGE ID HOUSING(PGMA-55627))
3425,Dispatch,DIS,2024-05-19,2024-09-05,,,55627,1.9.9.6.1.7(SECOND STAGE ID HOUSING(PGMA-55627))
3426,ID SEALING/COOLING FAN(PGMA-55024),SUP,2024-02-29,2024-10-05,,,55024,1.9.9.6.1(Fans (PG - 55 & 56) - BHEL BAP)
3427,Engineering,ENG,2024-02-29,2024-03-29,,,55024,1.9.9.6.1.8(ID SEALING/COOLING FAN(PGMA-55024))
3428,Manufacturing ,MFG,2024-03-30,2024-07-07,,,55024,1.9.9.6.1.8(ID SEALING/COOLING FAN(PGMA-55024))
3429,Dispatch,DIS,2024-07-08,2024-10-05,,,55024,1.9.9.6.1.8(ID SEALING/COOLING FAN(PGMA-55024))
3430,AXIAL FDFAN COUPLING(PGMA-55810),SUP,2024-02-29,2024-10-05,,,55810,1.9.9.6.1(Fans (PG - 55 & 56) - BHEL BAP)
3431,Engineering,ENG,2024-02-29,2024-03-29,,,55810,1.9.9.6.1.9(AXIAL FDFAN COUPLING(PGMA-55810))
3432,Manufacturing ,MFG,2024-03-30,2024-07-07,,,55810,1.9.9.6.1.9(AXIAL FDFAN COUPLING(PGMA-55810))
3433,Dispatch,DIS,2024-07-08,2024-10-05,,,55810,1.9.9.6.1.9(AXIAL FDFAN COUPLING(PGMA-55810))
3434,1 STG FD HOUSING (PGMA 55516),SUP,2024-02-29,2024-10-05,,,55516,1.9.9.6.1(Fans (PG - 55 & 56) - BHEL BAP)
3435,Engineering,ENG,2024-02-29,2024-03-29,,,55516,1.9.9.6.1.10(1 STG FD HOUSING (PGMA 55516))
3436,Manufacturing ,MFG,2024-03-30,2024-07-07,,,55516,1.9.9.6.1.10(1 STG FD HOUSING (PGMA 55516))
3437,Dispatch,DIS,2024-07-08,2024-10-05,,,55516,1.9.9.6.1.10(1 STG FD HOUSING (PGMA 55516))
3438,FD FAN INSUL WOOL (PGMA 55919),SUP,2024-05-19,2024-12-24,,,55919,1.9.9.6.1(Fans (PG - 55 & 56) - BHEL BAP)
3439,Engineering,ENG,2024-05-19,2024-06-17,,,55919,1.9.9.6.1.11(FD FAN INSUL WOOL (PGMA 55919))
3440,Manufacturing ,MFG,2024-06-18,2024-09-25,,,55919,1.9.9.6.1.11(FD FAN INSUL WOOL (PGMA 55919))
3441,Dispatch,DIS,2024-09-26,2024-12-24,,,55919,1.9.9.6.1.11(FD FAN INSUL WOOL (PGMA 55919))
3442,FD FAN COUPLING GUARD (PGMA 55015),SUP,2024-02-29,2024-10-05,,,55015,1.9.9.6.1(Fans (PG - 55 & 56) - BHEL BAP)
3443,Engineering,ENG,2024-02-29,2024-03-29,,,55015,1.9.9.6.1.12(FD FAN COUPLING GUARD (PGMA 55015))
3444,Manufacturing ,MFG,2024-03-30,2024-07-07,,,55015,1.9.9.6.1.12(FD FAN COUPLING GUARD (PGMA 55015))
3445,Dispatch,DIS,2024-07-08,2024-10-05,,,55015,1.9.9.6.1.12(FD FAN COUPLING GUARD (PGMA 55015))
3446,FD SET & INDN SHAFT (PGMA 55410),SUP,2024-02-29,2024-10-05,,,55410,1.9.9.6.1(Fans (PG - 55 & 56) - BHEL BAP)
3447,Engineering,ENG,2024-02-29,2024-03-29,,,55410,1.9.9.6.1.13(FD SET & INDN SHAFT (PGMA 55410))
3448,Manufacturing ,MFG,2024-03-30,2024-07-07,,,55410,1.9.9.6.1.13(FD SET & INDN SHAFT (PGMA 55410))
3449,Dispatch,DIS,2024-07-08,2024-10-05,,,55410,1.9.9.6.1.13(FD SET & INDN SHAFT (PGMA 55410))
3450,FD FAN EXPN JOINTS (PGMA 55510),SUP,2024-02-29,2024-10-05,,,55510,1.9.9.6.1(Fans (PG - 55 & 56) - BHEL BAP)
3451,Engineering,ENG,2024-02-29,2024-03-29,,,55510,1.9.9.6.1.14(FD FAN EXPN JOINTS (PGMA 55510))
3452,Manufacturing ,MFG,2024-03-30,2024-07-07,,,55510,1.9.9.6.1.14(FD FAN EXPN JOINTS (PGMA 55510))
3453,Dispatch,DIS,2024-07-08,2024-10-05,,,55510,1.9.9.6.1.14(FD FAN EXPN JOINTS (PGMA 55510))
3454,FD FAN DIFFUSER (PGMA 55816),SUP,2024-02-29,2024-10-05,,,55816,1.9.9.6.1(Fans (PG - 55 & 56) - BHEL BAP)
3455,Engineering,ENG,2024-02-29,2024-03-29,,,55816,1.9.9.6.1.15(FD FAN DIFFUSER (PGMA 55816))
3456,Manufacturing ,MFG,2024-03-30,2024-07-07,,,55816,1.9.9.6.1.15(FD FAN DIFFUSER (PGMA 55816))
3457,Dispatch,DIS,2024-07-08,2024-10-05,,,55816,1.9.9.6.1.15(FD FAN DIFFUSER (PGMA 55816))
3458,FD FAN SUCTION BOX (PGMA 55716),SUP,2024-02-29,2024-10-05,,,55716,1.9.9.6.1(Fans (PG - 55 & 56) - BHEL BAP)
3459,Engineering,ENG,2024-02-29,2024-03-29,,,55716,1.9.9.6.1.16(FD FAN SUCTION BOX (PGMA 55716))
3460,Manufacturing ,MFG,2024-03-30,2024-07-07,,,55716,1.9.9.6.1.16(FD FAN SUCTION BOX (PGMA 55716))
3461,Dispatch,DIS,2024-07-08,2024-10-05,,,55716,1.9.9.6.1.16(FD FAN SUCTION BOX (PGMA 55716))
3462,AXIAL FDFAN SILENCER(PGMA-55911),SUP,2024-02-29,2024-10-05,,,55911,1.9.9.6.1(Fans (PG - 55 & 56) - BHEL BAP)
3463,Engineering,ENG,2024-02-29,2024-03-29,,,55911,1.9.9.6.1.17(AXIAL FDFAN SILENCER(PGMA-55911))
3464,Manufacturing ,MFG,2024-03-30,2024-07-07,,,55911,1.9.9.6.1.17(AXIAL FDFAN SILENCER(PGMA-55911))
3465,Dispatch,DIS,2024-07-08,2024-10-05,,,55911,1.9.9.6.1.17(AXIAL FDFAN SILENCER(PGMA-55911))
3466,ID FAN C&I ITEMS(PGMA-55027),SUP,2024-02-29,2024-11-04,,,55027,1.9.9.6.1(Fans (PG - 55 & 56) - BHEL BAP)
3467,Engineering,ENG,2024-02-29,2024-03-29,,,55027,1.9.9.6.1.18(ID FAN C&I ITEMS(PGMA-55027))
3468,Manufacturing ,MFG,2024-03-30,2024-07-07,,,55027,1.9.9.6.1.18(ID FAN C&I ITEMS(PGMA-55027))
3469,Dispatch,DIS,2024-07-08,2024-11-04,,,55027,1.9.9.6.1.18(ID FAN C&I ITEMS(PGMA-55027))
3470,ID FAN CPLNG GUARD (PGMA 55025),SUP,2024-02-29,2024-11-04,,,55025,1.9.9.6.1(Fans (PG - 55 & 56) - BHEL BAP)
3471,Engineering,ENG,2024-02-29,2024-03-29,,,55025,1.9.9.6.1.19(ID FAN CPLNG GUARD (PGMA 55025))
3472,Manufacturing ,MFG,2024-03-30,2024-07-07,,,55025,1.9.9.6.1.19(ID FAN CPLNG GUARD (PGMA 55025))
3473,Dispatch,DIS,2024-07-08,2024-11-04,,,55025,1.9.9.6.1.19(ID FAN CPLNG GUARD (PGMA 55025))
3474,ID SET & INDN SHAFT (PGMA 55420),SUP,2024-02-29,2024-11-04,,,55420,1.9.9.6.1(Fans (PG - 55 & 56) - BHEL BAP)
3475,Engineering,ENG,2024-02-29,2024-03-29,,,55420,1.9.9.6.1.20(ID SET & INDN SHAFT (PGMA 55420))
3476,Manufacturing ,MFG,2024-03-30,2024-07-07,,,55420,1.9.9.6.1.20(ID SET & INDN SHAFT (PGMA 55420))
3477,Dispatch,DIS,2024-07-08,2024-11-04,,,55420,1.9.9.6.1.20(ID SET & INDN SHAFT (PGMA 55420))
3478,ID FAN EXPN JOINTS (PGMA 55520),SUP,2024-02-29,2024-11-04,,,55520,1.9.9.6.1(Fans (PG - 55 & 56) - BHEL BAP)
3479,Engineering,ENG,2024-02-29,2024-03-29,,,55520,1.9.9.6.1.21(ID FAN EXPN JOINTS (PGMA 55520))
3480,Manufacturing ,MFG,2024-03-30,2024-07-07,,,55520,1.9.9.6.1.21(ID FAN EXPN JOINTS (PGMA 55520))
3481,Dispatch,DIS,2024-07-08,2024-11-04,,,55520,1.9.9.6.1.21(ID FAN EXPN JOINTS (PGMA 55520))
3482,ID FAN DIFFUSER (PGMA 55827),SUP,2024-02-29,2024-11-04,,,55827,1.9.9.6.1(Fans (PG - 55 & 56) - BHEL BAP)
3483,Engineering,ENG,2024-02-29,2024-03-29,,,55827,1.9.9.6.1.22(ID FAN DIFFUSER (PGMA 55827))
3484,Manufacturing ,MFG,2024-03-30,2024-07-07,,,55827,1.9.9.6.1.22(ID FAN DIFFUSER (PGMA 55827))
3485,Dispatch,DIS,2024-07-08,2024-11-04,,,55827,1.9.9.6.1.22(ID FAN DIFFUSER (PGMA 55827))
3486,ID FAN SUCTION BOX (PGMA 55727),SUP,2024-02-29,2024-11-04,,,55727,1.9.9.6.1(Fans (PG - 55 & 56) - BHEL BAP)
3487,Engineering,ENG,2024-02-29,2024-03-29,,,55727,1.9.9.6.1.23(ID FAN SUCTION BOX (PGMA 55727))
3488,Manufacturing ,MFG,2024-03-30,2024-07-07,,,55727,1.9.9.6.1.23(ID FAN SUCTION BOX (PGMA 55727))
3489,Dispatch,DIS,2024-07-08,2024-11-04,,,55727,1.9.9.6.1.23(ID FAN SUCTION BOX (PGMA 55727))
3490,AXIAL ID FAN LUBE OIL(PGMA-55920),SUP,2024-02-29,2024-11-04,,,55920,1.9.9.6.1(Fans (PG - 55 & 56) - BHEL BAP)
3491,Engineering,ENG,2024-02-29,2024-03-29,,,55920,1.9.9.6.1.24(AXIAL ID FAN LUBE OIL(PGMA-55920))
3492,Manufacturing ,MFG,2024-03-30,2024-07-07,,,55920,1.9.9.6.1.24(AXIAL ID FAN LUBE OIL(PGMA-55920))
3493,Dispatch,DIS,2024-07-08,2024-11-04,,,55920,1.9.9.6.1.24(AXIAL ID FAN LUBE OIL(PGMA-55920))
3494,FD FAN C&I ITEMS(PGMA-55017),SUP,2024-01-10,2024-10-05,,,55017,1.9.9.6.1(Fans (PG - 55 & 56) - BHEL BAP)
3495,Engineering,ENG,2024-01-10,2024-02-08,,,55017,1.9.9.6.1.25(FD FAN C&I ITEMS(PGMA-55017))
3496,Manufacturing ,MFG,2024-02-09,2024-05-18,,,55017,1.9.9.6.1.25(FD FAN C&I ITEMS(PGMA-55017))
3497,Dispatch,DIS,2024-05-19,2024-10-05,,,55017,1.9.9.6.1.25(FD FAN C&I ITEMS(PGMA-55017))
3498,AXIAL FD FAN LUBE OIL(PGMA-55910),SUP,2024-01-10,2024-10-05,,,55910,1.9.9.6.1(Fans (PG - 55 & 56) - BHEL BAP)
3499,Engineering,ENG,2024-01-10,2024-02-08,,,55910,1.9.9.6.1.26(AXIAL FD FAN LUBE OIL(PGMA-55910))
3500,Manufacturing ,MFG,2024-02-09,2024-05-18,,,55910,1.9.9.6.1.26(AXIAL FD FAN LUBE OIL(PGMA-55910))
3501,Dispatch,DIS,2024-05-19,2024-10-05,,,55910,1.9.9.6.1.26(AXIAL FD FAN LUBE OIL(PGMA-55910))
3502,2 STG PA ROTOR(PGMA-55335),SUP,2024-01-10,2024-10-05,,,55335,1.9.9.6.1(Fans (PG - 55 & 56) - BHEL BAP)
3503,Engineering,ENG,2024-01-10,2024-02-08,,,55335,1.9.9.6.1.27(2 STG PA ROTOR(PGMA-55335))
3504,Manufacturing ,MFG,2024-02-09,2024-05-18,,,55335,1.9.9.6.1.27(2 STG PA ROTOR(PGMA-55335))
3505,Dispatch,DIS,2024-05-19,2024-10-05,,,55335,1.9.9.6.1.27(2 STG PA ROTOR(PGMA-55335))
3506,2 STG PA HOUSING (PGMA 55635),SUP,2024-01-10,2024-10-05,,,55635,1.9.9.6.1(Fans (PG - 55 & 56) - BHEL BAP)
3507,Engineering,ENG,2024-01-10,2024-02-08,,,55635,1.9.9.6.1.28(2 STG PA HOUSING (PGMA 55635))
3508,Manufacturing ,MFG,2024-02-09,2024-05-18,,,55635,1.9.9.6.1.28(2 STG PA HOUSING (PGMA 55635))
3509,Dispatch,DIS,2024-05-19,2024-10-05,,,55635,1.9.9.6.1.28(2 STG PA HOUSING (PGMA 55635))
3510,PA FAN INSUL WOOL (PGMA 55939),SUP,2024-01-10,2024-10-05,,,55939,1.9.9.6.1(Fans (PG - 55 & 56) - BHEL BAP)
3511,Engineering,ENG,2024-01-10,2024-02-08,,,55939,1.9.9.6.1.29(PA FAN INSUL WOOL (PGMA 55939))
3512,Manufacturing ,MFG,2024-02-09,2024-05-18,,,55939,1.9.9.6.1.29(PA FAN INSUL WOOL (PGMA 55939))
3513,Dispatch,DIS,2024-05-19,2024-10-05,,,55939,1.9.9.6.1.29(PA FAN INSUL WOOL (PGMA 55939))
3514,PA FAN CPLNG GUARD (PGMA 55035),SUP,2024-01-10,2024-10-05,,,55035,1.9.9.6.1(Fans (PG - 55 & 56) - BHEL BAP)
3515,Engineering,ENG,2024-01-10,2024-02-08,,,55035,1.9.9.6.1.30(PA FAN CPLNG GUARD (PGMA 55035))
3516,Manufacturing ,MFG,2024-02-09,2024-05-18,,,55035,1.9.9.6.1.30(PA FAN CPLNG GUARD (PGMA 55035))
3517,Dispatch,DIS,2024-05-19,2024-10-05,,,55035,1.9.9.6.1.30(PA FAN CPLNG GUARD (PGMA 55035))
3518,PA SET & INDN SHAFT (PGMA 55430),SUP,2024-01-10,2024-10-05,,,55430,1.9.9.6.1(Fans (PG - 55 & 56) - BHEL BAP)
3519,Engineering,ENG,2024-01-10,2024-02-08,,,55430,1.9.9.6.1.31(PA SET & INDN SHAFT (PGMA 55430))
3520,Manufacturing ,MFG,2024-02-09,2024-05-18,,,55430,1.9.9.6.1.31(PA SET & INDN SHAFT (PGMA 55430))
3521,Dispatch,DIS,2024-05-19,2024-10-05,,,55430,1.9.9.6.1.31(PA SET & INDN SHAFT (PGMA 55430))
3522,PA FAN EXPN JOINTS (PGMA 55530),SUP,2024-01-10,2024-10-05,,,55530,1.9.9.6.1(Fans (PG - 55 & 56) - BHEL BAP)
3523,Engineering,ENG,2024-01-10,2024-02-08,,,55530,1.9.9.6.1.32(PA FAN EXPN JOINTS (PGMA 55530))
3524,Manufacturing ,MFG,2024-02-09,2024-05-18,,,55530,1.9.9.6.1.32(PA FAN EXPN JOINTS (PGMA 55530))
3525,Dispatch,DIS,2024-05-19,2024-10-05,,,55530,1.9.9.6.1.32(PA FAN EXPN JOINTS (PGMA 55530))
3526,PA FAN DIFFUSER (PGMA 55835),SUP,2024-01-10,2024-10-05,,,55835,1.9.9.6.1(Fans (PG - 55 & 56) - BHEL BAP)
3527,Engineering,ENG,2024-01-10,2024-02-08,,,55835,1.9.9.6.1.33(PA FAN DIFFUSER (PGMA 55835))
3528,Manufacturing ,MFG,2024-02-09,2024-05-18,,,55835,1.9.9.6.1.33(PA FAN DIFFUSER (PGMA 55835))
3529,Dispatch,DIS,2024-05-19,2024-10-05,,,55835,1.9.9.6.1.33(PA FAN DIFFUSER (PGMA 55835))
3530,PA FAN SUCTION BOX (PGMA 55735),SUP,2024-01-10,2024-10-05,,,55735,1.9.9.6.1(Fans (PG - 55 & 56) - BHEL BAP)
3531,Engineering,ENG,2024-01-10,2024-02-08,,,55735,1.9.9.6.1.34(PA FAN SUCTION BOX (PGMA 55735))
3532,Manufacturing ,MFG,2024-02-09,2024-05-18,,,55735,1.9.9.6.1.34(PA FAN SUCTION BOX (PGMA 55735))
3533,Dispatch,DIS,2024-05-19,2024-10-05,,,55735,1.9.9.6.1.34(PA FAN SUCTION BOX (PGMA 55735))
3534,RADIAL SEAL AIR FAN ROTOR(PGMA-56173),SUP,2024-01-10,2024-10-05,,,56173,1.9.9.6.1(Fans (PG - 55 & 56) - BHEL BAP)
3535,Engineering,ENG,2024-01-10,2024-02-08,,,56173,1.9.9.6.1.35(RADIAL SEAL AIR FAN ROTOR(PGMA-56173))
3536,Manufacturing ,MFG,2024-02-09,2024-05-18,,,56173,1.9.9.6.1.35(RADIAL SEAL AIR FAN ROTOR(PGMA-56173))
3537,Dispatch,DIS,2024-05-19,2024-10-05,,,56173,1.9.9.6.1.35(RADIAL SEAL AIR FAN ROTOR(PGMA-56173))
3538,AXL PAFAN COUPLING(PGMA-55830),SUP,2024-01-10,2024-10-05,,,55830,1.9.9.6.1(Fans (PG - 55 & 56) - BHEL BAP)
3539,Engineering,ENG,2024-01-10,2024-02-08,,,55830,1.9.9.6.1.36(AXL PAFAN COUPLING(PGMA-55830))
3540,Manufacturing ,MFG,2024-02-09,2024-05-18,,,55830,1.9.9.6.1.36(AXL PAFAN COUPLING(PGMA-55830))
3541,Dispatch,DIS,2024-05-19,2024-10-05,,,55830,1.9.9.6.1.36(AXL PAFAN COUPLING(PGMA-55830))
3542,PA FAN SILENCER(PGMA-55931),SUP,2023-12-21,2024-09-05,,,55931,1.9.9.6.1(Fans (PG - 55 & 56) - BHEL BAP)
3543,Engineering,ENG,2023-12-21,2024-01-19,,,55931,1.9.9.6.1.37(PA FAN SILENCER(PGMA-55931))
3544,Manufacturing ,MFG,2024-01-20,2024-04-28,,,55931,1.9.9.6.1.37(PA FAN SILENCER(PGMA-55931))
3545,Dispatch,DIS,2024-04-29,2024-09-05,,,55931,1.9.9.6.1.37(PA FAN SILENCER(PGMA-55931))
3546,FIRST FILL LUBRICANTS(PGMA-55091),SUP,2024-01-10,2024-10-05,,,55091,1.9.9.6.1(Fans (PG - 55 & 56) - BHEL BAP)
3547,Engineering,ENG,2024-01-10,2024-02-08,,,55091,1.9.9.6.1.38(FIRST FILL LUBRICANTS(PGMA-55091))
3548,Manufacturing ,MFG,2024-02-09,2024-05-18,,,55091,1.9.9.6.1.38(FIRST FILL LUBRICANTS(PGMA-55091))
3549,Dispatch,DIS,2024-05-19,2024-10-05,,,55091,1.9.9.6.1.38(FIRST FILL LUBRICANTS(PGMA-55091))
3550,RADIAL PENT HOUSE VENT(PGMA-56161),SUP,2024-01-10,2024-10-05,,,56161,1.9.9.6.1(Fans (PG - 55 & 56) - BHEL BAP)
3551,Engineering,ENG,2024-01-10,2024-02-08,,,56161,1.9.9.6.1.39(RADIAL PENT HOUSE VENT(PGMA-56161))
3552,Manufacturing ,MFG,2024-02-09,2024-05-18,,,56161,1.9.9.6.1.39(RADIAL PENT HOUSE VENT(PGMA-56161))
3553,Dispatch,DIS,2024-05-19,2024-10-05,,,56161,1.9.9.6.1.39(RADIAL PENT HOUSE VENT(PGMA-56161))
3554,RADIAL SEAL AIR FAN BEARINGS (PGMA 56373),SUP,2024-01-10,2024-10-05,,,56373,1.9.9.6.1(Fans (PG - 55 & 56) - BHEL BAP)
3555,Engineering,ENG,2024-01-10,2024-02-08,,,56373,1.9.9.6.1.40(RADIAL SEAL AIR FAN BEARINGS (PGMA 56373))
3556,Manufacturing ,MFG,2024-02-09,2024-05-18,,,56373,1.9.9.6.1.40(RADIAL SEAL AIR FAN BEARINGS (PGMA 56373))
3557,Dispatch,DIS,2024-05-19,2024-10-05,,,56373,1.9.9.6.1.40(RADIAL SEAL AIR FAN BEARINGS (PGMA 56373))
3558,RADIAL SEAL AIR FAN STATOR (PGMA 56473),SUP,2024-01-10,2024-10-05,,,56473,1.9.9.6.1(Fans (PG - 55 & 56) - BHEL BAP)
3559,Engineering,ENG,2024-01-10,2024-02-08,,,56473,1.9.9.6.1.41(RADIAL SEAL AIR FAN STATOR (PGMA 56473))
3560,Manufacturing ,MFG,2024-02-09,2024-05-18,,,56473,1.9.9.6.1.41(RADIAL SEAL AIR FAN STATOR (PGMA 56473))
3561,Dispatch,DIS,2024-05-19,2024-10-05,,,56473,1.9.9.6.1.41(RADIAL SEAL AIR FAN STATOR (PGMA 56473))
3562,SA FAN CPLNG GUARD (PGMA 56075),SUP,2024-01-10,2024-10-05,,,56075,1.9.9.6.1(Fans (PG - 55 & 56) - BHEL BAP)
3563,Engineering,ENG,2024-01-10,2024-02-08,,,56075,1.9.9.6.1.42(SA FAN CPLNG GUARD (PGMA 56075))
3564,Manufacturing ,MFG,2024-02-09,2024-05-18,,,56075,1.9.9.6.1.42(SA FAN CPLNG GUARD (PGMA 56075))
3565,Dispatch,DIS,2024-05-19,2024-10-05,,,56075,1.9.9.6.1.42(SA FAN CPLNG GUARD (PGMA 56075))
3566,SA FAN MTR CANOPY (PGMA 56079),SUP,2024-01-10,2024-10-05,,,56079,1.9.9.6.1(Fans (PG - 55 & 56) - BHEL BAP)
3567,Engineering,ENG,2024-01-10,2024-02-08,,,56079,1.9.9.6.1.43(SA FAN MTR CANOPY (PGMA 56079))
3568,Manufacturing ,MFG,2024-02-09,2024-05-18,,,56079,1.9.9.6.1.43(SA FAN MTR CANOPY (PGMA 56079))
3569,Dispatch,DIS,2024-05-19,2024-10-05,,,56079,1.9.9.6.1.43(SA FAN MTR CANOPY (PGMA 56079))
3570,SEAL AIR FAN COUPLING((PGMA-56870),SUP,2024-01-10,2024-10-05,,,56870,1.9.9.6.1(Fans (PG - 55 & 56) - BHEL BAP)
3571,Engineering,ENG,2024-01-10,2024-02-08,,,56870,1.9.9.6.1.44(SEAL AIR FAN COUPLING((PGMA-56870))
3572,Manufacturing ,MFG,2024-02-09,2024-05-18,,,56870,1.9.9.6.1.44(SEAL AIR FAN COUPLING((PGMA-56870))
3573,Dispatch,DIS,2024-05-19,2024-10-05,,,56870,1.9.9.6.1.44(SEAL AIR FAN COUPLING((PGMA-56870))
3574,AXL FAN TOOL & FIXTU(PGMA-55000),SUP,2024-01-10,2024-10-05,,,55000,1.9.9.6.1(Fans (PG - 55 & 56) - BHEL BAP)
3575,Engineering,ENG,2024-01-10,2024-02-08,,,55000,1.9.9.6.1.45(AXL FAN TOOL & FIXTU(PGMA-55000))
3576,Manufacturing ,MFG,2024-02-09,2024-05-18,,,55000,1.9.9.6.1.45(AXL FAN TOOL & FIXTU(PGMA-55000))
3577,Dispatch,DIS,2024-05-19,2024-10-05,,,55000,1.9.9.6.1.45(AXL FAN TOOL & FIXTU(PGMA-55000))
3578,PA FAN C&I ITEMS(PGMA-55037),SUP,2024-02-29,2024-11-04,,,55037,1.9.9.6.1(Fans (PG - 55 & 56) - BHEL BAP)
3579,Engineering,ENG,2024-02-29,2024-03-29,,,55037,1.9.9.6.1.46(PA FAN C&I ITEMS(PGMA-55037))
3580,Manufacturing ,MFG,2024-03-30,2024-07-07,,,55037,1.9.9.6.1.46(PA FAN C&I ITEMS(PGMA-55037))
3581,Dispatch,DIS,2024-07-08,2024-11-04,,,55037,1.9.9.6.1.46(PA FAN C&I ITEMS(PGMA-55037))
3582,SEAL AIR FAN C&I ITEMS(PGMA-56077),SUP,2024-05-09,2024-11-14,,,56077,1.9.9.6.1(Fans (PG - 55 & 56) - BHEL BAP)
3583,Engineering,ENG,2024-05-09,2024-06-07,,,56077,1.9.9.6.1.47(SEAL AIR FAN C&I ITEMS(PGMA-56077))
3584,Manufacturing ,MFG,2024-06-08,2024-07-27,,,56077,1.9.9.6.1.47(SEAL AIR FAN C&I ITEMS(PGMA-56077))
3585,Dispatch,DIS,2024-07-28,2024-11-14,,,56077,1.9.9.6.1.47(SEAL AIR FAN C&I ITEMS(PGMA-56077))
3586,RADIAL SEAL AIR FAN MO(PGMA-56670),SUP,2024-02-29,2024-11-04,,,56670,1.9.9.6.1(Fans (PG - 55 & 56) - BHEL BAP)
3587,Engineering,ENG,2024-02-29,2024-03-29,,,56670,1.9.9.6.1.48(RADIAL SEAL AIR FAN MO(PGMA-56670))
3588,Manufacturing ,MFG,2024-03-30,2024-07-07,,,56670,1.9.9.6.1.48(RADIAL SEAL AIR FAN MO(PGMA-56670))
3589,Dispatch,DIS,2024-07-08,2024-11-04,,,56670,1.9.9.6.1.48(RADIAL SEAL AIR FAN MO(PGMA-56670))
3590,AXIAL PA FAN LUBE OIL(PGMA-55930),SUP,2024-02-29,2024-10-05,,,55930,1.9.9.6.1(Fans (PG - 55 & 56) - BHEL BAP)
3591,Engineering,ENG,2024-02-29,2024-03-29,,,55930,1.9.9.6.1.49(AXIAL PA FAN LUBE OIL(PGMA-55930))
3592,Manufacturing ,MFG,2024-03-30,2024-05-18,,,55930,1.9.9.6.1.49(AXIAL PA FAN LUBE OIL(PGMA-55930))
3593,Dispatch,DIS,2024-05-19,2024-10-05,,,55930,1.9.9.6.1.49(AXIAL PA FAN LUBE OIL(PGMA-55930))
3594,Fan Motor - BHEL BPL,SUP,2023-05-27,2025-04-22,,,,1.9.9.6(Supply)
3595,ID Fan Motor,SUP,2023-05-27,2025-04-22,,,,1.9.9.6.2(Fan Motor - BHEL BPL)
3596,"Engineering, INDENTING AND PROCUREMENT ",ENG,2023-05-27,2024-02-22,,,,1.9.9.6.2.1(ID Fan Motor)
3597,Manufacturing & TESTING ,MFG,2024-02-23,2025-02-21,,,,1.9.9.6.2.1(ID Fan Motor)
3598, Dispatch ,DIS,2025-02-22,2025-03-23,,,,1.9.9.6.2.1(ID Fan Motor)
3599,RECEIPT AT SITE ,REC,2025-03-24,2025-04-22,,,,1.9.9.6.2.1(ID Fan Motor)
3600,FD Fan Motor,SUP,2023-05-27,2025-04-22,,,,1.9.9.6.2(Fan Motor - BHEL BPL)
3601,"Engineering, INDENTING AND PROCUREMENT ",ENG,2023-05-27,2024-02-22,,,,1.9.9.6.2.2(FD Fan Motor)
3602,Manufacturing & TESTING ,MFG,2024-02-23,2025-02-21,,,,1.9.9.6.2.2(FD Fan Motor)
3603, Dispatch ,DIS,2025-02-22,2025-03-23,,,,1.9.9.6.2.2(FD Fan Motor)
3604,RECEIPT AT SITE ,REC,2025-03-24,2025-04-22,,,,1.9.9.6.2.2(FD Fan Motor)
3605,PA Fan Motor,SUP,2023-05-27,2025-04-22,,,,1.9.9.6.2(Fan Motor - BHEL BPL)
3606,"Engineering, INDENTING AND PROCUREMENT ",ENG,2023-05-27,2024-02-22,,,,1.9.9.6.2.3(PA Fan Motor)
3607,Manufacturing & TESTING ,MFG,2024-02-23,2025-02-21,,,,1.9.9.6.2.3(PA Fan Motor)
3608, Dispatch ,DIS,2025-02-22,2025-03-23,,,,1.9.9.6.2.3(PA Fan Motor)
3609,RECEIPT AT SITE ,REC,2025-03-24,2025-04-22,,,,1.9.9.6.2.3(PA Fan Motor)
3610,Erection,ERC,2024-08-26,2026-04-30,,,,1.9.9(Various Fans)
3611,First  ID FAN,ERC,2024-08-26,2026-01-30,,,,1.9.9.7(Erection)
3612,Foundation preparation and corrections,CIV,2024-08-26,2024-09-02,,,,1.9.9.7.1(First  ID FAN)
3613,Blue matching between base plate & fan housing foot,ERC,2024-09-03,2024-09-20,,,,1.9.9.7.1(First  ID FAN)
3614,Suction chamber pre-assembly and Erection,ERC,2024-09-21,2024-10-14,,,,1.9.9.7.1(First  ID FAN)
3615,Diffuser pre-assembly undersection,ERC,2024-10-15,2024-11-07,,,,1.9.9.7.1(First  ID FAN)
3616,Installation of base plate and fan housing bottom,ERC,2024-11-08,2024-11-25,,,,1.9.9.7.1(First  ID FAN)
3617,Erection of rotor assembly and coupling,ERC,2024-11-26,2024-12-15,,,,1.9.9.7.1(First  ID FAN)
3618,"Motor Erection, alignment & grouting",ERC,2024-12-16,2024-12-27,,,,1.9.9.7.1(First  ID FAN)
3619,Installation of Fan housing upper part,ERC,2024-12-28,2025-01-14,,,,1.9.9.7.1(First  ID FAN)
3620,Erection of dampers and actuators,ERC,2025-01-15,2025-01-30,,,,1.9.9.7.1(First  ID FAN)
3621,Erection of expansion joints,ERC,2025-01-31,2025-02-11,,,,1.9.9.7.1(First  ID FAN)
3622,Lube oil system Erection,ERC,2025-02-12,2025-03-13,,,,1.9.9.7.1(First  ID FAN)
3623,Final Alignment,ERC,2025-09-30,2025-10-06,,,,1.9.9.7.1(First  ID FAN)
3624,Box Up of Fan,ERC,2025-12-01,2025-12-02,,,,1.9.9.7.1(First  ID FAN)
3625,Insulation,ERC,2026-01-01,2026-01-30,,,,1.9.9.7.1(First  ID FAN)
3626,Second ID Fan,ERC,2024-09-26,2026-04-30,,,,1.9.9.7(Erection)
3627,Foundation preparation and corrections,CIV,2024-09-26,2024-10-03,,,,1.9.9.7.2(Second ID Fan)
3628,Blue matching between base plate & fan housing foot,ERC,2024-10-04,2024-10-21,,,,1.9.9.7.2(Second ID Fan)
3629,Suction chamber pre-assembly Miserection,ERC,2024-10-22,2024-11-14,,,,1.9.9.7.2(Second ID Fan)
3630,Diffuser pre-assembly Miserection,ERC,2024-11-15,2024-12-08,,,,1.9.9.7.2(Second ID Fan)
3631,Installation of base plate and fan housing bottom,ERC,2024-12-09,2024-12-26,,,,1.9.9.7.2(Second ID Fan)
3632,Erection of rotor assembly and coupling,ERC,2024-12-27,2025-01-15,,,,1.9.9.7.2(Second ID Fan)
3633,"Miserection, alignment & grouting",ERC,2025-01-16,2025-01-27,,,,1.9.9.7.2(Second ID Fan)
3634,Installation of Fan housing upper part,ERC,2025-01-28,2025-02-14,,,,1.9.9.7.2(Second ID Fan)
3635,Erection of dampers and actuators,ERC,2025-02-15,2025-03-02,,,,1.9.9.7.2(Second ID Fan)
3636,Erection of expansion joints,ERC,2025-03-03,2025-03-14,,,,1.9.9.7.2(Second ID Fan)
3637,Lube oil Miserection,ERC,2025-03-15,2025-04-13,,,,1.9.9.7.2(Second ID Fan)
3638,Final Alignment,ERC,2025-10-11,2025-10-17,,,,1.9.9.7.2(Second ID Fan)
3639,Box Up of Fan,ERC,2025-12-31,2026-01-01,,,,1.9.9.7.2(Second ID Fan)
3640,Insulation,ERC,2026-04-01,2026-04-30,,,,1.9.9.7.2(Second ID Fan)
3641,First FD Fan,ERC,2025-01-19,2026-01-02,,,,1.9.9.7(Erection)
3642,Foundation preparation and correction,CIV,2025-01-19,2025-01-24,,,,1.9.9.7.3(First FD Fan)
3643,Blue matching between base plate & fan housing foot,ERC,2025-01-25,2025-02-09,,,,1.9.9.7.3(First FD Fan)
3644,Erection of suction chamber & fan housing bottom,ERC,2025-02-10,2025-02-27,,,,1.9.9.7.3(First FD Fan)
3645,Erection & Alignment of Diffuser ASSY,ERC,2025-02-28,2025-03-17,,,,1.9.9.7.3(First FD Fan)
3646,Silencer preassembly preassembly,ERC,2025-03-18,2025-04-16,,,,1.9.9.7.3(First FD Fan)
3647,Erection of rotor ASSY and coupling,ERC,2025-04-17,2025-04-28,,,,1.9.9.7.3(First FD Fan)
3648,"ASSY, alignment and grouting",ERC,2025-04-29,2025-05-08,,,,1.9.9.7.3(First FD Fan)
3649,Mounting of blades and blade gap measurement,ERC,2025-05-09,2025-05-28,,,,1.9.9.7.3(First FD Fan)
3650,Erection of fan housing upper part,ERC,2025-05-29,2025-06-09,,,,1.9.9.7.3(First FD Fan)
3651,Erection of dampers and actuators,ERC,2025-06-10,2025-06-17,,,,1.9.9.7.3(First FD Fan)
3652,Assembly of expansion joints,ERC,2025-06-18,2025-06-25,,,,1.9.9.7.3(First FD Fan)
3653,Lube oil ASSY,ERC,2025-06-26,2025-07-19,,,,1.9.9.7.3(First FD Fan)
3654,Final Alignment,ERC,2025-09-25,2025-09-28,,,,1.9.9.7.3(First FD Fan)
3655,Box Up of Fan,ERC,2025-12-06,2025-12-07,,,,1.9.9.7.3(First FD Fan)
3656,Insulation,ERC,2025-12-10,2026-01-02,,,,1.9.9.7.3(First FD Fan)
3657,Second FD Fan,ERC,2025-07-20,2026-02-27,,,,1.9.9.7(Erection)
3658, Foundation preparation and correction,CIV,2025-07-20,2025-07-25,,,,1.9.9.7.4(Second FD Fan)
3659, Blue matching between base plate & fan housing foot,ERC,2025-07-26,2025-08-10,,,,1.9.9.7.4(Second FD Fan)
3660,Erection of suction chamber & fan housing bottom,ERC,2025-08-11,2025-08-26,,,,1.9.9.7.4(Second FD Fan)
3661,Erection & Alignment of Diffuser ASSY,ERC,2025-08-27,2025-09-11,,,,1.9.9.7.4(Second FD Fan)
3662, Silencer preassembly preassembly,ERC,2025-09-12,2025-10-07,,,,1.9.9.7.4(Second FD Fan)
3663,Erection of rotor ASSY and coupling,ERC,2025-10-08,2025-10-19,,,,1.9.9.7.4(Second FD Fan)
3664," ASSY, alignment and grouting",ERC,2025-10-20,2025-10-27,,,,1.9.9.7.4(Second FD Fan)
3665, Mounting of blades and blade gap measurement,ERC,2025-10-28,2025-11-14,,,,1.9.9.7.4(Second FD Fan)
3666,Erection of fan housing upper part,ERC,2025-11-15,2025-11-26,,,,1.9.9.7.4(Second FD Fan)
3667,Erection of dampers and actuators,ERC,2025-11-27,2025-12-04,,,,1.9.9.7.4(Second FD Fan)
3668, Assembly of expansion joints,ERC,2025-12-05,2025-12-12,,,,1.9.9.7.4(Second FD Fan)
3669, Lube oil ASSY,ERC,2025-12-13,2025-12-30,,,,1.9.9.7.4(Second FD Fan)
3670,Final Alignment,ERC,2026-01-17,2026-01-20,,,,1.9.9.7.4(Second FD Fan)
3671,Box Up of Fan,ERC,2026-01-31,2026-02-01,,,,1.9.9.7.4(Second FD Fan)
3672,Insulation,ERC,2026-02-04,2026-02-27,,,,1.9.9.7.4(Second FD Fan)
3673,Second PA Fan,ERC,2025-02-18,2026-03-30,,,,1.9.9.7(Erection)
3674,Foundation preparation and correction,CIV,2025-02-18,2025-02-23,,,,1.9.9.7.5(Second PA Fan)
3675,Blue matching between base plate & fan housing foot,ERC,2025-02-24,2025-03-07,,,,1.9.9.7.5(Second PA Fan)
3676,Erection of suction chamber & fan housing bottom,ERC,2025-03-08,2025-03-23,,,,1.9.9.7.5(Second PA Fan)
3677,Erection & Alignment of Diffuser ASSY,ERC,2025-03-24,2025-04-08,,,,1.9.9.7.5(Second PA Fan)
3678,Silencer preassembly preassembly,ERC,2025-04-09,2025-05-08,,,,1.9.9.7.5(Second PA Fan)
3679,Erection of rotor ASSY and coupling,ERC,2025-03-24,2025-04-04,,,,1.9.9.7.5(Second PA Fan)
3680,"ASSY, alignment and grouting",ERC,2025-03-24,2025-04-02,,,,1.9.9.7.5(Second PA Fan)
3681,Mounting of blades and blade gap measurement,ERC,2025-04-03,2025-04-20,,,,1.9.9.7.5(Second PA Fan)
3682,Erection of fan housing upper part,ERC,2025-04-21,2025-04-30,,,,1.9.9.7.5(Second PA Fan)
3683,Erection of dampers and actuators,ERC,2025-05-01,2025-05-08,,,,1.9.9.7.5(Second PA Fan)
3684,Assembly of expansion joints,ERC,2025-05-09,2025-05-16,,,,1.9.9.7.5(Second PA Fan)
3685,Lube oil ASSY,ERC,2025-05-17,2025-06-09,,,,1.9.9.7.5(Second PA Fan)
3686,Final Alignment,ERC,2025-09-20,2025-09-23,,,,1.9.9.7.5(Second PA Fan)
3687,Box Up of Fan,ERC,2026-02-12,2026-02-13,,,,1.9.9.7.5(Second PA Fan)
3688,Insulation,ERC,2026-03-07,2026-03-30,,,,1.9.9.7.5(Second PA Fan)
3689,First PA Fan,ERC,2025-08-22,2026-03-07,,,,1.9.9.7(Erection)
3690, Foundation preparation and correction,CIV,2025-08-22,2025-08-27,,,,1.9.9.7.6(First PA Fan)
3691, Blue matching between base plate & fan housing foot,ERC,2025-08-28,2025-09-08,,,,1.9.9.7.6(First PA Fan)
3692,Erection of suction chamber & fan housing bottom,ERC,2025-09-09,2025-09-24,,,,1.9.9.7.6(First PA Fan)
3693,Erection & Alignment of Diffuser ASSY,ERC,2025-09-25,2025-10-10,,,,1.9.9.7.6(First PA Fan)
3694, Silencer preassembly preassembly,ERC,2025-09-25,2025-10-24,,,,1.9.9.7.6(First PA Fan)
3695,Erection of rotor ASSY and coupling,ERC,2025-09-25,2025-10-06,,,,1.9.9.7.6(First PA Fan)
3696," ASSY, alignment and grouting",ERC,2025-10-07,2025-10-16,,,,1.9.9.7.6(First PA Fan)
3697, Mounting of blades and blade gap measurement,ERC,2025-10-17,2025-11-03,,,,1.9.9.7.6(First PA Fan)
3698,Erection of fan housing upper part,ERC,2025-11-04,2025-11-13,,,,1.9.9.7.6(First PA Fan)
3699,Erection of dampers and actuators,ERC,2025-11-14,2025-11-21,,,,1.9.9.7.6(First PA Fan)
3700, Assembly of expansion joints,ERC,2025-11-22,2025-11-29,,,,1.9.9.7.6(First PA Fan)
3701, Lube oil ASSY,ERC,2025-11-30,2025-12-23,,,,1.9.9.7.6(First PA Fan)
3702,Final Alignment,ERC,2026-01-12,2026-01-15,,,,1.9.9.7.6(First PA Fan)
3703,Box Up of Fan,ERC,2026-01-28,2026-01-29,,,,1.9.9.7.6(First PA Fan)
3704,Insulation,ERC,2026-02-20,2026-03-07,,,,1.9.9.7.6(First PA Fan)
3705,SA FAN,ERC,2026-01-20,2026-04-21,,,,1.9.9.7(Erection)
3706, Foundation preparation and correction,CIV,2026-01-20,2026-01-31,,,,1.9.9.7.7(SA FAN)
3707, Blue matching between base plate & fan housing foot,ERC,2026-02-01,2026-02-20,,,,1.9.9.7.7(SA FAN)
3708,Erection of fan housing,ERC,2026-02-21,2026-03-12,,,,1.9.9.7.7(SA FAN)
3709,Erection of rotor ASSY and coupling,ERC,2026-03-13,2026-03-22,,,,1.9.9.7.7(SA FAN)
3710," ASSY, alignment and grouting",ERC,2026-03-23,2026-04-01,,,,1.9.9.7.7(SA FAN)
3711,Erection of dampers and actuators,ERC,2026-04-02,2026-04-21,,,,1.9.9.7.7(SA FAN)
3712,Electrostatic Precipitator,OTH,2022-11-16,2025-12-12,2022-11-21,,,1.9(Boiler & Auxiliaries)
3713, REL of DWG for ESP Foundation,PE - RFC,2023-02-26,2023-02-26,,,PCE-00300,1.9.10(Electrostatic Precipitator)
3714,Civil,CIV,2023-02-27,2023-12-22,,,,1.9.10(Electrostatic Precipitator)
3715, ESP Foundations,CIV,2023-02-27,2023-12-22,,,,1.9.10.2(Civil)
3716, ESP Foundations- First 3 Pass Foundation,CIV,2023-02-27,2023-10-22,,,,1.9.10.2.1( ESP Foundations)
3717, Excavation & PCC of Footing,CIV,2023-02-27,2023-05-22,,,,1.9.10.2.1.1( ESP Foundations- First 3 Pass Foundation)
3718, Excavation & PCC of Footings of 1st Pass,CIV,2023-02-27,2023-04-02,,,,1.9.10.2.1.1.1( Excavation & PCC of Footing)
3719, Excavation & PCC of Footings of 2nd Pass,CIV,2023-03-24,2023-04-27,,,,1.9.10.2.1.1.1( Excavation & PCC of Footing)
3720, Excavation & PCC of Footings of 3rd Pass,CIV,2023-04-18,2023-05-22,,,,1.9.10.2.1.1.1( Excavation & PCC of Footing)
3721, Footing Concreting Works,CIV,2023-03-09,2023-06-26,,,,1.9.10.2.1.1( ESP Foundations- First 3 Pass Foundation)
3722, Casting of Footings of 1st Pass,CIV,2023-03-09,2023-05-07,,,,1.9.10.2.1.1.2( Footing Concreting Works)
3723, Casting of Footings of 2nd Pass,CIV,2023-04-03,2023-06-01,,,,1.9.10.2.1.1.2( Footing Concreting Works)
3724, Casting of Footings of 3rd Pass,CIV,2023-04-28,2023-06-26,,,,1.9.10.2.1.1.2( Footing Concreting Works)
3725, Pedestal Concreting Works,CIV,2023-03-29,2023-09-09,,,,1.9.10.2.1.1( ESP Foundations- First 3 Pass Foundation)
3726," Casting of Pedestals (1st ,2nd & Bolt Lift)-1st Pass",CIV,2023-03-29,2023-07-21,,,,1.9.10.2.1.1.3( Pedestal Concreting Works)
3727," Casting of Pedestals (1st ,2nd & Bolt Lift)-Pass B",CIV,2023-04-23,2023-08-15,,,,1.9.10.2.1.1.3( Pedestal Concreting Works)
3728," Casting of Pedestals (1st ,2nd & Bolt Lift)-Pass C",CIV,2023-05-18,2023-09-09,,,,1.9.10.2.1.1.3( Pedestal Concreting Works)
3729, Backfilling Works,CIV,2023-05-25,2023-10-07,,,,1.9.10.2.1.1( ESP Foundations- First 3 Pass Foundation)
3730, Backfilling & Compaction (First Pass),CIV,2023-05-25,2023-08-17,,,,1.9.10.2.1.1.4( Backfilling Works)
3731, Backfilling & Compaction (Second Pass),CIV,2023-06-19,2023-09-11,,,,1.9.10.2.1.1.4( Backfilling Works)
3732, Backfilling & Compaction(Third Pass),CIV,2023-07-15,2023-10-07,,,,1.9.10.2.1.1.4( Backfilling Works)
3733, Grade Slab Concreting Works (Paving Works),CIV,2023-06-09,2023-10-22,,,,1.9.10.2.1.1( ESP Foundations- First 3 Pass Foundation)
3734," Grade slab casting, Fixing of Earthing Mat Work complete in all respects for first Pass",CIV,2023-06-09,2023-09-01,,,,1.9.10.2.1.1.5( Grade Slab Concreting Works (Paving Works))
3735," Grade slab casting, Fixing of Earthing Mat Work complete in all respects for Second Pass",CIV,2023-07-04,2023-09-26,,,,1.9.10.2.1.1.5( Grade Slab Concreting Works (Paving Works))
3736," Grade slab casting, Fixing of Earthing Mat Work complete in all respects for Third Pass",CIV,2023-07-30,2023-10-22,,,,1.9.10.2.1.1.5( Grade Slab Concreting Works (Paving Works))
3737, ESP Foundations- Balance Three Pass,CIV,2023-04-30,2023-12-22,,,,1.9.10.2.1( ESP Foundations)
3738, Excavation & PCC of Footings,CIV,2023-04-30,2023-07-23,,,,1.9.10.2.1.2( ESP Foundations- Balance Three Pass)
3739, Excavation & PCC of Footings of 4th Pass,CIV,2023-04-30,2023-06-03,,,,1.9.10.2.1.2.1( Excavation & PCC of Footings)
3740, Excavation & PCC of Footings of 5th Pass,CIV,2023-05-25,2023-06-28,,,,1.9.10.2.1.2.1( Excavation & PCC of Footings)
3741, Excavation & PCC of Footings of 6th Pass,CIV,2023-06-19,2023-07-23,,,,1.9.10.2.1.2.1( Excavation & PCC of Footings)
3742, Footing Concreting Works,CIV,2023-05-10,2023-08-27,,,,1.9.10.2.1.2( ESP Foundations- Balance Three Pass)
3743, Casting of Footings of 4th Pass,CIV,2023-05-10,2023-07-08,,,,1.9.10.2.1.2.2( Footing Concreting Works)
3744, Casting of Footings of 5th Pass,CIV,2023-06-04,2023-08-02,,,,1.9.10.2.1.2.2( Footing Concreting Works)
3745, Casting of Footings of 6th Pass,CIV,2023-06-29,2023-08-27,,,,1.9.10.2.1.2.2( Footing Concreting Works)
3746, Pedestal Concreting Works,CIV,2023-05-30,2023-11-10,,,,1.9.10.2.1.2( ESP Foundations- Balance Three Pass)
3747," Casting of Pedestals (1st ,2nd & Bolt Lift)- 4th Pass",CIV,2023-05-30,2023-09-21,,,,1.9.10.2.1.2.3( Pedestal Concreting Works)
3748," Casting of Pedestals (1st ,2nd & Bolt Lift)- 5th Pass",CIV,2023-06-24,2023-10-16,,,,1.9.10.2.1.2.3( Pedestal Concreting Works)
3749," Casting of Pedestals (1st ,2nd & Bolt Lift)- 6th Pass",CIV,2023-07-19,2023-11-10,,,,1.9.10.2.1.2.3( Pedestal Concreting Works)
3750, Backfilling Works,CIV,2023-07-26,2023-12-07,,,,1.9.10.2.1.2( ESP Foundations- Balance Three Pass)
3751, Backfilling & Compaction (4th Pass),CIV,2023-07-26,2023-10-18,,,,1.9.10.2.1.2.4( Backfilling Works)
3752, Backfilling & Compaction (5th Pass),CIV,2023-08-20,2023-11-12,,,,1.9.10.2.1.2.4( Backfilling Works)
3753, Backfilling & Compaction(6th Pass),CIV,2023-09-14,2023-12-07,,,,1.9.10.2.1.2.4( Backfilling Works)
3754, Grade Slab Concreting Works (Paving Works),CIV,2023-08-10,2023-12-22,,,,1.9.10.2.1.2( ESP Foundations- Balance Three Pass)
3755," Grade slab casting, Fixing of Earthing Mat Work complete in all respects for 4th Pass",CIV,2023-08-10,2023-11-02,,,,1.9.10.2.1.2.5( Grade Slab Concreting Works (Paving Works))
3756," Grade slab casting, Fixing of Earthing Mat Work complete in all respect for 5th Pass",CIV,2023-09-04,2023-11-27,,,,1.9.10.2.1.2.5( Grade Slab Concreting Works (Paving Works))
3757," Grade slab casting, Fixing of Earthing Mat Work complete in all respect for 6th Pass",CIV,2023-09-29,2023-12-22,,,,1.9.10.2.1.2.5( Grade Slab Concreting Works (Paving Works))
3758,Supply,SUP,2022-11-16,2025-02-02,2022-11-21,,,1.9.10(Electrostatic Precipitator)
3759,BAP - Foundation Materials (PGMA 79580),CIV,2022-11-16,2023-02-13,,,79580,1.9.10.3(Supply)
3760,Engineering,ENG,2022-11-16,2022-12-15,,,79580,1.9.10.3.1(BAP - Foundation Materials (PGMA 79580))
3761,Manufacturing ,MFG,2022-12-16,2023-01-04,,,79580,1.9.10.3.1(BAP - Foundation Materials (PGMA 79580))
3762,Dispatch,DIS,2023-01-05,2023-02-13,,,79580,1.9.10.3.1(BAP - Foundation Materials (PGMA 79580))
3763,BAP - Supporting structure for ESP (PGMA 79581),OTH,2022-11-16,2023-02-13,,,79581,1.9.10.3(Supply)
3764,Engineering,ENG,2022-11-16,2022-12-15,,,79581,1.9.10.3.2(BAP - Supporting structure for ESP (PGMA 79581))
3765,Manufacturing ,MFG,2022-12-16,2023-01-04,,,79581,1.9.10.3.2(BAP - Supporting structure for ESP (PGMA 79581))
3766,Dispatch,DIS,2023-01-05,2023-02-13,,,79581,1.9.10.3.2(BAP - Supporting structure for ESP (PGMA 79581))
3767,BAP - ROLL/SLIDE SUPPORTS (PGMA 79501),SUP,2022-11-16,2023-02-13,2022-12-02,,79501,1.9.10.3(Supply)
3768,Engineering,ENG,2022-11-16,2022-12-15,2022-12-02,,79501,1.9.10.3.3(BAP - ROLL/SLIDE SUPPORTS (PGMA 79501))
3769,Manufacturing ,MFG,2022-12-16,2023-01-04,,,79501,1.9.10.3.3(BAP - ROLL/SLIDE SUPPORTS (PGMA 79501))
3770,Dispatch,DIS,2023-01-05,2023-02-13,,,79501,1.9.10.3.3(BAP - ROLL/SLIDE SUPPORTS (PGMA 79501))
3771,BAP - CASING STRUCTURE (PGMA 79548),SUP,2022-12-06,2023-03-05,,,79548,1.9.10.3(Supply)
3772,Engineering,ENG,2022-12-06,2023-01-04,,,79548,1.9.10.3.4(BAP - CASING STRUCTURE (PGMA 79548))
3773,Manufacturing ,MFG,2023-01-05,2023-01-24,,,79548,1.9.10.3.4(BAP - CASING STRUCTURE (PGMA 79548))
3774,Dispatch,DIS,2023-01-25,2023-03-05,,,79548,1.9.10.3.4(BAP - CASING STRUCTURE (PGMA 79548))
3775,BAP - ELECTRICAL MISC ITEMS (PGMA 79541),SUP,2023-12-21,2025-02-02,,,79541,1.9.10.3(Supply)
3776,Engineering,ENG,2023-12-21,2024-02-18,,,79541,1.9.10.3.5(BAP - ELECTRICAL MISC ITEMS (PGMA 79541))
3777,Manufacturing ,MFG,2024-02-19,2024-10-25,,,79541,1.9.10.3.5(BAP - ELECTRICAL MISC ITEMS (PGMA 79541))
3778,Dispatch,DIS,2024-05-29,2025-02-02,,,79541,1.9.10.3.5(BAP - ELECTRICAL MISC ITEMS (PGMA 79541))
3779,BAP - HOPPER RIDGES (PGMA 79543),SUP,2022-12-06,2023-03-05,2022-12-31,,79543,1.9.10.3(Supply)
3780,Engineering,ENG,2022-12-06,2023-01-04,2022-12-31,,79543,1.9.10.3.6(BAP - HOPPER RIDGES (PGMA 79543))
3781,Manufacturing ,MFG,2023-01-05,2023-01-24,,,79543,1.9.10.3.6(BAP - HOPPER RIDGES (PGMA 79543))
3782,Dispatch,DIS,2023-01-25,2023-03-05,,,79543,1.9.10.3.6(BAP - HOPPER RIDGES (PGMA 79543))
3783,BAP - CASING SHELL/PANEL (PGMA 79549),SUP,2022-12-06,2023-02-13,2022-12-24,,79549,1.9.10.3(Supply)
3784,Engineering,ENG,2022-12-06,2023-01-04,2022-12-24,,79549,1.9.10.3.7(BAP - CASING SHELL/PANEL (PGMA 79549))
3785,Manufacturing ,MFG,2023-01-05,2023-01-24,,,79549,1.9.10.3.7(BAP - CASING SHELL/PANEL (PGMA 79549))
3786,Dispatch,DIS,2023-01-25,2023-02-13,,,79549,1.9.10.3.7(BAP - CASING SHELL/PANEL (PGMA 79549))
3787,BAP - EP GALLERIES&STAIRS (PGMA 89610),SUP,2022-12-06,2023-03-15,,,89610,1.9.10.3(Supply)
3788,Engineering,ENG,2022-12-06,2023-01-04,,,89610,1.9.10.3.8(BAP - EP GALLERIES&STAIRS (PGMA 89610))
3789,Manufacturing ,MFG,2023-01-05,2023-01-24,,,89610,1.9.10.3.8(BAP - EP GALLERIES&STAIRS (PGMA 89610))
3790,Dispatch,SUP,2023-01-25,2023-03-15,,,89610,1.9.10.3.8(BAP - EP GALLERIES&STAIRS (PGMA 89610))
3791,BAP - FLOOR GRILL AND STEP T (PGMA 89612),SUP,2022-12-06,2023-08-22,,,89612,1.9.10.3(Supply)
3792,Engineering,ENG,2022-12-06,2023-04-04,,,89612,1.9.10.3.9(BAP - FLOOR GRILL AND STEP T (PGMA 89612))
3793,Manufacturing ,MFG,2023-04-05,2023-07-03,,,89612,1.9.10.3.9(BAP - FLOOR GRILL AND STEP T (PGMA 89612))
3794,Dispatch,DIS,2023-07-04,2023-08-22,,,89612,1.9.10.3.9(BAP - FLOOR GRILL AND STEP T (PGMA 89612))
3795,BAP - ESP ROOF BEAM (PGMA 79528),SUP,2022-12-06,2023-03-15,2022-12-29,,79528,1.9.10.3(Supply)
3796,Engineering,ENG,2022-12-06,2023-01-04,2022-12-29,,79528,1.9.10.3.10(BAP - ESP ROOF BEAM (PGMA 79528))
3797,Manufacturing ,MFG,2023-01-05,2023-01-24,,,79528,1.9.10.3.10(BAP - ESP ROOF BEAM (PGMA 79528))
3798,Dispatch,DIS,2023-01-25,2023-03-15,,,79528,1.9.10.3.10(BAP - ESP ROOF BEAM (PGMA 79528))
3799,BAP - COL ELEC SUSPENSION(PGMA 79519),SUP,2022-12-06,2023-03-25,,,79519,1.9.10.3(Supply)
3800,Engineering,ENG,2022-12-06,2023-01-04,,,79519,1.9.10.3.11(BAP - COL ELEC SUSPENSION(PGMA 79519))
3801,Manufacturing ,MFG,2023-01-05,2023-02-13,,,79519,1.9.10.3.11(BAP - COL ELEC SUSPENSION(PGMA 79519))
3802,Dispatch,DIS,2023-02-14,2023-03-25,,,79519,1.9.10.3.11(BAP - COL ELEC SUSPENSION(PGMA 79519))
3803,BAP - EMIT SYST SUSPENSION(PGMA 79513),SUP,2022-12-06,2023-04-14,,,79513,1.9.10.3(Supply)
3804,Engineering,ENG,2022-12-06,2023-01-04,,,79513,1.9.10.3.12(BAP - EMIT SYST SUSPENSION(PGMA 79513))
3805,Manufacturing ,MFG,2023-01-05,2023-02-13,,,79513,1.9.10.3.12(BAP - EMIT SYST SUSPENSION(PGMA 79513))
3806,Dispatch,DIS,2023-02-14,2023-04-14,,,79513,1.9.10.3.12(BAP - EMIT SYST SUSPENSION(PGMA 79513))
3807,BAP - INSULATOR SUPP PANEL(PGMA 79546),SUP,2022-12-06,2023-04-14,,,79546,1.9.10.3(Supply)
3808,Engineering,ENG,2022-12-06,2023-01-04,,,79546,1.9.10.3.13(BAP - INSULATOR SUPP PANEL(PGMA 79546))
3809,Manufacturing ,MFG,2023-01-05,2023-02-13,,,79546,1.9.10.3.13(BAP - INSULATOR SUPP PANEL(PGMA 79546))
3810,Dispatch,DIS,2023-02-14,2023-04-14,,,79546,1.9.10.3.13(BAP - INSULATOR SUPP PANEL(PGMA 79546))
3811,BAP - EMIT SYS FRAME-TOP(PGMA 79521),SUP,2022-12-06,2023-04-14,,,79521,1.9.10.3(Supply)
3812,Engineering,ENG,2022-12-06,2023-01-04,,,79521,1.9.10.3.14(BAP - EMIT SYS FRAME-TOP(PGMA 79521))
3813,Manufacturing ,MFG,2023-01-05,2023-02-13,,,79521,1.9.10.3.14(BAP - EMIT SYS FRAME-TOP(PGMA 79521))
3814,Dispatch,DIS,2023-02-14,2023-04-14,,,79521,1.9.10.3.14(BAP - EMIT SYS FRAME-TOP(PGMA 79521))
3815,BAP - EMIT SYS FRAME-MIDLE(PGMA 79532),SUP,2022-12-06,2023-04-14,,,79532,1.9.10.3(Supply)
3816,Engineering,ENG,2022-12-06,2023-01-04,,,79532,1.9.10.3.15(BAP - EMIT SYS FRAME-MIDLE(PGMA 79532))
3817,Manufacturing ,MFG,2023-01-05,2023-02-13,,,79532,1.9.10.3.15(BAP - EMIT SYS FRAME-MIDLE(PGMA 79532))
3818,Dispatch,DIS,2023-02-14,2023-04-14,,,79532,1.9.10.3.15(BAP - EMIT SYS FRAME-MIDLE(PGMA 79532))
3819,BAP - EMIT SYS FRAME BOTOM(PGMA 79522),SUP,2022-12-26,2023-05-04,,,79522,1.9.10.3(Supply)
3820,Engineering,ENG,2022-12-26,2023-01-24,,,79522,1.9.10.3.16(BAP - EMIT SYS FRAME BOTOM(PGMA 79522))
3821,Manufacturing ,MFG,2023-01-25,2023-03-05,,,79522,1.9.10.3.16(BAP - EMIT SYS FRAME BOTOM(PGMA 79522))
3822,Dispatch,DIS,2023-03-06,2023-05-04,,,79522,1.9.10.3.16(BAP - EMIT SYS FRAME BOTOM(PGMA 79522))
3823,BAP - SUPPORT INSULATORS(PGMA 79514),SUP,2022-12-26,2023-05-04,,,79514,1.9.10.3(Supply)
3824,Engineering,ENG,2022-12-26,2023-01-24,,,79514,1.9.10.3.17(BAP - SUPPORT INSULATORS(PGMA 79514))
3825,Manufacturing ,MFG,2023-01-25,2023-03-05,,,79514,1.9.10.3.17(BAP - SUPPORT INSULATORS(PGMA 79514))
3826,Dispatch,DIS,2023-03-06,2023-05-04,,,79514,1.9.10.3.17(BAP - SUPPORT INSULATORS(PGMA 79514))
3827,BAP - COLLECTING ELECTRODE(PGMA 79520),SUP,2022-12-26,2023-05-04,2022-11-21,,79520,1.9.10.3(Supply)
3828,Engineering,ENG,2022-12-26,2023-01-24,2022-11-21,,79520,1.9.10.3.18(BAP - COLLECTING ELECTRODE(PGMA 79520))
3829,Manufacturing ,MFG,2023-01-25,2023-03-05,,,79520,1.9.10.3.18(BAP - COLLECTING ELECTRODE(PGMA 79520))
3830,Dispatch,DIS,2023-03-06,2023-05-04,,,79520,1.9.10.3.18(BAP - COLLECTING ELECTRODE(PGMA 79520))
3831,BAP - GAS DIST. ASSY(PGMA 79508),SUP,2022-12-26,2023-05-14,2022-12-22,,79508,1.9.10.3(Supply)
3832,Engineering,ENG,2022-12-26,2023-01-24,2022-12-22,,79508,1.9.10.3.19(BAP - GAS DIST. ASSY(PGMA 79508))
3833,Manufacturing ,MFG,2023-01-25,2023-03-05,,,79508,1.9.10.3.19(BAP - GAS DIST. ASSY(PGMA 79508))
3834,Dispatch,DIS,2023-03-06,2023-05-14,,,79508,1.9.10.3.19(BAP - GAS DIST. ASSY(PGMA 79508))
3835,BAP - ROOF PANEL ASSY(PGMA 79547),SUP,2022-12-26,2023-05-14,,,79547,1.9.10.3(Supply)
3836,Engineering,ENG,2022-12-26,2023-01-24,,,79547,1.9.10.3.20(BAP - ROOF PANEL ASSY(PGMA 79547))
3837,Manufacturing ,MFG,2023-01-25,2023-03-05,,,79547,1.9.10.3.20(BAP - ROOF PANEL ASSY(PGMA 79547))
3838,Dispatch,DIS,2023-03-06,2023-05-14,,,79547,1.9.10.3.20(BAP - ROOF PANEL ASSY(PGMA 79547))
3839,BAP - INLET-OUTLET FUNNEL(PGMA 79550),SUP,2022-12-26,2023-06-13,,,79550,1.9.10.3(Supply)
3840,Engineering,ENG,2022-12-26,2023-01-24,,,79550,1.9.10.3.21(BAP - INLET-OUTLET FUNNEL(PGMA 79550))
3841,Manufacturing ,MFG,2023-01-25,2023-03-25,,,79550,1.9.10.3.21(BAP - INLET-OUTLET FUNNEL(PGMA 79550))
3842,Dispatch,DIS,2023-03-26,2023-06-13,,,79550,1.9.10.3.21(BAP - INLET-OUTLET FUNNEL(PGMA 79550))
3843,BAP - SPLITTER&GUIDE VANES(PGMA 79557),SUP,2022-12-26,2023-06-13,,,79557,1.9.10.3(Supply)
3844,Engineering,ENG,2022-12-26,2023-01-24,,,79557,1.9.10.3.22(BAP - SPLITTER&GUIDE VANES(PGMA 79557))
3845,Manufacturing ,MFG,2023-01-25,2023-03-25,,,79557,1.9.10.3.22(BAP - SPLITTER&GUIDE VANES(PGMA 79557))
3846,Dispatch,DIS,2023-03-26,2023-06-13,,,79557,1.9.10.3.22(BAP - SPLITTER&GUIDE VANES(PGMA 79557))
3847,BAP - SHOCK BARS(PGMA 79524),SUP,2022-12-26,2023-06-13,2022-12-09,,79524,1.9.10.3(Supply)
3848,Engineering,ENG,2022-12-26,2023-01-24,2022-12-09,,79524,1.9.10.3.23(BAP - SHOCK BARS(PGMA 79524))
3849,Manufacturing ,MFG,2023-01-25,2023-03-25,,,79524,1.9.10.3.23(BAP - SHOCK BARS(PGMA 79524))
3850,Dispatch,DIS,2023-03-26,2023-06-13,,,79524,1.9.10.3.23(BAP - SHOCK BARS(PGMA 79524))
3851,BAP - COLL ELECT RAPP MECH(PGMA 79525),SUP,2022-12-26,2023-06-13,,,79525,1.9.10.3(Supply)
3852,Engineering,ENG,2022-12-26,2023-01-24,,,79525,1.9.10.3.24(BAP - COLL ELECT RAPP MECH(PGMA 79525))
3853,Manufacturing ,MFG,2023-01-25,2023-03-25,,,79525,1.9.10.3.24(BAP - COLL ELECT RAPP MECH(PGMA 79525))
3854,Dispatch,DIS,2023-03-26,2023-06-13,,,79525,1.9.10.3.24(BAP - COLL ELECT RAPP MECH(PGMA 79525))
3855,BAP - GAS SCREEN-EP(PGMA 79511),SUP,2022-12-26,2023-06-23,,,79511,1.9.10.3(Supply)
3856,Engineering,ENG,2022-12-26,2023-01-24,,,79511,1.9.10.3.25(BAP - GAS SCREEN-EP(PGMA 79511))
3857,Manufacturing ,MFG,2023-01-25,2023-03-25,,,79511,1.9.10.3.25(BAP - GAS SCREEN-EP(PGMA 79511))
3858,Dispatch,DIS,2023-03-26,2023-06-23,,,79511,1.9.10.3.25(BAP - GAS SCREEN-EP(PGMA 79511))
3859,BAP - EMITTING ELECTRODES(PGMA 79515),SUP,2023-01-15,2023-07-13,2022-11-21,,79515,1.9.10.3(Supply)
3860,Engineering,ENG,2023-01-15,2023-02-13,2022-11-21,,79515,1.9.10.3.26(BAP - EMITTING ELECTRODES(PGMA 79515))
3861,Manufacturing ,MFG,2023-02-14,2023-04-14,,,79515,1.9.10.3.26(BAP - EMITTING ELECTRODES(PGMA 79515))
3862,Dispatch,DIS,2023-04-15,2023-07-13,,,79515,1.9.10.3.26(BAP - EMITTING ELECTRODES(PGMA 79515))
3863,BAP - OUTER ROOF-EP(PGMA 79542),SUP,2023-01-15,2023-07-13,,,79542,1.9.10.3(Supply)
3864,Engineering,ENG,2023-01-15,2023-02-13,,,79542,1.9.10.3.27(BAP - OUTER ROOF-EP(PGMA 79542))
3865,Manufacturing ,MFG,2023-02-14,2023-04-14,,,79542,1.9.10.3.27(BAP - OUTER ROOF-EP(PGMA 79542))
3866,Dispatch,DIS,2023-04-15,2023-07-13,,,79542,1.9.10.3.27(BAP - OUTER ROOF-EP(PGMA 79542))
3867,BAP - HOPPER UPPER PART(PGMA 79544),SUP,2023-01-15,2023-08-12,,,79544,1.9.10.3(Supply)
3868,Engineering,ENG,2023-01-15,2023-02-13,,,79544,1.9.10.3.28(BAP - HOPPER UPPER PART(PGMA 79544))
3869,Manufacturing ,MFG,2023-02-14,2023-04-24,,,79544,1.9.10.3.28(BAP - HOPPER UPPER PART(PGMA 79544))
3870,Dispatch,DIS,2023-04-25,2023-08-12,,,79544,1.9.10.3.28(BAP - HOPPER UPPER PART(PGMA 79544))
3871,BAP - HOP MLD&LOWER PART(PGMA 79545),SUP,2023-01-15,2023-08-12,,,79545,1.9.10.3(Supply)
3872,Engineering,ENG,2023-01-15,2023-02-13,,,79545,1.9.10.3.29(BAP - HOP MLD&LOWER PART(PGMA 79545))
3873,Manufacturing ,MFG,2023-02-14,2023-04-24,,,79545,1.9.10.3.29(BAP - HOP MLD&LOWER PART(PGMA 79545))
3874,Dispatch,DIS,2023-04-25,2023-08-12,,,79545,1.9.10.3.29(BAP - HOP MLD&LOWER PART(PGMA 79545))
3875,BAP - APP PLATFORM-HOPPER(PGMA 79565),SUP,2023-01-15,2023-08-12,,,79565,1.9.10.3(Supply)
3876,Engineering,ENG,2023-01-15,2023-02-13,,,79565,1.9.10.3.30(BAP - APP PLATFORM-HOPPER(PGMA 79565))
3877,Manufacturing ,MFG,2023-02-14,2023-04-24,,,79565,1.9.10.3.30(BAP - APP PLATFORM-HOPPER(PGMA 79565))
3878,Dispatch,DIS,2023-04-25,2023-08-12,,,79565,1.9.10.3.30(BAP - APP PLATFORM-HOPPER(PGMA 79565))
3879,BAP - EMIT ELECT RAPP MECH(PGMA 79516),SUP,2023-02-04,2023-09-11,,,79516,1.9.10.3(Supply)
3880,Engineering,ENG,2023-02-04,2023-03-05,,,79516,1.9.10.3.31(BAP - EMIT ELECT RAPP MECH(PGMA 79516))
3881,Manufacturing ,MFG,2023-03-06,2023-05-24,,,79516,1.9.10.3.31(BAP - EMIT ELECT RAPP MECH(PGMA 79516))
3882,Dispatch,DIS,2023-05-25,2023-09-11,,,79516,1.9.10.3.31(BAP - EMIT ELECT RAPP MECH(PGMA 79516))
3883,BAP - DRIVE ARGT. FOR EMIT.(PGMA 79517),SUP,2023-02-04,2023-09-11,,,79517,1.9.10.3(Supply)
3884,Engineering,ENG,2023-02-04,2023-03-05,,,79517,1.9.10.3.32(BAP - DRIVE ARGT. FOR EMIT.(PGMA 79517))
3885,Manufacturing ,MFG,2023-03-06,2023-05-24,,,79517,1.9.10.3.32(BAP - DRIVE ARGT. FOR EMIT.(PGMA 79517))
3886,Dispatch,DIS,2023-05-25,2023-09-11,,,79517,1.9.10.3.32(BAP - DRIVE ARGT. FOR EMIT.(PGMA 79517))
3887,BAP - INSULATOR HOUSING AS(PGMA 79506),SUP,2023-02-04,2023-10-11,,,79506,1.9.10.3(Supply)
3888,Engineering,ENG,2023-02-04,2023-03-05,,,79506,1.9.10.3.33(BAP - INSULATOR HOUSING AS(PGMA 79506))
3889,Manufacturing ,MFG,2023-03-06,2023-06-13,,,79506,1.9.10.3.33(BAP - INSULATOR HOUSING AS(PGMA 79506))
3890,Dispatch,DIS,2023-06-14,2023-10-11,,,79506,1.9.10.3.33(BAP - INSULATOR HOUSING AS(PGMA 79506))
3891,BAP - PENT HOUSE FOR E P(PGMA 79555),SUP,2023-02-04,2023-10-11,,,79555,1.9.10.3(Supply)
3892,Engineering,ENG,2023-02-04,2023-03-05,,,79555,1.9.10.3.34(BAP - PENT HOUSE FOR E P(PGMA 79555))
3893,Manufacturing ,MFG,2023-03-06,2023-06-13,,,79555,1.9.10.3.34(BAP - PENT HOUSE FOR E P(PGMA 79555))
3894,Dispatch,DIS,2023-06-14,2023-10-11,,,79555,1.9.10.3.34(BAP - PENT HOUSE FOR E P(PGMA 79555))
3895,BAP - PENT HOUSE ROOFING SHE(PGMA 89614),SUP,2023-02-04,2023-10-11,,,89614,1.9.10.3(Supply)
3896,Engineering,ENG,2023-02-04,2023-03-05,,,89614,1.9.10.3.35(BAP - PENT HOUSE ROOFING SHE(PGMA 89614))
3897,Manufacturing ,MFG,2023-03-06,2023-06-13,,,89614,1.9.10.3.35(BAP - PENT HOUSE ROOFING SHE(PGMA 89614))
3898,Dispatch,DIS,2023-06-14,2023-10-11,,,89614,1.9.10.3.35(BAP - PENT HOUSE ROOFING SHE(PGMA 89614))
3899,BAP - ESP ROOF HANDRAILS(PGMA 79526),SUP,2023-02-04,2023-10-11,,,79526,1.9.10.3(Supply)
3900,Engineering,ENG,2023-02-04,2023-03-05,,,79526,1.9.10.3.36(BAP - ESP ROOF HANDRAILS(PGMA 79526))
3901,Manufacturing ,MFG,2023-03-06,2023-06-13,,,79526,1.9.10.3.36(BAP - ESP ROOF HANDRAILS(PGMA 79526))
3902,Dispatch,DIS,2023-06-14,2023-10-11,,,79526,1.9.10.3.36(BAP - ESP ROOF HANDRAILS(PGMA 79526))
3903,BAP - COLL ELEC RAPP DRIVE(PGMA 79526),SUP,2023-05-05,2024-01-09,,,79526,1.9.10.3(Supply)
3904,Engineering,ENG,2023-05-05,2023-06-03,,,79526,1.9.10.3.37(BAP - COLL ELEC RAPP DRIVE(PGMA 79526))
3905,Manufacturing ,MFG,2023-06-04,2023-09-11,,,79526,1.9.10.3.37(BAP - COLL ELEC RAPP DRIVE(PGMA 79526))
3906,Dispatch,DIS,2023-09-12,2024-01-09,,,79526,1.9.10.3.37(BAP - COLL ELEC RAPP DRIVE(PGMA 79526))
3907,BAP - GD-RAPPING MECHANISM(PGMA 79509),SUP,2023-05-05,2024-01-09,,,79509,1.9.10.3(Supply)
3908,Engineering,ENG,2023-05-05,2023-06-03,,,79509,1.9.10.3.38(BAP - GD-RAPPING MECHANISM(PGMA 79509))
3909,Manufacturing ,MFG,2023-06-04,2023-09-11,,,79509,1.9.10.3.38(BAP - GD-RAPPING MECHANISM(PGMA 79509))
3910,Dispatch,DIS,2023-09-12,2024-01-09,,,79509,1.9.10.3.38(BAP - GD-RAPPING MECHANISM(PGMA 79509))
3911,BAP - GD_DRIVE ARRANGEMENT(PGMA 79510),SUP,2023-05-05,2024-01-09,,,79510,1.9.10.3(Supply)
3912,Engineering,ENG,2023-05-05,2023-06-03,,,79510,1.9.10.3.39(BAP - GD_DRIVE ARRANGEMENT(PGMA 79510))
3913,Manufacturing ,MFG,2023-06-04,2023-09-11,,,79510,1.9.10.3.39(BAP - GD_DRIVE ARRANGEMENT(PGMA 79510))
3914,Dispatch,DIS,2023-09-12,2024-01-09,,,79510,1.9.10.3.39(BAP - GD_DRIVE ARRANGEMENT(PGMA 79510))
3915,BAP - INSPECTION DOORS(PGMA 79523),SUP,2023-05-05,2024-01-09,2022-12-02,,79523,1.9.10.3(Supply)
3916,Engineering,ENG,2023-05-05,2023-06-03,2022-12-02,,79523,1.9.10.3.40(BAP - INSPECTION DOORS(PGMA 79523))
3917,Manufacturing ,MFG,2023-06-04,2023-09-11,,,79523,1.9.10.3.40(BAP - INSPECTION DOORS(PGMA 79523))
3918,Dispatch,DIS,2023-09-12,2024-01-09,,,79523,1.9.10.3.40(BAP - INSPECTION DOORS(PGMA 79523))
3919,BAP - CONTROL ROOM-INSERTS(PGMA 79559),SUP,2023-05-05,2024-01-09,,,79559,1.9.10.3(Supply)
3920,Engineering,ENG,2023-05-05,2023-06-03,,,79559,1.9.10.3.41(BAP - CONTROL ROOM-INSERTS(PGMA 79559))
3921,Manufacturing ,MFG,2023-06-04,2023-09-11,,,79559,1.9.10.3.41(BAP - CONTROL ROOM-INSERTS(PGMA 79559))
3922,Dispatch,DIS,2023-09-12,2024-01-09,,,79559,1.9.10.3.41(BAP - CONTROL ROOM-INSERTS(PGMA 79559))
3923,BAP - GEARED MOTORS FOR RAPP(PGMA 79531),SUP,2023-02-24,2023-12-10,,,79531,1.9.10.3(Supply)
3924,Engineering,ENG,2023-02-24,2023-07-23,,,79531,1.9.10.3.42(BAP - GEARED MOTORS FOR RAPP(PGMA 79531))
3925,Manufacturing ,MFG,2023-07-24,2023-10-21,,,79531,1.9.10.3.42(BAP - GEARED MOTORS FOR RAPP(PGMA 79531))
3926,Dispatch,DIS,2023-10-22,2023-12-10,,,79531,1.9.10.3.42(BAP - GEARED MOTORS FOR RAPP(PGMA 79531))
3927,BAP - ESP-SUB-DELIVERY COMPO(PGMA 79505),SUP,2023-06-24,2024-03-09,,,79505,1.9.10.3(Supply)
3928,Engineering,ENG,2023-06-24,2023-07-23,,,79505,1.9.10.3.43(BAP - ESP-SUB-DELIVERY COMPO(PGMA 79505))
3929,Manufacturing ,MFG,2023-07-24,2023-10-31,,,79505,1.9.10.3.43(BAP - ESP-SUB-DELIVERY COMPO(PGMA 79505))
3930,Dispatch,DIS,2023-11-01,2024-03-09,,,79505,1.9.10.3.43(BAP - ESP-SUB-DELIVERY COMPO(PGMA 79505))
3931,BAP - HEATING ELEMENTS(PGMA 79590),SUP,2023-10-02,2024-06-07,,,79590,1.9.10.3(Supply)
3932,Engineering,ENG,2023-10-02,2023-10-31,,,79590,1.9.10.3.44(BAP - HEATING ELEMENTS(PGMA 79590))
3933,Manufacturing ,MFG,2023-11-01,2024-02-08,,,79590,1.9.10.3.44(BAP - HEATING ELEMENTS(PGMA 79590))
3934,Dispatch,DIS,2024-02-09,2024-06-07,,,79590,1.9.10.3.44(BAP - HEATING ELEMENTS(PGMA 79590))
3935,BAP - ELECTRICAL SD COMPTS(PGMA 79530),SUP,2023-10-02,2024-06-07,,,79530,1.9.10.3(Supply)
3936,Engineering,ENG,2023-10-02,2023-10-31,,,79530,1.9.10.3.45(BAP - ELECTRICAL SD COMPTS(PGMA 79530))
3937,Manufacturing ,MFG,2023-11-01,2024-02-08,,,79530,1.9.10.3.45(BAP - ELECTRICAL SD COMPTS(PGMA 79530))
3938,Dispatch,DIS,2024-02-09,2024-06-07,,,79530,1.9.10.3.45(BAP - ELECTRICAL SD COMPTS(PGMA 79530))
3939,BAP - JUNCTION BOX & PUSH BU(PGMA 79537),SUP,2023-10-02,2024-06-07,,,79537,1.9.10.3(Supply)
3940,Engineering,ENG,2023-10-02,2023-10-31,,,79537,1.9.10.3.46(BAP - JUNCTION BOX & PUSH BU(PGMA 79537))
3941,Manufacturing ,MFG,2023-11-01,2024-02-08,,,79537,1.9.10.3.46(BAP - JUNCTION BOX & PUSH BU(PGMA 79537))
3942,Dispatch,DIS,2024-02-09,2024-06-07,,,79537,1.9.10.3.46(BAP - JUNCTION BOX & PUSH BU(PGMA 79537))
3943,BAP - FIXING COMP. FOR ESP I(PGMA 79568),SUP,2023-08-13,2024-02-08,,,79568,1.9.10.3(Supply)
3944,Engineering,ENG,2023-08-13,2023-09-11,,,79568,1.9.10.3.47(BAP - FIXING COMP. FOR ESP I(PGMA 79568))
3945,Manufacturing ,MFG,2023-09-12,2023-12-20,,,79568,1.9.10.3.47(BAP - FIXING COMP. FOR ESP I(PGMA 79568))
3946,Dispatch,DIS,2023-12-21,2024-02-08,,,79568,1.9.10.3.47(BAP - FIXING COMP. FOR ESP I(PGMA 79568))
3947,BAP - WATER WASHING SYSTEM(PGMA 79566),SUP,2023-10-02,2024-07-07,,,79566,1.9.10.3(Supply)
3948,Engineering,ENG,2023-10-02,2023-10-31,,,79566,1.9.10.3.48(BAP - WATER WASHING SYSTEM(PGMA 79566))
3949,Manufacturing ,MFG,2023-11-01,2024-02-08,,,79566,1.9.10.3.48(BAP - WATER WASHING SYSTEM(PGMA 79566))
3950,Dispatch,DIS,2024-02-09,2024-07-07,,,79566,1.9.10.3.48(BAP - WATER WASHING SYSTEM(PGMA 79566))
3951,BAP -SUPPORT INSULATORS(PGMA 79514),SUP,2023-10-02,2024-07-07,,,79514,1.9.10.3(Supply)
3952,Engineering,ENG,2023-10-02,2023-10-31,,,79514,1.9.10.3.49(BAP -SUPPORT INSULATORS(PGMA 79514))
3953,Manufacturing ,MFG,2023-11-01,2024-02-08,,,79514,1.9.10.3.49(BAP -SUPPORT INSULATORS(PGMA 79514))
3954,Dispatch,DIS,2024-02-09,2024-07-07,,,79514,1.9.10.3.49(BAP -SUPPORT INSULATORS(PGMA 79514))
3955,BAP - BAPCON & ACCESSORIES(PGMA 79578),SUP,2024-01-10,2024-09-05,,,79578,1.9.10.3(Supply)
3956,Engineering,ENG,2024-01-10,2024-02-08,,,79578,1.9.10.3.50(BAP - BAPCON & ACCESSORIES(PGMA 79578))
3957,Manufacturing ,MFG,2024-02-09,2024-05-18,,,79578,1.9.10.3.50(BAP - BAPCON & ACCESSORIES(PGMA 79578))
3958,Dispatch,DIS,2024-05-19,2024-09-05,,,79578,1.9.10.3.50(BAP - BAPCON & ACCESSORIES(PGMA 79578))
3959,BAP - IOS PANEL(PGMA 79595),SUP,2024-02-29,2024-11-04,,,79595,1.9.10.3(Supply)
3960,Engineering,ENG,2024-02-29,2024-03-29,,,79595,1.9.10.3.51(BAP - IOS PANEL(PGMA 79595))
3961,Manufacturing ,MFG,2024-03-30,2024-07-07,,,79595,1.9.10.3.51(BAP - IOS PANEL(PGMA 79595))
3962,Dispatch,DIS,2024-07-08,2024-11-04,,,79595,1.9.10.3.51(BAP - IOS PANEL(PGMA 79595))
3963,BAP - INTERLOCKS(PGMA 79572),SUP,2024-02-29,2024-11-04,,,79572,1.9.10.3(Supply)
3964,Engineering,ENG,2024-02-29,2024-03-29,,,79572,1.9.10.3.52(BAP - INTERLOCKS(PGMA 79572))
3965,Manufacturing ,MFG,2024-03-30,2024-07-07,,,79572,1.9.10.3.52(BAP - INTERLOCKS(PGMA 79572))
3966,Dispatch,DIS,2024-07-08,2024-11-04,,,79572,1.9.10.3.52(BAP - INTERLOCKS(PGMA 79572))
3967,BAP - ELECTRICALLY OPERTD HOIST & ACCESSORIES(PGMA 79573),SUP,2024-02-29,2024-11-04,,,79573,1.9.10.3(Supply)
3968,Engineering,ENG,2024-02-29,2024-03-29,,,79573,1.9.10.3.53(BAP - ELECTRICALLY OPERTD HOIST & ACCESSORIES(PGMA 79573))
3969,Manufacturing ,MFG,2024-03-30,2024-07-07,,,79573,1.9.10.3.53(BAP - ELECTRICALLY OPERTD HOIST & ACCESSORIES(PGMA 79573))
3970,Dispatch,DIS,2024-07-08,2024-11-04,,,79573,1.9.10.3.53(BAP - ELECTRICALLY OPERTD HOIST & ACCESSORIES(PGMA 79573))
3971,BAP - GUIDE VANES /GUIDE PLATES(PGMA 79589),SUP,2024-02-29,2024-11-04,,,79589,1.9.10.3(Supply)
3972,Engineering,ENG,2024-02-29,2024-03-29,,,79589,1.9.10.3.54(BAP - GUIDE VANES /GUIDE PLATES(PGMA 79589))
3973,Manufacturing ,MFG,2024-03-30,2024-07-07,,,79589,1.9.10.3.54(BAP - GUIDE VANES /GUIDE PLATES(PGMA 79589))
3974,Dispatch,DIS,2024-07-08,2024-11-04,,,79589,1.9.10.3.54(BAP - GUIDE VANES /GUIDE PLATES(PGMA 79589))
3975,BAP - COMMISSIONING SPARES(PGMA 79988),SUP,2024-02-29,2024-11-04,,,79988,1.9.10.3(Supply)
3976,Engineering,ENG,2024-02-29,2024-03-29,,,79988,1.9.10.3.55(BAP - COMMISSIONING SPARES(PGMA 79988))
3977,Manufacturing ,MFG,2024-03-30,2024-07-07,,,79988,1.9.10.3.55(BAP - COMMISSIONING SPARES(PGMA 79988))
3978,Dispatch,DIS,2024-07-08,2024-11-04,,,79988,1.9.10.3.55(BAP - COMMISSIONING SPARES(PGMA 79988))
3979,BAP - ESP HAND RAILS(PGMA 89611),SUP,2024-02-29,2024-11-04,,,89611,1.9.10.3(Supply)
3980,Engineering,ENG,2024-02-29,2024-03-29,,,89611,1.9.10.3.56(BAP - ESP HAND RAILS(PGMA 89611))
3981,Manufacturing ,MFG,2024-03-30,2024-07-07,,,89611,1.9.10.3.56(BAP - ESP HAND RAILS(PGMA 89611))
3982,Dispatch,DIS,2024-07-08,2024-11-04,,,89611,1.9.10.3.56(BAP - ESP HAND RAILS(PGMA 89611))
3983,BAP - HSFG BOLTS(PGMA 89618),SUP,2023-03-06,2023-11-10,,,89618,1.9.10.3(Supply)
3984,Engineering,ENG,2023-03-06,2023-04-04,,,89618,1.9.10.3.57(BAP - HSFG BOLTS(PGMA 89618))
3985,Manufacturing ,MFG,2023-04-05,2023-07-13,,,89618,1.9.10.3.57(BAP - HSFG BOLTS(PGMA 89618))
3986,Dispatch,DIS,2023-07-14,2023-11-10,,,89618,1.9.10.3.57(BAP - HSFG BOLTS(PGMA 89618))
3987,BAP - OPACITY MONITOR & ACCE(PGMA 79574),SUP,2023-06-04,2024-02-08,,,79574,1.9.10.3(Supply)
3988,Engineering,ENG,2023-06-04,2023-07-03,,,79574,1.9.10.3.58(BAP - OPACITY MONITOR & ACCE(PGMA 79574))
3989,Manufacturing ,MFG,2023-07-04,2023-10-11,,,79574,1.9.10.3.58(BAP - OPACITY MONITOR & ACCE(PGMA 79574))
3990,Dispatch,DIS,2023-10-12,2024-02-08,,,79574,1.9.10.3.58(BAP - OPACITY MONITOR & ACCE(PGMA 79574))
3991,BAP - ASH LEVEL INDICATOR(PGMA 79563),SUP,2023-06-04,2024-02-08,,,79563,1.9.10.3(Supply)
3992,Engineering,ENG,2023-06-04,2023-07-03,,,79563,1.9.10.3.59(BAP - ASH LEVEL INDICATOR(PGMA 79563))
3993,Manufacturing ,MFG,2023-07-04,2023-10-11,,,79563,1.9.10.3.59(BAP - ASH LEVEL INDICATOR(PGMA 79563))
3994,Dispatch,DIS,2023-10-12,2024-02-08,,,79563,1.9.10.3.59(BAP - ASH LEVEL INDICATOR(PGMA 79563))
3995,BAP - EP PERF TEST EQUIPT(PGMA 79561),SUP,2023-06-04,2024-02-08,,,79561,1.9.10.3(Supply)
3996,Engineering,ENG,2023-06-04,2023-07-03,,,79561,1.9.10.3.60(BAP - EP PERF TEST EQUIPT(PGMA 79561))
3997,Manufacturing ,MFG,2023-07-04,2023-10-11,,,79561,1.9.10.3.60(BAP - EP PERF TEST EQUIPT(PGMA 79561))
3998,Dispatch,DIS,2023-10-12,2024-02-08,,,79561,1.9.10.3.60(BAP - EP PERF TEST EQUIPT(PGMA 79561))
3999,BAP - TOOLS & TACKLES(PGMA 79996),SUP,2023-06-04,2024-02-08,,,79996,1.9.10.3(Supply)
4000,Engineering,ENG,2023-06-04,2023-07-03,,,79996,1.9.10.3.61(BAP - TOOLS & TACKLES(PGMA 79996))
4001,Manufacturing ,MFG,2023-07-04,2023-10-11,,,79996,1.9.10.3.61(BAP - TOOLS & TACKLES(PGMA 79996))
4002,Dispatch,DIS,2023-10-12,2024-02-08,,,79996,1.9.10.3.61(BAP - TOOLS & TACKLES(PGMA 79996))
4003,BOI Items,SUP,2022-11-26,2024-06-07,,,,1.9.10.3(Supply)
4004, BAP - BOI Items: Cable Trays (79562),SUP,2023-02-24,2024-01-09,,,79562,1.9.10.3.62(BOI Items)
4005,Engineering,ENG,2023-02-24,2023-08-22,,,79562,1.9.10.3.62.1( BAP - BOI Items: Cable Trays (79562))
4006,Manufacturing ,MFG,2023-08-23,2023-11-20,,,79562,1.9.10.3.62.1( BAP - BOI Items: Cable Trays (79562))
4007,Dispatch,DIS,2023-11-21,2024-01-09,,,79562,1.9.10.3.62.1( BAP - BOI Items: Cable Trays (79562))
4008, BAP - BOI Items: Floor Grills (89613),SUP,2022-11-26,2023-09-01,,,89613,1.9.10.3.62(BOI Items)
4009,Engineering,ENG,2022-11-26,2023-05-14,,,89613,1.9.10.3.62.2( BAP - BOI Items: Floor Grills (89613))
4010,Manufacturing ,MFG,2023-05-15,2023-07-13,,,89613,1.9.10.3.62.2( BAP - BOI Items: Floor Grills (89613))
4011,Dispatch,DIS,2023-07-14,2023-09-01,,,89613,1.9.10.3.62.2( BAP - BOI Items: Floor Grills (89613))
4012, BAP - BOI Items: Cable (79560),SUP,2023-02-24,2024-01-09,,,79560,1.9.10.3.62(BOI Items)
4013,Engineering,ENG,2023-02-24,2023-08-22,,,79560,1.9.10.3.62.3( BAP - BOI Items: Cable (79560))
4014,Manufacturing ,MFG,2023-08-23,2023-11-20,,,79560,1.9.10.3.62.3( BAP - BOI Items: Cable (79560))
4015,Dispatch,DIS,2023-11-21,2024-01-09,,,79560,1.9.10.3.62.3( BAP - BOI Items: Cable (79560))
4016,BAP - BOI Items: Gear Motor (79531),SUP,2023-02-24,2023-12-10,,,79531,1.9.10.3.62(BOI Items)
4017,Engineering,ENG,2023-02-24,2023-07-23,,,79531,1.9.10.3.62.4(BAP - BOI Items: Gear Motor (79531))
4018,Manufacturing ,MFG,2023-07-24,2023-10-21,,,79531,1.9.10.3.62.4(BAP - BOI Items: Gear Motor (79531))
4019,Dispatch,DIS,2023-10-22,2023-12-10,,,79531,1.9.10.3.62.4(BAP - BOI Items: Gear Motor (79531))
4020,BAP - BOI Items: Inter Locks (79972),SUP,2023-07-24,2024-06-07,,,79972,1.9.10.3.62(BOI Items)
4021,Engineering,ENG,2023-07-24,2023-12-20,,,79972,1.9.10.3.62.5(BAP - BOI Items: Inter Locks (79972))
4022,Manufacturing ,MFG,2023-12-21,2024-04-18,,,79972,1.9.10.3.62.5(BAP - BOI Items: Inter Locks (79972))
4023,Dispatch,DIS,2024-04-19,2024-06-07,,,79972,1.9.10.3.62.5(BAP - BOI Items: Inter Locks (79972))
4024,BAP - BOI Items: Insulation wool (79567),SUP,2023-07-24,2024-06-07,,,79567,1.9.10.3.62(BOI Items)
4025,Engineering,ENG,2023-07-24,2024-01-19,,,79567,1.9.10.3.62.6(BAP - BOI Items: Insulation wool (79567))
4026,Manufacturing ,MFG,2024-01-20,2024-04-18,,,79567,1.9.10.3.62.6(BAP - BOI Items: Insulation wool (79567))
4027,Dispatch,DIS,2024-04-19,2024-06-07,,,79567,1.9.10.3.62.6(BAP - BOI Items: Insulation wool (79567))
4028,BAP - BOI Items: Aluminium Cladding Sheet (89615),SUP,2023-01-05,2023-10-11,,,89615,1.9.10.3.62(BOI Items)
4029,Engineering,ENG,2023-01-05,2023-06-23,,,89615,1.9.10.3.62.7(BAP - BOI Items: Aluminium Cladding Sheet (89615))
4030,Manufacturing ,MFG,2023-06-24,2023-08-22,,,89615,1.9.10.3.62.7(BAP - BOI Items: Aluminium Cladding Sheet (89615))
4031,Dispatch,DIS,2023-08-23,2023-10-11,,,89615,1.9.10.3.62.7(BAP - BOI Items: Aluminium Cladding Sheet (89615))
4032,BAP - BOI Items: PANEL TYPE HOPPER HEATERS & ACCESSORIES (79591),SUP,2023-06-04,2024-06-07,,,79591,1.9.10.3.62(BOI Items)
4033,Engineering,ENG,2023-06-04,2023-10-31,,,79591,1.9.10.3.62.8(BAP - BOI Items: PANEL TYPE HOPPER HEATERS & ACCESSORIES (79591))
4034,Manufacturing ,MFG,2023-11-01,2024-04-18,,,79591,1.9.10.3.62.8(BAP - BOI Items: PANEL TYPE HOPPER HEATERS & ACCESSORIES (79591))
4035,Dispatch,DIS,2024-04-19,2024-06-07,,,79591,1.9.10.3.62.8(BAP - BOI Items: PANEL TYPE HOPPER HEATERS & ACCESSORIES (79591))
4036,BAP - BOI Items: LT SWITCH BOARD (79577),SUP,2023-07-24,2024-04-28,,,79577,1.9.10.3.62(BOI Items)
4037,Engineering,ENG,2023-07-24,2023-12-20,,,79577,1.9.10.3.62.9(BAP - BOI Items: LT SWITCH BOARD (79577))
4038,Manufacturing ,MFG,2023-12-21,2024-03-09,,,79577,1.9.10.3.62.9(BAP - BOI Items: LT SWITCH BOARD (79577))
4039,Dispatch,DIS,2024-03-10,2024-04-28,,,79577,1.9.10.3.62.9(BAP - BOI Items: LT SWITCH BOARD (79577))
4040,Erection,ERC,2023-10-23,2025-12-12,,,,1.9.10(Electrostatic Precipitator)
4041, First 3 Nos Pass,ERC,2023-10-23,2025-09-27,,,,1.9.10.4(Erection)
4042,Foundation checking and corrections,CIV,2023-10-23,2023-10-27,,,,1.9.10.4.1( First 3 Nos Pass)
4043,Erection: Supporting structures,ERC,2023-10-29,2024-02-05,,,,1.9.10.4.1( First 3 Nos Pass)
4044,Erection: Slide supports & Casing Structure,ERC,2023-11-28,2024-03-06,,,,1.9.10.4.1( First 3 Nos Pass)
4045,Erection: Casing shell,ERC,2023-12-28,2024-04-05,,,,1.9.10.4.1( First 3 Nos Pass)
4046,Erection: ESP Galleries & stairs,ERC,2024-02-06,2024-10-12,,,,1.9.10.4.1( First 3 Nos Pass)
4047,Erection: ESP Roof handrails,ERC,2024-10-13,2025-01-10,,,,1.9.10.4.1( First 3 Nos Pass)
4048,Erection: Hopper ridges,ERC,2024-01-17,2024-04-15,,,,1.9.10.4.1( First 3 Nos Pass)
4049,Erection: ESP Roof panels,ERC,2024-02-16,2024-05-15,,,,1.9.10.4.1( First 3 Nos Pass)
4050,Erection: Col & Emitting Ele suspension,ERC,2024-02-26,2024-05-25,,,,1.9.10.4.1( First 3 Nos Pass)
4051,Erection: Insulator support panel,ERC,2024-03-27,2024-06-24,,,,1.9.10.4.1( First 3 Nos Pass)
4052,"Erection: Emit system frame-top, Middle & Bottom",ERC,2024-04-26,2024-07-24,,,,1.9.10.4.1( First 3 Nos Pass)
4053,Erection: Gas dist. Assy,ERC,2024-05-26,2024-08-08,,,,1.9.10.4.1( First 3 Nos Pass)
4054,Erection: Inlet & outlet funnels,ERC,2024-05-26,2024-08-23,,,,1.9.10.4.1( First 3 Nos Pass)
4055,Erection: Splitters & guide vanes,ERC,2024-05-26,2024-08-23,,,,1.9.10.4.1( First 3 Nos Pass)
4056,Erection: Col Electrode & Shock Bar,ERC,2024-06-25,2024-10-02,,,,1.9.10.4.1( First 3 Nos Pass)
4057,Erection: Roof panel ASSY,ERC,2024-07-25,2024-10-22,,,,1.9.10.4.1( First 3 Nos Pass)
4058,Erection: Pent house & Outer Roof for ESP,ERC,2024-09-08,2024-12-06,,,,1.9.10.4.1( First 3 Nos Pass)
4059,Erection: Hopper upperpart,ERC,2024-10-08,2025-04-05,,,,1.9.10.4.1( First 3 Nos Pass)
4060,Erection: Hopper middle& lower part,ERC,2024-11-07,2025-05-05,,,,1.9.10.4.1( First 3 Nos Pass)
4061,Erection: Gas screen,ERC,2025-02-05,2025-04-20,,,,1.9.10.4.1( First 3 Nos Pass)
4062,Erection: Hopper App Platform,ERC,2025-02-05,2025-08-03,,,,1.9.10.4.1( First 3 Nos Pass)
4063,Erection: Insulator housing,ERC,2025-04-06,2025-07-04,,,,1.9.10.4.1( First 3 Nos Pass)
4064,Erection of Inspection doors,ERC,2025-06-05,2025-07-04,,,,1.9.10.4.1( First 3 Nos Pass)
4065,Erection of HV Rectifier transformer,ERC,2025-06-05,2025-08-03,,,,1.9.10.4.1( First 3 Nos Pass)
4066,Erection of Sub-delivery comp,ERC,2025-07-05,2025-08-03,,,,1.9.10.4.1( First 3 Nos Pass)
4067,Erection of Electrically operated hoists,ERC,2025-06-05,2025-09-02,,,,1.9.10.4.1( First 3 Nos Pass)
4068,Erection of Col Rapping Mech,ERC,2025-03-07,2025-09-02,,,,1.9.10.4.1( First 3 Nos Pass)
4069,Erection of Emit Rapping Mech,ERC,2025-04-06,2025-09-12,,,,1.9.10.4.1( First 3 Nos Pass)
4070,Erection of GD-rapping Mech,ERC,2025-07-05,2025-08-18,,,,1.9.10.4.1( First 3 Nos Pass)
4071,Erection of Col rapping drive,ERC,2025-07-05,2025-08-18,,,,1.9.10.4.1( First 3 Nos Pass)
4072,Erection of Emit rapping drive,ERC,2025-07-05,2025-08-18,,,,1.9.10.4.1( First 3 Nos Pass)
4073,Erection of GD drive arrangement,ERC,2025-08-19,2025-09-17,,,,1.9.10.4.1( First 3 Nos Pass)
4074,Erection of Geared motors for rap,ERC,2025-07-05,2025-09-02,,,,1.9.10.4.1( First 3 Nos Pass)
4075,Erection of Support insulator,ERC,2025-07-05,2025-09-02,,,,1.9.10.4.1( First 3 Nos Pass)
4076,Erection of Emit system suspension,ERC,2025-07-05,2025-09-02,,,,1.9.10.4.1( First 3 Nos Pass)
4077,Erection of Emit electrodes,ERC,2025-07-05,2025-09-02,,,,1.9.10.4.1( First 3 Nos Pass)
4078,Erection of Heating elements,ERC,2025-07-05,2025-08-03,,,,1.9.10.4.1( First 3 Nos Pass)
4079,Erection of Water washing system,ERC,2025-07-05,2025-08-18,,,,1.9.10.4.1( First 3 Nos Pass)
4080,Erection of Interlocks,ERC,2025-07-05,2025-08-03,,,,1.9.10.4.1( First 3 Nos Pass)
4081,Erection of Ash level indicator,ERC,2025-07-05,2025-08-03,,,,1.9.10.4.1( First 3 Nos Pass)
4082,Erection of ESP Perf test equipments,ERC,2025-08-04,2025-08-18,,,,1.9.10.4.1( First 3 Nos Pass)
4083,Erection of Insulation wool,ERC,2025-05-06,2025-09-27,,,,1.9.10.4.1( First 3 Nos Pass)
4084, Last 3 Nos Pass,ERC,2023-12-23,2025-12-12,,,,1.9.10.4(Erection)
4085,Foundation checking and corrections,CIV,2023-12-23,2023-12-27,,,,1.9.10.4.2( Last 3 Nos Pass)
4086,Erection of Supporting structures,ERC,2023-12-29,2024-04-06,,,,1.9.10.4.2( Last 3 Nos Pass)
4087,Erection of Slide supports & Casing Structure,ERC,2024-01-28,2024-05-06,,,,1.9.10.4.2( Last 3 Nos Pass)
4088,Erection of Casing shell,ERC,2024-02-27,2024-06-05,,,,1.9.10.4.2( Last 3 Nos Pass)
4089,Erection of ESP Galleries & stairs,ERC,2024-04-07,2024-12-12,,,,1.9.10.4.2( Last 3 Nos Pass)
4090,Erection of ESP Roof handrails,ERC,2024-12-13,2025-03-12,,,,1.9.10.4.2( Last 3 Nos Pass)
4091,Erection of Hopper ridges,ERC,2024-03-18,2024-06-15,,,,1.9.10.4.2( Last 3 Nos Pass)
4092,Erection of ESP Roof panels,ERC,2024-04-17,2024-07-15,,,,1.9.10.4.2( Last 3 Nos Pass)
4093,Erection of Col Ele suspension,ERC,2024-04-27,2024-07-25,,,,1.9.10.4.2( Last 3 Nos Pass)
4094,Erection of Insulator support panel,ERC,2024-05-27,2024-08-24,,,,1.9.10.4.2( Last 3 Nos Pass)
4095,"Erection of Emit system frame-top, Middle & Bottom",ERC,2024-06-26,2024-09-23,,,,1.9.10.4.2( Last 3 Nos Pass)
4096,Erection of Gas dist. Assy,ERC,2024-07-26,2024-10-08,,,,1.9.10.4.2( Last 3 Nos Pass)
4097,Erection of Inlet & outlet funnels,ERC,2024-07-26,2024-10-23,,,,1.9.10.4.2( Last 3 Nos Pass)
4098,Erection of Splitters & guide vanes,ERC,2024-07-26,2024-10-23,,,,1.9.10.4.2( Last 3 Nos Pass)
4099,Erection of Col Electrode & Shock Bar,ERC,2024-08-25,2024-12-02,,,,1.9.10.4.2( Last 3 Nos Pass)
4100,Erection of Roof panel ASSY,ERC,2024-09-24,2024-12-22,,,,1.9.10.4.2( Last 3 Nos Pass)
4101,Erection of Pent house & Outer Roof for ESP,ERC,2024-11-08,2025-02-05,,,,1.9.10.4.2( Last 3 Nos Pass)
4102,Erection of Hopper upperpart,ERC,2024-12-08,2025-06-05,,,,1.9.10.4.2( Last 3 Nos Pass)
4103,Erection of Hopper middle& lower part,ERC,2025-01-07,2025-07-05,,,,1.9.10.4.2( Last 3 Nos Pass)
4104,Erection of Gas screen,ERC,2025-04-07,2025-06-20,,,,1.9.10.4.2( Last 3 Nos Pass)
4105,Erection of Hopper App Platform,ERC,2025-04-07,2025-10-03,,,,1.9.10.4.2( Last 3 Nos Pass)
4106,Erection of Insulator housing,ERC,2025-06-06,2025-09-03,,,,1.9.10.4.2( Last 3 Nos Pass)
4107,Erection of Inspection doors,ERC,2025-08-05,2025-09-03,,,,1.9.10.4.2( Last 3 Nos Pass)
4108,Erection of HV Rectifier transformer,ERC,2025-08-05,2025-10-03,,,,1.9.10.4.2( Last 3 Nos Pass)
4109,Erection of Sub-delivery comp,ERC,2025-09-04,2025-10-03,,,,1.9.10.4.2( Last 3 Nos Pass)
4110,Erection of Electrically operated hoists,ERC,2025-08-05,2025-11-02,,,,1.9.10.4.2( Last 3 Nos Pass)
4111,Erection of Col Rapping Mech,ERC,2025-05-07,2025-11-02,,,,1.9.10.4.2( Last 3 Nos Pass)
4112,Erection of Emit Rapping Mech,ERC,2025-06-06,2025-11-12,,,,1.9.10.4.2( Last 3 Nos Pass)
4113,Erection of GD-rapping Mech,ERC,2025-09-04,2025-10-18,,,,1.9.10.4.2( Last 3 Nos Pass)
4114,Erection of Col rapping drive,ERC,2025-09-04,2025-10-18,,,,1.9.10.4.2( Last 3 Nos Pass)
4115,Erection of Emit rapping drive,ERC,2025-09-04,2025-10-18,,,,1.9.10.4.2( Last 3 Nos Pass)
4116,Erection of GD drive arrangement,ERC,2025-10-19,2025-11-17,,,,1.9.10.4.2( Last 3 Nos Pass)
4117,Erection of Geared motors for rap,ERC,2025-10-19,2025-12-12,,,,1.9.10.4.2( Last 3 Nos Pass)
4118,Erection of Support insulator,ERC,2025-10-14,2025-12-07,,,,1.9.10.4.2( Last 3 Nos Pass)
4119,Erection of Emit system suspension,ERC,2025-10-09,2025-12-02,,,,1.9.10.4.2( Last 3 Nos Pass)
4120,Erection of Emit electrodes,ERC,2025-10-04,2025-11-27,,,,1.9.10.4.2( Last 3 Nos Pass)
4121,Erection of Heating elements,ERC,2025-09-29,2025-10-28,,,,1.9.10.4.2( Last 3 Nos Pass)
4122,Erection of Water washing system,ERC,2025-09-29,2025-11-12,,,,1.9.10.4.2( Last 3 Nos Pass)
4123,Erection of Interlocks,ERC,2025-09-29,2025-10-28,,,,1.9.10.4.2( Last 3 Nos Pass)
4124,Erection of Ash level indicator,ERC,2025-09-29,2025-10-28,,,,1.9.10.4.2( Last 3 Nos Pass)
4125,Erection of ESP Perf test equipments,ERC,2025-10-29,2025-11-12,,,,1.9.10.4.2( Last 3 Nos Pass)
4126,Erection of Insulation wool,ERC,2025-07-06,2025-11-27,,,,1.9.10.4.2( Last 3 Nos Pass)
4127,Turbo-generator & Auxiliaries,OTH,2022-09-27,2026-04-20,2022-10-03,,,"1(EPC Package for Talcher Thermal Power Project, Stage-III (2X660MW))"
4128,Basic engineering,ENG,2022-10-27,2023-02-23,,,,1.10(Turbo-generator & Auxiliaries)
4129,PH -Civil / Structural Steel Work,OTH,2023-05-04,2025-12-08,,,,1.10(Turbo-generator & Auxiliaries)
4130,REL OF DWG STG Foundation,PE - RFC,2023-05-04,2023-05-04,,,PCE-00500,1.10.2(PH -Civil / Structural Steel Work)
4131,Rel of DWG for PH BLDG. PH BLDG.COLS FDN ON ROW A to E ,PE - RFC,2023-06-23,2023-06-23,,,PCE-00600,1.10.2(PH -Civil / Structural Steel Work)
4132,Rel of DWG for PH BLDG. (AB BAY)- INTERMEDIATE COLS. FDN,PE - RFC,2023-07-27,2023-07-27,,,PCE-00700,1.10.2(PH -Civil / Structural Steel Work)
4133,Rel of DWG for PH BLDG.- CEP PIT,PE - RFC,2023-09-07,2023-09-07,,,PCE-00800,1.10.2(PH -Civil / Structural Steel Work)
4134,Rel of DWG for PH BLDG-BC BAY INTERMEDIATE COLUMN FOUNDATION,PE - RFC,2023-09-07,2023-09-07,,,PCE-00900,1.10.2(PH -Civil / Structural Steel Work)
4135,Rel of DWG for PH BLDG. - OIL CANAL,PE - RFC,2023-12-28,2023-12-28,,,PCE-01000,1.10.2(PH -Civil / Structural Steel Work)
4136,Rel of DWG for PH BLDG.-C.W. PIT,PE - RFC,2024-02-22,2024-02-22,,,PCE-01100,1.10.2(PH -Civil / Structural Steel Work)
4137,Rel of DWG for PH BLDG.(AB BAY-TG)- FL @EL +8.5M,PE - RFC,2024-05-02,2024-05-02,,,PCE-01200,1.10.2(PH -Civil / Structural Steel Work)
4138,Rel of DWG for PH BLDG. (AB BAY-CR)- FL @ EL 17.0M,PE - RFC,2024-05-02,2024-05-02,,,PCE-01300,1.10.2(PH -Civil / Structural Steel Work)
4139,Rel of DWG for PH BLDG (AB BAY)- METAL DECK ROOF,PE - RFC,2024-05-16,2024-05-16,,,PCE-01400,1.10.2(PH -Civil / Structural Steel Work)
4140,Rel of DWG for PH BLDG.(AB BAY)- FL @EL +3.5M,PE - RFC,2024-05-16,2024-05-16,,,PCE-01500,1.10.2(PH -Civil / Structural Steel Work)
4141,Rel of DWG for PH BLDG. (AB BAY-TG)- FL @ EL 17.0M,PE - RFC,2024-05-16,2024-05-16,,,PCE-01600,1.10.2(PH -Civil / Structural Steel Work)
4142,Rel of DWG for PH BLDG.(BC BAY-TG) - FL @EL + 25.5M,PE - RFC,2024-05-23,2024-05-23,,,PCE-01800,1.10.2(PH -Civil / Structural Steel Work)
4143,Rel of DWG for PH BLDG.(BC BAY-CR) - FL @EL + 34.0M,PE - RFC,2024-06-06,2024-06-06,,,,1.10.2(PH -Civil / Structural Steel Work)
4144,Rel of DWG for PH BLDG.(BC BAY-TG)- EL. +8.50 M,PE - RFC,2024-06-13,2024-06-13,,,PCE-02000,1.10.2(PH -Civil / Structural Steel Work)
4145,Rel of DWG for PH BLDG.(BC BAY-TG)- FL @ EL 17.0M,PE - RFC,2024-06-27,2024-06-27,,,PCE-02100,1.10.2(PH -Civil / Structural Steel Work)
4146,Rel of DWG for PH BLDG. (AB BAY-CR)- FL @ EL 12M,PE - RFC,2024-07-11,2024-07-11,,,,1.10.2(PH -Civil / Structural Steel Work)
4147,Rel of DWG for PH BLDG.(BC BAY-TG) - FL @EL + 5.0M,PE - RFC,2024-07-18,2024-07-18,,,,1.10.2(PH -Civil / Structural Steel Work)
4148,Rel of DWG for PH BLDG.(AB BAY-CR)- FL @EL +8.5M,PE - RFC,2024-08-08,2024-08-08,,,,1.10.2(PH -Civil / Structural Steel Work)
4149,Rel of DWG for PH BLDG. - FL @ EL + 0.0M,PE - RFC,2024-08-15,2024-08-15,,,PCE-02700,1.10.2(PH -Civil / Structural Steel Work)
4150,Rel of DWG for PH BLDG.(BCDEFGH BAY-CR)- FL @ EL 17M,PE - RFC,2024-08-15,2024-08-15,,,,1.10.2(PH -Civil / Structural Steel Work)
4151,Rel of DWG for PH BLDG.(BCDEFGH BAY-CR)- FL @ EL 8.5M,PE - RFC,2024-08-22,2024-08-22,,,,1.10.2(PH -Civil / Structural Steel Work)
4152,Rel of DWG for PH BLDG.(BCDEFGH BAY-CR)- FL @ EL 25.5 M,PE - RFC,2024-08-22,2024-08-22,,,,1.10.2(PH -Civil / Structural Steel Work)
4153,Rel of DWG for PH BLDG.(BCDEFGH BAY-CR)- @ EL 29.5M,PE - RFC,2024-08-29,2024-08-29,,,,1.10.2(PH -Civil / Structural Steel Work)
4154,STG Foundation (TG Raft & Deck),CIV,2023-05-05,2024-04-07,,,,1.10.2(PH -Civil / Structural Steel Work)
4155,Civil Work,CIV,2023-05-05,2024-04-07,,,,1.10.2.25(STG Foundation (TG Raft & Deck))
4156,EXCAVATION & PCC,CIV,2023-05-05,2023-05-29,,,,1.10.2.25.1(Civil Work)
4157,RCC TG RAFT,CIV,2023-05-30,2023-08-31,,,,1.10.2.25.1(Civil Work)
4158,COLUMN & DECK CASTING WORK WITH STAGING,CIV,2023-09-01,2024-04-07,,,,1.10.2.25.1(Civil Work)
4159,COLUMN CASTING,CIV,2023-09-01,2024-02-07,,,,1.10.2.25.1.3(COLUMN & DECK CASTING WORK WITH STAGING)
4160,TG DECK CASTING WORK,CIV,2024-02-08,2024-04-07,,,,1.10.2.25.1.3(COLUMN & DECK CASTING WORK WITH STAGING)
4161,PH AB & BC bay civil works,CIV,2023-06-27,2023-12-04,,,,1.10.2(PH -Civil / Structural Steel Work)
4162,Civil Work,CIV,2023-06-27,2023-12-04,,,,1.10.2.26(PH AB & BC bay civil works)
4163,Excavation & PCC,CIV,2023-06-27,2023-09-11,,,,1.10.2.26.1(Civil Work)
4164,For A row,CIV,2023-06-27,2023-07-31,,,,1.10.2.26.1.1(Excavation & PCC)
4165,For B row,CIV,2023-07-18,2023-08-21,,,,1.10.2.26.1.1(Excavation & PCC)
4166,For C row,CIV,2023-08-08,2023-09-11,,,,1.10.2.26.1.1(Excavation & PCC)
4167,Raft casting,CIV,2023-07-12,2023-10-06,,,,1.10.2.26.1(Civil Work)
4168,For A row,CIV,2023-07-12,2023-08-25,,,,1.10.2.26.1.2(Raft casting)
4169,For B row,CIV,2023-08-02,2023-09-15,,,,1.10.2.26.1.2(Raft casting)
4170,For C row,CIV,2023-08-23,2023-10-06,,,,1.10.2.26.1.2(Raft casting)
4171,Pedestals (Till Bolt Lift),CIV,2023-08-11,2023-11-10,,,,1.10.2.26.1(Civil Work)
4172,For A row,CIV,2023-08-11,2023-10-09,,,,1.10.2.26.1.3(Pedestals (Till Bolt Lift))
4173,For B row,CIV,2023-08-22,2023-10-20,,,,1.10.2.26.1.3(Pedestals (Till Bolt Lift))
4174,For C row,CIV,2023-09-12,2023-11-10,,,,1.10.2.26.1.3(Pedestals (Till Bolt Lift))
4175,Backfilling for AB Bay,CIV,2023-09-25,2023-11-23,,,,1.10.2.26.1(Civil Work)
4176,Backfilling for BC Bay,CIV,2023-10-06,2023-12-04,,,,1.10.2.26.1(Civil Work)
4177,"D, E, F bay civil Work",CIV,2023-08-26,2024-01-02,,,,1.10.2(PH -Civil / Structural Steel Work)
4178,Civil Work,CIV,2023-08-26,2023-09-21,,,,"1.10.2.27(D, E, F bay civil Work)"
4179,Excavation & PCC for D row Columns,CIV,2023-09-12,2023-09-21,,,,1.10.2.27.1(Civil Work)
4180,Excavation & PCC for E row Columns,CIV,2023-08-26,2023-09-04,,,,1.10.2.27.1(Civil Work)
4181,Excavation & PCC for F row Columns,CIV,2023-08-26,2023-09-04,,,,1.10.2.27.1(Civil Work)
4182,Foundations,CIV,2023-09-05,2023-10-21,,,,"1.10.2.27(D, E, F bay civil Work)"
4183,"Casting of Raft, footings, columns Till Bolt Lift for D Row",CIV,2023-09-22,2023-10-21,,,,1.10.2.27.2(Foundations)
4184,"Casting of Raft, footings, columns Till Bolt Lift for E Row",CIV,2023-09-05,2023-10-04,,,,1.10.2.27.2(Foundations)
4185,"Casting of Raft, footings, columns Till Bolt Lift for F Row",CIV,2023-09-05,2023-10-04,,,,1.10.2.27.2(Foundations)
4186,Backfilling Works,CIV,2023-10-05,2024-01-02,,,,"1.10.2.27(D, E, F bay civil Work)"
4187,PH - Structural Steel Work(Supply by Trichy),OTH,2023-07-02,2025-12-08,,,,1.10.2(PH -Civil / Structural Steel Work)
4188,Civil Work,OTH,2023-07-02,2024-08-24,,,,1.10.2.28(PH - Structural Steel Work(Supply by Trichy))
4189,Columns Fabrication works,CIV,2023-07-02,2023-10-29,,,,1.10.2.28.1(Civil Work)
4190,Structural steel fabrication A row &Dispatch,DIS,2023-07-02,2023-08-15,,,,1.10.2.28.1.1(Columns Fabrication works)
4191,Structural steel fabrication B row &Dispatch,DIS,2023-07-27,2023-09-09,,,,1.10.2.28.1.1(Columns Fabrication works)
4192,Structural steel fabrication C row &Dispatch,DIS,2023-08-21,2023-10-04,,,,1.10.2.28.1.1(Columns Fabrication works)
4193,Structural steel fabrication Intermediate columns &Dispatch,DIS,2023-09-15,2023-10-29,,,,1.10.2.28.1.1(Columns Fabrication works)
4194,Column Erection works,ERC,2023-10-12,2024-03-09,,,,1.10.2.28.1(Civil Work)
4195,Structural steel Erection A row,ERC,2023-10-12,2023-12-10,,,,1.10.2.28.1.2(Column Erection works)
4196,Structural selection B row,ERC,2023-11-06,2024-01-04,,,,1.10.2.28.1.2(Column Erection works)
4197,Structural selection C row,ERC,2023-12-01,2024-01-29,,,,1.10.2.28.1.2(Column Erection works)
4198,Structural selection Intermediate columns,ERC,2023-12-21,2024-02-18,,,,1.10.2.28.1.2(Column Erection works)
4199,Grouting works,CIV,2023-12-11,2024-03-09,,,,1.10.2.28.1.2(Column Erection works)
4200,FABRICATION of floor beams(Supply-Trichy),SUP,2023-10-05,2024-05-06,,,,1.10.2.28.1(Civil Work)
4201,Fabrication of floor beam & bracings @ EL 3.5 mtr &Dispatch,DIS,2023-10-05,2023-11-03,,,,1.10.2.28.1.3(FABRICATION of floor beams(Supply-Trichy))
4202,Fabrication of floor beam & bracings @ EL 5.0 mtr &Dispatch,DIS,2023-10-20,2023-11-18,,,,1.10.2.28.1.3(FABRICATION of floor beams(Supply-Trichy))
4203,Fabrication of floor beam & bracings @ EL 8.5 mtr &Dispatch,DIS,2023-11-04,2023-12-03,,,,1.10.2.28.1.3(FABRICATION of floor beams(Supply-Trichy))
4204,Fabrication of floor beam & bracings @ EL 12 mtr &Dispatch,DIS,2023-11-19,2023-12-18,,,,1.10.2.28.1.3(FABRICATION of floor beams(Supply-Trichy))
4205,Fabrication of floor beam & bracings @ EL 17.00 mtr &Dispatch,DIS,2023-12-04,2024-01-02,,,,1.10.2.28.1.3(FABRICATION of floor beams(Supply-Trichy))
4206,Fabrication of floor beam & bracings @ EL 25.50 mtr &Dispatch,DIS,2023-12-19,2024-01-17,,,,1.10.2.28.1.3(FABRICATION of floor beams(Supply-Trichy))
4207,Fabrication of floor beam & bracings @ EL 29 mtr &Dispatch,DIS,2024-02-22,2024-03-22,,,,1.10.2.28.1.3(FABRICATION of floor beams(Supply-Trichy))
4208,Fabrication of floor beam & bracings @ EL 13.5 mtr &Dispatch,DIS,2024-03-08,2024-04-06,,,,1.10.2.28.1.3(FABRICATION of floor beams(Supply-Trichy))
4209,Fabrication of floor beam & bracings @ EL 34.00 mtr &Dispatch,DIS,2024-03-23,2024-04-21,,,,1.10.2.28.1.3(FABRICATION of floor beams(Supply-Trichy))
4210,Fabrication of AB bay Roof trusses & Elevation bracings &Dispatch,DIS,2024-01-03,2024-03-07,,,,1.10.2.28.1.3(FABRICATION of floor beams(Supply-Trichy))
4211,Dispatch of Fabricated beams,DIS,2023-10-10,2024-05-06,,,,1.10.2.28.1.3(FABRICATION of floor beams(Supply-Trichy))
4212,Erection of Floor Beams,ERC,2023-11-06,2024-06-08,,,,1.10.2.28.1(Civil Work)
4213,Erection of floor beam & bracings @ EL 3.5 mtr,ERC,2023-11-06,2023-12-05,,,,1.10.2.28.1.4(Erection of Floor Beams)
4214,Erection of floor beam & bracings @ EL 5.0 mtr,ERC,2023-12-06,2024-01-04,,,,1.10.2.28.1.4(Erection of Floor Beams)
4215,Erection of floor beam & bracings @ EL 8.5 mtr,ERC,2024-01-05,2024-02-03,,,,1.10.2.28.1.4(Erection of Floor Beams)
4216,Erection of floor beam & bracings @ EL 12 mtr,ERC,2024-02-04,2024-02-15,,,,1.10.2.28.1.4(Erection of Floor Beams)
4217,Erection of floor beam & bracings @ EL 17.0 mtr,ERC,2024-02-16,2024-02-27,,,,1.10.2.28.1.4(Erection of Floor Beams)
4218,Erection of floor beam & bracings @ EL 25.50 mtr,ERC,2024-02-28,2024-03-10,,,,1.10.2.28.1.4(Erection of Floor Beams)
4219,Erection of floor beam & bracings @ EL 29 mtr,ERC,2024-03-11,2024-04-09,,,,1.10.2.28.1.4(Erection of Floor Beams)
4220,Erection of floor beam & bracings @ EL 13.5 mtr,ERC,2024-04-10,2024-05-09,,,,1.10.2.28.1.4(Erection of Floor Beams)
4221,Erection of floor beam & bracings @ EL 34.00 mtr,ERC,2024-05-10,2024-06-08,,,,1.10.2.28.1.4(Erection of Floor Beams)
4222,"Erection of Roof trusses along with elevation Bracing (Grid A, B & C)",ERC,2024-03-11,2024-03-22,,,,1.10.2.28.1.4(Erection of Floor Beams)
4223,Cladding along A row,ERC,2024-04-07,2024-06-15,,,,1.10.2.28.1(Civil Work)
4224,Cladding along C row,ERC,2024-05-17,2024-07-25,,,,1.10.2.28.1(Civil Work)
4225,Cladding along Gable end,ERC,2024-07-26,2024-08-24,,,,1.10.2.28.1(Civil Work)
4226,PH Slab Casting & Roof,CIV,2024-06-19,2025-03-15,,,,1.10.2.28(PH - Structural Steel Work(Supply by Trichy))
4227,RCC slab @ + 3.5 Mtr Level,CIV,2025-02-14,2025-03-15,,,,1.10.2.28.2(PH Slab Casting & Roof)
4228,RCC slab @ + 5.0 Mtr Level,CIV,2025-01-15,2025-02-13,,,,1.10.2.28.2(PH Slab Casting & Roof)
4229,RCC slab @ + 8.5 Mtr Level,CIV,2024-12-16,2025-01-14,,,,1.10.2.28.2(PH Slab Casting & Roof)
4230,RCC slab @ + 12.0 Mtr Level,CIV,2024-11-16,2024-12-15,,,,1.10.2.28.2(PH Slab Casting & Roof)
4231,RCC slab @ + 17.0 Mtr Level,CIV,2024-10-17,2024-11-15,,,,1.10.2.28.2(PH Slab Casting & Roof)
4232,RCC slab @ + 34.00 Mtr Level,CIV,2024-09-17,2024-10-16,,,,1.10.2.28.2(PH Slab Casting & Roof)
4233,RCC slab @ + 25.50 Mtr Level,CIV,2024-08-18,2024-09-16,,,,1.10.2.28.2(PH Slab Casting & Roof)
4234,RCC slab @ + 13.50 Mtr Level,CIV,2024-07-19,2024-08-17,,,,1.10.2.28.2(PH Slab Casting & Roof)
4235,RCC slab @ + 34.00 Mtr Level,CIV,2024-06-19,2024-07-18,,,,1.10.2.28.2(PH Slab Casting & Roof)
4236,Grade slab level 0.00 Mtr,CIV,2024-08-16,2025-12-08,,,,1.10.2.28(PH - Structural Steel Work(Supply by Trichy))
4237,"RCC Grade Slab AB, BC, CD bay",CIV,2024-08-16,2024-11-13,,,,1.10.2.28.3(Grade slab level 0.00 Mtr)
4238,RCC Grade Slab of remaining bays,CIV,2024-11-14,2024-12-13,,,,1.10.2.28.3(Grade slab level 0.00 Mtr)
4239,RCC Misc. Foundation,CIV,2024-12-14,2025-03-13,,,,1.10.2.28.3(Grade slab level 0.00 Mtr)
4240,Brickwork,CIV,2025-03-14,2025-06-11,,,,1.10.2.28.3(Grade slab level 0.00 Mtr)
4241,Plaster,OTH,2025-06-12,2025-09-09,,,,1.10.2.28.3(Grade slab level 0.00 Mtr)
4242,Flooring,CIV,2025-09-10,2025-12-08,,,,1.10.2.28.3(Grade slab level 0.00 Mtr)
4243,CW pit,CIV,2025-03-16,2025-07-24,,,,1.10.2.28(PH - Structural Steel Work(Supply by Trichy))
4244,Excavation & PCC,CIV,2025-03-16,2025-05-09,,,,1.10.2.28.4(CW pit)
4245,RCC Raft,CIV,2025-05-10,2025-06-04,,,,1.10.2.28.4(CW pit)
4246,RCC Pipe Support Pedestal,CIV,2025-06-05,2025-06-19,,,,1.10.2.28.4(CW pit)
4247,RCC Wall,CIV,2025-06-20,2025-07-24,,,,1.10.2.28.4(CW pit)
4248,Oil Canal,CIV,2024-03-26,2025-05-14,,,,1.10.2.28(PH - Structural Steel Work(Supply by Trichy))
4249,"Oil Canal Columns, Beam Erection & welding work",CIV,2024-03-26,2024-05-09,,,,1.10.2.28.5(Oil Canal)
4250,Platform for Oil canal trench,CIV,2024-05-10,2024-06-28,,,,1.10.2.28.5(Oil Canal)
4251,RCC Trench Slab,CIV,2024-11-16,2025-01-29,,,,1.10.2.28.5(Oil Canal)
4252,RCC Trench walls,CIV,2025-02-14,2025-05-14,,,,1.10.2.28.5(Oil Canal)
4253,Steam Turbine,OTH,2022-09-27,2026-04-20,2022-10-03,,,1.10(Turbo-generator & Auxiliaries)
4254,Civil,CIV,2024-12-31,2025-07-08,,,,1.10.3(Steam Turbine)
4255,MOT Room,CIV,2024-12-31,2024-12-31,,,,1.10.3.1(Civil)
4256,LPBP Foundation,CIV,2025-06-14,2025-07-08,,,,1.10.3.1(Civil)
4257, LPBP Hydraulic Unit foundations: RCC,CIV,2025-06-14,2025-06-28,,,,1.10.3.1.2(LPBP Foundation)
4258, LPBP Hydraulic Unit foundations: Finishing works,CIV,2025-06-29,2025-07-08,,,,1.10.3.1.2(LPBP Foundation)
4259,Supply,SUP,2022-09-27,2025-09-28,2022-10-03,,,1.10.3(Steam Turbine)
4260,TG embedment,SUP,2022-09-27,2023-12-25,2022-10-03,,,1.10.3.2(Supply)
4261,Engineering,ENG,2022-09-27,2023-06-13,2022-10-03,2023-01-04,,1.10.3.2.1(TG embedment)
4262,Manufacturing,MFG,2023-06-14,2023-11-25,,,,1.10.3.2.1(TG embedment)
4263,Dispatch,DIS,2023-11-26,2023-12-25,,,,1.10.3.2.1(TG embedment)
4264, Base Plate Assembly,SUP,2022-09-27,2024-05-13,,,,1.10.3.2(Supply)
4265,Engineering,ENG,2022-09-27,2023-09-26,,,,1.10.3.2.2( Base Plate Assembly)
4266,Manufacturing,MFG,2023-09-27,2024-03-29,,,,1.10.3.2.2( Base Plate Assembly)
4267,Dispatch,DIS,2024-03-30,2024-05-13,,,,1.10.3.2.2( Base Plate Assembly)
4268," Bearing Pedestals (Front, HP-IP, IP-LP & LP-Gen.)",SUP,2022-09-27,2024-05-13,2022-10-03,,,1.10.3.2(Supply)
4269,Engineering,ENG,2022-09-27,2023-09-26,2022-10-03,2022-11-25,,"1.10.3.2.3( Bearing Pedestals (Front, HP-IP, IP-LP & LP-Gen.))"
4270,Manufacturing,MFG,2023-09-27,2024-03-29,,,,"1.10.3.2.3( Bearing Pedestals (Front, HP-IP, IP-LP & LP-Gen.))"
4271,Dispatch,DIS,2024-03-30,2024-05-13,,,,"1.10.3.2.3( Bearing Pedestals (Front, HP-IP, IP-LP & LP-Gen.))"
4272, LP Inner Casing,SUP,2022-09-27,2024-10-12,2022-10-03,,,1.10.3.2(Supply)
4273,Engineering,ENG,2022-09-27,2023-10-16,2022-10-03,,,1.10.3.2.4( LP Inner Casing)
4274,Manufacturing,MFG,2023-10-17,2024-07-29,,,,1.10.3.2.4( LP Inner Casing)
4275,Dispatch,DIS,2024-07-30,2024-10-12,,,,1.10.3.2.4( LP Inner Casing)
4276, LP Outer Casing,SUP,2022-09-27,2024-10-12,2022-10-03,,,1.10.3.2(Supply)
4277,Engineering,ENG,2022-09-27,2023-10-16,2022-10-03,2022-11-25,,1.10.3.2.5( LP Outer Casing)
4278,Manufacturing,MFG,2023-10-17,2024-07-29,,,,1.10.3.2.5( LP Outer Casing)
4279,Dispatch,DIS,2024-07-30,2024-10-12,,,,1.10.3.2.5( LP Outer Casing)
4280, LP Rotor,SUP,2022-09-27,2024-10-27,2022-10-03,,,1.10.3.2(Supply)
4281,Engineering,ENG,2022-09-27,2023-11-02,2022-10-03,2022-11-25,,1.10.3.2.6( LP Rotor)
4282,Manufacturing,MFG,2023-11-03,2024-09-27,,,,1.10.3.2.6( LP Rotor)
4283,Dispatch,DIS,2024-09-28,2024-10-27,,,,1.10.3.2.6( LP Rotor)
4284, HP Turbine,SUP,2022-09-27,2024-12-21,2022-10-03,,,1.10.3.2(Supply)
4285,Engineering,ENG,2022-09-27,2023-11-10,2022-10-03,2022-11-25,,1.10.3.2.7( HP Turbine)
4286,Manufacturing,MFG,2023-11-11,2024-12-01,,,,1.10.3.2.7( HP Turbine)
4287,Dispatch,DIS,2024-12-02,2024-12-21,,,,1.10.3.2.7( HP Turbine)
4288, IP Turbine,SUP,2022-09-27,2025-01-07,2022-10-03,,,1.10.3.2(Supply)
4289,Engineering,ENG,2022-09-27,2023-11-04,2022-10-03,2022-11-25,,1.10.3.2.8( IP Turbine)
4290,Manufacturing,MFG,2023-11-05,2024-09-27,,,,1.10.3.2.8( IP Turbine)
4291,Dispatch,DIS,2024-09-28,2025-01-07,,,,1.10.3.2.8( IP Turbine)
4292, Cross Around Pipe,SUP,2022-09-27,2024-11-12,2022-10-03,,,1.10.3.2(Supply)
4293,Engineering,ENG,2022-09-27,2023-11-04,2022-10-03,2022-11-25,,1.10.3.2.9( Cross Around Pipe)
4294,Manufacturing,MFG,2023-11-05,2024-09-27,,,,1.10.3.2.9( Cross Around Pipe)
4295,Dispatch,DIS,2024-09-28,2024-11-12,,,,1.10.3.2.9( Cross Around Pipe)
4296,ESV & CV and Overload Valve,SUP,2022-09-27,2025-01-12,2022-10-03,,,1.10.3.2(Supply)
4297,Engineering,ENG,2022-09-27,2023-11-10,2022-10-03,2022-11-25,,1.10.3.2.10(ESV & CV and Overload Valve)
4298,Manufacturing,MFG,2023-11-11,2024-11-27,,,,1.10.3.2.10(ESV & CV and Overload Valve)
4299,Dispatch,DIS,2024-11-28,2025-01-12,,,,1.10.3.2.10(ESV & CV and Overload Valve)
4300,BOI- LP by Pass LPBP(HWR),SUP,2023-10-22,2025-07-03,,,,1.10.3.2(Supply)
4301,NIT,ENQ,2023-10-22,2023-10-22,,,,1.10.3.2.11(BOI- LP by Pass LPBP(HWR))
4302,Ordering,ORD,2023-10-23,2024-05-09,,,,1.10.3.2.11(BOI- LP by Pass LPBP(HWR))
4303,Manufacturing,MFG,2024-05-10,2025-03-05,,,,1.10.3.2.11(BOI- LP by Pass LPBP(HWR))
4304,Dispatch,DIS,2025-03-06,2025-07-03,,,,1.10.3.2.11(BOI- LP by Pass LPBP(HWR))
4305,BOI- Turbine Integral piping TIP(PC-Chennai),SUP,2023-10-22,2025-09-28,,,,1.10.3.2(Supply)
4306,NIT,ENQ,2023-10-22,2023-10-22,,,,1.10.3.2.12(BOI- Turbine Integral piping TIP(PC-Chennai))
4307,Ordering,ORD,2023-10-23,2024-04-26,,,,1.10.3.2.12(BOI- Turbine Integral piping TIP(PC-Chennai))
4308,Manufacturing,MFG,2024-04-27,2025-05-31,,,,1.10.3.2.12(BOI- Turbine Integral piping TIP(PC-Chennai))
4309,Dispatch,DIS,2025-06-01,2025-09-28,,,,1.10.3.2.12(BOI- Turbine Integral piping TIP(PC-Chennai))
4310,BOI- Oil Module(HWR),SUP,2023-10-22,2025-07-03,,,,1.10.3.2(Supply)
4311,NIT,ENQ,2023-10-22,2023-10-22,,,,1.10.3.2.13(BOI- Oil Module(HWR))
4312,Ordering,ORD,2023-10-23,2024-05-09,,,,1.10.3.2.13(BOI- Oil Module(HWR))
4313,Manufacturing,MFG,2024-05-10,2025-03-05,,,,1.10.3.2.13(BOI- Oil Module(HWR))
4314,Dispatch,DIS,2025-03-06,2025-07-03,,,,1.10.3.2.13(BOI- Oil Module(HWR))
4315,IV & CV,SUP,2022-09-27,2025-01-22,2022-10-03,,,1.10.3.2(Supply)
4316,Engineering,ENG,2022-09-27,2023-11-10,2022-10-03,2022-11-25,,1.10.3.2.14(IV & CV)
4317,Manufacturing,MFG,2023-11-11,2024-12-07,,,,1.10.3.2.14(IV & CV)
4318,Dispatch,DIS,2024-12-08,2025-01-22,,,,1.10.3.2.14(IV & CV)
4319,Suspension of LPBP Valves,SUP,2022-09-27,2025-01-22,,,,1.10.3.2(Supply)
4320,Engineering,ENG,2022-09-27,2024-01-04,,,,1.10.3.2.15(Suspension of LPBP Valves)
4321,Manufacturing,MFG,2024-01-05,2024-12-07,,,,1.10.3.2.15(Suspension of LPBP Valves)
4322,Dispatch,DIS,2024-12-08,2025-01-22,,,,1.10.3.2.15(Suspension of LPBP Valves)
4323,Instruments & JBs,SUP,2022-09-27,2025-04-13,2022-10-03,,,1.10.3.2(Supply)
4324,Engineering,ENG,2022-09-27,2024-02-13,2022-10-03,2022-11-25,,1.10.3.2.16(Instruments & JBs)
4325,Manufacturing,MFG,2024-02-14,2025-02-27,,,,1.10.3.2.16(Instruments & JBs)
4326,Dispatch,DIS,2025-02-28,2025-04-13,,,,1.10.3.2.16(Instruments & JBs)
4327,TG C&I Package,SUP,2022-09-27,2025-04-14,,,,1.10.3.2(Supply)
4328,Engineering,ENG,2022-09-27,2024-02-13,,,,1.10.3.2.17(TG C&I Package)
4329,Manufacturing,MFG,2024-02-14,2025-02-10,,,,1.10.3.2.17(TG C&I Package)
4330,Dispatch,DIS,2025-02-11,2025-04-14,,,,1.10.3.2.17(TG C&I Package)
4331,Compensator,SUP,2022-09-27,2024-12-12,,,,1.10.3.2(Supply)
4332,Engineering,ENG,2022-09-27,2023-12-05,,,,1.10.3.2.18(Compensator)
4333,Manufacturing,MFG,2023-12-06,2024-10-28,,,,1.10.3.2.18(Compensator)
4334,Dispatch,DIS,2024-10-29,2024-12-12,,,,1.10.3.2.18(Compensator)
4335,Balance BOIs,SUP,2023-10-22,2025-03-25,,,,1.10.3.2(Supply)
4336,NIT,ENQ,2023-10-22,2023-10-22,,,,1.10.3.2.19(Balance BOIs)
4337,Ordering,ORD,2023-10-23,2024-07-28,,,,1.10.3.2.19(Balance BOIs)
4338,Manufacturing,MFG,2023-10-23,2024-11-25,,,,1.10.3.2.19(Balance BOIs)
4339,Dispatch,DIS,2024-11-26,2025-03-25,,,,1.10.3.2.19(Balance BOIs)
4340,Erection,ERC,2024-08-07,2026-04-20,,,,1.10.3(Steam Turbine)
4341, PEDESTAL RELATED WORK,ERC,2024-08-07,2024-12-05,,,,1.10.3.3(Erection)
4342,"Preparation of foundation, making of required Platform & Anchor Plate blue matching",ERC,2024-08-07,2024-09-14,,,,1.10.3.3.1( PEDESTAL RELATED WORK)
4343,"Cleaning LP bearing Pedestals & LP base Plates, Levelling & Centering",ERC,2024-09-15,2024-09-27,,,,1.10.3.3.1( PEDESTAL RELATED WORK)
4344,"Cleaning of IP pedestals, assembly and alignment",ERC,2024-09-28,2024-10-10,,,,1.10.3.3.1( PEDESTAL RELATED WORK)
4345,"Cleaning of HP pedestals, assembly and alignment",ERC,2024-10-11,2024-10-23,,,,1.10.3.3.1( PEDESTAL RELATED WORK)
4346,Grouting of all pedestals after final alignment,ERC,2024-10-24,2024-11-05,,,,1.10.3.3.1( PEDESTAL RELATED WORK)
4347,Stretching of foundation bolts and locking of nuts,ERC,2024-12-01,2024-12-05,,,,1.10.3.3.1( PEDESTAL RELATED WORK)
4348, HP TURBINE,ERC,2024-12-22,2025-02-10,,,,1.10.3.3(Erection)
4349, HP Turbine: Placement of HP module on temp packers,ERC,2024-12-22,2024-12-27,,,,1.10.3.3.2( HP TURBINE)
4350," HP Turbine: Clean main and aux HP bearing, prepare of assembly and installation",ERC,2024-12-28,2025-01-08,,,,1.10.3.3.2( HP TURBINE)
4351," HP Turbine: Placing HP module in position, levelling & centering",ERC,2025-01-09,2025-01-26,,,,1.10.3.3.2( HP TURBINE)
4352, HP Turbine: Alignment of HP turbine casing radially and axially to the HP shaft & Checking and recordings of journal and coupling dimensions and runout,ERC,2025-01-27,2025-02-10,,,,1.10.3.3.2( HP TURBINE)
4353, IP TURBINE,ERC,2025-02-11,2025-04-07,,,,1.10.3.3(Erection)
4354, IP TURBINE: Placement of IP turbine on the temp packers,ERC,2025-02-11,2025-02-16,,,,1.10.3.3.3( IP TURBINE)
4355," IP TURBINE: clean main and aux IP bearings, preparation for assembly and installation",ERC,2025-02-17,2025-02-28,,,,1.10.3.3.3( IP TURBINE)
4356, IP TURBINE: Setting down IP shaft in the bearings and alignment of the shaft,ERC,2025-03-01,2025-03-20,,,,1.10.3.3.3( IP TURBINE)
4357, IP TURBINE: Alignment of the IP casing radially and axially to the IP shaft,ERC,2025-03-21,2025-04-07,,,,1.10.3.3.3( IP TURBINE)
4358, LP TURBINE,ERC,2024-11-08,2025-05-19,,,,1.10.3.3(Erection)
4359," LP TURBINE: Placement of Longitudinal Girders and levelling, alignment",ERC,2024-11-08,2024-11-27,,,,1.10.3.3.4( LP TURBINE)
4360, LP TURBINE: Placement & alignment of LP end walls,ERC,2024-11-28,2024-12-17,,,,1.10.3.3.4( LP TURBINE)
4361, LP TURBINE: Fit up and welding of bracing pipes for LP outer casings,ERC,2024-12-18,2025-01-06,,,,1.10.3.3.4( LP TURBINE)
4362," LP TURBINE: Placement, alignment, fit up and welding of LP inner-outer casing bottom half",ERC,2025-01-07,2025-02-01,,,,1.10.3.3.4( LP TURBINE)
4363, LP TURBINE: Temporary mounting of expansion joint,ERC,2025-02-02,2025-02-11,,,,1.10.3.3.4( LP TURBINE)
4364, LP TURBINE: Placement and alignment of LP inner-inner casing bottom half,ERC,2025-02-12,2025-02-26,,,,1.10.3.3.4( LP TURBINE)
4365, LP TURBINE: Erection of LP shaft sealing assembly on the bearing,ERC,2025-02-27,2025-03-08,,,,1.10.3.3.4( LP TURBINE)
4366, LP TURBINE: Installation of the LP rotor on the main and aux bearings and alignment,ERC,2025-03-09,2025-03-19,,,,1.10.3.3.4( LP TURBINE)
4367, LP TURBINE: Checking radial and axial clearances of the rotor with the bearing,ERC,2025-03-20,2025-03-29,,,,1.10.3.3.4( LP TURBINE)
4368, LP TURBINE: Placement of upper half of the shaft sealing assembly,ERC,2025-03-30,2025-04-11,,,,1.10.3.3.4( LP TURBINE)
4369, LP TURBINE: Mounting of LP top half of guide blade carrier,ERC,2025-04-12,2025-04-21,,,,1.10.3.3.4( LP TURBINE)
4370, LP TURBINE: Checking of the radial and axial clearances of LP inner casing,ERC,2025-04-22,2025-05-01,,,,1.10.3.3.4( LP TURBINE)
4371, LP TURBINE: Placement and alignment of the LP top halves,ERC,2025-05-02,2025-05-10,,,,1.10.3.3.4( LP TURBINE)
4372, LP TURBINE: Drilling and reaming of holes in the Joint plane of the LP outer casing,ERC,2025-05-11,2025-05-19,,,,1.10.3.3.4( LP TURBINE)
4373, MISCELLANEOUS ACTIVITIES,ERC,2025-05-20,2025-09-25,,,,1.10.3.3(Erection)
4374," TURB. MISCELLANEOUS ACTIVITIES: Alignment of HP,IP,LPT rotors.",ERC,2025-05-20,2025-07-03,,,,1.10.3.3.5( MISCELLANEOUS ACTIVITIES)
4375, TURB. MISCELLANEOUS ACTIVITIES: Coupling LP-IP rotor with Aux. Coupling bolts,ERC,2025-07-04,2025-08-07,,,,1.10.3.3.5( MISCELLANEOUS ACTIVITIES)
4376, TURB. MISCELLANEOUS ACTIVITIES: Coupling IP-HP rotor and recording swing value.,ERC,2025-07-04,2025-08-07,,,,1.10.3.3.5( MISCELLANEOUS ACTIVITIES)
4377, TURB. MISCELLANEOUS ACTIVITIES: Reaming honing & machining of coupling bolt,ERC,2025-07-19,2025-09-05,,,,1.10.3.3.5( MISCELLANEOUS ACTIVITIES)
4378, TURB. MISCELLANEOUS ACTIVITIES: Pre-assembly and welding of LP outer casing,ERC,2025-08-17,2025-09-20,,,,1.10.3.3.5( MISCELLANEOUS ACTIVITIES)
4379, TURB. MISCELLANEOUS ACTIVITIES: Turbine boxed up,ERC,2025-09-21,2025-09-25,,,,1.10.3.3.5( MISCELLANEOUS ACTIVITIES)
4380, LUBE OIL SYSTEM,ERC,2025-01-01,2025-11-25,,,,1.10.3.3(Erection)
4381, TURB. LUBE OIL SYSTEM: Cleaning SYSTEM: Cleaning of Main Oil tank,ERC,2025-01-01,2025-01-30,,,,1.10.3.3.6( LUBE OIL SYSTEM)
4382, TURB. LUBE OIL SYSTEM: Placement of Oil Module,ERC,2025-01-31,2025-02-24,,,,1.10.3.3.6( LUBE OIL SYSTEM)
4383, TURB. LUBE OIL SYSTEM: Placement of motors and couplings,ERC,2025-02-25,2025-03-30,,,,1.10.3.3.6( LUBE OIL SYSTEM)
4384," TURB. LUBE OIL SYSTEM: Erection of filters, oil cooler, vapor exhauster etc in the Main oil room",ERC,2025-03-31,2025-04-29,,,,1.10.3.3.6( LUBE OIL SYSTEM)
4385," TURB. LUBE OIL SYSTEM: Lube oil piping, jacking oil & seal oil piping to bearings and recirculation.",ERC,2025-04-30,2025-09-26,,,,1.10.3.3.6( LUBE OIL SYSTEM)
4386, TURB. LUBE OIL SYSTEM:ERECTION OF OIL PURIFICATION UNIT,ERC,2025-09-27,2025-10-26,,,,1.10.3.3.6( LUBE OIL SYSTEM)
4387,Turbine: Oil flushing,ERC,2025-09-27,2025-11-25,,,,1.10.3.3.6( LUBE OIL SYSTEM)
4388, VALVES,ERC,2025-03-03,2026-04-20,,,,1.10.3.3(Erection)
4389, LP BYPASS VALVES,ERC,2025-07-09,2025-08-22,,,,1.10.3.3.7( VALVES)
4390, TURB. LP BYPASS Valves: Erection of LP bypass valves,ERC,2025-07-09,2025-08-22,,,,1.10.3.3.7.1( LP BYPASS VALVES)
4391, EMERGENCY STOP VALVES,ERC,2025-03-03,2025-04-01,,,,1.10.3.3.7( VALVES)
4392, TURB. EMERGENCY STOP Vivisection of main steam stop valves,ERC,2025-03-03,2025-03-17,,,,1.10.3.3.7.2( EMERGENCY STOP VALVES)
4393, TURB. EMERGENCY STOP VALVES: Assembly of breech nuts with HP casings,ERC,2025-03-18,2025-04-01,,,,1.10.3.3.7.2( EMERGENCY STOP VALVES)
4394, IV CONTROL VALVES,ERC,2025-04-28,2025-05-10,,,,1.10.3.3.7( VALVES)
4395, TURB. IV CONTROL VALVES: Assembly of RH stop and control valve,ERC,2025-04-28,2025-05-10,,,,1.10.3.3.7.3( IV CONTROL VALVES)
4396,HP BYPASS VALVES,ERC,2026-03-27,2026-04-20,,,,1.10.3.3.7( VALVES)
4397,HP BYPASS VALVES: Assembly of HP bypass valves,ERC,2026-03-27,2026-04-20,,,,1.10.3.3.7.4(HP BYPASS VALVES)
4398,Generator,ERC,2022-09-27,2026-04-10,,,,1.10(Turbo-generator & Auxiliaries)
4399,Civil,ERC,2025-03-14,2025-08-11,,,,1.10.4(Generator)
4400, Gas Room Readiness,ERC,2025-08-11,2025-08-11,,,,1.10.4.1(Civil)
4401, PW Pump & Filter Foundation,CIV,2025-03-14,2025-03-14,,,,1.10.4.1(Civil)
4402, PW cooler foundation,OTH,2025-03-14,2025-03-14,,,,1.10.4.1(Civil)
4403, Seal oil unit foundation,OTH,2025-05-03,2025-05-03,,,,1.10.4.1(Civil)
4404,Supply,SUP,2022-09-27,2024-12-27,,,,1.10.4(Generator)
4405, Foundation Accessories,SUP,2022-09-27,2024-04-28,,,,1.10.4.2(Supply)
4406,Engineering,ENG,2022-09-27,2023-09-01,,,,1.10.4.2.1( Foundation Accessories)
4407,Manufacturing,MFG,2023-09-02,2024-03-29,,,,1.10.4.2.1( Foundation Accessories)
4408,Dispatch,DIS,2024-03-30,2024-04-28,,,,1.10.4.2.1( Foundation Accessories)
4409, Generator Stator,SUP,2022-09-27,2024-10-10,,,,1.10.4.2(Supply)
4410,Engineering,ENG,2022-09-27,2023-10-16,,,,1.10.4.2.2( Generator Stator)
4411,Manufacturing,MFG,2023-10-17,2024-09-10,,,,1.10.4.2.2( Generator Stator)
4412,Dispatch,DIS,2024-09-11,2024-10-10,,,,1.10.4.2.2( Generator Stator)
4413, Generator Rotor ,SUP,2022-09-27,2024-10-25,,,,1.10.4.2(Supply)
4414,Engineering,ENG,2022-09-27,2023-10-31,,,,1.10.4.2.3( Generator Rotor )
4415,Manufacturing,MFG,2023-11-01,2024-09-25,,,,1.10.4.2.3( Generator Rotor )
4416,Dispatch,DIS,2024-09-26,2024-10-25,,,,1.10.4.2.3( Generator Rotor )
4417,Brushless Exciter Set & accessories,SUP,2022-09-27,2024-10-12,,,,1.10.4.2(Supply)
4418,Engineering,ENG,2022-09-27,2023-11-23,,,,1.10.4.2.4(Brushless Exciter Set & accessories)
4419,Manufacturing,MFG,2023-11-24,2024-08-29,,,,1.10.4.2.4(Brushless Exciter Set & accessories)
4420,Dispatch,DIS,2024-08-30,2024-10-12,,,,1.10.4.2.4(Brushless Exciter Set & accessories)
4421,Gen. completing items,SUP,2022-09-27,2024-10-07,,,,1.10.4.2(Supply)
4422,Engineering,ENG,2022-09-27,2023-10-16,,,,1.10.4.2.5(Gen. completing items)
4423,Manufacturing,MFG,2023-10-17,2024-08-07,,,,1.10.4.2.5(Gen. completing items)
4424,Dispatch,DIS,2024-08-08,2024-10-07,,,,1.10.4.2.5(Gen. completing items)
4425,Gen. Auxiliaries Systems,SUP,2022-09-27,2024-12-12,,,,1.10.4.2(Supply)
4426,Engineering,ENG,2022-09-27,2023-12-05,,,,1.10.4.2.6(Gen. Auxiliaries Systems)
4427,Manufacturing,MFG,2023-12-06,2024-10-28,,,,1.10.4.2.6(Gen. Auxiliaries Systems)
4428,Dispatch,DIS,2024-10-29,2024-12-12,,,,1.10.4.2.6(Gen. Auxiliaries Systems)
4429,TG Piping,SUP,2022-09-27,2024-12-12,,,,1.10.4.2(Supply)
4430,Engineering,ENG,2022-09-27,2023-12-05,,,,1.10.4.2.7(TG Piping)
4431,Manufacturing,MFG,2023-12-06,2024-10-28,,,,1.10.4.2.7(TG Piping)
4432,Dispatch,DIS,2024-10-29,2024-12-12,,,,1.10.4.2.7(TG Piping)
4433,PW System equipments,SUP,2022-09-27,2024-12-12,,,,1.10.4.2(Supply)
4434,Engineering,ENG,2022-09-27,2023-12-05,,,,1.10.4.2.8(PW System equipments)
4435,Manufacturing,MFG,2023-12-06,2024-10-28,,,,1.10.4.2.8(PW System equipments)
4436,Dispatch,DIS,2024-10-29,2024-12-12,,,,1.10.4.2.8(PW System equipments)
4437,Loose instruments,SUP,2022-09-27,2024-12-27,,,,1.10.4.2(Supply)
4438,Engineering,ENG,2022-09-27,2023-12-05,,,,1.10.4.2.9(Loose instruments)
4439,Manufacturing,MFG,2023-12-06,2024-10-28,,,,1.10.4.2.9(Loose instruments)
4440,Dispatch,DIS,2024-10-29,2024-12-27,,,,1.10.4.2.9(Loose instruments)
4441,Erection,ERC,2024-12-06,2026-04-10,,,,1.10.4(Generator)
4442, MECHANICAL ASSEMBLY STATOR AND ROTOR,ERC,2024-12-06,2025-08-05,,,,1.10.4.3(Erection)
4443,Checking of foundations,CIV,2024-12-06,2024-12-15,,,,1.10.4.3.1( MECHANICAL ASSEMBLY STATOR AND ROTOR)
4444,Setting and alignment of machine sole plates,ERC,2024-12-21,2025-01-09,,,,1.10.4.3.1( MECHANICAL ASSEMBLY STATOR AND ROTOR)
4445,Stator lifting and placement on the foundations,ERC,2025-03-20,2025-04-07,,,,1.10.4.3.1( MECHANICAL ASSEMBLY STATOR AND ROTOR)
4446,Visual inspection of rotor and stator,ERC,2025-04-08,2025-04-17,,,,1.10.4.3.1( MECHANICAL ASSEMBLY STATOR AND ROTOR)
4447,Mounting of bushing compartment,ERC,2025-04-18,2025-05-02,,,,1.10.4.3.1( MECHANICAL ASSEMBLY STATOR AND ROTOR)
4448,Insertions and removal of Hydrogen coolers,ERC,2025-05-03,2025-05-12,,,,1.10.4.3.1( MECHANICAL ASSEMBLY STATOR AND ROTOR)
4449,Generator rotor insertion,ERC,2025-05-13,2025-05-22,,,,1.10.4.3.1( MECHANICAL ASSEMBLY STATOR AND ROTOR)
4450,Alignment of generator,ERC,2025-05-23,2025-06-11,,,,1.10.4.3.1( MECHANICAL ASSEMBLY STATOR AND ROTOR)
4451,Aligning and coupling the brushless exciter rotor,ERC,2025-06-12,2025-07-01,,,,1.10.4.3.1( MECHANICAL ASSEMBLY STATOR AND ROTOR)
4452,Mounting of generator end shields,ERC,2025-07-02,2025-07-16,,,,1.10.4.3.1( MECHANICAL ASSEMBLY STATOR AND ROTOR)
4453,Generator bearing assembly,ERC,2025-07-17,2025-07-26,,,,1.10.4.3.1( MECHANICAL ASSEMBLY STATOR AND ROTOR)
4454,Alignment with LP rotor,ERC,2025-07-27,2025-08-05,,,,1.10.4.3.1( MECHANICAL ASSEMBLY STATOR AND ROTOR)
4455, EXCITATION SYSTEM,ERC,2024-12-21,2025-07-20,,,,1.10.4.3(Erection)
4456,Placement and grouting of foundations plates,CIV,2024-12-21,2024-12-27,,,,1.10.4.3.2( EXCITATION SYSTEM)
4457,Physical inspection and placement of excitor components and excitation transformer,ERC,2025-06-12,2025-07-11,,,,1.10.4.3.2( EXCITATION SYSTEM)
4458,Gen- exciter rotor alignment and correction,OTH,2025-07-12,2025-07-20,,,,1.10.4.3.2( EXCITATION SYSTEM)
4459, PW SYSTEM,ERC,2025-03-15,2025-08-20,,,,1.10.4.3(Erection)
4460, GEN. PW Mounting of PW skid,ERC,2025-03-15,2025-03-24,,,,1.10.4.3.3( PW SYSTEM)
4461, GEN. PW Mounting of alkalizer unit,ERC,2025-03-25,2025-04-03,,,,1.10.4.3.3( PW SYSTEM)
4462, GEN. PW alkalizer of PW pipings and recirculation line,ERC,2025-04-04,2025-05-12,,,,1.10.4.3.3( PW SYSTEM)
4463, GEN. PW recirculation of PW tanks,ERC,2025-07-17,2025-08-05,,,,1.10.4.3.3( PW SYSTEM)
4464, GEN. PW SYSTEM:PW line flushing and cleaning,ERC,2025-08-06,2025-08-20,,,,1.10.4.3.3( PW SYSTEM)
4465, SEAL OIL SYSTEM,ERC,2025-05-04,2025-08-18,,,,1.10.4.3(Erection)
4466, GEN. SEAL OIL recirculation of Seal oil unit,ERC,2025-05-04,2025-05-20,,,,1.10.4.3.4( SEAL OIL SYSTEM)
4467, GEN. SEAL OIL recirculation of seal oil piping,ERC,2025-05-21,2025-08-18,,,,1.10.4.3.4( SEAL OIL SYSTEM)
4468, Oil flushing of lube oil and seal oil sys.,ERC,2025-11-01,2025-12-11,,,,1.10.4.3(Erection)
4469,Box up of exciter,ERC,2025-12-12,2025-12-19,,,,1.10.4.3(Erection)
4470, Air leak test,ERC,2026-04-01,2026-04-10,,,,1.10.4.3(Erection)
4471,Condenser & Vacuum system,OTH,2022-09-27,2025-11-09,,,,1.10(Turbo-generator & Auxiliaries)
4472,Civil,CIV,2023-05-05,2024-02-23,,,,1.10.5(Condenser & Vacuum system)
4473,Condenser Foundation,CIV,2023-05-05,2024-02-23,,,,1.10.5.1(Civil)
4474,EXCAVATION,CIV,2023-05-05,2023-06-03,,,,1.10.5.1.1(Condenser Foundation)
4475,RCC in substructure including PCC,CIV,2023-06-04,2023-08-12,,,,1.10.5.1.1(Condenser Foundation)
4476,RCC in superstructure,CIV,2023-08-13,2023-12-10,,,,1.10.5.1.1(Condenser Foundation)
4477,Backfilling & Finishing Work,CIV,2023-12-11,2024-02-23,,,,1.10.5.1.1(Condenser Foundation)
4478,Supply,SUP,2022-09-27,2025-06-22,,,,1.10.5(Condenser & Vacuum system)
4479,Hot Well and bottom plate,SUP,2022-09-27,2024-02-11,,,,1.10.5.2(Supply)
4480,Engineering,ENG,2022-09-27,2023-06-28,,,,1.10.5.2.1(Hot Well and bottom plate)
4481,Manufacturing,MFG,2023-06-29,2023-12-28,,,,1.10.5.2.1(Hot Well and bottom plate)
4482,Dispatch,DIS,2023-12-29,2024-02-11,,,,1.10.5.2.1(Hot Well and bottom plate)
4483,Condenser Support,SUP,2022-09-27,2024-02-11,,,,1.10.5.2(Supply)
4484,Engineering,ENG,2022-09-27,2023-06-28,,,,1.10.5.2.2(Condenser Support)
4485,Manufacturing,MFG,2023-06-29,2023-12-28,,,,1.10.5.2.2(Condenser Support)
4486,Dispatch,DIS,2023-12-29,2024-02-11,,,,1.10.5.2.2(Condenser Support)
4487,Side Walls & Internal details,SUP,2022-09-27,2024-03-12,,,,1.10.5.2(Supply)
4488,Engineering,ENG,2022-09-27,2023-07-08,,,,1.10.5.2.3(Side Walls & Internal details)
4489,Manufacturing,MFG,2023-07-09,2024-01-27,,,,1.10.5.2.3(Side Walls & Internal details)
4490,Dispatch,DIS,2024-01-28,2024-03-12,,,,1.10.5.2.3(Side Walls & Internal details)
4491,Water box & Water chamber,SUP,2022-09-27,2024-05-13,,,,1.10.5.2(Supply)
4492,Engineering,ENG,2022-09-27,2023-08-12,,,,1.10.5.2.4(Water box & Water chamber)
4493,Manufacturing,MFG,2023-08-13,2024-03-29,,,,1.10.5.2.4(Water box & Water chamber)
4494,Dispatch,DIS,2024-03-30,2024-05-13,,,,1.10.5.2.4(Water box & Water chamber)
4495,Dome Walls & Dome internals,SUP,2022-09-27,2024-05-13,,,,1.10.5.2(Supply)
4496,Engineering,ENG,2022-09-27,2023-08-12,,,,1.10.5.2.5(Dome Walls & Dome internals)
4497,Manufacturing,MFG,2023-08-13,2024-03-29,,,,1.10.5.2.5(Dome Walls & Dome internals)
4498,Dispatch,DIS,2024-03-30,2024-05-13,,,,1.10.5.2.5(Dome Walls & Dome internals)
4499,LPH-1 supports & other Condenser loose items ,SUP,2022-09-27,2024-07-13,,,,1.10.5.2(Supply)
4500,Engineering,ENG,2022-09-27,2023-09-26,,,,1.10.5.2.6(LPH-1 supports & other Condenser loose items )
4501,Manufacturing,MFG,2023-09-27,2024-05-29,,,,1.10.5.2.6(LPH-1 supports & other Condenser loose items )
4502,Dispatch,DIS,2024-05-30,2024-07-13,,,,1.10.5.2.6(LPH-1 supports & other Condenser loose items )
4503,Gland Steam Condenser & LPH-1,SUP,2022-09-27,2024-07-28,,,,1.10.5.2(Supply)
4504,Engineering,ENG,2022-09-27,2023-09-26,,,,1.10.5.2.7(Gland Steam Condenser & LPH-1)
4505,Manufacturing,MFG,2023-09-27,2024-05-29,,,,1.10.5.2.7(Gland Steam Condenser & LPH-1)
4506,Dispatch,DIS,2024-05-30,2024-07-28,,,,1.10.5.2.7(Gland Steam Condenser & LPH-1)
4507,Loose items of GSC & LPH-1,SUP,2022-09-27,2024-08-12,,,,1.10.5.2(Supply)
4508,Engineering,ENG,2022-09-27,2023-10-06,,,,1.10.5.2.8(Loose items of GSC & LPH-1)
4509,Manufacturing,MFG,2023-10-07,2024-06-28,,,,1.10.5.2.8(Loose items of GSC & LPH-1)
4510,Dispatch,DIS,2024-06-29,2024-08-12,,,,1.10.5.2.8(Loose items of GSC & LPH-1)
4511,Condenser Instruments,SUP,2022-09-27,2024-06-28,,,,1.10.5.2(Supply)
4512,Engineering,ENG,2022-09-27,2023-09-26,,,,1.10.5.2.9(Condenser Instruments)
4513,Manufacturing,MFG,2023-09-27,2024-05-29,,,,1.10.5.2.9(Condenser Instruments)
4514,Dispatch,DIS,2024-05-30,2024-06-28,,,,1.10.5.2.9(Condenser Instruments)
4515,BPL - RE Joints,SUP,2023-08-28,2025-04-12,,,,1.10.5.2(Supply)
4516,"Engineering, INDENTING AND PROCUREMENT ",ENG,2023-08-28,2024-04-13,,,,1.10.5.2.10(BPL - RE Joints)
4517,Manufacturing & TESTING ,MFG,2024-04-14,2025-02-11,,,,1.10.5.2.10(BPL - RE Joints)
4518, Dispatch ,DIS,2025-02-12,2025-03-13,,,,1.10.5.2.10(BPL - RE Joints)
4519,RECEIPT AT SITE ,REC,2025-03-14,2025-04-12,,,,1.10.5.2.10(BPL - RE Joints)
4520,BPL - Flash Tank,SUP,2023-05-27,2025-06-22,,,,1.10.5.2(Supply)
4521,"Engineering, INDENTING AND PROCUREMENT ",ENG,2023-05-27,2024-04-23,,,,1.10.5.2.11(BPL - Flash Tank)
4522,Manufacturing & TESTING ,MFG,2024-04-24,2025-04-23,,,,1.10.5.2.11(BPL - Flash Tank)
4523, Dispatch ,DIS,2025-04-24,2025-05-23,,,,1.10.5.2.11(BPL - Flash Tank)
4524,RECEIPT AT SITE ,REC,2025-05-24,2025-06-22,,,,1.10.5.2.11(BPL - Flash Tank)
4525,BPL - Misc. Tank,SUP,2023-05-27,2025-03-11,,,,1.10.5.2(Supply)
4526,"Engineering, INDENTING AND PROCUREMENT ",ENG,2023-05-27,2024-02-25,,,,1.10.5.2.12(BPL - Misc. Tank)
4527,Manufacturing & TESTING ,MFG,2024-02-26,2025-01-10,,,,1.10.5.2.12(BPL - Misc. Tank)
4528, Dispatch ,DIS,2025-01-11,2025-02-09,,,,1.10.5.2.12(BPL - Misc. Tank)
4529,RECEIPT AT SITE ,REC,2025-02-10,2025-03-11,,,,1.10.5.2.12(BPL - Misc. Tank)
4530,Erection,ERC,2024-07-29,2025-11-09,,,,1.10.5(Condenser & Vacuum system)
4531, Condenser: Checking and corrections of foundations,ERC,2024-07-29,2024-07-31,,,,1.10.5.3(Erection)
4532, Condenser: Prepn. Of foundation. & packer plate grouting.,ERC,2024-08-01,2024-08-10,,,,1.10.5.3(Erection)
4533, Condenser: Pre-Assy of Bottom plate with hot well & Springs.,ERC,2024-08-01,2024-08-30,,,,1.10.5.3(Erection)
4534, Condenser: Water Box/water chamber pre-ASSY & welding.,ERC,2024-08-11,2024-08-30,,,,1.10.5.3(Erection)
4535, Condenser: Pre-Assy of side walls.,ERC,2024-08-11,2024-09-09,,,,1.10.5.3(Erection)
4536," Condenser: Bottom plate Lowering, Levelling & Centering w.r.t LPT .",ERC,2024-09-02,2024-09-26,,,,1.10.5.3(Erection)
4537, Condenser: TSP Hole cleaning,ERC,2024-09-27,2024-10-16,,,,1.10.5.3(Erection)
4538," Condenser: Ern. Of FWC,RWC & side walls and shell formation.",ERC,2024-10-17,2024-10-31,,,,1.10.5.3(Erection)
4539, Condenser: Lower Dome walls pre - assy.,ERC,2024-10-17,2024-11-25,,,,1.10.5.3(Erection)
4540, Condenser: Dome stiffening structure (Middle Zone) pre-assembly.,ERC,2024-10-27,2024-12-05,,,,1.10.5.3(Erection)
4541," Condenser: Erection of TSP's, alignment & Ern. Of shell internals.",ERC,2024-11-11,2024-12-20,,,,1.10.5.3(Erection)
4542, Condenser: Ern of Lower dome walls (4 sides) & alignment.,ERC,2024-11-26,2024-12-25,,,,1.10.5.3(Erection)
4543, Condenser: Welding of TSP's and other shell Internals.,ERC,2024-08-31,2024-10-14,,,,1.10.5.3(Erection)
4544, Condenser: Lower dome walls (4 sides) welding COMPLETION.,ERC,2024-12-28,2025-02-05,,,,1.10.5.3(Erection)
4545," Condenser: Lowering of dome stiffening structure, levelling & welding.",ERC,2025-02-06,2025-02-20,,,,1.10.5.3(Erection)
4546, Condenser: Cond. Tubing / Tube insertion.,ERC,2025-02-08,2025-03-24,,,,1.10.5.3(Erection)
4547, Condenser: TUBE EXPANSION.,ERC,2025-02-23,2025-04-08,,,,1.10.5.3(Erection)
4548, Condenser: Pre-assembly of Upper dome walls.,ERC,2025-02-06,2025-03-02,,,,1.10.5.3(Erection)
4549, Condenser: Ern. Of upper dome wall (front & rear).,ERC,2025-03-05,2025-03-14,,,,1.10.5.3(Erection)
4550, Condenser: Laying Temp. line for filling water in steam space.,ERC,2025-04-11,2025-04-20,,,,1.10.5.3(Erection)
4551, Condenser: LEAK TEST (SHELL SIDE),ERC,2025-04-09,2025-04-13,,,,1.10.5.3(Erection)
4552, Condenser: Sand blasting and W. box/W. Chamber painting .,ERC,2025-04-14,2025-05-08,,,,1.10.5.3(Erection)
4553, Condenser: Sand blasting and painting of water chambers.,ERC,2025-04-24,2025-05-18,,,,1.10.5.3(Erection)
4554, Chamber of water box and tightening of bolts.,ERC,2025-05-19,2025-06-12,,,,1.10.5.3(Erection)
4555, Condenser: Hydro TEST (C.W.SIDE).,ERC,2025-06-16,2025-06-25,,,,1.10.5.3(Erection)
4556, Condenser: FLOATING & NECK WELDING.,ERC,2025-06-28,2025-07-17,,,,1.10.5.3(Erection)
4557, Condenser: C.W. Piping (A row to cond.) & R.E Joints.,ERC,2025-05-09,2025-07-22,,,,1.10.5.3(Erection)
4558, Condenser: Extraction Piping inside Condenser.,ERC,2025-06-26,2025-08-09,,,,1.10.5.3(Erection)
4559, Condenser: Dome stiffening piping (upper dome) & welding.,ERC,2025-07-23,2025-08-11,,,,1.10.5.3(Erection)
4560," Condenser: Assy. Of Stand Pipes, all fittings & other instruments.",ERC,2025-08-12,2025-08-26,,,,1.10.5.3(Erection)
4561, Condenser: C.W. CHARGING.,ERC,2025-08-30,2025-09-08,,,,1.10.5.3(Erection)
4562, Condenser: Measurement of spring height & grouting.,ERC,2025-09-09,2025-09-13,,,,1.10.5.3(Erection)
4563," Condenser: Scraps cuttings, grindings. / finishings",ERC,2025-09-14,2025-09-18,,,,1.10.5.3(Erection)
4564,Erection of Vacuum Pump with associated piping,ERC,2025-07-23,2025-11-09,,,,1.10.5.3(Erection)
4565,Erection of Gland Steam Condenser and associated piping,ERC,2025-07-23,2025-11-09,,,,1.10.5.3(Erection)
4566,"Erection of Flash tank, Flash box, drain cooler & G.S.C.",ERC,2025-08-12,2025-11-09,,,,1.10.5.3(Erection)
4567,"Other Misc. Piping like Control fluid, Drain & vent piping, Instrument & Service air etc.",ERC,2025-08-12,2025-11-09,,,,1.10.5.3(Erection)
4568,Power Cycle Pumps,ERC,2022-09-27,2026-02-10,,,,1.10(Turbo-generator & Auxiliaries)
4569,Turbine Driven Boiler Feed Pump & Booster Pump,ERC,2022-09-27,2026-02-10,,,,1.10.6(Power Cycle Pumps)
4570,Civil,CIV,2024-10-17,2025-02-07,,,,1.10.6.1(Turbine Driven Boiler Feed Pump & Booster Pump)
4571,First TDBFP Foundation,CIV,2024-10-17,2025-01-12,,,,1.10.6.1.1(Civil)
4572,"Columns & piping, Instrument & Welding Work",ERC,2024-10-17,2024-11-15,,,,1.10.6.1.1.1(First TDBFP Foundation)
4573,Platform For TDBFP Foundation,CIV,2024-11-16,2024-12-13,,,,1.10.6.1.1.1(First TDBFP Foundation)
4574,RCC Foundation Casting work,CIV,2024-12-14,2025-01-12,,,,1.10.6.1.1.1(First TDBFP Foundation)
4575,Second TDBFP Foundation,CIV,2024-11-12,2025-02-07,,,,1.10.6.1.1(Civil)
4576," Columns & piping, Instrument & Welding Work",CIV,2024-11-12,2024-12-11,,,,1.10.6.1.1.2(Second TDBFP Foundation)
4577, Platform For TDBFP Foundation,CIV,2024-12-12,2025-01-08,,,,1.10.6.1.1.2(Second TDBFP Foundation)
4578, RCC Foundation Casting work,CIV,2025-01-09,2025-02-07,,,,1.10.6.1.1.2(Second TDBFP Foundation)
4579,Supply,SUP,2022-09-27,2024-10-19,,,,1.10.6.1(Turbine Driven Boiler Feed Pump & Booster Pump)
4580,HYD- TURBINE DRIVEN BOOSTER PUMP,SUP,2022-09-27,2024-10-19,,,,1.10.6.1.2(Supply)
4581,Engineering & PROCUREMENT,ENG,2022-09-27,2023-12-25,,,,1.10.6.1.2.1(HYD- TURBINE DRIVEN BOOSTER PUMP)
4582,Manufacturing,MFG,2023-12-26,2024-06-02,,,,1.10.6.1.2.1(HYD- TURBINE DRIVEN BOOSTER PUMP)
4583,ASSEMBLY & TESTING,MFG,2024-06-03,2024-09-19,,,,1.10.6.1.2.1(HYD- TURBINE DRIVEN BOOSTER PUMP)
4584,Dispatch OF TDBP AND ALL ASSOCIATED ITEMS,DIS,2024-09-20,2024-10-19,,,,1.10.6.1.2.1(HYD- TURBINE DRIVEN BOOSTER PUMP)
4585,HYD- TURBINE DRIVEN BOILER FEED PUMP,SUP,2022-09-27,2024-10-19,,,,1.10.6.1.2(Supply)
4586,Engineering & PROCUREMENT,ENG,2022-09-27,2023-12-25,,,,1.10.6.1.2.2(HYD- TURBINE DRIVEN BOILER FEED PUMP)
4587,Manufacturing,MFG,2023-12-26,2024-06-02,,,,1.10.6.1.2.2(HYD- TURBINE DRIVEN BOILER FEED PUMP)
4588,ASSEMBLY & TESTING,MFG,2024-06-03,2024-09-19,,,,1.10.6.1.2.2(HYD- TURBINE DRIVEN BOILER FEED PUMP)
4589,Dispatch OF TDBFP AND ALL ASSOCIATED ITEMS,DIS,2024-09-20,2024-10-19,,,,1.10.6.1.2.2(HYD- TURBINE DRIVEN BOILER FEED PUMP)
4590,HYD- BFP DRIVE TURBINE,SUP,2022-09-27,2024-10-19,,,,1.10.6.1.2(Supply)
4591,Engineering & PROCUREMENT,ENG,2022-09-27,2023-12-25,,,,1.10.6.1.2.3(HYD- BFP DRIVE TURBINE)
4592,Manufacturing,MFG,2023-12-26,2024-06-02,,,,1.10.6.1.2.3(HYD- BFP DRIVE TURBINE)
4593,ASSEMBLY & TESTING,MFG,2024-06-03,2024-09-19,,,,1.10.6.1.2.3(HYD- BFP DRIVE TURBINE)
4594,Dispatch OF DRIVE TURBINE AND ALL ASSOCIATED ITEMS,DIS,2024-09-20,2024-10-19,,,,1.10.6.1.2.3(HYD- BFP DRIVE TURBINE)
4595,HYD- BFP DT LUB OIL SYSTEM,SUP,2022-09-27,2024-10-19,,,,1.10.6.1.2(Supply)
4596,Engineering & PROCUREMENT,ENG,2022-09-27,2023-12-25,,,,1.10.6.1.2.4(HYD- BFP DT LUB OIL SYSTEM)
4597,Manufacturing,MFG,2023-12-26,2024-06-02,,,,1.10.6.1.2.4(HYD- BFP DT LUB OIL SYSTEM)
4598,ASSEMBLY & TESTING,MFG,2024-06-03,2024-09-19,,,,1.10.6.1.2.4(HYD- BFP DT LUB OIL SYSTEM)
4599,Dispatch OF LUBE OIL SYSTEM AND ALL ASSOCIATED ITEMS,DIS,2024-09-20,2024-10-19,,,,1.10.6.1.2.4(HYD- BFP DT LUB OIL SYSTEM)
4600,Erection,ERC,2025-02-10,2026-02-10,,,,1.10.6.1(Turbine Driven Boiler Feed Pump & Booster Pump)
4601,First TURBINE DRIVEN BFP,ERC,2025-02-10,2026-01-15,,,,1.10.6.1.3(Erection)
4602,Foundation checking and correction,CIV,2025-02-10,2025-02-15,,,,1.10.6.1.3.1(First TURBINE DRIVEN BFP)
4603,Placement of sole plates and grouting,ERC,2025-02-16,2025-02-25,,,,1.10.6.1.3.1(First TURBINE DRIVEN BFP)
4604,Placement of turbine assembly on the sole plates and alignment,ERC,2025-02-26,2025-03-22,,,,1.10.6.1.3.1(First TURBINE DRIVEN BFP)
4605,Erection of inlet and exhaust piping,ERC,2025-03-23,2025-04-03,,,,1.10.6.1.3.1(First TURBINE DRIVEN BFP)
4606,Erection of gland sealing system and connecting piping,ERC,2025-04-04,2025-04-23,,,,1.10.6.1.3.1(First TURBINE DRIVEN BFP)
4607,Erection and grouting of governing system and control valves,ERC,2025-04-24,2025-05-13,,,,1.10.6.1.3.1(First TURBINE DRIVEN BFP)
4608,Placement and alignment of booster pump and gearbox,ERC,2025-05-14,2025-05-28,,,,1.10.6.1.3.1(First TURBINE DRIVEN BFP)
4609,Placement of BFP,ERC,2025-05-29,2025-06-12,,,,1.10.6.1.3.1(First TURBINE DRIVEN BFP)
4610,Grouting of all equipments,ERC,2025-06-13,2025-07-12,,,,1.10.6.1.3.1(First TURBINE DRIVEN BFP)
4611,Erection and fit ups of inlet and exhaust of BP and BFP,ERC,2025-07-13,2025-08-05,,,,1.10.6.1.3.1(First TURBINE DRIVEN BFP)
4612,"Erection of oil tanks, filters, collars and grouting",ERC,2025-08-06,2025-08-29,,,,1.10.6.1.3.1(First TURBINE DRIVEN BFP)
4613,"Erection of AOP, JOP, EOP and alignment",ERC,2025-08-30,2025-09-23,,,,1.10.6.1.3.1(First TURBINE DRIVEN BFP)
4614,Lube oil piping and governing oil piping,ERC,2025-09-24,2025-12-22,,,,1.10.6.1.3.1(First TURBINE DRIVEN BFP)
4615,Seal water and cooling water piping,ERC,2025-12-23,2026-01-15,,,,1.10.6.1.3.1(First TURBINE DRIVEN BFP)
4616,Second TURBINE DRIVEN BFP,ERC,2025-03-08,2026-02-10,,,,1.10.6.1.3(Erection)
4617,Foundation checking and correction,CIV,2025-03-08,2025-03-13,,,,1.10.6.1.3.2(Second TURBINE DRIVEN BFP)
4618,Placement of sole plates and grouting,ERC,2025-03-14,2025-03-23,,,,1.10.6.1.3.2(Second TURBINE DRIVEN BFP)
4619,Placement of turbine assembly on the sole plates and alignment,ERC,2025-03-24,2025-04-17,,,,1.10.6.1.3.2(Second TURBINE DRIVEN BFP)
4620,Erection of inlet and exhaust piping,ERC,2025-04-18,2025-04-29,,,,1.10.6.1.3.2(Second TURBINE DRIVEN BFP)
4621,Erection of gland sealing system and connecting piping,ERC,2025-04-30,2025-05-19,,,,1.10.6.1.3.2(Second TURBINE DRIVEN BFP)
4622,Erection and grouting of governing system and control valves,ERC,2025-05-20,2025-06-08,,,,1.10.6.1.3.2(Second TURBINE DRIVEN BFP)
4623,Placement and alignment of booster pump and gearbox,ERC,2025-06-09,2025-06-23,,,,1.10.6.1.3.2(Second TURBINE DRIVEN BFP)
4624,Placement of BFP,ERC,2025-06-24,2025-07-08,,,,1.10.6.1.3.2(Second TURBINE DRIVEN BFP)
4625,Grouting of all equipments,ERC,2025-07-09,2025-08-07,,,,1.10.6.1.3.2(Second TURBINE DRIVEN BFP)
4626,Erection and fit ups of inlet and exhaust of BP and BFP,ERC,2025-08-08,2025-08-31,,,,1.10.6.1.3.2(Second TURBINE DRIVEN BFP)
4627,"Erection of oil tanks, filters, collars and grouting",ERC,2025-09-01,2025-09-24,,,,1.10.6.1.3.2(Second TURBINE DRIVEN BFP)
4628,"Erection of AOP, JOP, EOP and alignment",ERC,2025-09-25,2025-10-19,,,,1.10.6.1.3.2(Second TURBINE DRIVEN BFP)
4629,Lube oil piping and governing oil piping,ERC,2025-10-20,2026-01-17,,,,1.10.6.1.3.2(Second TURBINE DRIVEN BFP)
4630,Seal water and cooling water piping,ERC,2026-01-18,2026-02-10,,,,1.10.6.1.3.2(Second TURBINE DRIVEN BFP)
4631,Motor Driven Boiler Feed Pumps and Booster Pumps,ERC,2022-09-27,2025-06-04,,,,1.10.6(Power Cycle Pumps)
4632,Civil,CIV,2024-11-02,2025-01-07,,,,1.10.6.2(Motor Driven Boiler Feed Pumps and Booster Pumps)
4633,MDBFP Foundation,CIV,2024-11-02,2025-01-07,,,,1.10.6.2.1(Civil)
4634,Columns & governing & Welding Work,CIV,2024-11-02,2024-11-16,,,,1.10.6.2.1.1(MDBFP Foundation)
4635,Platform For MDBFP Foundation,CIV,2024-11-17,2024-12-08,,,,1.10.6.2.1.1(MDBFP Foundation)
4636,RCC Foundation Casting work,CIV,2024-12-09,2025-01-07,,,,1.10.6.2.1.1(MDBFP Foundation)
4637,Supply,SUP,2022-09-27,2025-01-14,,,,1.10.6.2(Motor Driven Boiler Feed Pumps and Booster Pumps)
4638,HYD - MOTOR DRIVEN BOOSTER PUMP,SUP,2022-09-27,2024-08-31,,,,1.10.6.2.2(Supply)
4639,Engineering & PROCUREMENT,ENG,2022-09-27,2023-12-25,,,,1.10.6.2.2.1(HYD - MOTOR DRIVEN BOOSTER PUMP)
4640,Manufacturing,MFG,2023-12-26,2024-06-02,,,,1.10.6.2.2.1(HYD - MOTOR DRIVEN BOOSTER PUMP)
4641,ASSEMBLY & TESTING,MFG,2024-04-15,2024-08-01,,,,1.10.6.2.2.1(HYD - MOTOR DRIVEN BOOSTER PUMP)
4642,Dispatch OF MDBP AND ALL ASSOCIATED ITEMS,DIS,2024-08-02,2024-08-31,,,,1.10.6.2.2.1(HYD - MOTOR DRIVEN BOOSTER PUMP)
4643,HYD - MOTOR DRIVEN BOILER FEED PUMP,SUP,2022-09-27,2024-08-31,,,,1.10.6.2.2(Supply)
4644,Engineering & PROCUREMENT,ENG,2022-09-27,2023-12-25,,,,1.10.6.2.2.2(HYD - MOTOR DRIVEN BOILER FEED PUMP)
4645,Manufacturing,MFG,2023-12-26,2024-06-02,,,,1.10.6.2.2.2(HYD - MOTOR DRIVEN BOILER FEED PUMP)
4646,ASSEMBLY & TESTING,MFG,2024-04-15,2024-08-01,,,,1.10.6.2.2.2(HYD - MOTOR DRIVEN BOILER FEED PUMP)
4647,Dispatch OF MDBFP AND ALL ASSOCIATED ITEMS,DIS,2024-08-02,2024-08-31,,,,1.10.6.2.2.2(HYD - MOTOR DRIVEN BOILER FEED PUMP)
4648,BPL - BFP Motor,SUP,2023-07-27,2025-01-14,,,,1.10.6.2.2(Supply)
4649,"Engineering, INDENTING AND PROCUREMENT ",ENG,2023-07-27,2024-05-09,,,,1.10.6.2.2.3(BPL - BFP Motor)
4650,Manufacturing & TESTING ,MFG,2024-05-10,2024-12-15,,,,1.10.6.2.2.3(BPL - BFP Motor)
4651,Dispatch,DIS,2024-12-16,2025-01-14,,,,1.10.6.2.2.3(BPL - BFP Motor)
4652,Erection,ERC,2025-02-05,2025-06-04,,,,1.10.6.2(Motor Driven Boiler Feed Pumps and Booster Pumps)
4653,Foundation checking and correction,CIV,2025-02-05,2025-02-10,,,,1.10.6.2.3(Erection)
4654,Placement and alignment of booster pump and motor,ERC,2025-02-11,2025-02-16,,,,1.10.6.2.3(Erection)
4655,Placement and alignment of coupling and BFP,ERC,2025-02-17,2025-02-22,,,,1.10.6.2.3(Erection)
4656,Bolting of equipments and grouting,ERC,2025-02-23,2025-03-06,,,,1.10.6.2.3(Erection)
4657,Erection of oil pumps and grouting,ERC,2025-03-07,2025-03-22,,,,1.10.6.2.3(Erection)
4658,Erection of oil tanks and centrifuge,ERC,2025-03-23,2025-04-07,,,,1.10.6.2.3(Erection)
4659,Erection of LO and WO coolers,ERC,2025-04-08,2025-04-17,,,,1.10.6.2.3(Erection)
4660,Lube oil and working oil piping,ERC,2025-04-18,2025-05-03,,,,1.10.6.2.3(Erection)
4661,Seal water and colling water piping,ERC,2025-05-04,2025-05-19,,,,1.10.6.2.3(Erection)
4662,Erection of discharge and suction piping and valves,ERC,2025-05-20,2025-06-04,,,,1.10.6.2.3(Erection)
4663,Condensate Extraction Pump,ERC,2022-09-27,2025-11-03,,,,1.10.6(Power Cycle Pumps)
4664,Civil,CIV,2023-10-13,2024-08-05,,,,1.10.6.3(Condensate Extraction Pump)
4665,CEP FOUNDATION: Excavation & PCC,CIV,2023-10-13,2023-12-05,,,,1.10.6.3.1(Civil)
4666,CEP FOUNDATION: RCC Raft,CIV,2023-12-12,2024-02-29,,,,1.10.6.3.1(Civil)
4667,CEP FOUNDATION: RCC Circular Wall,CIV,2024-03-08,2024-07-05,,,,1.10.6.3.1(Civil)
4668,CEP FOUNDATION: Finishing works,CIV,2024-07-06,2024-08-05,,,,1.10.6.3.1(Civil)
4669,Supply,SUP,2022-09-27,2025-03-22,,,,1.10.6.3(Condensate Extraction Pump)
4670,HYD -Condensate EXTRACT PUMP,SUP,2022-09-27,2024-10-19,,,,1.10.6.3.2(Supply)
4671,Engineering & PROCUREMENT,ENG,2022-09-27,2023-12-25,,,,1.10.6.3.2.1(HYD -Condensate EXTRACT PUMP)
4672,Manufacturing,MFG,2023-12-26,2024-06-02,,,,1.10.6.3.2.1(HYD -Condensate EXTRACT PUMP)
4673,ASSEMBLY & TESTING,OTH,2024-06-03,2024-09-19,,,,1.10.6.3.2.1(HYD -Condensate EXTRACT PUMP)
4674,Dispatch OF CEP AND ALL ASSOCIATED ITEMS,DIS,2024-09-20,2024-10-19,,,,1.10.6.3.2.1(HYD -Condensate EXTRACT PUMP)
4675,HYD - DRIP PUMP,SUP,2022-09-27,2024-10-19,,,,1.10.6.3.2(Supply)
4676,Engineering & PROCUREMENT,ENG,2022-09-27,2023-12-25,,,,1.10.6.3.2.2(HYD - DRIP PUMP)
4677,Manufacturing,MFG,2023-12-26,2024-06-02,,,,1.10.6.3.2.2(HYD - DRIP PUMP)
4678,ASSEMBLY & TESTING,OTH,2024-06-03,2024-09-19,,,,1.10.6.3.2.2(HYD - DRIP PUMP)
4679,Dispatch OF DRIP PUMP AND ALL ASSOCIATED ITEMS,DIS,2024-09-20,2024-10-19,,,,1.10.6.3.2.2(HYD - DRIP PUMP)
4680,BPL - CEP Motor,SUP,2023-06-26,2025-03-22,,,,1.10.6.3.2(Supply)
4681,"Engineering, INDENTING AND PROCUREMENT ",ENG,2023-06-26,2024-03-23,,,,1.10.6.3.2.3(BPL - CEP Motor)
4682,Manufacturing & TESTING ,MFG,2024-03-24,2025-01-21,,,,1.10.6.3.2.3(BPL - CEP Motor)
4683,Dispatch ,DIS,2025-01-22,2025-02-20,,,,1.10.6.3.2.3(BPL - CEP Motor)
4684,RECEIPT AT SITE ,REC,2025-02-21,2025-03-22,,,,1.10.6.3.2.3(BPL - CEP Motor)
4685,Erection,ERC,2024-08-06,2025-11-03,,,,1.10.6.3(Condensate Extraction Pump)
4686,Checking and correction of foundations/ pit inspection,ERC,2024-08-06,2024-08-20,,,,1.10.6.3.3(Erection)
4687,"Placement of frame, cannister",ERC,2024-11-09,2024-12-23,,,,1.10.6.3.3(Erection)
4688,Erection and alignment of main pump assembly,ERC,2024-12-24,2025-02-06,,,,1.10.6.3.3(Erection)
4689,Maintaining the verticality and alignment of pump with cannister,ERC,2025-02-07,2025-03-08,,,,1.10.6.3.3(Erection)
4690,Assembly of bearings and filling oil,ERC,2025-03-09,2025-04-22,,,,1.10.6.3.3(Erection)
4691,Fit up of the suction and discharge piping pieces,ERC,2025-04-23,2025-06-06,,,,1.10.6.3.3(Erection)
4692,releasing the pump on the suction and discharge piping,ERC,2025-06-07,2025-07-01,,,,1.10.6.3.3(Erection)
4693,Fixing of coupling and placement of motor,ERC,2025-07-02,2025-07-26,,,,1.10.6.3.3(Erection)
4694,Erection of cooling water and seal water piping,ERC,2025-07-27,2025-09-09,,,,1.10.6.3.3(Erection)
4695,Mechanical Cleaning of suction and discharge piping,ERC,2025-09-10,2025-10-09,,,,1.10.6.3.3(Erection)
4696,piping hangers values calibrated,ERC,2025-10-10,2025-11-03,,,,1.10.6.3.3(Erection)
4697,Misc. Horizontal Pump,ERC,2023-08-03,2025-10-23,,,,1.10(Turbo-generator & Auxiliaries)
4698,Civil,CIV,2024-10-06,2025-05-26,,,,1.10.7(Misc. Horizontal Pump)
4699, Boiler Fill Pump & Hot well Make up Pump Foundation,CIV,2024-10-06,2024-12-03,,,,1.10.7.1(Civil)
4700, Boiler Fill Pump & Hot well Make up Pump Foundation: EXCAVATION,CIV,2024-10-06,2024-10-15,,,,1.10.7.1.1( Boiler Fill Pump & Hot well Make up Pump Foundation)
4701, Boiler Fill Pump & Hot well Make up Pump Foundation: RCC in substructure including PCC,CIV,2024-10-16,2024-10-30,,,,1.10.7.1.1( Boiler Fill Pump & Hot well Make up Pump Foundation)
4702, Boiler Fill Pump & Hot well Make up Pump Foundation: RCC in superstructure,CIV,2024-10-31,2024-11-24,,,,1.10.7.1.1( Boiler Fill Pump & Hot well Make up Pump Foundation)
4703, Boiler Fill Pump & Hot well Make up Pump Foundation: Backfilling,CIV,2024-11-25,2024-11-30,,,,1.10.7.1.1( Boiler Fill Pump & Hot well Make up Pump Foundation)
4704, Boiler Fill Pump & Hot well Make up Pump Foundation: Finishing works,CIV,2024-12-01,2024-12-03,,,,1.10.7.1.1( Boiler Fill Pump & Hot well Make up Pump Foundation)
4705, SG DMCW Pump foundation,CIV,2024-12-15,2025-03-15,,,,1.10.7.1(Civil)
4706, SG DMCW Pump foundation: EXCAVATION,CIV,2024-12-15,2025-01-03,,,,1.10.7.1.2( SG DMCW Pump foundation)
4707, SG DMCW Pump foundation: RCC in substructure including PCC,CIV,2025-01-04,2025-01-28,,,,1.10.7.1.2( SG DMCW Pump foundation)
4708, SG DMCW Pump foundation: RCC in superstructure,CIV,2025-01-29,2025-03-04,,,,1.10.7.1.2( SG DMCW Pump foundation)
4709, SG DMCW Pump foundation: Backfilling,CIV,2025-03-05,2025-03-11,,,,1.10.7.1.2( SG DMCW Pump foundation)
4710, SG DMCW Pump foundation: Finishing works,CIV,2025-03-12,2025-03-15,,,,1.10.7.1.2( SG DMCW Pump foundation)
4711, TG DMCW Pump foundation: EXCAVATION,CIV,2024-12-15,2025-05-26,,,,1.10.7.1(Civil)
4712, TG DMCW Pump foundation: RCC in substructure including PCC,CIV,2024-12-15,2025-01-08,,,,1.10.7.1.3( TG DMCW Pump foundation: EXCAVATION)
4713, TG DMCW Pump foundation: RCC in superstructure,CIV,2025-01-09,2025-02-12,,,,1.10.7.1.3( TG DMCW Pump foundation: EXCAVATION)
4714, TG DMCW Pump foundation: Backfilling,CIV,2025-02-13,2025-02-19,,,,1.10.7.1.3( TG DMCW Pump foundation: EXCAVATION)
4715, TG DMCW Pump foundation: Finishing works,CIV,2025-02-20,2025-05-26,,,,1.10.7.1.3( TG DMCW Pump foundation: EXCAVATION)
4716, ACW Pump foundation: EXCAVATION,CIV,2024-12-15,2025-05-26,,,,1.10.7.1(Civil)
4717, ACW Pump foundation: RCC in substructure including PCC,CIV,2024-12-15,2025-01-08,,,,1.10.7.1.4( ACW Pump foundation: EXCAVATION)
4718, ACW Pump foundation:  RCC in superstructure,CIV,2025-01-09,2025-02-12,,,,1.10.7.1.4( ACW Pump foundation: EXCAVATION)
4719, ACW Pump foundation:  Backfilling,CIV,2025-02-13,2025-02-19,,,,1.10.7.1.4( ACW Pump foundation: EXCAVATION)
4720, ACW Pump foundation:  Finishing works,CIV,2025-02-20,2025-05-26,,,,1.10.7.1.4( ACW Pump foundation: EXCAVATION)
4721,Supply (BHEL PEM),SUP,2023-08-03,2024-09-25,,,,1.10.7(Misc. Horizontal Pump)
4722,Ordering,ORD,2023-08-03,2023-10-31,,,,1.10.7.2(Supply (BHEL PEM))
4723,Detailed Engineering,ENG,2023-11-01,2024-03-29,,,,1.10.7.2(Supply (BHEL PEM))
4724,Manufacturing,MFG,2024-03-30,2024-08-26,,,,1.10.7.2(Supply (BHEL PEM))
4725,Dispatch,DIS,2024-08-27,2024-09-25,,,,1.10.7.2(Supply (BHEL PEM))
4726,Erection,ERC,2024-12-04,2025-10-23,,,,1.10.7(Misc. Horizontal Pump)
4727,Erection of Boiler Fill Pump & Associated piping,ERC,2024-12-04,2025-02-01,,,,1.10.7.3(Erection)
4728,Erection of Hotwell make up Pump and Associated Piping,ERC,2024-12-04,2025-02-01,,,,1.10.7.3(Erection)
4729,Erection of SG DMCW pump & Associated Piping,ERC,2025-03-26,2025-08-07,,,,1.10.7.3(Erection)
4730,Erection of TG DMCW Pump & Associated Piping,ERC,2025-05-27,2025-09-28,,,,1.10.7.3(Erection)
4731,Erection of  ACW Pump & Associated Piping ,ERC,2025-05-27,2025-10-23,,,,1.10.7.3(Erection)
4732,HP/LP Heaters & Deaerator,SUP,2022-09-27,2025-05-26,,,,1.10(Turbo-generator & Auxiliaries)
4733,HP Heaters,SUP,2022-09-27,2025-05-01,,,,1.10.8(HP/LP Heaters & Deaerator)
4734,Civil,CIV,2025-02-26,2025-03-21,,,,1.10.8.1(HP Heaters)
4735, HP Heaters Footing: RCC,CIV,2025-02-26,2025-03-11,,,,1.10.8.1.1(Civil)
4736, HP Heaters Pedestals with pockets,CIV,2025-03-12,2025-03-21,,,,1.10.8.1.1(Civil)
4737,Supply,SUP,2022-09-27,2024-10-19,,,,1.10.8.1(HP Heaters)
4738,HYD - HP Heaters,SUP,2022-09-27,2024-10-19,,,,1.10.8.1.2(Supply)
4739,ENGINEERING & PROCUREMENT,ENG,2022-09-27,2023-12-25,,,,1.10.8.1.2.1(HYD - HP Heaters)
4740,MANUFACTURING,MFG,2023-12-26,2024-06-02,,,,1.10.8.1.2.1(HYD - HP Heaters)
4741,ASSEMBLY& TESTING,MFG,2024-06-03,2024-09-19,,,,1.10.8.1.2.1(HYD - HP Heaters)
4742,Dispatch OF HP HEATER AND ALL ASSOCIATED ITEMS,DIS,2024-09-20,2024-10-19,,,,1.10.8.1.2.1(HYD - HP Heaters)
4743,Erection,ERC,2025-04-12,2025-05-01,,,,1.10.8.1(HP Heaters)
4744,Placement & alignment of HP Heaters,ERC,2025-04-12,2025-05-01,,,,1.10.8.1.3(Erection)
4745,LP Heaters,SUP,2022-09-27,2025-05-26,,,,1.10.8(HP/LP Heaters & Deaerator)
4746, Civil,CIV,2025-02-12,2025-03-07,,,,1.10.8.2(LP Heaters)
4747,LP Heaters Footing: RCC,CIV,2025-02-12,2025-02-25,,,,1.10.8.2.1( Civil)
4748, LP Heaters Pedestals with pockets,CIV,2025-02-26,2025-03-07,,,,1.10.8.2.1( Civil)
4749,Supply,SUP,2022-09-27,2024-10-19,,,,1.10.8.2(LP Heaters)
4750, HYD - LP Heaters,SUP,2022-09-27,2024-10-19,,,,1.10.8.2.2(Supply)
4751,ENGINEERING & PROCUREMENT,ENG,2022-09-27,2023-12-25,,,,1.10.8.2.2.1( HYD - LP Heaters)
4752,MANUFACTURING,MFG,2023-12-26,2024-06-02,,,,1.10.8.2.2.1( HYD - LP Heaters)
4753,ASSEMBLY& TESTING,MFG,2024-06-03,2024-09-19,,,,1.10.8.2.2.1( HYD - LP Heaters)
4754,Dispatch OF LP HEATER AND ALL ASSOCIATED ITEMS,DIS,2024-09-20,2024-10-19,,,,1.10.8.2.2.1( HYD - LP Heaters)
4755,Erection,ERC,2025-05-02,2025-05-26,,,,1.10.8.2(LP Heaters)
4756, Placement & alignment of LP Heaters,ERC,2025-05-02,2025-05-26,,,,1.10.8.2.3(Erection)
4757,Deaerator,SUP,2022-09-27,2024-12-28,,,,1.10.8(HP/LP Heaters & Deaerator)
4758, Civil,CIV,2024-08-16,2024-09-09,,,,1.10.8.3(Deaerator)
4759,Deaerator Footing: RCC,CIV,2024-08-16,2024-08-30,,,,1.10.8.3.1( Civil)
4760,Deaerator Pedestals with pockets & insert,CIV,2024-08-31,2024-09-09,,,,1.10.8.3.1( Civil)
4761,Supply,SUP,2022-09-27,2024-10-19,,,,1.10.8.3(Deaerator)
4762, HYD - Deaerator,SUP,2022-09-27,2024-10-19,,,,1.10.8.3.2(Supply)
4763,ENGINEERING & PROCUREMENT,ENG,2022-09-27,2023-12-25,,,,1.10.8.3.2.1( HYD - Deaerator)
4764,MANUFACTURING,MFG,2023-12-26,2024-06-02,,,,1.10.8.3.2.1( HYD - Deaerator)
4765,ASSEMBLY& TESTING,MFG,2024-06-03,2024-09-19,,,,1.10.8.3.2.1( HYD - Deaerator)
4766,Dispatch OF DEAERATOR AND ALL ASSOCIATED ITEMS,DIS,2024-09-20,2024-10-19,,,,1.10.8.3.2.1( HYD - Deaerator)
4767, HYD - Drain Cooler,SUP,2022-09-27,2024-10-19,,,,1.10.8.3.2(Supply)
4768,ENGINEERING & PROCUREMENT,ENG,2022-09-27,2023-12-25,,,,1.10.8.3.2.2( HYD - Drain Cooler)
4769,MANUFACTURING,MFG,2023-12-26,2024-06-02,,,,1.10.8.3.2.2( HYD - Drain Cooler)
4770,ASSEMBLY& TESTING,MFG,2024-06-03,2024-09-19,,,,1.10.8.3.2.2( HYD - Drain Cooler)
4771,Dispatch OF DRAIN COOLER AND ALL ASSOCIATED ITEMS,DIS,2024-09-20,2024-10-19,,,,1.10.8.3.2.2( HYD - Drain Cooler)
4772,Erection,ERC,2024-10-20,2024-12-28,,,,1.10.8.3(Deaerator)
4773,Lifting and placement of De-aerator and Feed Storage Tank with fittings and associated platform,ERC,2024-10-20,2024-11-03,,,,1.10.8.3.3(Erection)
4774,Welding of FST shells,ERC,2024-11-04,2024-12-18,,,,1.10.8.3.3(Erection)
4775,Erection of drain cooler,ERC,2024-12-19,2024-12-28,,,,1.10.8.3.3(Erection)
4776,Dosing System,SUP,2023-08-23,2026-01-05,,,,1.10(Turbo-generator & Auxiliaries)
4777,Chemical Dosing System,SUP,2023-08-23,2025-11-26,,,,1.10.9(Dosing System)
4778,Civil,CIV,2025-03-07,2025-04-10,,,,1.10.9.1(Chemical Dosing System)
4779,EXCAVATION,CIV,2025-03-07,2025-03-11,,,,1.10.9.1.1(Civil)
4780,RCC in substructure including PCC,CIV,2025-03-12,2025-03-21,,,,1.10.9.1.1(Civil)
4781,RCC in superstructure,CIV,2025-03-22,2025-03-31,,,,1.10.9.1.1(Civil)
4782,Backfilling,CIV,2025-04-01,2025-04-05,,,,1.10.9.1.1(Civil)
4783,Finishing works,CIV,2025-04-06,2025-04-10,,,,1.10.9.1.1(Civil)
4784,Supply (BHEL PEM),SUP,2023-08-23,2024-11-04,,,,1.10.9.1(Chemical Dosing System)
4785,Ordering,ORD,2023-08-23,2023-11-20,,,,1.10.9.1.2(Supply (BHEL PEM))
4786,Detailed Engineering,ENG,2023-11-21,2024-04-18,,,,1.10.9.1.2(Supply (BHEL PEM))
4787,Manufacturing,MFG,2024-04-19,2024-10-05,,,,1.10.9.1.2(Supply (BHEL PEM))
4788,Dispatch,DIS,2024-10-06,2024-11-04,,,,1.10.9.1.2(Supply (BHEL PEM))
4789,Erection,ERC,2025-05-01,2025-11-26,,,,1.10.9.1(Chemical Dosing System)
4790,Erection of Chemical Dosing Skids & Associated Piping,ERC,2025-05-01,2025-09-27,,,,1.10.9.1.3(Erection)
4791,"Electrical , C&I and Commissioning",COM,2025-09-28,2025-11-26,,,,1.10.9.1.3(Erection)
4792,Oxygen Dosing System,SUP,2023-08-23,2026-01-05,,,,1.10.9(Dosing System)
4793,Civil,CIV,2025-04-16,2025-05-20,,,,1.10.9.2(Oxygen Dosing System)
4794,EXCAVATION,CIV,2025-04-16,2025-04-20,,,,1.10.9.2.1(Civil)
4795,RCC in substructure including PCC,CIV,2025-04-21,2025-04-30,,,,1.10.9.2.1(Civil)
4796,RCC in superstructure,CIV,2025-05-01,2025-05-10,,,,1.10.9.2.1(Civil)
4797,Backfilling,CIV,2025-05-11,2025-05-15,,,,1.10.9.2.1(Civil)
4798,Finishing works,CIV,2025-05-16,2025-05-20,,,,1.10.9.2.1(Civil)
4799,Supply (BHEL PEM),SUP,2023-08-23,2024-10-30,,,,1.10.9.2(Oxygen Dosing System)
4800,Ordering,ORD,2023-08-23,2023-11-20,,,,1.10.9.2.2(Supply (BHEL PEM))
4801,Detailed Engineering,ENG,2023-11-21,2024-04-18,,,,1.10.9.2.2(Supply (BHEL PEM))
4802,Manufacturing,MFG,2024-04-19,2024-09-15,,,,1.10.9.2.2(Supply (BHEL PEM))
4803,Dispatch,DIS,2024-09-16,2024-10-30,,,,1.10.9.2.2(Supply (BHEL PEM))
4804,Erection,ERC,2025-06-10,2026-01-05,,,,1.10.9.2(Oxygen Dosing System)
4805,Erection of Oxygen Dosing Skids & Associated Piping,ERC,2025-06-10,2025-11-06,,,,1.10.9.2.3(Erection)
4806,"Electrical , C&I and Commissioning",COM,2025-11-07,2026-01-05,,,,1.10.9.2.3(Erection)
4807,PLATE HEAT EXCHANGERS,SUP,2023-10-12,2025-03-29,,,,1.10(Turbo-generator & Auxiliaries)
4808,Civil,CIV,2024-12-04,2025-02-11,,,,1.10.10(PLATE HEAT EXCHANGERS)
4809, SG PHE foundation,CIV,2024-12-04,2025-01-07,,,,1.10.10.1(Civil)
4810,RCC Pedestal,CIV,2024-12-04,2025-01-02,,,,1.10.10.1.1( SG PHE foundation)
4811,Finishing works,CIV,2025-01-03,2025-01-07,,,,1.10.10.1.1( SG PHE foundation)
4812, TG PHE foundation:,CIV,2025-01-08,2025-02-11,,,,1.10.10.1(Civil)
4813,RCC Pedestal,CIV,2025-01-08,2025-02-06,,,,1.10.10.1.2( TG PHE foundation:)
4814,Finishing works,CIV,2025-02-07,2025-02-11,,,,1.10.10.1.2( TG PHE foundation:)
4815,Supply (BHEL PEM),SUP,2023-10-12,2024-10-05,,,,1.10.10(PLATE HEAT EXCHANGERS)
4816,Ordering,ORD,2023-10-12,2024-01-09,,,,1.10.10.2(Supply (BHEL PEM))
4817,Detailed Engineering,ENG,2024-01-10,2024-05-08,,,,1.10.10.2(Supply (BHEL PEM))
4818,Manufacturing,MFG,2024-05-09,2024-09-05,,,,1.10.10.2(Supply (BHEL PEM))
4819,Dispatch,DIS,2024-09-06,2024-10-05,,,,1.10.10.2(Supply (BHEL PEM))
4820,Erection,ERC,2025-01-29,2025-03-29,,,,1.10.10(PLATE HEAT EXCHANGERS)
4821,SG PHE Erection,ERC,2025-01-29,2025-02-27,,,,1.10.10.3(Erection)
4822,TG Perfection,ERC,2025-02-28,2025-03-29,,,,1.10.10.3(Erection)
4823,Auxiliary PRDS,OTH,2023-10-12,2025-09-15,,,,1.10(Turbo-generator & Auxiliaries)
4824,Supply BOI-PEM,SUP,2023-10-12,2024-12-19,,,,1.10.11(Auxiliary PRDS)
4825,Ordering,ORD,2023-10-12,2024-01-09,,,,1.10.11.1(Supply BOI-PEM)
4826,Detailed Engineering,ENG,2024-01-10,2024-06-07,,,,1.10.11.1(Supply BOI-PEM)
4827,Manufacturing,MFG,2024-06-08,2024-11-04,,,,1.10.11.1(Supply BOI-PEM)
4828,Dispatch,DIS,2024-11-05,2024-12-19,,,,1.10.11.1(Supply BOI-PEM)
4829,Erection,ERC,2025-03-20,2025-09-15,,,,1.10.11(Auxiliary PRDS)
4830,Erection of Aux PRDS ,ERC,2025-03-20,2025-09-15,,,,1.10.11.2(Erection)
4831,Online Condenser Tube Cleaning System,ORD,2024-04-25,2026-02-20,,,,1.10(Turbo-generator & Auxiliaries)
4832,"Supply, BHEL PEM",SUP,2024-04-25,2025-04-04,,,,1.10.12(Online Condenser Tube Cleaning System)
4833, COLTCS ,SUP,2024-04-25,2025-04-04,,,,"1.10.12.1(Supply, BHEL PEM)"
4834,Ordering,ORD,2024-04-25,2024-07-23,,,,1.10.12.1.1( COLTCS )
4835,Detailed Engineering,ENG,2024-07-24,2024-11-20,,,,1.10.12.1.1( COLTCS )
4836,Manufacturing,MFG,2024-10-26,2024-10-27,,,,1.10.12.1.1( COLTCS )
4837,Dispatch,DIS,2025-03-05,2025-04-04,,,,1.10.12.1.1( COLTCS )
4838,Erection,ERC,2025-06-26,2026-02-20,,,,1.10.12(Online Condenser Tube Cleaning System)
4839,Erection of COLTCS,ERC,2025-06-26,2025-11-22,,,,1.10.12.2(Erection)
4840,Erection of Conical strainer,ERC,2025-07-26,2025-12-22,,,,1.10.12.2(Erection)
4841,"Electrical , C&I work and Commissioning",COM,2025-12-23,2026-02-20,,,,1.10.12.2(Erection)
4842,Piping & Valves,SUP,2022-09-27,2026-02-02,,,,"1(EPC Package for Talcher Thermal Power Project, Stage-III (2X660MW))"
4843,Supply,SUP,2022-09-27,2025-05-30,,,,1.11(Piping & Valves)
4844,BHEL PC (PG 80 & 81),SUP,2022-09-27,2025-05-30,,,PG 80 & 81,1.11.1(Supply)
4845,For Non Drainable HT,SUP,2023-01-25,2024-11-27,,,,1.11.1.1(BHEL PC (PG 80 & 81))
4846,Engineering COMPLETION,ENG,2023-01-25,2023-06-03,,,,1.11.1.1.1(For Non Drainable HT)
4847,COMPLETION OF DDR,ENG,2023-06-04,2023-08-22,,,,1.11.1.1.1(For Non Drainable HT)
4848,MS FROM SUPERHEATER TO BOILER STOP VALVE (PGMA-80300),SUP,2023-08-23,2024-11-27,,,80300,1.11.1.1.1(For Non Drainable HT)
4849,Manufacturing,MFG,2023-08-23,2024-10-13,,,80300,1.11.1.1.1.3(MS FROM SUPERHEATER TO BOILER STOP VALVE (PGMA-80300))
4850,Dispatch,DIS,2024-10-14,2024-11-27,,,80300,1.11.1.1.1.3(MS FROM SUPERHEATER TO BOILER STOP VALVE (PGMA-80300))
4851,H AND S FOR Hydro TEST - (PGMA 80920),SUP,2023-08-23,2024-11-27,,,80920,1.11.1.1.1(For Non Drainable HT)
4852,Manufacturing,MFG,2023-08-23,2024-10-13,,,80920,1.11.1.1.1.4(H AND S FOR Hydro TEST - (PGMA 80920))
4853,Dispatch,DIS,2024-10-14,2024-11-27,,,80920,1.11.1.1.1.4(H AND S FOR Hydro TEST - (PGMA 80920))
4854,IMPORTED ELECTRODES- (PGMA -80-992),SUP,2023-08-23,2024-11-27,,,80992,1.11.1.1.1(For Non Drainable HT)
4855,Manufacturing,MFG,2023-08-23,2024-10-13,,,80992,1.11.1.1.1.5(IMPORTED ELECTRODES- (PGMA -80-992))
4856,Dispatch,DIS,2024-10-14,2024-11-27,,,80992,1.11.1.1.1.5(IMPORTED ELECTRODES- (PGMA -80-992))
4857,Misc. Erection MATLS- (PGMA -80-993),SUP,2023-08-23,2024-11-27,,,80993,1.11.1.1.1(For Non Drainable HT)
4858,Manufacturing,MFG,2023-08-23,2024-10-13,,,80993,1.11.1.1.1.6(Misc. Erection MATLS- (PGMA -80-993))
4859,Dispatch,DIS,2024-10-14,2024-11-27,,,80993,1.11.1.1.1.6(Misc. Erection MATLS- (PGMA -80-993))
4860,For BLU,SUP,2022-09-27,2025-01-30,,,,1.11.1.1(BHEL PC (PG 80 & 81))
4861,Engineering,ENG,2022-09-27,2023-07-08,,,,1.11.1.1.2(For BLU)
4862,COMPLETION of DDR,ENG,2023-03-11,2023-10-24,,,,1.11.1.1.2(For BLU)
4863,AUX STEAM HEADER- (PGMA -80-340),OTH,2023-04-28,2024-11-30,,,80340,1.11.1.1.2(For BLU)
4864,Manufacturing,MFG,2023-04-28,2024-10-16,,,80340,1.11.1.1.2.3(AUX STEAM HEADER- (PGMA -80-340))
4865,Dispatch,DIS,2024-10-17,2024-11-30,,,80340,1.11.1.1.2.3(AUX STEAM HEADER- (PGMA -80-340))
4866,80341 AUX STEAM HEADER INTERCONN. BET UNITS,SUP,2023-04-28,2024-11-30,,,80341,1.11.1.1.2(For BLU)
4867,Manufacturing,MFG,2023-04-28,2024-10-16,,,80341,1.11.1.1.2.4(80341 AUX STEAM HEADER INTERCONN. BET UNITS)
4868,Dispatch,DIS,2024-10-17,2024-11-30,,,80341,1.11.1.1.2.4(80341 AUX STEAM HEADER INTERCONN. BET UNITS)
4869, NON DDR - FLOW NOZZLE- (PGMA -80-326),SUP,2023-04-28,2024-11-30,,,80326,1.11.1.1.2(For BLU)
4870,Manufacturing,MFG,2023-04-28,2024-10-16,,,80326,1.11.1.1.2.5( NON DDR - FLOW NOZZLE- (PGMA -80-326))
4871,Dispatch,DIS,2024-10-17,2024-11-30,,,80326,1.11.1.1.2.5( NON DDR - FLOW NOZZLE- (PGMA -80-326))
4872,AUX STEAM TO SCAPH- (PGMA -80-342),SUP,2023-04-28,2024-11-30,,,80342,1.11.1.1.2(For BLU)
4873,Manufacturing,MFG,2023-04-28,2024-10-16,,,80342,1.11.1.1.2.6(AUX STEAM TO SCAPH- (PGMA -80-342))
4874,Dispatch,DIS,2024-10-17,2024-11-30,,,80342,1.11.1.1.2.6(AUX STEAM TO SCAPH- (PGMA -80-342))
4875,AUX STEAM TO AH SOOT BLOWERS- (PGMA -80-343),SUP,2023-04-28,2024-11-30,,,80343,1.11.1.1.2(For BLU)
4876,Manufacturing,MFG,2023-04-28,2024-10-16,,,80343,1.11.1.1.2.7(AUX STEAM TO AH SOOT BLOWERS- (PGMA -80-343))
4877,Dispatch,DIS,2024-10-17,2024-11-30,,,80343,1.11.1.1.2.7(AUX STEAM TO AH SOOT BLOWERS- (PGMA -80-343))
4878,AUX STEAM TO DEAERATING HEATER- (PGMA -80-345),SUP,2023-04-28,2024-11-30,,,80345,1.11.1.1.2(For BLU)
4879,Manufacturing,MFG,2023-04-28,2024-10-16,,,80345,1.11.1.1.2.8(AUX STEAM TO DEAERATING HEATER- (PGMA -80-345))
4880,Dispatch,DIS,2024-10-17,2024-11-30,,,80345,1.11.1.1.2.8(AUX STEAM TO DEAERATING HEATER- (PGMA -80-345))
4881,AUX STEAM HEADER SV EXHAUST- (PGMA -80-373),SUP,2023-04-28,2024-11-30,,,80373,1.11.1.1.2(For BLU)
4882,Manufacturing,MFG,2023-04-28,2024-10-16,,,80373,1.11.1.1.2.9(AUX STEAM HEADER SV EXHAUST- (PGMA -80-373))
4883,Dispatch,DIS,2024-10-17,2024-11-30,,,80373,1.11.1.1.2.9(AUX STEAM HEADER SV EXHAUST- (PGMA -80-373))
4884,CONDENSATE SUCTION- (PGMA -80-400),SUP,2023-04-28,2024-09-29,,,80400,1.11.1.1.2(For BLU)
4885,Manufacturing,MFG,2023-04-28,2024-08-15,,,80400,1.11.1.1.2.10(CONDENSATE SUCTION- (PGMA -80-400))
4886,Dispatch,DIS,2024-08-16,2024-09-29,,,80400,1.11.1.1.2.10(CONDENSATE SUCTION- (PGMA -80-400))
4887,CD FROM PUMP TO LPH1/DC INLET TEE AND RE- (PGMA -80-401),SUP,2023-04-28,2024-09-29,,,80401,1.11.1.1.2(For BLU)
4888,Manufacturing,MFG,2023-04-28,2024-08-15,,,80401,1.11.1.1.2.11(CD FROM PUMP TO LPH1/DC INLET TEE AND RE- (PGMA -80-401))
4889,Dispatch,DIS,2024-08-16,2024-09-29,,,80401,1.11.1.1.2.11(CD FROM PUMP TO LPH1/DC INLET TEE AND RE- (PGMA -80-401))
4890,CD FROM LPH1/DC INLET TEE TO TG TP- (PGMA -80-402),SUP,2023-04-28,2024-09-29,,,80402,1.11.1.1.2(For BLU)
4891,Manufacturing,MFG,2023-04-28,2024-08-15,,,80402,1.11.1.1.2.12(CD FROM LPH1/DC INLET TEE TO TG TP- (PGMA -80-402))
4892,Dispatch,DIS,2024-08-16,2024-09-29,,,80402,1.11.1.1.2.12(CD FROM LPH1/DC INLET TEE TO TG TP- (PGMA -80-402))
4893,CD FROM TG TP TO DEAERATING HEATER- (PGMA -80-403),SUP,2023-04-28,2024-09-29,,,80403,1.11.1.1.2(For BLU)
4894,Manufacturing,MFG,2023-04-28,2024-08-15,,,80403,1.11.1.1.2.13(CD FROM TG TP TO DEAERATING HEATER- (PGMA -80-403))
4895,Dispatch,DIS,2024-08-16,2024-09-29,,,80403,1.11.1.1.2.13(CD FROM TG TP TO DEAERATING HEATER- (PGMA -80-403))
4896,CONDENSATE FOR SEALING OF VACUUM- (PGMA -80-407),SUP,2023-04-28,2024-09-29,,,80407,1.11.1.1.2(For BLU)
4897,Manufacturing,MFG,2023-04-28,2024-08-15,,,80407,1.11.1.1.2.14(CONDENSATE FOR SEALING OF VACUUM- (PGMA -80-407))
4898,Dispatch,DIS,2024-08-16,2024-09-29,,,80407,1.11.1.1.2.14(CONDENSATE FOR SEALING OF VACUUM- (PGMA -80-407))
4899,CONDENSATE DUMP FROM HEADER- (PGMA -80-408),SUP,2023-04-28,2024-09-29,,,80408,1.11.1.1.2(For BLU)
4900,Manufacturing,MFG,2023-04-28,2024-08-15,,,80408,1.11.1.1.2.15(CONDENSATE DUMP FROM HEADER- (PGMA -80-408))
4901,Dispatch,DIS,2024-08-16,2024-09-29,,,80408,1.11.1.1.2.15(CONDENSATE DUMP FROM HEADER- (PGMA -80-408))
4902,CONDENSATE TRANSFER- (PGMA -80-412),SUP,2023-04-28,2024-11-30,,,80412,1.11.1.1.2(For BLU)
4903,Manufacturing,MFG,2023-04-28,2024-10-16,,,80412,1.11.1.1.2.16(CONDENSATE TRANSFER- (PGMA -80-412))
4904,Dispatch,DIS,2024-10-17,2024-11-30,,,80412,1.11.1.1.2.16(CONDENSATE TRANSFER- (PGMA -80-412))
4905,ERECTION MATERIALS FOR INSTRUMENTS- (PGMA -80-418),SUP,2023-04-28,2024-11-30,,,80418,1.11.1.1.2(For BLU)
4906,Manufacturing,MFG,2023-04-28,2024-10-16,,,80418,1.11.1.1.2.17(ERECTION MATERIALS FOR INSTRUMENTS- (PGMA -80-418))
4907,Dispatch,DIS,2024-10-17,2024-11-30,,,80418,1.11.1.1.2.17(ERECTION MATERIALS FOR INSTRUMENTS- (PGMA -80-418))
4908,DEAERATOR SAFETY VALVE EXHAUST TO ATM- (PGMA -80-419),SUP,2023-04-28,2024-11-30,,,80419,1.11.1.1.2(For BLU)
4909,Manufacturing,MFG,2023-04-28,2024-10-16,,,80419,1.11.1.1.2.18(DEAERATOR SAFETY VALVE EXHAUST TO ATM- (PGMA -80-419))
4910,Dispatch,DIS,2024-10-17,2024-11-30,,,80419,1.11.1.1.2.18(DEAERATOR SAFETY VALVE EXHAUST TO ATM- (PGMA -80-419))
4911,BOILER FEED PUMP SUCTION- (PGMA -80-420),SUP,2023-04-28,2024-08-30,,,80420,1.11.1.1.2(For BLU)
4912,Manufacturing,MFG,2023-04-28,2024-07-16,,,80420,1.11.1.1.2.19(BOILER FEED PUMP SUCTION- (PGMA -80-420))
4913,Dispatch,DIS,2024-07-17,2024-08-30,,,80420,1.11.1.1.2.19(BOILER FEED PUMP SUCTION- (PGMA -80-420))
4914,BOILER FEED PUMP RECIRCULATION- (PGMA -80-421),SUP,2023-04-28,2024-08-30,,,80421,1.11.1.1.2(For BLU)
4915,Manufacturing,MFG,2023-04-28,2024-07-16,,,80421,1.11.1.1.2.20(BOILER FEED PUMP RECIRCULATION- (PGMA -80-421))
4916,Dispatch,DIS,2024-07-17,2024-08-30,,,80421,1.11.1.1.2.20(BOILER FEED PUMP RECIRCULATION- (PGMA -80-421))
4917,BOILER FEED PUMP TO HPH INCLUDING BYPASS- (PGMA -80-423),SUP,2023-04-28,2024-08-30,,,80423,1.11.1.1.2(For BLU)
4918,Manufacturing,MFG,2023-04-28,2024-07-16,,,80423,1.11.1.1.2.21(BOILER FEED PUMP TO HPH INCLUDING BYPASS- (PGMA -80-423))
4919,Dispatch,DIS,2024-07-17,2024-08-30,,,80423,1.11.1.1.2.21(BOILER FEED PUMP TO HPH INCLUDING BYPASS- (PGMA -80-423))
4920,BFD BETWEEN HTRS AND GROUP PROTECTION- (PGMA -80-424),SUP,2023-04-28,2024-08-30,,,80424,1.11.1.1.2(For BLU)
4921,Manufacturing,MFG,2023-04-28,2024-07-16,,,80424,1.11.1.1.2.22(BFD BETWEEN HTRS AND GROUP PROTECTION- (PGMA -80-424))
4922,Dispatch,DIS,2024-07-17,2024-08-30,,,80424,1.11.1.1.2.22(BFD BETWEEN HTRS AND GROUP PROTECTION- (PGMA -80-424))
4923,BFD FROM FINAL HPH TO SG TP- (PGMA -80-425),SUP,2023-04-28,2024-08-30,,,80425,1.11.1.1.2(For BLU)
4924,Manufacturing,MFG,2023-04-28,2024-07-16,,,80425,1.11.1.1.2.23(BFD FROM FINAL HPH TO SG TP- (PGMA -80-425))
4925,Dispatch,DIS,2024-07-17,2024-08-30,,,80425,1.11.1.1.2.23(BFD FROM FINAL HPH TO SG TP- (PGMA -80-425))
4926,SPRAY WATER TO HPBP- (PGMA -80-430),SUP,2023-04-28,2024-11-30,,,80430,1.11.1.1.2(For BLU)
4927,Manufacturing,MFG,2023-04-28,2024-10-16,,,80430,1.11.1.1.2.24(SPRAY WATER TO HPBP- (PGMA -80-430))
4928,Dispatch,DIS,2024-10-17,2024-11-30,,,80430,1.11.1.1.2.24(SPRAY WATER TO HPBP- (PGMA -80-430))
4929,UNLISTED SPRAY WATER - SG SCOPE- (PGMA -80-434),SUP,2023-04-28,2024-11-30,,,80434,1.11.1.1.2(For BLU)
4930,Manufacturing,MFG,2023-04-28,2024-10-16,,,80434,1.11.1.1.2.25(UNLISTED SPRAY WATER - SG SCOPE- (PGMA -80-434))
4931,Dispatch,DIS,2024-10-17,2024-11-30,,,80434,1.11.1.1.2.25(UNLISTED SPRAY WATER - SG SCOPE- (PGMA -80-434))
4932,SPRAY WATER FROM BFP INTERSTAGE- (PGMA -80-433),SUP,2023-04-28,2024-11-30,,,80433,1.11.1.1.2(For BLU)
4933,Manufacturing,MFG,2023-04-28,2024-10-16,,,80433,1.11.1.1.2.26(SPRAY WATER FROM BFP INTERSTAGE- (PGMA -80-433))
4934,Dispatch,DIS,2024-10-17,2024-11-30,,,80433,1.11.1.1.2.26(SPRAY WATER FROM BFP INTERSTAGE- (PGMA -80-433))
4935,DEAERATING HEATER OVER FLOW AND DRAIN- (PGMA -80-446),SUP,2023-04-28,2024-11-30,,,80446,1.11.1.1.2(For BLU)
4936,Manufacturing,MFG,2023-04-28,2024-10-16,,,80446,1.11.1.1.2.27(DEAERATING HEATER OVER FLOW AND DRAIN- (PGMA -80-446))
4937,Dispatch,DIS,2024-10-17,2024-11-30,,,80446,1.11.1.1.2.27(DEAERATING HEATER OVER FLOW AND DRAIN- (PGMA -80-446))
4938,BOILER INTEGRAL PIPING DRAINS- (PGMA -80-451),SUP,2023-04-28,2024-11-30,,,80451,1.11.1.1.2(For BLU)
4939,Manufacturing,MFG,2023-04-28,2024-10-16,,,80451,1.11.1.1.2.28(BOILER INTEGRAL PIPING DRAINS- (PGMA -80-451))
4940,Dispatch,DIS,2024-10-17,2024-11-30,,,80451,1.11.1.1.2.28(BOILER INTEGRAL PIPING DRAINS- (PGMA -80-451))
4941,HP PIPING DRAINS - SG SCOPE- (PGMA -80-452),SUP,2023-04-28,2024-11-30,,,80452,1.11.1.1.2(For BLU)
4942,Manufacturing,MFG,2023-04-28,2024-10-16,,,80452,1.11.1.1.2.29(HP PIPING DRAINS - SG SCOPE- (PGMA -80-452))
4943,Dispatch,DIS,2024-10-17,2024-11-30,,,80452,1.11.1.1.2.29(HP PIPING DRAINS - SG SCOPE- (PGMA -80-452))
4944,LP PIPING DRAINS - SG SCOPE- (PGMA -80-453),SUP,2023-04-28,2024-11-30,,,80453,1.11.1.1.2(For BLU)
4945,Manufacturing,MFG,2023-04-28,2024-10-16,,,80453,1.11.1.1.2.30(LP PIPING DRAINS - SG SCOPE- (PGMA -80-453))
4946,Dispatch,DIS,2024-10-17,2024-11-30,,,80453,1.11.1.1.2.30(LP PIPING DRAINS - SG SCOPE- (PGMA -80-453))
4947,SCAPH DRAINS- (PGMA -80-454),SUP,2023-04-28,2024-11-30,,,80454,1.11.1.1.2(For BLU)
4948,Manufacturing,MFG,2023-04-28,2024-10-16,,,80454,1.11.1.1.2.31(SCAPH DRAINS- (PGMA -80-454))
4949,Dispatch,DIS,2024-10-17,2024-11-30,,,80454,1.11.1.1.2.31(SCAPH DRAINS- (PGMA -80-454))
4950,DRAIN FROM UNLISTED EQPT/VESSEL-SG SCOPE- (PGMA -80-455),SUP,2023-04-28,2024-11-30,,,80455,1.11.1.1.2(For BLU)
4951,Manufacturing,MFG,2023-04-28,2024-10-16,,,80455,1.11.1.1.2.32(DRAIN FROM UNLISTED EQPT/VESSEL-SG SCOPE- (PGMA -80-455))
4952,Dispatch,DIS,2024-10-17,2024-11-30,,,80455,1.11.1.1.2.32(DRAIN FROM UNLISTED EQPT/VESSEL-SG SCOPE- (PGMA -80-455))
4953,SG AUX COOLING WATER UNIT SYSTEM- (PGMA -80-460),SUP,2023-04-28,2024-08-30,,,80460,1.11.1.1.2(For BLU)
4954,Manufacturing,MFG,2023-04-28,2024-07-16,,,80460,1.11.1.1.2.33(SG AUX COOLING WATER UNIT SYSTEM- (PGMA -80-460))
4955,Dispatch,DIS,2024-07-17,2024-08-30,,,80460,1.11.1.1.2.33(SG AUX COOLING WATER UNIT SYSTEM- (PGMA -80-460))
4956,PC - TG AUX COOLING WATER- (PGMA -80-463),SUP,2023-04-28,2024-08-30,,,80463,1.11.1.1.2(For BLU)
4957,Manufacturing,MFG,2023-04-28,2024-07-16,,,80463,1.11.1.1.2.34(PC - TG AUX COOLING WATER- (PGMA -80-463))
4958,Dispatch,DIS,2024-07-17,2024-08-30,,,80463,1.11.1.1.2.34(PC - TG AUX COOLING WATER- (PGMA -80-463))
4959,PC - MAIN CIRCULATION WATER PIPING- (PGMA -80-468),SUP,2023-04-28,2024-08-30,,,80468,1.11.1.1.2(For BLU)
4960,Manufacturing,MFG,2023-04-28,2024-07-16,,,80468,1.11.1.1.2.35(PC - MAIN CIRCULATION WATER PIPING- (PGMA -80-468))
4961,Dispatch,DIS,2024-07-17,2024-08-30,,,80468,1.11.1.1.2.35(PC - MAIN CIRCULATION WATER PIPING- (PGMA -80-468))
4962,PC - MISCELLANEOUS COOLING WATER (PGMA - 80 - 469),SUP,2023-04-28,2024-08-30,,,80469,1.11.1.1.2(For BLU)
4963,Manufacturing,MFG,2023-04-28,2024-07-16,,,80469,1.11.1.1.2.36(PC - MISCELLANEOUS COOLING WATER (PGMA - 80 - 469))
4964,Dispatch,DIS,2024-07-17,2024-08-30,,,80469,1.11.1.1.2.36(PC - MISCELLANEOUS COOLING WATER (PGMA - 80 - 469))
4965,PC - BOILER WATER WASH TO AND FROM UNIT- (PGMA -80-471),SUP,2023-04-28,2024-09-29,,,80471,1.11.1.1.2(For BLU)
4966,Manufacturing,MFG,2023-04-28,2024-08-15,,,80471,1.11.1.1.2.37(PC - BOILER WATER WASH TO AND FROM UNIT- (PGMA -80-471))
4967,Dispatch,DIS,2024-08-16,2024-09-29,,,80471,1.11.1.1.2.37(PC - BOILER WATER WASH TO AND FROM UNIT- (PGMA -80-471))
4968,PC - DEMINERALISED WATER SYSTEM- (PGMA -80-473),SUP,2023-04-28,2024-09-29,,,80473,1.11.1.1.2(For BLU)
4969,Manufacturing,MFG,2023-04-28,2024-08-15,,,80473,1.11.1.1.2.38(PC - DEMINERALISED WATER SYSTEM- (PGMA -80-473))
4970,Dispatch,DIS,2024-08-16,2024-09-29,,,80473,1.11.1.1.2.38(PC - DEMINERALISED WATER SYSTEM- (PGMA -80-473))
4971,PC - SERVICE WATER PIPING- (PGMA -80-477),SUP,2023-04-28,2024-09-29,,,80477,1.11.1.1.2(For BLU)
4972,Manufacturing,MFG,2023-04-28,2024-08-15,,,80477,1.11.1.1.2.39(PC - SERVICE WATER PIPING- (PGMA -80-477))
4973,Dispatch,DIS,2024-08-16,2024-09-29,,,80477,1.11.1.1.2.39(PC - SERVICE WATER PIPING- (PGMA -80-477))
4974,PC - FIRE WATER-OTHER AREAS- (PGMA -80-480),SUP,2023-04-28,2024-11-30,,,80480,1.11.1.1.2(For BLU)
4975,Manufacturing,MFG,2023-04-28,2024-10-16,,,80480,1.11.1.1.2.40(PC - FIRE WATER-OTHER AREAS- (PGMA -80-480))
4976,Dispatch,DIS,2024-10-17,2024-11-30,,,80480,1.11.1.1.2.40(PC - FIRE WATER-OTHER AREAS- (PGMA -80-480))
4977,PC - CONTROL OIL PIPING  (PGMA -80-484),SUP,2023-04-28,2024-11-30,,,80484,1.11.1.1.2(For BLU)
4978,Manufacturing,MFG,2023-04-28,2024-10-16,,,80484,1.11.1.1.2.41(PC - CONTROL OIL PIPING  (PGMA -80-484))
4979,Dispatch,DIS,2024-10-17,2024-11-30,,,80484,1.11.1.1.2.41(PC - CONTROL OIL PIPING  (PGMA -80-484))
4980,PC - LOW PRESSURE DOSING PIPING- (PGMA -80-601),SUP,2023-04-28,2024-09-29,,,80601,1.11.1.1.2(For BLU)
4981,Manufacturing,MFG,2023-04-28,2024-08-15,,,80601,1.11.1.1.2.42(PC - LOW PRESSURE DOSING PIPING- (PGMA -80-601))
4982,Dispatch,DIS,2024-08-16,2024-09-29,,,80601,1.11.1.1.2.42(PC - LOW PRESSURE DOSING PIPING- (PGMA -80-601))
4983,PC - ACID CLEANING PIPING-TEMPORARY (PGMA - 80-604),SUP,2023-04-28,2024-09-29,,,80604,1.11.1.1.2(For BLU)
4984,Manufacturing,MFG,2023-04-28,2024-08-15,,,80604,1.11.1.1.2.43(PC - ACID CLEANING PIPING-TEMPORARY (PGMA - 80-604))
4985,Dispatch,DIS,2024-08-16,2024-09-29,,,80604,1.11.1.1.2.43(PC - ACID CLEANING PIPING-TEMPORARY (PGMA - 80-604))
4986,PC - SERVICE AIR-COMP SUCT AND DIS TO RECEI- (PGMA -80-610),SUP,2023-04-28,2024-09-29,,,80610,1.11.1.1.2(For BLU)
4987,Manufacturing,MFG,2023-04-28,2024-08-15,,,80610,1.11.1.1.2.44(PC - SERVICE AIR-COMP SUCT AND DIS TO RECEI- (PGMA -80-610))
4988,Dispatch,DIS,2024-08-16,2024-09-29,,,80610,1.11.1.1.2.44(PC - SERVICE AIR-COMP SUCT AND DIS TO RECEI- (PGMA -80-610))
4989,PC - SERVICE AIR FOR INDIVIDUAL UNITS- (PGMA -80-612),SUP,2023-04-28,2024-09-29,,,80612,1.11.1.1.2(For BLU)
4990,Manufacturing,MFG,2023-04-28,2024-08-15,,,80612,1.11.1.1.2.45(PC - SERVICE AIR FOR INDIVIDUAL UNITS- (PGMA -80-612))
4991,Dispatch,DIS,2024-08-16,2024-09-29,,,80612,1.11.1.1.2.45(PC - SERVICE AIR FOR INDIVIDUAL UNITS- (PGMA -80-612))
4992,PC - INST AIR COMP SUC AND DIS TO RECEIVER- (PGMA -80-614),SUP,2023-04-28,2024-09-29,,,80614,1.11.1.1.2(For BLU)
4993,Manufacturing,MFG,2023-04-28,2024-08-15,,,80614,1.11.1.1.2.46(PC - INST AIR COMP SUC AND DIS TO RECEIVER- (PGMA -80-614))
4994,Dispatch,DIS,2024-08-16,2024-09-29,,,80614,1.11.1.1.2.46(PC - INST AIR COMP SUC AND DIS TO RECEIVER- (PGMA -80-614))
4995,PC - INSTRUMENT AIR FOR INDIVIDUAL UNIT- (PGMA -80-616),SUP,2023-04-28,2024-09-29,,,80616,1.11.1.1.2(For BLU)
4996,Manufacturing,MFG,2023-04-28,2024-08-15,,,80616,1.11.1.1.2.47(PC - INSTRUMENT AIR FOR INDIVIDUAL UNIT- (PGMA -80-616))
4997,Dispatch,DIS,2024-08-16,2024-09-29,,,80616,1.11.1.1.2.47(PC - INSTRUMENT AIR FOR INDIVIDUAL UNIT- (PGMA -80-616))
4998,PC - FUEL OIL Supply AND RETURN PIPING- (PGMA -80-650),SUP,2023-04-28,2024-09-29,,,80650,1.11.1.1.2(For BLU)
4999,Manufacturing,MFG,2023-04-28,2024-08-15,,,80650,1.11.1.1.2.48(PC - FUEL OIL Supply AND RETURN PIPING- (PGMA -80-650))
5000,Dispatch,DIS,2024-08-16,2024-09-29,,,80650,1.11.1.1.2.48(PC - FUEL OIL Supply AND RETURN PIPING- (PGMA -80-650))
5001,PC - H AND S FOR LP PIPING- (PGMA -80-933),SUP,2023-04-28,2024-11-30,,,80933,1.11.1.1.2(For BLU)
5002,Manufacturing,MFG,2023-04-28,2024-10-16,,,80933,1.11.1.1.2.49(PC - H AND S FOR LP PIPING- (PGMA -80-933))
5003,Dispatch,DIS,2024-10-17,2024-11-30,,,80933,1.11.1.1.2.49(PC - H AND S FOR LP PIPING- (PGMA -80-933))
5004,PC - SUB DELIVERY VALVES FOR LIGHT UP- (PGMA -80-901),SUP,2023-04-28,2024-11-30,,,80901,1.11.1.1.2(For BLU)
5005,Manufacturing,MFG,2023-04-28,2024-10-16,,,80901,1.11.1.1.2.50(PC - SUB DELIVERY VALVES FOR LIGHT UP- (PGMA -80-901))
5006,Dispatch,DIS,2024-10-17,2024-11-30,,,80901,1.11.1.1.2.50(PC - SUB DELIVERY VALVES FOR LIGHT UP- (PGMA -80-901))
5007,PC - H AND S FOR LIGHT UP STEAM LINE- (PGMA -80-921),SUP,2023-04-28,2024-11-30,,,80921,1.11.1.1.2(For BLU)
5008,Manufacturing,MFG,2023-04-28,2024-10-16,,,80921,1.11.1.1.2.51(PC - H AND S FOR LIGHT UP STEAM LINE- (PGMA -80-921))
5009,Dispatch,DIS,2024-10-17,2024-11-30,,,80921,1.11.1.1.2.51(PC - H AND S FOR LIGHT UP STEAM LINE- (PGMA -80-921))
5010,PC - H&S FOR TEMPORARY PIPING ACID AND ALKALI (PGMA -80-926),SUP,2023-04-28,2024-11-30,,,80926,1.11.1.1.2(For BLU)
5011,Manufacturing,MFG,2023-04-28,2024-10-16,,,80926,1.11.1.1.2.52(PC - H&S FOR TEMPORARY PIPING ACID AND ALKALI (PGMA -80-926))
5012,Dispatch,DIS,2024-10-17,2024-11-30,,,80926,1.11.1.1.2.52(PC - H&S FOR TEMPORARY PIPING ACID AND ALKALI (PGMA -80-926))
5013,PC - H&S FOR TEMPORARY PIPING - STEAM BLOWING (PGMA -80-927),SUP,2023-04-28,2024-11-30,,,80927,1.11.1.1.2(For BLU)
5014,Manufacturing,MFG,2023-04-28,2024-10-16,,,80927,1.11.1.1.2.53(PC - H&S FOR TEMPORARY PIPING - STEAM BLOWING (PGMA -80-927))
5015,Dispatch,DIS,2024-10-17,2024-11-30,,,80927,1.11.1.1.2.53(PC - H&S FOR TEMPORARY PIPING - STEAM BLOWING (PGMA -80-927))
5016,PC - H AND S FOR BOILER LIGHT UP - TG- (PGMA -80-928),SUP,2023-04-28,2024-11-30,,,80928,1.11.1.1.2(For BLU)
5017,Manufacturing,MFG,2023-04-28,2024-10-16,,,80928,1.11.1.1.2.54(PC - H AND S FOR BOILER LIGHT UP - TG- (PGMA -80-928))
5018,Dispatch,DIS,2024-10-17,2024-11-30,,,80928,1.11.1.1.2.54(PC - H AND S FOR BOILER LIGHT UP - TG- (PGMA -80-928))
5019,PC - CW STORAGE TANK 16-25 CUM- (PGMA -81-036),SUP,2023-04-28,2024-06-30,,,81036,1.11.1.1.2(For BLU)
5020,Manufacturing,MFG,2023-04-28,2024-05-16,,,81036,1.11.1.1.2.55(PC - CW STORAGE TANK 16-25 CUM- (PGMA -81-036))
5021,Dispatch,DIS,2024-05-17,2024-06-30,,,81036,1.11.1.1.2.55(PC - CW STORAGE TANK 16-25 CUM- (PGMA -81-036))
5022,PC - SPECIAL TANKS AND VESSELS- (PGMA -81-060),SUP,2023-04-28,2024-06-30,,,81060,1.11.1.1.2(For BLU)
5023,Manufacturing,MFG,2023-04-28,2024-05-16,,,81060,1.11.1.1.2.56(PC - SPECIAL TANKS AND VESSELS- (PGMA -81-060))
5024,Dispatch,DIS,2024-05-17,2024-06-30,,,81060,1.11.1.1.2.56(PC - SPECIAL TANKS AND VESSELS- (PGMA -81-060))
5025,PC - COOLING WATER PUMP- (PGMA -81-110),SUP,2023-04-28,2024-11-30,,,81110,1.11.1.1.2(For BLU)
5026,Manufacturing,MFG,2023-04-28,2024-10-16,,,81110,1.11.1.1.2.57(PC - COOLING WATER PUMP- (PGMA -81-110))
5027,Dispatch,DIS,2024-10-17,2024-11-30,,,81110,1.11.1.1.2.57(PC - COOLING WATER PUMP- (PGMA -81-110))
5028,PC - FIX COM FOR MISCELLANEOUS PPG INSULATION- (PGMA -81-318),SUP,2023-04-28,2024-11-30,,,81318,1.11.1.1.2(For BLU)
5029,Manufacturing,MFG,2023-04-28,2024-10-16,,,81318,1.11.1.1.2.58(PC - FIX COM FOR MISCELLANEOUS PPG INSULATION- (PGMA -81-318))
5030,Dispatch,DIS,2024-10-17,2024-11-30,,,81318,1.11.1.1.2.58(PC - FIX COM FOR MISCELLANEOUS PPG INSULATION- (PGMA -81-318))
5031,PC - MINERAL WOOL MATTRESS- (PGMA -81-325),SUP,2023-04-28,2025-01-30,,,81325,1.11.1.1.2(For BLU)
5032,Manufacturing,MFG,2023-04-28,2024-12-16,,,81325,1.11.1.1.2.59(PC - MINERAL WOOL MATTRESS- (PGMA -81-325))
5033,Dispatch,DIS,2024-12-17,2025-01-30,,,81325,1.11.1.1.2.59(PC - MINERAL WOOL MATTRESS- (PGMA -81-325))
5034,PC - SEALING COMPOUND FOR INSL- (PGMA -81-341),SUP,2023-04-28,2024-11-30,,,81341,1.11.1.1.2(For BLU)
5035,Manufacturing,MFG,2023-04-28,2024-10-16,,,81341,1.11.1.1.2.60(PC - SEALING COMPOUND FOR INSL- (PGMA -81-341))
5036,Dispatch,DIS,2024-10-17,2024-11-30,,,81341,1.11.1.1.2.60(PC - SEALING COMPOUND FOR INSL- (PGMA -81-341))
5037,PC - ALUMINIUM CLADDING FOR INSULATION- (PGMA -81-350),SUP,2023-04-28,2025-01-30,,,81350,1.11.1.1.2(For BLU)
5038,Manufacturing,MFG,2023-04-28,2024-12-16,,,81350,1.11.1.1.2.61(PC - ALUMINIUM CLADDING FOR INSULATION- (PGMA -81-350))
5039,Dispatch,DIS,2024-12-17,2025-01-30,,,81350,1.11.1.1.2.61(PC - ALUMINIUM CLADDING FOR INSULATION- (PGMA -81-350))
5040,PC - DIRECT GAUGES FOR STEAM LINES- (PGMA -81-411),SUP,2023-04-28,2024-11-30,,,81411,1.11.1.1.2(For BLU)
5041,Manufacturing,MFG,2023-04-28,2024-10-16,,,81411,1.11.1.1.2.62(PC - DIRECT GAUGES FOR STEAM LINES- (PGMA -81-411))
5042,Dispatch,DIS,2024-10-17,2024-11-30,,,81411,1.11.1.1.2.62(PC - DIRECT GAUGES FOR STEAM LINES- (PGMA -81-411))
5043,PC - DIRECT GAUGES FOR NON-STEAM LINES- (PGMA -81-412),SUP,2023-04-28,2024-11-30,,,81412,1.11.1.1.2(For BLU)
5044,Manufacturing,MFG,2023-04-28,2024-10-16,,,81412,1.11.1.1.2.63(PC - DIRECT GAUGES FOR NON-STEAM LINES- (PGMA -81-412))
5045,Dispatch,DIS,2024-10-17,2024-11-30,,,81412,1.11.1.1.2.63(PC - DIRECT GAUGES FOR NON-STEAM LINES- (PGMA -81-412))
5046,PC - LOCAL CONTROL EQPT FOR NON-STEAM LINES- (PGMA -81-414),SUP,2023-04-28,2024-11-30,,,81414,1.11.1.1.2(For BLU)
5047,Manufacturing,MFG,2023-04-28,2024-10-16,,,81414,1.11.1.1.2.64(PC - LOCAL CONTROL EQPT FOR NON-STEAM LINES- (PGMA -81-414))
5048,Dispatch,DIS,2024-10-17,2024-11-30,,,81414,1.11.1.1.2.64(PC - LOCAL CONTROL EQPT FOR NON-STEAM LINES- (PGMA -81-414))
5049,PC - TEST THERMOWELLS- (PGMA -81-415),SUP,2023-04-28,2024-11-30,,,81415,1.11.1.1.2(For BLU)
5050,Manufacturing,MFG,2023-04-28,2024-10-16,,,81415,1.11.1.1.2.65(PC - TEST THERMOWELLS- (PGMA -81-415))
5051,Dispatch,DIS,2024-10-17,2024-11-30,,,81415,1.11.1.1.2.65(PC - TEST THERMOWELLS- (PGMA -81-415))
5052,PC - INSTRUMENTATION FOR STARTUP SYSTEM- (PGMA -81-417),SUP,2023-04-28,2024-11-30,,,81417,1.11.1.1.2(For BLU)
5053,Manufacturing,MFG,2023-04-28,2024-10-16,,,81417,1.11.1.1.2.66(PC - INSTRUMENTATION FOR STARTUP SYSTEM- (PGMA -81-417))
5054,Dispatch,DIS,2024-10-17,2024-11-30,,,81417,1.11.1.1.2.66(PC - INSTRUMENTATION FOR STARTUP SYSTEM- (PGMA -81-417))
5055,For SB,SUP,2022-09-27,2025-04-01,,,,1.11.1.1(BHEL PC (PG 80 & 81))
5056,Engineering COMPLETION,ENG,2022-09-27,2023-07-08,,,,1.11.1.1.3(For SB)
5057,COMPLETION of DDR,ENG,2023-03-11,2023-10-24,,,,1.11.1.1.3(For SB)
5058,PC - MS FROM BOILER STOP VALVE TO ESV- (PGMA -80-301),SUP,2023-04-28,2025-04-01,,,80301,1.11.1.1.3(For SB)
5059,Manufacturing,MFG,2023-04-28,2025-02-15,,,80301,1.11.1.1.3.3(PC - MS FROM BOILER STOP VALVE TO ESV- (PGMA -80-301))
5060,Dispatch,DIS,2025-02-16,2025-04-01,,,80301,1.11.1.1.3.3(PC - MS FROM BOILER STOP VALVE TO ESV- (PGMA -80-301))
5061,PC - MS FROM ESV TO TURBINE (PGMA - 80-302),SUP,2023-04-28,2025-04-01,,,80302,1.11.1.1.3(For SB)
5062,Manufacturing,MFG,2023-04-28,2025-02-15,,,80302,1.11.1.1.3.4(PC - MS FROM ESV TO TURBINE (PGMA - 80-302))
5063,Dispatch,DIS,2025-02-16,2025-04-01,,,80302,1.11.1.1.3.4(PC - MS FROM ESV TO TURBINE (PGMA - 80-302))
5064,PC - MS HEADER TO AUX PRDS- (PGMA -80-303),SUP,2023-04-28,2025-04-01,,,80303,1.11.1.1.3(For SB)
5065,Manufacturing,MFG,2023-04-28,2025-02-15,,,80303,1.11.1.1.3.5(PC - MS HEADER TO AUX PRDS- (PGMA -80-303))
5066,Dispatch,DIS,2025-02-16,2025-04-01,,,80303,1.11.1.1.3.5(PC - MS HEADER TO AUX PRDS- (PGMA -80-303))
5067,PC - MS HEADER TO HPBP VALVE- (PGMA -80-304),SUP,2023-04-28,2025-04-01,,,80304,1.11.1.1.3(For SB)
5068,Manufacturing,MFG,2023-04-28,2025-02-15,,,80304,1.11.1.1.3.6(PC - MS HEADER TO HPBP VALVE- (PGMA -80-304))
5069,Dispatch,DIS,2025-02-16,2025-04-01,,,80304,1.11.1.1.3.6(PC - MS HEADER TO HPBP VALVE- (PGMA -80-304))
5070,PC - HRH FROM REHEATER TO INTERCEPTOR VALVE- (PGMA -80-310),SUP,2023-04-28,2025-04-01,,,80310,1.11.1.1.3(For SB)
5071,Manufacturing,MFG,2023-04-28,2025-02-15,,,80310,1.11.1.1.3.7(PC - HRH FROM REHEATER TO INTERCEPTOR VALVE- (PGMA -80-310))
5072,Dispatch,DIS,2025-02-16,2025-04-01,,,80310,1.11.1.1.3.7(PC - HRH FROM REHEATER TO INTERCEPTOR VALVE- (PGMA -80-310))
5073,PC - LPBP VALVE UPSTREAM AND DOWNSTREAM- (PGMA -80-312),SUP,2023-04-28,2025-04-01,,,80312,1.11.1.1.3(For SB)
5074,Manufacturing,MFG,2023-04-28,2025-02-15,,,80312,1.11.1.1.3.8(PC - LPBP VALVE UPSTREAM AND DOWNSTREAM- (PGMA -80-312))
5075,Dispatch,DIS,2025-02-16,2025-04-01,,,80312,1.11.1.1.3.8(PC - LPBP VALVE UPSTREAM AND DOWNSTREAM- (PGMA -80-312))
5076,PC - PERMANENT STEAM BLOWING (PGMA - 80-319),SUP,2023-04-28,2025-04-01,,,80319,1.11.1.1.3(For SB)
5077,Manufacturing,MFG,2023-04-28,2025-02-15,,,80319,1.11.1.1.3.9(PC - PERMANENT STEAM BLOWING (PGMA - 80-319))
5078,Dispatch,DIS,2025-02-16,2025-04-01,,,80319,1.11.1.1.3.9(PC - PERMANENT STEAM BLOWING (PGMA - 80-319))
5079,PC - CRH FROM TURBINE TO REHEATER- (PGMA -80-320),SUP,2023-04-28,2025-04-01,,,80320,1.11.1.1.3(For SB)
5080,Manufacturing,MFG,2023-04-28,2025-02-15,,,80320,1.11.1.1.3.10(PC - CRH FROM TURBINE TO REHEATER- (PGMA -80-320))
5081,Dispatch,DIS,2025-02-16,2025-04-01,,,80320,1.11.1.1.3.10(PC - CRH FROM TURBINE TO REHEATER- (PGMA -80-320))
5082,PC - HPBP VALVE TO CRH PIPING- (PGMA -80-321),SUP,2023-04-28,2025-04-01,,,80321,1.11.1.1.3(For SB)
5083,Manufacturing,MFG,2023-04-28,2025-02-15,,,80321,1.11.1.1.3.11(PC - HPBP VALVE TO CRH PIPING- (PGMA -80-321))
5084,Dispatch,DIS,2025-02-16,2025-04-01,,,80321,1.11.1.1.3.11(PC - HPBP VALVE TO CRH PIPING- (PGMA -80-321))
5085,PC - STEAM TO BFP DRIVE TURBINE- (PGMA -80-323),SUP,2023-04-28,2025-04-01,,,80323,1.11.1.1.3(For SB)
5086,Manufacturing,MFG,2023-04-28,2025-02-15,,,80323,1.11.1.1.3.12(PC - STEAM TO BFP DRIVE TURBINE- (PGMA -80-323))
5087,Dispatch,DIS,2025-02-16,2025-04-01,,,80323,1.11.1.1.3.12(PC - STEAM TO BFP DRIVE TURBINE- (PGMA -80-323))
5088,PC - CRH HEADER TO AUX.PRDS- (PGMA -80-324),SUP,2023-04-28,2025-04-01,,,80324,1.11.1.1.3(For SB)
5089,Manufacturing,MFG,2023-04-28,2025-02-15,,,80324,1.11.1.1.3.13(PC - CRH HEADER TO AUX.PRDS- (PGMA -80-324))
5090,Dispatch,DIS,2025-02-16,2025-04-01,,,80324,1.11.1.1.3.13(PC - CRH HEADER TO AUX.PRDS- (PGMA -80-324))
5091,PC - H AND S FOR CRITICAL PPG(BLR & TG AREA)- (PGMA -80-830),SUP,2023-04-28,2025-04-01,,,,1.11.1.1.3(For SB)
5092,Manufacturing,MFG,2023-04-28,2025-02-15,,,80830,1.11.1.1.3.14(PC - H AND S FOR CRITICAL PPG(BLR & TG AREA)- (PGMA -80-830))
5093,Dispatch,DIS,2025-02-16,2025-04-01,,,80830,1.11.1.1.3.14(PC - H AND S FOR CRITICAL PPG(BLR & TG AREA)- (PGMA -80-830))
5094,PC - AUX STRUCTURE FOR CRITICAL PIPING-SG- (PGMA -80-940),SUP,2023-04-28,2025-04-01,,,80940,1.11.1.1.3(For SB)
5095,Manufacturing,MFG,2023-04-28,2025-02-15,,,80940,1.11.1.1.3.15(PC - AUX STRUCTURE FOR CRITICAL PIPING-SG- (PGMA -80-940))
5096,Dispatch,DIS,2025-02-16,2025-04-01,,,80940,1.11.1.1.3.15(PC - AUX STRUCTURE FOR CRITICAL PIPING-SG- (PGMA -80-940))
5097,For SYN,SUP,2022-09-27,2025-05-30,,,,1.11.1.1(BHEL PC (PG 80 & 81))
5098,Engineering COMPLETION,ENG,2022-09-27,2023-07-08,,,,1.11.1.1.4(For SYN)
5099,COMPLETION of DDR,ENG,2023-03-11,2023-10-24,,,,1.11.1.1.4(For SYN)
5100,PC - HP AND LP BYPASS WARM UP- (PGMA -80-307),SUP,2023-04-28,2025-05-30,,,80307,1.11.1.1.4(For SYN)
5101,Manufacturing,MFG,2023-04-28,2025-04-15,,,80307,1.11.1.1.4.3(PC - HP AND LP BYPASS WARM UP- (PGMA -80-307))
5102,Dispatch,DIS,2025-04-16,2025-05-30,,,80307,1.11.1.1.4.3(PC - HP AND LP BYPASS WARM UP- (PGMA -80-307))
5103,PC - CRH PIPING TO DEAERATING HEATER- (PGMA -80-322),SUP,2023-04-28,2025-05-30,,,80322,1.11.1.1.4(For SYN)
5104,Manufacturing,MFG,2023-04-28,2025-04-15,,,80322,1.11.1.1.4.4(PC - CRH PIPING TO DEAERATING HEATER- (PGMA -80-322))
5105,Dispatch,DIS,2025-04-16,2025-05-30,,,80322,1.11.1.1.4.4(PC - CRH PIPING TO DEAERATING HEATER- (PGMA -80-322))
5106,PC - EXTRACTION STEAM TO BFP DRIVE TURBINE- (PGMA -80-329),SUP,2023-04-28,2025-05-30,,,80329,1.11.1.1.4(For SYN)
5107,Manufacturing,MFG,2023-04-28,2025-04-15,,,80329,1.11.1.1.4.5(PC - EXTRACTION STEAM TO BFP DRIVE TURBINE- (PGMA -80-329))
5108,Dispatch,DIS,2025-04-16,2025-05-30,,,80329,1.11.1.1.4.5(PC - EXTRACTION STEAM TO BFP DRIVE TURBINE- (PGMA -80-329))
5109,PC - EXTRACTION STEAM TO LP HEATER-2- (PGMA -80-331),SUP,2023-04-28,2025-05-30,,,80331,1.11.1.1.4(For SYN)
5110,Manufacturing,MFG,2023-04-28,2025-04-15,,,80331,1.11.1.1.4.6(PC - EXTRACTION STEAM TO LP HEATER-2- (PGMA -80-331))
5111,Dispatch,DIS,2025-04-16,2025-05-30,,,80331,1.11.1.1.4.6(PC - EXTRACTION STEAM TO LP HEATER-2- (PGMA -80-331))
5112,PC - EXTRACTION STEAM TO LP HEATER-3- (PGMA -80-332),SUP,2023-04-28,2025-05-30,,,80332,1.11.1.1.4(For SYN)
5113,Manufacturing,MFG,2023-04-28,2025-04-15,,,80332,1.11.1.1.4.7(PC - EXTRACTION STEAM TO LP HEATER-3- (PGMA -80-332))
5114,Dispatch,DIS,2025-04-16,2025-05-30,,,80332,1.11.1.1.4.7(PC - EXTRACTION STEAM TO LP HEATER-3- (PGMA -80-332))
5115,PC - EXTRACTION STEAM TO LP HEATER-4- (PGMA -80-333),SUP,2023-04-28,2025-05-30,,,80333,1.11.1.1.4(For SYN)
5116,Manufacturing,MFG,2023-04-28,2025-04-15,,,80333,1.11.1.1.4.8(PC - EXTRACTION STEAM TO LP HEATER-4- (PGMA -80-333))
5117,Dispatch,DIS,2025-04-16,2025-05-30,,,80333,1.11.1.1.4.8(PC - EXTRACTION STEAM TO LP HEATER-4- (PGMA -80-333))
5118,PC - EXTRACTION STEAM TO LP HEATER-5 (PGMA - 80334),SUP,2023-04-28,2025-05-30,,,80334,1.11.1.1.4(For SYN)
5119,Manufacturing,MFG,2023-04-28,2025-04-15,,,80334,1.11.1.1.4.9(PC - EXTRACTION STEAM TO LP HEATER-5 (PGMA - 80334))
5120,Dispatch,DIS,2025-04-16,2025-05-30,,,80334,1.11.1.1.4.9(PC - EXTRACTION STEAM TO LP HEATER-5 (PGMA - 80334))
5121,PC - EXTRACTION STEAM TO DEAERATING HEATER- (PGMA -80-335),SUP,2023-04-28,2025-05-30,,,80335,1.11.1.1.4(For SYN)
5122,Manufacturing,MFG,2023-04-28,2025-04-15,,,80335,1.11.1.1.4.10(PC - EXTRACTION STEAM TO DEAERATING HEATER- (PGMA -80-335))
5123,Dispatch,DIS,2025-04-16,2025-05-30,,,80335,1.11.1.1.4.10(PC - EXTRACTION STEAM TO DEAERATING HEATER- (PGMA -80-335))
5124,PC - EXTRACTION STEAM TO HP HEATER NO.1- (PGMA -80-336),SUP,2023-04-28,2025-05-30,,,80336,1.11.1.1.4(For SYN)
5125,Manufacturing,MFG,2023-04-28,2025-04-15,,,80336,1.11.1.1.4.11(PC - EXTRACTION STEAM TO HP HEATER NO.1- (PGMA -80-336))
5126,Dispatch,DIS,2025-04-16,2025-05-30,,,80336,1.11.1.1.4.11(PC - EXTRACTION STEAM TO HP HEATER NO.1- (PGMA -80-336))
5127,PC - EXTRACTION STEAM TO HP HEATER-2- (PGMA -80-337),SUP,2023-04-28,2025-05-30,,,80337,1.11.1.1.4(For SYN)
5128,Manufacturing,MFG,2023-04-28,2025-04-15,,,80337,1.11.1.1.4.12(PC - EXTRACTION STEAM TO HP HEATER-2- (PGMA -80-337))
5129,Dispatch,DIS,2025-04-16,2025-05-30,,,80337,1.11.1.1.4.12(PC - EXTRACTION STEAM TO HP HEATER-2- (PGMA -80-337))
5130,PC - EXTRACTION STEAM TO HP HEATER-3- (PGMA -80-338),SUP,2023-04-28,2025-05-30,,,80338,1.11.1.1.4(For SYN)
5131,Manufacturing,MFG,2023-04-28,2025-04-15,,,80338,1.11.1.1.4.13(PC - EXTRACTION STEAM TO HP HEATER-3- (PGMA -80-338))
5132,Dispatch,DIS,2025-04-16,2025-05-30,,,80338,1.11.1.1.4.13(PC - EXTRACTION STEAM TO HP HEATER-3- (PGMA -80-338))
5133,PC - AUX STEAM TO BFD TURBINE- (PGMA -80-339),SUP,2023-04-28,2025-05-30,,,80339,1.11.1.1.4(For SYN)
5134,Manufacturing,MFG,2023-04-28,2025-04-15,,,80339,1.11.1.1.4.14(PC - AUX STEAM TO BFD TURBINE- (PGMA -80-339))
5135,Dispatch,DIS,2025-04-16,2025-05-30,,,80339,1.11.1.1.4.14(PC - AUX STEAM TO BFD TURBINE- (PGMA -80-339))
5136,PC - AUX STEAM TO GLAND SEALS - TG SCOPE- (PGMA -80-349),SUP,2023-04-28,2025-05-30,,,80349,1.11.1.1.4(For SYN)
5137,Manufacturing,MFG,2023-04-28,2025-04-15,,,80349,1.11.1.1.4.15(PC - AUX STEAM TO GLAND SEALS - TG SCOPE- (PGMA -80-349))
5138,Dispatch,DIS,2025-04-16,2025-05-30,,,80349,1.11.1.1.4.15(PC - AUX STEAM TO GLAND SEALS - TG SCOPE- (PGMA -80-349))
5139,PC - AUX STEAM TO UNLISTED USERS - SG SCOPE- (PGMA -80-351),SUP,2023-04-28,2025-05-30,,,80351,1.11.1.1.4(For SYN)
5140,Manufacturing,MFG,2023-04-28,2025-04-15,,,80351,1.11.1.1.4.16(PC - AUX STEAM TO UNLISTED USERS - SG SCOPE- (PGMA -80-351))
5141,Dispatch,DIS,2025-04-16,2025-05-30,,,80351,1.11.1.1.4.16(PC - AUX STEAM TO UNLISTED USERS - SG SCOPE- (PGMA -80-351))
5142,PC - EXHAUST STEAM FROM PRIME MOVERS-TG SCOPE- (PGMA -80-363),SUP,2023-04-28,2025-05-30,,,80363,1.11.1.1.4(For SYN)
5143,Manufacturing,MFG,2023-04-28,2025-04-15,,,80363,1.11.1.1.4.17(PC - EXHAUST STEAM FROM PRIME MOVERS-TG SCOPE- (PGMA -80-363))
5144,Dispatch,DIS,2025-04-16,2025-05-30,,,80363,1.11.1.1.4.17(PC - EXHAUST STEAM FROM PRIME MOVERS-TG SCOPE- (PGMA -80-363))
5145,PC - HP DRAIN FLASH TANK VENT TO ATMOSPHERE- (PGMA -80-370),SUP,2023-04-28,2025-05-30,,,80370,1.11.1.1.4(For SYN)
5146,Manufacturing,MFG,2023-04-28,2025-04-15,,,80370,1.11.1.1.4.18(PC - HP DRAIN FLASH TANK VENT TO ATMOSPHERE- (PGMA -80-370))
5147,Dispatch,DIS,2025-04-16,2025-05-30,,,80370,1.11.1.1.4.18(PC - HP DRAIN FLASH TANK VENT TO ATMOSPHERE- (PGMA -80-370))
5148,PC - DRAIN FLASH TANK VENT TO CONDENSER- (PGMA -80-371),SUP,2023-04-28,2025-05-30,,,80371,1.11.1.1.4(For SYN)
5149,Manufacturing,MFG,2023-04-28,2025-04-15,,,80371,1.11.1.1.4.19(PC - DRAIN FLASH TANK VENT TO CONDENSER- (PGMA -80-371))
5150,Dispatch,DIS,2025-04-16,2025-05-30,,,80371,1.11.1.1.4.19(PC - DRAIN FLASH TANK VENT TO CONDENSER- (PGMA -80-371))
5151,PC - UNLISTED SV EXHAUSTS - TG SCOPE- (PGMA -80-375),SUP,2023-04-28,2025-05-30,,,80375,1.11.1.1.4(For SYN)
5152,Manufacturing,MFG,2023-04-28,2025-04-15,,,80375,1.11.1.1.4.20(PC - UNLISTED SV EXHAUSTS - TG SCOPE- (PGMA -80-375))
5153,Dispatch,DIS,2025-04-16,2025-05-30,,,80375,1.11.1.1.4.20(PC - UNLISTED SV EXHAUSTS - TG SCOPE- (PGMA -80-375))
5154, PC - HPH SV EXHAUST TO FLASH TANK- (PGMA -80-379),SUP,2023-04-28,2025-05-30,,,80379,1.11.1.1.4(For SYN)
5155,Manufacturing,MFG,2023-04-28,2025-04-15,,,80379,1.11.1.1.4.21( PC - HPH SV EXHAUST TO FLASH TANK- (PGMA -80-379))
5156,Dispatch,DIS,2025-04-16,2025-05-30,,,80379,1.11.1.1.4.21( PC - HPH SV EXHAUST TO FLASH TANK- (PGMA -80-379))
5157,PC - HP HEATER VENTS - TG SCOPE- (PGMA -80-381),SUP,2023-04-28,2025-05-30,,,80381,1.11.1.1.4(For SYN)
5158,Manufacturing,MFG,2023-04-28,2025-04-15,,,80381,1.11.1.1.4.22(PC - HP HEATER VENTS - TG SCOPE- (PGMA -80-381))
5159,Dispatch,DIS,2025-04-16,2025-05-30,,,80381,1.11.1.1.4.22(PC - HP HEATER VENTS - TG SCOPE- (PGMA -80-381))
5160,PC - LP HEATER VENTS- (PGMA -80-382),SUP,2023-04-28,2025-05-30,,,80382,1.11.1.1.4(For SYN)
5161,Manufacturing,MFG,2023-04-28,2025-04-15,,,80382,1.11.1.1.4.23(PC - LP HEATER VENTS- (PGMA -80-382))
5162,Dispatch,DIS,2025-04-16,2025-05-30,,,80382,1.11.1.1.4.23(PC - LP HEATER VENTS- (PGMA -80-382))
5163,PC - VENT FROM UNLISTED PPG/EQPT TO COND- (PGMA -80-385),SUP,2023-04-28,2025-05-30,,,80385,1.11.1.1.4(For SYN)
5164,Manufacturing,MFG,2023-04-28,2025-04-15,,,80385,1.11.1.1.4.24(PC - VENT FROM UNLISTED PPG/EQPT TO COND- (PGMA -80-385))
5165,Dispatch,DIS,2025-04-16,2025-05-30,,,80385,1.11.1.1.4.24(PC - VENT FROM UNLISTED PPG/EQPT TO COND- (PGMA -80-385))
5166,STEAM BLOWING PIPING-TEMPORARY (PGMA - 80-399),SUP,2023-04-28,2025-05-30,,,80399,1.11.1.1.4(For SYN)
5167,Manufacturing,MFG,2023-04-28,2025-04-15,,,80399,1.11.1.1.4.25(STEAM BLOWING PIPING-TEMPORARY (PGMA - 80-399))
5168,Dispatch,DIS,2025-04-16,2025-05-30,,,80399,1.11.1.1.4.25(STEAM BLOWING PIPING-TEMPORARY (PGMA - 80-399))
5169,PC - UNLISTED SPRAY WATER - TG SCOPE- (PGMA -80-435),SUP,2023-04-28,2025-05-30,,,80435,1.11.1.1.4(For SYN)
5170,Manufacturing,MFG,2023-04-28,2025-04-15,,,80435,1.11.1.1.4.26(PC - UNLISTED SPRAY WATER - TG SCOPE- (PGMA -80-435))
5171,Dispatch,DIS,2025-04-16,2025-05-30,,,80435,1.11.1.1.4.26(PC - UNLISTED SPRAY WATER - TG SCOPE- (PGMA -80-435))
5172,PC - CONTROL OIL PIPING ESV & IV- (PGMA -80-482),SUP,2023-04-28,2025-05-30,,,80482,1.11.1.1.4(For SYN)
5173,Manufacturing,MFG,2023-04-28,2025-04-15,,,80482,1.11.1.1.4.27(PC - CONTROL OIL PIPING ESV & IV- (PGMA -80-482))
5174,Dispatch,DIS,2025-04-16,2025-05-30,,,80482,1.11.1.1.4.27(PC - CONTROL OIL PIPING ESV & IV- (PGMA -80-482))
5175,PC - GLAND STEAM COOLER DRAINS- (PGMA -80-442),SUP,2023-04-28,2025-05-30,,,80442,1.11.1.1.4(For SYN)
5176,Manufacturing,MFG,2023-04-28,2025-04-15,,,80442,1.11.1.1.4.28(PC - GLAND STEAM COOLER DRAINS- (PGMA -80-442))
5177,Dispatch,DIS,2025-04-16,2025-05-30,,,80442,1.11.1.1.4.28(PC - GLAND STEAM COOLER DRAINS- (PGMA -80-442))
5178,PC - LP HEATER-1 TO CONDENSER- (PGMA -80-443),SUP,2023-04-28,2025-05-30,,,80443,1.11.1.1.4(For SYN)
5179,Manufacturing,MFG,2023-04-28,2025-04-15,,,80443,1.11.1.1.4.29(PC - LP HEATER-1 TO CONDENSER- (PGMA -80-443))
5180,Dispatch,DIS,2025-04-16,2025-05-30,,,80443,1.11.1.1.4.29(PC - LP HEATER-1 TO CONDENSER- (PGMA -80-443))
5181,PC - LP HEATER-2/3/4/5 DRAINS AND DRIP PUMP I- (PGMA -80-444),SUP,2023-04-28,2025-05-30,,,80444,1.11.1.1.4(For SYN)
5182,Manufacturing,MFG,2023-04-28,2025-04-15,,,80444,1.11.1.1.4.30(PC - LP HEATER-2/3/4/5 DRAINS AND DRIP PUMP I- (PGMA -80-444))
5183,Dispatch,DIS,2025-04-16,2025-05-30,,,80444,1.11.1.1.4.30(PC - LP HEATER-2/3/4/5 DRAINS AND DRIP PUMP I- (PGMA -80-444))
5184,PC - HP HEATER DRAINS- (PGMA -80-447),SUP,2023-04-28,2025-05-30,,,80447,1.11.1.1.4(For SYN)
5185,Manufacturing,MFG,2023-04-28,2025-04-15,,,80447,1.11.1.1.4.31(PC - HP HEATER DRAINS- (PGMA -80-447))
5186,Dispatch,DIS,2025-04-16,2025-05-30,,,80447,1.11.1.1.4.31(PC - HP HEATER DRAINS- (PGMA -80-447))
5187,PC - DRAIN FROM UNLISTED EQPT/VESSEL-TG SCOPE- (PGMA -80-448),SUP,2023-04-28,2025-05-30,,,80448,1.11.1.1.4(For SYN)
5188,Manufacturing,MFG,2023-04-28,2025-04-15,,,80448,1.11.1.1.4.32(PC - DRAIN FROM UNLISTED EQPT/VESSEL-TG SCOPE- (PGMA -80-448))
5189,Dispatch,DIS,2025-04-16,2025-05-30,,,80448,1.11.1.1.4.32(PC - DRAIN FROM UNLISTED EQPT/VESSEL-TG SCOPE- (PGMA -80-448))
5190,PC - TG CYCLE PIPING DRAINS AND VENTS- (PGMA -80-449),SUP,2023-04-28,2025-05-30,,,80449,1.11.1.1.4(For SYN)
5191,Manufacturing,MFG,2023-04-28,2025-04-15,,,80449,1.11.1.1.4.33(PC - TG CYCLE PIPING DRAINS AND VENTS- (PGMA -80-449))
5192,Dispatch,DIS,2025-04-16,2025-05-30,,,80449,1.11.1.1.4.33(PC - TG CYCLE PIPING DRAINS AND VENTS- (PGMA -80-449))
5193,PC - MANIFOLDS FOR HP FLASH BOX AND CONDENS- (PGMA -80-457),SUP,2023-04-28,2025-05-30,,,80457,1.11.1.1.4(For SYN)
5194,Manufacturing,MFG,2023-04-28,2025-04-15,,,80457,1.11.1.1.4.34(PC - MANIFOLDS FOR HP FLASH BOX AND CONDENS- (PGMA -80-457))
5195,Dispatch,DIS,2025-04-16,2025-05-30,,,80457,1.11.1.1.4.34(PC - MANIFOLDS FOR HP FLASH BOX AND CONDENS- (PGMA -80-457))
5196,PC - HP FLASH TANK DRAIN TO CONDENSER- (PGMA -80-459),SUP,2023-04-28,2025-05-30,,,80459,1.11.1.1.4(For SYN)
5197,Manufacturing,MFG,2023-04-28,2025-04-15,,,80459,1.11.1.1.4.35(PC - HP FLASH TANK DRAIN TO CONDENSER- (PGMA -80-459))
5198,Dispatch,DIS,2025-04-16,2025-05-30,,,80459,1.11.1.1.4.35(PC - HP FLASH TANK DRAIN TO CONDENSER- (PGMA -80-459))
5199,PC - DRINKING WATER PIPING- (PGMA -80-478),SUP,2023-04-28,2025-05-30,,,80478,1.11.1.1.4(For SYN)
5200,Manufacturing,MFG,2023-04-28,2025-04-15,,,80478,1.11.1.1.4.36(PC - DRINKING WATER PIPING- (PGMA -80-478))
5201,Dispatch,DIS,2025-04-16,2025-05-30,,,80478,1.11.1.1.4.36(PC - DRINKING WATER PIPING- (PGMA -80-478))
5202,PC - HP FLASH TANK VENT TO CONDENSER- (PGMA -80-493),SUP,2023-04-28,2025-05-30,,,80493,1.11.1.1.4(For SYN)
5203,Manufacturing,MFG,2023-04-28,2025-04-15,,,80493,1.11.1.1.4.37(PC - HP FLASH TANK VENT TO CONDENSER- (PGMA -80-493))
5204,Dispatch,DIS,2025-04-16,2025-05-30,,,80493,1.11.1.1.4.37(PC - HP FLASH TANK VENT TO CONDENSER- (PGMA -80-493))
5205,PC - LP FLASH TANK VENT TO CONDENSER- (PGMA -80-494),SUP,2023-04-28,2025-05-30,,,80494,1.11.1.1.4(For SYN)
5206,Manufacturing,MFG,2023-04-28,2025-04-15,,,80494,1.11.1.1.4.38(PC - LP FLASH TANK VENT TO CONDENSER- (PGMA -80-494))
5207,Dispatch,DIS,2025-04-16,2025-05-30,,,80494,1.11.1.1.4.38(PC - LP FLASH TANK VENT TO CONDENSER- (PGMA -80-494))
5208,PC - LP FLASH TANK DRAIN TO COND- (PGMA -80-495),SUP,2023-04-28,2025-05-30,,,80495,1.11.1.1.4(For SYN)
5209,Manufacturing,MFG,2023-04-28,2025-04-15,,,80495,1.11.1.1.4.39(PC - LP FLASH TANK DRAIN TO COND- (PGMA -80-495))
5210,Dispatch,DIS,2025-04-16,2025-05-30,,,80495,1.11.1.1.4.39(PC - LP FLASH TANK DRAIN TO COND- (PGMA -80-495))
5211,PC - LP Condensate PIPING WITHIN TG HALL FOR- (PGMA -80-545),SUP,2023-04-28,2025-05-30,,,80545,1.11.1.1.4(For SYN)
5212,Manufacturing,MFG,2023-04-28,2025-04-15,,,80545,1.11.1.1.4.40(PC - LP Condensate PIPING WITHIN TG HALL FOR- (PGMA -80-545))
5213,Dispatch,DIS,2025-04-16,2025-05-30,,,80545,1.11.1.1.4.40(PC - LP Condensate PIPING WITHIN TG HALL FOR- (PGMA -80-545))
5214,PC - LUB OIL FLUSHING & PR TESTING (PGMA - 80-673),SUP,2023-04-28,2025-05-30,,,80673,1.11.1.1.4(For SYN)
5215,Manufacturing,MFG,2023-04-28,2025-04-15,,,80673,1.11.1.1.4.41(PC - LUB OIL FLUSHING & PR TESTING (PGMA - 80-673))
5216,Dispatch,DIS,2025-04-16,2025-05-30,,,80673,1.11.1.1.4.41(PC - LUB OIL FLUSHING & PR TESTING (PGMA - 80-673))
5217,PC - H AND S FOR SYNCHRONISATION - TG- (PGMA -80-930),SUP,2023-04-28,2025-05-30,,,80930,1.11.1.1.4(For SYN)
5218,Manufacturing,MFG,2023-04-28,2025-04-15,,,80930,1.11.1.1.4.42(PC - H AND S FOR SYNCHRONISATION - TG- (PGMA -80-930))
5219,Dispatch,DIS,2025-04-16,2025-05-30,,,80930,1.11.1.1.4.42(PC - H AND S FOR SYNCHRONISATION - TG- (PGMA -80-930))
5220,PC - CLEAN DRAIN FLASH TANK - DIA 1500 MM- (PGMA -81-012),SUP,2023-04-28,2025-05-30,,,81012,1.11.1.1.4(For SYN)
5221,Manufacturing,MFG,2023-04-28,2025-04-15,,,81012,1.11.1.1.4.43(PC - CLEAN DRAIN FLASH TANK - DIA 1500 MM- (PGMA -81-012))
5222,Dispatch,DIS,2025-04-16,2025-05-30,,,81012,1.11.1.1.4.43(PC - CLEAN DRAIN FLASH TANK - DIA 1500 MM- (PGMA -81-012))
5223,PC -Condensate TRANSFER PUMP- (PGMA -81-100),SUP,2023-04-28,2024-11-30,,,81100,1.11.1.1.4(For SYN)
5224,Manufacturing,MFG,2023-04-28,2024-10-16,,,81100,1.11.1.1.4.44(PC -Condensate TRANSFER PUMP- (PGMA -81-100))
5225,Dispatch,DIS,2024-10-17,2024-11-30,,,81100,1.11.1.1.4.44(PC -Condensate TRANSFER PUMP- (PGMA -81-100))
5226,PC - PERFORMANCE GUARANTEE TEST MATERIALS- (PGMA -81-416),SUP,2023-04-28,2025-05-30,,,81416,1.11.1.1.4(For SYN)
5227,Manufacturing,MFG,2023-04-28,2025-04-15,,,81416,1.11.1.1.4.45(PC - PERFORMANCE GUARANTEE TEST MATERIALS- (PGMA -81-416))
5228,Dispatch,DIS,2025-04-16,2025-05-30,,,81416,1.11.1.1.4.45(PC - PERFORMANCE GUARANTEE TEST MATERIALS- (PGMA -81-416))
5229,BOI-PEM - THERMAL INSULATION - R-MATTRESSES/P-SECN ,SUP,2024-01-20,2025-03-14,,,,1.11.1.1.4(For SYN)
5230,Ordering,ORD,2024-01-20,2024-04-18,,,,1.11.1.1.4.46(BOI-PEM - THERMAL INSULATION - R-MATTRESSES/P-SECN )
5231,Detailed Engineering,ENG,2024-04-19,2024-09-15,,,,1.11.1.1.4.46(BOI-PEM - THERMAL INSULATION - R-MATTRESSES/P-SECN )
5232,Manufacturing,MFG,2024-09-16,2025-02-12,,,,1.11.1.1.4.46(BOI-PEM - THERMAL INSULATION - R-MATTRESSES/P-SECN )
5233,Dispatch,DIS,2025-02-13,2025-03-14,,,,1.11.1.1.4.46(BOI-PEM - THERMAL INSULATION - R-MATTRESSES/P-SECN )
5234,BOI-PEM -  THERMAL INSULATION -ANCILLARY MATERIAL ,SUP,2023-12-01,2025-01-23,,,,1.11.1.1.4(For SYN)
5235,Ordering,ORD,2023-12-01,2024-02-28,,,,1.11.1.1.4.47(BOI-PEM -  THERMAL INSULATION -ANCILLARY MATERIAL )
5236,Detailed Engineering,ENG,2024-02-29,2024-07-27,,,,1.11.1.1.4.47(BOI-PEM -  THERMAL INSULATION -ANCILLARY MATERIAL )
5237,Manufacturing,MFG,2024-07-28,2024-12-24,,,,1.11.1.1.4.47(BOI-PEM -  THERMAL INSULATION -ANCILLARY MATERIAL )
5238,Dispatch,DIS,2024-12-25,2025-01-23,,,,1.11.1.1.4.47(BOI-PEM -  THERMAL INSULATION -ANCILLARY MATERIAL )
5239,BOI-PEM -  ALUMINIUM SHEETS/COILS,SUP,2024-04-04,2025-05-28,,,,1.11.1.1.4(For SYN)
5240,Ordering,ORD,2024-04-04,2024-07-02,,,,1.11.1.1.4.48(BOI-PEM -  ALUMINIUM SHEETS/COILS)
5241,Detailed Engineering,ENG,2024-07-03,2024-11-29,,,,1.11.1.1.4.48(BOI-PEM -  ALUMINIUM SHEETS/COILS)
5242,Manufacturing,MFG,2024-11-30,2025-04-28,,,,1.11.1.1.4.48(BOI-PEM -  ALUMINIUM SHEETS/COILS)
5243,Dispatch,DIS,2025-04-29,2025-05-28,,,,1.11.1.1.4.48(BOI-PEM -  ALUMINIUM SHEETS/COILS)
5244, BOI- PEM - AIR TRAPS ,SUP,2023-11-21,2025-01-13,,,,1.11.1.1.4(For SYN)
5245,Ordering,ORD,2023-11-21,2024-02-18,,,,1.11.1.1.4.49( BOI- PEM - AIR TRAPS )
5246,Detailed Engineering,ENG,2024-02-19,2024-07-17,,,,1.11.1.1.4.49( BOI- PEM - AIR TRAPS )
5247,Manufacturing,MFG,2024-07-18,2024-12-14,,,,1.11.1.1.4.49( BOI- PEM - AIR TRAPS )
5248,Dispatch,DIS,2024-12-15,2025-01-13,,,,1.11.1.1.4.49( BOI- PEM - AIR TRAPS )
5249,PEM - STEAM TRAPS ,SUP,2023-12-01,2025-01-23,,,,1.11.1.1.4(For SYN)
5250,Ordering,ORD,2023-12-01,2024-02-28,,,,1.11.1.1.4.50(PEM - STEAM TRAPS )
5251,Detailed Engineering,ENG,2024-02-29,2024-07-27,,,,1.11.1.1.4.50(PEM - STEAM TRAPS )
5252,Manufacturing,MFG,2024-07-28,2024-12-24,,,,1.11.1.1.4.50(PEM - STEAM TRAPS )
5253,Dispatch,DIS,2024-12-25,2025-01-23,,,,1.11.1.1.4.50(PEM - STEAM TRAPS )
5254,Valves,SUP,2022-09-27,2025-05-22,,,,1.11.1(Supply)
5255,Supply,SUP,2022-09-27,2025-05-22,,,,1.11.1.2(Valves)
5256,"TRYV - Power Cycle Piping, DM. Water & Lube Oil System Valves ( PGMA - 80913)",SUP,2024-05-28,2025-02-11,,,80913,1.11.1.2.1(Supply)
5257,Manufacturing,MFG,2024-05-28,2024-11-27,,,80913,"1.11.1.2.1.1(TRYV - Power Cycle Piping, DM. Water & Lube Oil System Valves ( PGMA - 80913))"
5258,Dispatch,DIS,2024-08-28,2025-02-11,,,80913,"1.11.1.2.1.1(TRYV - Power Cycle Piping, DM. Water & Lube Oil System Valves ( PGMA - 80913))"
5259,TRYV - Turbine Integral Piping system Valves( PGMA - 80919),SUP,2024-05-28,2025-02-11,,,80919,1.11.1.2.1(Supply)
5260,Manufacturing,MFG,2024-05-28,2024-11-27,,,80919,1.11.1.2.1.2(TRYV - Turbine Integral Piping system Valves( PGMA - 80919))
5261,Dispatch,DIS,2024-08-28,2025-02-11,,,80919,1.11.1.2.1.2(TRYV - Turbine Integral Piping system Valves( PGMA - 80919))
5262,TRYV - Extraction Line QCNRVs( PGMA - 80918),SUP,2024-05-28,2025-02-11,,,80918,1.11.1.2.1(Supply)
5263,Manufacturing,MFG,2024-05-28,2024-11-27,,,80918,1.11.1.2.1.3(TRYV - Extraction Line QCNRVs( PGMA - 80918))
5264,Dispatch,DIS,2024-08-28,2025-02-11,,,80918,1.11.1.2.1.3(TRYV - Extraction Line QCNRVs( PGMA - 80918))
5265,TRYV - HP Bypass System - Oil Supply System Valves( PGMA - 22100),SUP,2024-05-28,2025-02-11,,,22100,1.11.1.2.1(Supply)
5266,Manufacturing,MFG,2024-05-28,2024-11-27,,,22100,1.11.1.2.1.4(TRYV - HP Bypass System - Oil Supply System Valves( PGMA - 22100))
5267,Dispatch,DIS,2024-08-28,2025-02-11,,,22100,1.11.1.2.1.4(TRYV - HP Bypass System - Oil Supply System Valves( PGMA - 22100))
5268,TRYV - HP Bypass System - HP Bypass valve ASSY valves( PGMA - 22101),SUP,2024-05-28,2025-02-11,,,22101,1.11.1.2.1(Supply)
5269,Manufacturing,MFG,2024-05-28,2024-11-27,,,22101,1.11.1.2.1.5(TRYV - HP Bypass System - HP Bypass valve ASSY valves( PGMA - 22101))
5270,Dispatch,DIS,2024-08-28,2025-02-11,,,22101,1.11.1.2.1.5(TRYV - HP Bypass System - HP Bypass valve ASSY valves( PGMA - 22101))
5271,TRYV - HP Bypass System - Oil Piping HP Bypass Valves( PGMA - 22600),SUP,2024-05-28,2025-02-11,,,22600,1.11.1.2.1(Supply)
5272,Manufacturing,MFG,2024-05-28,2024-11-27,,,22600,1.11.1.2.1.6(TRYV - HP Bypass System - Oil Piping HP Bypass Valves( PGMA - 22600))
5273,Dispatch,DIS,2024-08-28,2025-02-11,,,22600,1.11.1.2.1.6(TRYV - HP Bypass System - Oil Piping HP Bypass Valves( PGMA - 22600))
5274,TRYV - HP Bypass System - Common HP Oil Piping Valves( PGMA - 22601),SUP,2024-05-28,2025-02-11,,,22601,1.11.1.2.1(Supply)
5275,Manufacturing,MFG,2024-05-28,2024-11-27,,,22601,1.11.1.2.1.7(TRYV - HP Bypass System - Common HP Oil Piping Valves( PGMA - 22601))
5276,Dispatch,DIS,2024-08-28,2025-02-11,,,22601,1.11.1.2.1.7(TRYV - HP Bypass System - Common HP Oil Piping Valves( PGMA - 22601))
5277,TRYV - HP Bypass System - Hand Tools( PGMA - 22701),SUP,2024-05-28,2025-02-11,,,22701,1.11.1.2.1(Supply)
5278,Manufacturing,MFG,2024-05-28,2024-11-27,,,22701,1.11.1.2.1.8(TRYV - HP Bypass System - Hand Tools( PGMA - 22701))
5279,Dispatch ,DIS,2024-08-28,2025-02-11,,,22701,1.11.1.2.1.8(TRYV - HP Bypass System - Hand Tools( PGMA - 22701))
5280,TRYV - HP Bypass System - Special Equipments( PGMA - 22889),SUP,2024-05-28,2025-02-11,,,22889,1.11.1.2.1(Supply)
5281,Manufacturing,MFG,2024-05-28,2024-11-27,,,22889,1.11.1.2.1.9(TRYV - HP Bypass System - Special Equipments( PGMA - 22889))
5282,Dispatch,DIS,2024-08-28,2025-02-11,,,22889,1.11.1.2.1.9(TRYV - HP Bypass System - Special Equipments( PGMA - 22889))
5283,TRYV - HP Bypass System - Common Spares( PGMA - 22988),SUP,2024-05-28,2025-02-11,,,22988,1.11.1.2.1(Supply)
5284,Manufacturing,MFG,2024-05-28,2024-11-27,,,22988,1.11.1.2.1.10(TRYV - HP Bypass System - Common Spares( PGMA - 22988))
5285,Dispatch,DIS,2024-08-28,2025-02-11,,,22988,1.11.1.2.1.10(TRYV - HP Bypass System - Common Spares( PGMA - 22988))
5286,TRYV - Root Valves (Normal Measurement+PG Test) ( PGMA - 80914),SUP,2024-05-28,2025-02-11,,,80914,1.11.1.2.1(Supply)
5287,Manufacturing,MFG,2024-05-28,2024-11-27,,,80914,1.11.1.2.1.11(TRYV - Root Valves (Normal Measurement+PG Test) ( PGMA - 80914))
5288,Dispatch,DIS,2024-08-28,2025-02-11,,,80914,1.11.1.2.1.11(TRYV - Root Valves (Normal Measurement+PG Test) ( PGMA - 80914))
5289,TRYV - SG Integral Piping Valves ( PGMA - 80905),SUP,2024-05-28,2025-02-11,,,80905,1.11.1.2.1(Supply)
5290,Manufacturing,MFG,2024-05-28,2024-11-27,,,80905,1.11.1.2.1.12(TRYV - SG Integral Piping Valves ( PGMA - 80905))
5291,Dispatch,DIS,2024-08-28,2025-02-11,,,80905,1.11.1.2.1.12(TRYV - SG Integral Piping Valves ( PGMA - 80905))
5292,TRYV - Low Pressure piping valves ( PGMA - 80277),SUP,2024-05-28,2025-02-11,,,80277,1.11.1.2.1(Supply)
5293,Manufacturing,MFG,2024-05-28,2024-11-27,,,80277,1.11.1.2.1.13(TRYV - Low Pressure piping valves ( PGMA - 80277))
5294,Dispatch,DIS,2024-08-28,2025-02-11,,,80277,1.11.1.2.1.13(TRYV - Low Pressure piping valves ( PGMA - 80277))
5295,TRYV - Heat Exchanger and Fabrication Water Expansion Relief Valves (WERV)( PGMA - 80278),SUP,2024-05-28,2025-02-11,,,80278,1.11.1.2.1(Supply)
5296,Manufacturing,MFG,2024-05-28,2024-11-27,,,80278,1.11.1.2.1.14(TRYV - Heat Exchanger and Fabrication Water Expansion Relief Valves (WERV)( PGMA - 80278))
5297,Dispatch,DIS,2024-08-28,2025-02-11,,,80278,1.11.1.2.1.14(TRYV - Heat Exchanger and Fabrication Water Expansion Relief Valves (WERV)( PGMA - 80278))
5298,TRYV - BFP Drive Turbine Valves including SRV and QCNRV's ( PGMA - 80279),SUP,2024-05-28,2025-02-11,,,80279,1.11.1.2.1(Supply)
5299,Manufacturing,MFG,2024-05-28,2024-11-27,,,80279,1.11.1.2.1.15(TRYV - BFP Drive Turbine Valves including SRV and QCNRV's ( PGMA - 80279))
5300,Dispatch,DIS,2024-08-28,2025-02-11,,,80279,1.11.1.2.1.15(TRYV - BFP Drive Turbine Valves including SRV and QCNRV's ( PGMA - 80279))
5301,TRYV - Acid Cleaning Valves ( PGMA - 80917),SUP,2024-05-28,2025-02-11,,,80917,1.11.1.2.1(Supply)
5302,Manufacturing,MFG,2024-05-28,2024-11-27,,,80917,1.11.1.2.1.16(TRYV - Acid Cleaning Valves ( PGMA - 80917))
5303,Dispatch,DIS,2024-08-28,2025-02-11,,,80917,1.11.1.2.1.16(TRYV - Acid Cleaning Valves ( PGMA - 80917))
5304,TRYV - Steam Blowing Valves ( PGMA - 80918),SUP,2024-05-28,2025-02-11,,,80918,1.11.1.2.1(Supply)
5305,Manufacturing,MFG,2024-05-28,2024-11-27,,,80918,1.11.1.2.1.17(TRYV - Steam Blowing Valves ( PGMA - 80918))
5306,Dispatch,DIS,2024-08-28,2025-02-11,,,80918,1.11.1.2.1.17(TRYV - Steam Blowing Valves ( PGMA - 80918))
5307,BOI-PEM - BUTTERFLY VALVES (STEAM SERVICE) ,SUP,2022-09-27,2024-07-14,,,,1.11.1.2.1(Supply)
5308,Ordering,ORD,2023-10-19,2024-01-16,,,,1.11.1.2.1.18(BOI-PEM - BUTTERFLY VALVES (STEAM SERVICE) )
5309,Detailed Engineering,ENG,2024-01-17,2024-06-14,,,,1.11.1.2.1.18(BOI-PEM - BUTTERFLY VALVES (STEAM SERVICE) )
5310,Manufacturing,MFG,2022-09-27,2023-02-23,,,,1.11.1.2.1.18(BOI-PEM - BUTTERFLY VALVES (STEAM SERVICE) )
5311,Dispatch,DIS,2024-06-15,2024-07-14,,,,1.11.1.2.1.18(BOI-PEM - BUTTERFLY VALVES (STEAM SERVICE) )
5312,BOI-PEM - BALL VALVES ,SUP,2023-10-19,2024-12-11,,,,1.11.1.2.1(Supply)
5313,Ordering,ORD,2023-10-19,2024-01-16,,,,1.11.1.2.1.19(BOI-PEM - BALL VALVES )
5314,Detailed Engineering,ENG,2024-01-17,2024-06-14,,,,1.11.1.2.1.19(BOI-PEM - BALL VALVES )
5315,Manufacturing,MFG,2024-06-15,2024-11-11,,,,1.11.1.2.1.19(BOI-PEM - BALL VALVES )
5316,Dispatch,DIS,2024-11-12,2024-12-11,,,,1.11.1.2.1.19(BOI-PEM - BALL VALVES )
5317,BOI-PEM - AIR RELEASE VALVES ,SUP,2023-08-23,2024-11-14,,,,1.11.1.2.1(Supply)
5318,Ordering,ORD,2023-08-23,2023-11-20,,,,1.11.1.2.1.20(BOI-PEM - AIR RELEASE VALVES )
5319,Detailed Engineering,ENG,2023-11-21,2024-04-18,,,,1.11.1.2.1.20(BOI-PEM - AIR RELEASE VALVES )
5320,Manufacturing,MFG,2024-04-19,2024-09-15,,,,1.11.1.2.1.20(BOI-PEM - AIR RELEASE VALVES )
5321,Dispatch,DIS,2024-09-16,2024-10-15,,,,1.11.1.2.1.20(BOI-PEM - AIR RELEASE VALVES )
5322,Dispatch,DIS,2024-10-16,2024-11-14,,,,1.11.1.2.1.20(BOI-PEM - AIR RELEASE VALVES )
5323,BOI-PEM - LUBE OIL TRANSFER PUMPS,SUP,2024-01-30,2025-03-24,,,,1.11.1.2.1(Supply)
5324,Ordering,ORD,2024-01-30,2024-04-28,,,,1.11.1.2.1.21(BOI-PEM - LUBE OIL TRANSFER PUMPS)
5325,Detailed Engineering,ENG,2024-04-29,2024-09-25,,,,1.11.1.2.1.21(BOI-PEM - LUBE OIL TRANSFER PUMPS)
5326,Manufacturing,MFG,2024-09-26,2025-02-22,,,,1.11.1.2.1.21(BOI-PEM - LUBE OIL TRANSFER PUMPS)
5327,Dispatch,DIS,2025-02-23,2025-03-24,,,,1.11.1.2.1.21(BOI-PEM - LUBE OIL TRANSFER PUMPS)
5328,BOI-PEM - SUMP PUMPS/SUBMERSIBLE PUMPS,SUP,2023-11-01,2024-12-24,,,,1.11.1.2.1(Supply)
5329,Ordering,ORD,2023-11-01,2024-01-29,,,,1.11.1.2.1.22(BOI-PEM - SUMP PUMPS/SUBMERSIBLE PUMPS)
5330,Detailed Engineering,ENG,2024-01-30,2024-06-27,,,,1.11.1.2.1.22(BOI-PEM - SUMP PUMPS/SUBMERSIBLE PUMPS)
5331,Manufacturing,MFG,2024-06-28,2024-11-24,,,,1.11.1.2.1.22(BOI-PEM - SUMP PUMPS/SUBMERSIBLE PUMPS)
5332,Dispatch,DIS,2024-11-25,2024-12-24,,,,1.11.1.2.1.22(BOI-PEM - SUMP PUMPS/SUBMERSIBLE PUMPS)
5333,BPL - Butterfly Valve,SUP,2023-04-26,2025-05-22,,,,1.11.1.2.1(Supply)
5334,"Engineering, INDENTING AND PROCUREMENT ",ENG,2023-04-26,2024-03-23,,,,1.11.1.2.1.23(BPL - Butterfly Valve)
5335,Manufacturing & TESTING ,MFG,2024-03-24,2025-03-23,,,,1.11.1.2.1.23(BPL - Butterfly Valve)
5336, Dispatch ,DIS,2025-03-24,2025-04-22,,,,1.11.1.2.1.23(BPL - Butterfly Valve)
5337,RECEIPT AT SITE ,REC,2025-04-23,2025-05-22,,,,1.11.1.2.1.23(BPL - Butterfly Valve)
5338,Erection,ERC,2024-11-28,2026-02-02,,,,1.11(Piping & Valves)
5339, DRIP LINES AND DRAINS,ERC,2025-09-14,2025-12-31,,,,1.11.2(Erection)
5340,"Erection, welding and supports for drip and drain lines & valves",ERC,2025-09-14,2025-12-25,,,,1.11.2.1( DRIP LINES AND DRAINS)
5341,Hydro test of drip and drain lines,ERC,2025-12-26,2025-12-31,,,,1.11.2.1( DRIP LINES AND DRAINS)
5342, HRH PIPING,ERC,2025-05-02,2025-11-28,,,,1.11.2(Erection)
5343,"Preassembly, Erection and align of HRH Pipe to IV",ERC,2025-05-02,2025-08-29,,,,1.11.2.2( HRH PIPING)
5344,P-91 welding of HRH Pipe up to IV,ERC,2025-05-02,2025-09-28,,,,1.11.2.2( HRH PIPING)
5345,Erection of hangers of HRH up to IV,ERC,2025-06-01,2025-10-28,,,,1.11.2.2( HRH PIPING)
5346,erection and align HRH line from IV to turbine,ERC,2025-10-29,2025-11-10,,,,1.11.2.2( HRH PIPING)
5347,P-91 welding of HRH upto turbine,ERC,2025-11-11,2025-11-19,,,,1.11.2.2( HRH PIPING)
5348,Erection of supports up to turbine,ERC,2025-11-20,2025-11-28,,,,1.11.2.2( HRH PIPING)
5349, LP AND HP BYPASS PIPING,ERC,2025-08-23,2026-01-25,,,,1.11.2(Erection)
5350,Erection of LP BP upstream and downstream,ERC,2025-08-23,2025-09-15,,,,1.11.2.3( LP AND HP BYPASS PIPING)
5351,Erection of LP warm up piping,ERC,2025-09-16,2025-09-27,,,,1.11.2.3( LP AND HP BYPASS PIPING)
5352,P-91 welding on LPBP piping,ERC,2025-09-28,2025-10-21,,,,1.11.2.3( LP AND HP BYPASS PIPING)
5353,Erection of hangers of LPBP piping,ERC,2025-10-22,2025-11-08,,,,1.11.2.3( LP AND HP BYPASS PIPING)
5354,Erection of HP Bp upstream and downstream,ERC,2025-11-09,2025-12-02,,,,1.11.2.3( LP AND HP BYPASS PIPING)
5355,Erection of HP warm up piping,ERC,2025-12-03,2025-12-14,,,,1.11.2.3( LP AND HP BYPASS PIPING)
5356,P-91 welding on HPBP piping,ERC,2025-12-15,2026-01-07,,,,1.11.2.3( LP AND HP BYPASS PIPING)
5357,Erection of hangers of HPBP,ERC,2026-01-08,2026-01-25,,,,1.11.2.3( LP AND HP BYPASS PIPING)
5358,Condensate PIPING,ERC,2025-03-09,2025-09-04,,,,1.11.2(Erection)
5359,"Erection, welding, valves and supports for Condensate line",ERC,2025-03-09,2025-09-04,,,,1.11.2.4(Condensate PIPING)
5360, BOILER FEED LINE PIPING,ERC,2025-02-17,2025-10-11,,,,1.11.2(Erection)
5361,"Erection, welding, valves and supports for BFD and suction lines",ERC,2025-02-17,2025-08-15,,,,1.11.2.5( BOILER FEED LINE PIPING)
5362,Hydro test of BFD lines,ERC,2025-08-16,2025-08-21,,,,1.11.2.5( BOILER FEED LINE PIPING)
5363,Thermal insulation,ERC,2025-08-22,2025-10-11,,,,1.11.2.5( BOILER FEED LINE PIPING)
5364, MAIN STEAM PIPING,ERC,2024-11-28,2025-08-29,,,,1.11.2(Erection)
5365,for Condensate and align MS Pipe from SH header to BSV,ERC,2024-11-28,2025-01-26,,,,1.11.2.6( MAIN STEAM PIPING)
5366,P-91 welding and SR of MS Pipe from SH header to BSV,ERC,2024-11-28,2025-02-25,,,,1.11.2.6( MAIN STEAM PIPING)
5367,Erection of hangers from SH header to BSV,ERC,2024-12-28,2025-03-27,,,,1.11.2.6( MAIN STEAM PIPING)
5368,for Condensate and align of MS Pipe from BSV to ESV,ERC,2025-04-02,2025-06-30,,,,1.11.2.6( MAIN STEAM PIPING)
5369,P-91 welding and SR of MS Pipe from BSV to ESV,ERC,2025-04-02,2025-07-30,,,,1.11.2.6( MAIN STEAM PIPING)
5370,Erection of hangers of MS Pipe from BSV to ESV,ERC,2025-05-02,2025-08-29,,,,1.11.2.6( MAIN STEAM PIPING)
5371, EXTRACTION PIPING,ERC,2025-08-10,2025-12-29,,,,1.11.2(Erection)
5372,"Extraction piping to LPH-1, 2, 3",ERC,2025-08-10,2025-09-02,,,,1.11.2.7( EXTRACTION PIPING)
5373,Extraction piping to Deaerator,ERC,2025-09-03,2025-09-14,,,,1.11.2.7( EXTRACTION PIPING)
5374,"Extraction piping to HPH 6, 7",ERC,2025-09-15,2025-10-02,,,,1.11.2.7( EXTRACTION PIPING)
5375,Erection piping to TDBFP,ERC,2025-10-03,2025-10-28,,,,1.11.2.7( EXTRACTION PIPING)
5376,HP welding on ext. lines,ERC,2025-10-29,2025-12-03,,,,1.11.2.7( EXTRACTION PIPING)
5377,Erection of hangers,ERC,2025-12-04,2025-12-29,,,,1.11.2.7( EXTRACTION PIPING)
5378, CRH PIPING,ERC,2025-04-02,2025-08-29,,,,1.11.2(Erection)
5379,ext. and align of CRH Pipe from Turbine to RH header,ERC,2025-04-02,2025-06-30,,,,1.11.2.8( CRH PIPING)
5380,P-91 welding and SR in main CRH Pipe from Turbine to RH header,ERC,2025-04-02,2025-07-30,,,,1.11.2.8( CRH PIPING)
5381,"Erection of tap off to TDBFP, Aux PRDS and Deaerator",ERC,2025-07-01,2025-07-30,,,,1.11.2.8( CRH PIPING)
5382,HP welding and testing on Tap Off piping from CRH Pipe,ERC,2025-07-16,2025-08-14,,,,1.11.2.8( CRH PIPING)
5383,Erection of hangers,ERC,2025-05-02,2025-08-29,,,,1.11.2.8( CRH PIPING)
5384,MISC HP & LP PIPING WITH VALVES & SUPPORTS,ERC,2025-06-16,2025-12-12,,,,1.11.2(Erection)
5385,Hydro test of MS piping,ERC,2025-08-30,2025-09-05,,,,1.11.2(Erection)
5386,Insulation of MS and HPBP upstream piping,ERC,2025-09-06,2026-01-03,,,,1.11.2(Erection)
5387,Hydro test of HRH piping,ERC,2025-10-29,2025-11-04,,,,1.11.2(Erection)
5388,Insulation of HRH and LPBP piping,ERC,2025-11-05,2026-02-02,,,,1.11.2(Erection)
5389,Hydro test of CRH piping,ERC,2025-08-30,2025-09-05,,,,1.11.2(Erection)
5390,Insulation of CRH & HPBP downstream piping,ERC,2025-09-06,2025-12-04,,,,1.11.2(Erection)
5391,Electrical,OTH,2022-09-27,2026-05-07,,,,"1(EPC Package for Talcher Thermal Power Project, Stage-III (2X660MW))"
5392,"Rel of DGW for Service power Transformer, Aux Transformer, Misc. transformer",PE - RFC,2023-04-29,2024-02-22,,,,1.12(Electrical)
5393,Rel of DGW for ST,PE - RFC,2024-02-23,2024-02-23,,,PCE-03900,1.12(Electrical)
5394,Rel of DGW for ESP/FGD control room,PE - RFC,2023-04-15,2023-04-15,,,PCE-04000,1.12(Electrical)
5395,Civil,CIV,2023-05-16,2025-08-06,,,,1.12(Electrical)
5396,TRANSFORMER YARD,CIV,2024-02-23,2025-02-20,,,,1.12.4(Civil)
5397,GENERATOR TRANSFORMER FOUNDATION,CIV,2024-02-23,2024-09-09,,,,1.12.4.1(TRANSFORMER YARD)
5398,foundation readiness for Erection,CIV,2024-02-23,2024-06-21,,,,1.12.4.1.1(GENERATOR TRANSFORMER FOUNDATION)
5399,Rail fixing & final stage casting,CIV,2024-06-22,2024-09-09,,,,1.12.4.1.1(GENERATOR TRANSFORMER FOUNDATION)
5400,STATION TRANSFORMER FOUNDATION,CIV,2024-02-24,2024-08-21,,,,1.12.4.1(TRANSFORMER YARD)
5401,foundation readiness correction,CIV,2024-02-24,2024-07-02,,,,1.12.4.1.2(STATION TRANSFORMER FOUNDATION)
5402,Rail fixing & final stage casting,CIV,2024-07-03,2024-08-21,,,,1.12.4.1.2(STATION TRANSFORMER FOUNDATION)
5403,Service power transformer,CIV,2024-08-25,2025-02-20,,,,1.12.4.1(TRANSFORMER YARD)
5404,foundation readiness correction,CIV,2024-08-25,2025-01-01,,,,1.12.4.1.3(Service power transformer)
5405,Rail fixing & final stage casting,CIV,2025-01-02,2025-02-20,,,,1.12.4.1.3(Service power transformer)
5406,Unit Aux Transformer,CIV,2024-08-25,2025-02-20,,,,1.12.4.1(TRANSFORMER YARD)
5407,foundation readiness correction,CIV,2024-08-25,2025-01-01,,,,1.12.4.1.4(Unit Aux Transformer)
5408,Rail fixing & final stage casting,CIV,2025-01-02,2025-02-20,,,,1.12.4.1.4(Unit Aux Transformer)
5409,Misc. Service Transformer,CIV,2024-08-25,2025-01-01,,,,1.12.4.1(TRANSFORMER YARD)
5410,foundation readiness Misc.,CIV,2024-08-25,2025-01-01,,,,1.12.4.1.5(Misc. Service Transformer)
5411,UNIT TRANSFORMER FOUNDATION,CIV,2024-06-28,2024-12-24,,,,1.12.4.1(TRANSFORMER YARD)
5412,foundation readiness Misc.,CIV,2024-06-28,2024-11-04,,,,1.12.4.1.6(UNIT TRANSFORMER FOUNDATION)
5413,Rail fixing & final stage casting,CIV,2024-11-05,2024-12-24,,,,1.12.4.1.6(UNIT TRANSFORMER FOUNDATION)
5414,STATION AUXILLARY TRANSFORMER FOUNDATION,CIV,2024-07-08,2025-01-03,,,,1.12.4.1(TRANSFORMER YARD)
5415,foundation readiness Misc.,CIV,2024-07-08,2024-11-14,,,,1.12.4.1.7(STATION AUXILLARY TRANSFORMER FOUNDATION)
5416,Rail fixing & final stage casting,CIV,2024-11-15,2025-01-03,,,,1.12.4.1.7(STATION AUXILLARY TRANSFORMER FOUNDATION)
5417,"Fire Wall, Fencing, BPI , LA & other Misc. Works",CIV,2024-11-15,2025-02-12,,,,1.12.4(Civil)
5418,SPBD Pedestals FOUNDATION,CIV,2025-01-02,2025-04-22,,,,1.12.4(Civil)
5419,Excavation,CIV,2025-01-02,2025-01-21,,,,1.12.4.3(SPBD Pedestals FOUNDATION)
5420,RCC foundation,CIV,2025-01-12,2025-03-07,,,,1.12.4.3(SPBD Pedestals FOUNDATION)
5421,RCC pedestal,CIV,2025-02-16,2025-04-16,,,,1.12.4.3(SPBD Pedestals FOUNDATION)
5422,Backfilling & Finishing Work,CIV,2025-04-13,2025-04-22,,,,1.12.4.3(SPBD Pedestals FOUNDATION)
5423,MV SwitchGear Room,CIV,2025-03-16,2025-08-06,,,,1.12.4(Civil)
5424,RCC in column encasing works,CIV,2025-03-16,2025-03-30,,,,1.12.4.4(MV SwitchGear Room)
5425,Brick Work & Plastering,CIV,2025-05-07,2025-06-20,,,,1.12.4.4(MV SwitchGear Room)
5426,Flooring,CIV,2025-06-21,2025-06-27,,,,1.12.4.4(MV SwitchGear Room)
5427,"Door ,Window- glass ,aluminium fixing works",CIV,2025-06-28,2025-07-22,,,,1.12.4.4(MV SwitchGear Room)
5428,Finishing works,CIV,2025-07-23,2025-08-06,,,,1.12.4.4(MV SwitchGear Room)
5429,LT SwitchGear Room,CIV,2025-01-15,2025-05-01,,,,1.12.4(Civil)
5430, RCC in column encasing works,CIV,2025-01-15,2025-01-29,,,,1.12.4.5(LT SwitchGear Room)
5431, Brick Work & Plastering,CIV,2025-01-30,2025-03-15,,,,1.12.4.5(LT SwitchGear Room)
5432, Flooring,CIV,2025-03-16,2025-03-22,,,,1.12.4.5(LT SwitchGear Room)
5433," Door ,Window- glass ,aluminium fixing works",CIV,2025-03-23,2025-04-16,,,,1.12.4.5(LT SwitchGear Room)
5434, Finishing works,CIV,2025-04-17,2025-05-01,,,,1.12.4.5(LT SwitchGear Room)
5435,UPS & Battery Room,CIV,2024-12-16,2025-05-16,,,,1.12.4(Civil)
5436,RCC in column encasing works,CIV,2024-12-16,2024-12-30,,,,1.12.4.6(UPS & Battery Room)
5437,Brick Work & Plastering,CIV,2024-12-31,2025-02-13,,,,1.12.4.6(UPS & Battery Room)
5438,Flooring,CIV,2025-02-14,2025-02-20,,,,1.12.4.6(UPS & Battery Room)
5439,false ceiling & insulation works,CIV,2025-02-21,2025-04-06,,,,1.12.4.6(UPS & Battery Room)
5440,"Door ,Window- glass ,aluminium fixing works",CIV,2025-04-07,2025-05-01,,,,1.12.4.6(UPS & Battery Room)
5441,Finishing works,CIV,2025-05-02,2025-05-16,,,,1.12.4.6(UPS & Battery Room)
5442,IPBD Pedestals FOUNDATION,CIV,2024-10-26,2025-02-22,,,,1.12.4(Civil)
5443, Excavation,CIV,2024-10-26,2024-11-19,,,,1.12.4.7(IPBD Pedestals FOUNDATION)
5444, RCC foundation,CIV,2024-11-10,2025-01-03,,,,1.12.4.7(IPBD Pedestals FOUNDATION)
5445, RCC pedestal,CIV,2024-12-14,2025-02-16,,,,1.12.4.7(IPBD Pedestals FOUNDATION)
5446, Backfilling & Finishing Work,CIV,2025-02-13,2025-02-22,,,,1.12.4.7(IPBD Pedestals FOUNDATION)
5447,ESP/FGD Control Room,CIV,2023-05-16,2024-09-16,,,,1.12.4(Civil)
5448,Up to Plinth Level,CIV,2023-05-16,2023-10-12,,,,1.12.4.8(ESP/FGD Control Room)
5449,EXCAVATION,CIV,2023-05-16,2023-05-30,,,,1.12.4.8.1(Up to Plinth Level)
5450,PCC,CIV,2023-05-31,2023-06-09,,,,1.12.4.8.1(Up to Plinth Level)
5451,"Reinforcement cutting & Bending of Footings & columns (1st,2nd,3rd)",CIV,2023-06-10,2023-06-29,,,,1.12.4.8.1(Up to Plinth Level)
5452,Footing Casting work,CIV,2023-06-30,2023-07-24,,,,1.12.4.8.1(Up to Plinth Level)
5453,"Pedestal 1st,2nd, Final lift- Till Plinth Beam Level",CIV,2023-07-25,2023-09-17,,,,1.12.4.8.1(Up to Plinth Level)
5454,Backfilling,CIV,2023-09-18,2023-09-27,,,,1.12.4.8.1(Up to Plinth Level)
5455,Plinth Beam Concreting Work,CIV,2023-09-28,2023-10-12,,,,1.12.4.8.1(Up to Plinth Level)
5456,up to First Floor,CIV,2023-10-03,2023-12-21,,,,1.12.4.8(ESP/FGD Control Room)
5457,Fabrication of Column & Bracings,ERC,2023-10-03,2023-11-01,,,,1.12.4.8.2(up to First Floor)
5458,Erection of  Column & Bracings,ERC,2023-10-23,2023-11-06,,,,1.12.4.8.2(up to First Floor)
5459,Fabrication of First Floor Beams,ERC,2023-10-28,2023-11-26,,,,1.12.4.8.2(up to First Floor)
5460,Erection of  First Floor Beams,ERC,2023-11-17,2023-12-01,,,,1.12.4.8.2(up to First Floor)
5461,Slab Casting of First Floor,CIV,2023-12-02,2023-12-21,,,,1.12.4.8.2(up to First Floor)
5462,Up to 2nd Floor,CIV,2023-12-02,2024-01-25,,,,1.12.4.8(ESP/FGD Control Room)
5463,Fabrication of Second Floor Beams,ERC,2023-12-02,2023-12-31,,,,1.12.4.8.3(Up to 2nd Floor)
5464,Erection of Second Floor Beams,ERC,2023-12-22,2024-01-05,,,,1.12.4.8.3(Up to 2nd Floor)
5465,Slab Casting of Second Floor,CIV,2024-01-06,2024-01-25,,,,1.12.4.8.3(Up to 2nd Floor)
5466,Up to Third Floor & Roof,CIV,2024-01-06,2024-04-09,,,,1.12.4.8(ESP/FGD Control Room)
5467,Fabrication of Third Floor Beams,ERC,2024-01-06,2024-02-04,,,,1.12.4.8.4(Up to Third Floor & Roof)
5468,Erection of Third Floor Beams,ERC,2024-01-26,2024-02-09,,,,1.12.4.8.4(Up to Third Floor & Roof)
5469,Slab Casting of Third Floor,CIV,2024-02-10,2024-02-29,,,,1.12.4.8.4(Up to Third Floor & Roof)
5470,Parapet wall of Roof,CIV,2024-03-01,2024-03-10,,,,1.12.4.8.4(Up to Third Floor & Roof)
5471,Water Proofing of Roof,CIV,2024-03-11,2024-04-09,,,,1.12.4.8.4(Up to Third Floor & Roof)
5472,Brickwork,CIV,2024-01-11,2024-05-09,,,,1.12.4.8(ESP/FGD Control Room)
5473,Plaster Exterior & Interior,CIV,2024-02-10,2024-06-08,,,,1.12.4.8(ESP/FGD Control Room)
5474,Painting,CIV,2024-05-20,2024-07-18,,,,1.12.4.8(ESP/FGD Control Room)
5475,Flooring,CIV,2024-06-19,2024-08-17,,,,1.12.4.8(ESP/FGD Control Room)
5476,Finishing Works,CIV,2024-07-19,2024-09-16,,,,1.12.4.8(ESP/FGD Control Room)
5477,Transformer Foundations & adjoining wall,CIV,2024-04-10,2024-05-09,,,,1.12.4.8(ESP/FGD Control Room)
5478,Supply,SUP,2022-09-27,2025-12-17,,,,1.12(Electrical)
5479,JHS - 25 MVA Service Power Transformer,SUP,2023-04-05,2024-12-16,,,,1.12.5(Supply)
5480,Engineering,ENG,2023-04-05,2023-10-31,,,,1.12.5.1(JHS - 25 MVA Service Power Transformer)
5481,Manufacturing & testing,MFG,2023-08-03,2024-11-16,,,,1.12.5.1(JHS - 25 MVA Service Power Transformer)
5482," Packing, Dispatch",DIS,2024-07-20,2024-12-16,,,,1.12.5.1(JHS - 25 MVA Service Power Transformer)
5483,JHS - 16 MVA Unit Aux Transformer,SUP,2023-04-05,2024-12-16,,,,1.12.5(Supply)
5484,Engineering,ENG,2023-04-05,2023-10-31,,,,1.12.5.2(JHS - 16 MVA Unit Aux Transformer)
5485,Manufacturing & testing,MFG,2023-08-03,2024-11-16,,,,1.12.5.2(JHS - 16 MVA Unit Aux Transformer)
5486," Packing, Dispatch",DIS,2024-07-20,2024-12-16,,,,1.12.5.2(JHS - 16 MVA Unit Aux Transformer)
5487,JHS - 7.5  MVA Misc. Service Transformer,SUP,2022-09-27,2024-06-09,,,,1.12.5(Supply)
5488,Engineering,ENG,2022-09-27,2023-04-24,,,,1.12.5.3(JHS - 7.5  MVA Misc. Service Transformer)
5489,Manufacturing & testing,MFG,2023-01-25,2024-05-10,,,,1.12.5.3(JHS - 7.5  MVA Misc. Service Transformer)
5490," Packing, Dispatch",DIS,2024-01-12,2024-06-09,,,,1.12.5.3(JHS - 7.5  MVA Misc. Service Transformer)
5491,JHS - UNIT TRANSFORMER,SUP,2023-07-04,2025-03-24,,,,1.12.5(Supply)
5492,Engineering,ENG,2023-07-04,2024-01-29,,,,1.12.5.4(JHS - UNIT TRANSFORMER)
5493,Manufacturing & testing,MFG,2023-11-01,2024-10-25,,,,1.12.5.4(JHS - UNIT TRANSFORMER)
5494, Dispatch,DIS,2024-06-28,2024-12-24,,,,1.12.5.4(JHS - UNIT TRANSFORMER)
5495,RECEIPT,SUP,2024-09-26,2025-03-24,,,,1.12.5.4(JHS - UNIT TRANSFORMER)
5496,JHS - Dry Type Transformer (DTT),SUP,2023-08-03,2025-01-23,,,,1.12.5(Supply)
5497,Engineering,ENG,2023-08-03,2024-01-29,,,,1.12.5.5(JHS - Dry Type Transformer (DTT))
5498,Manufacturing & testing,MFG,2023-11-01,2024-08-26,,,,1.12.5.5(JHS - Dry Type Transformer (DTT))
5499, Dispatch,DIS,2024-04-29,2024-10-25,,,,1.12.5.5(JHS - Dry Type Transformer (DTT))
5500,RECEIPT,REC,2024-07-28,2025-01-23,,,,1.12.5.5(JHS - Dry Type Transformer (DTT))
5501,JHS - HVR,SUP,2023-10-02,2024-09-25,,,,1.12.5(Supply)
5502,Engineering,ENG,2023-10-02,2024-03-29,,,,1.12.5.6(JHS - HVR)
5503,Manufacturing & testing,MFG,2023-12-31,2024-08-26,,,,1.12.5.6(JHS - HVR)
5504, Dispatch,DIS,2024-04-29,2024-08-26,,,,1.12.5.6(JHS - HVR)
5505,RECEIPT,REC,2024-05-29,2024-09-25,,,,1.12.5.6(JHS - HVR)
5506,BPL - Generator Transformer,SUP,2023-03-11,2025-03-19,,,,1.12.5(Supply)
5507,"Engineering, INDENTING AND PROCUREMENT ",ENG,2023-03-11,2024-02-13,,,,1.12.5.7(BPL - Generator Transformer)
5508,Manufacturing & TESTING ,MFG,2024-02-14,2025-01-18,,,,1.12.5.7(BPL - Generator Transformer)
5509, Dispatch ,DIS,2025-01-19,2025-02-17,,,,1.12.5.7(BPL - Generator Transformer)
5510,RECEIPT AT SITE ,REC,2025-02-18,2025-03-19,,,,1.12.5.7(BPL - Generator Transformer)
5511,BPL - HT Switchgear,SUP,2024-09-25,2025-09-21,,,,1.12.5(Supply)
5512,"Engineering, INDENTING AND PROCUREMENT ",ENG,2024-09-25,2025-04-24,,,,1.12.5.8(BPL - HT Switchgear)
5513,Manufacturing & TESTING ,MFG,2025-04-25,2025-07-23,,,,1.12.5.8(BPL - HT Switchgear)
5514, Dispatch ,DIS,2025-07-24,2025-08-22,,,,1.12.5.8(BPL - HT Switchgear)
5515,RECEIPT AT SITE ,REC,2025-08-23,2025-09-21,,,,1.12.5.8(BPL - HT Switchgear)
5516,BPL - Station Transformer,SUP,2023-04-05,2024-12-16,,,,1.12.5(Supply)
5517,Engineering,ENG,2023-04-05,2023-10-31,,,,1.12.5.9(BPL - Station Transformer)
5518,Manufacturing & testing,MFG,2023-08-03,2024-11-16,,,,1.12.5.9(BPL - Station Transformer)
5519," Packing, Dispatch",DIS,2024-07-20,2024-12-16,,,,1.12.5.9(BPL - Station Transformer)
5520, BPL - GRP,SUP,2023-12-31,2025-08-16,,,,1.12.5(Supply)
5521,"Engineering, INDENTING AND PROCUREMENT ",ENG,2023-12-31,2024-12-29,,,,1.12.5.10( BPL - GRP)
5522,Manufacturing & TESTING ,MFG,2024-12-30,2025-06-17,,,,1.12.5.10( BPL - GRP)
5523, Dispatch ,DIS,2025-06-18,2025-07-17,,,,1.12.5.10( BPL - GRP)
5524,RECEIPT AT SITE ,REC,2025-07-18,2025-08-16,,,,1.12.5.10( BPL - GRP)
5525,RUDR - SPBD,SUP,2023-11-21,2025-07-07,,,,1.12.5(Supply)
5526,Main Supply,SUP,2023-11-21,2025-07-07,,,,1.12.5.11(RUDR - SPBD)
5527,Engineering & PROCUREMENT,ENG,2023-11-21,2024-11-19,,,,1.12.5.11.1(Main Supply)
5528,Manufacturing,MFG,2024-10-21,2025-04-18,,,,1.12.5.11.1(Main Supply)
5529,Dispatch,DIS,2025-02-18,2025-06-17,,,,1.12.5.11.1(Main Supply)
5530,RECEIPT AT SITE,REC,2025-03-10,2025-07-07,,,,1.12.5.11.1(Main Supply)
5531,BOIs-SPBD,SUP,2023-11-21,2025-07-07,,,,1.12.5.11(RUDR - SPBD)
5532,Engineering & PROCUREMENT,ENG,2023-11-21,2024-11-19,,,,1.12.5.11.2(BOIs-SPBD)
5533,Manufacturing,MFG,2024-10-21,2025-04-18,,,,1.12.5.11.2(BOIs-SPBD)
5534,Dispatch,DIS,2025-02-18,2025-06-17,,,,1.12.5.11.2(BOIs-SPBD)
5535,RECEIPT AT SITE,REC,2025-03-10,2025-07-07,,,,1.12.5.11.2(BOIs-SPBD)
5536,RUDR - IPBD,SUP,2023-12-31,2025-08-26,,,,1.12.5(Supply)
5537,Main Supply,SUP,2023-12-31,2025-08-16,,,,1.12.5.12(RUDR - IPBD)
5538,Engineering & PROCUREMENT,ENG,2023-12-31,2024-12-29,,,,1.12.5.12.1(Main Supply)
5539,Manufacturing,MFG,2024-11-30,2025-05-28,,,,1.12.5.12.1(Main Supply)
5540,Dispatch,DIS,2025-03-30,2025-07-27,,,,1.12.5.12.1(Main Supply)
5541,RECEIPT AT SITE,REC,2025-04-19,2025-08-16,,,,1.12.5.12.1(Main Supply)
5542,BOIs-IPBD,SUP,2024-01-10,2025-08-26,,,,1.12.5.12(RUDR - IPBD)
5543,Engineering & PROCUREMENT,ENG,2024-01-10,2025-01-08,,,,1.12.5.12.2(BOIs-IPBD)
5544,Manufacturing,MFG,2024-12-10,2025-06-07,,,,1.12.5.12.2(BOIs-IPBD)
5545,Dispatch,DIS,2025-04-09,2025-08-06,,,,1.12.5.12.2(BOIs-IPBD)
5546,RECEIPT AT SITE,REC,2025-04-29,2025-08-26,,,,1.12.5.12.2(BOIs-IPBD)
5547,SBU - LV Switchgear & L V Bus Duct,SUP,2023-08-23,2024-11-19,,,,1.12.5(Supply)
5548,Engineering & PROCUREMENT,ENG,2023-08-23,2024-05-18,,,,1.12.5.13(SBU - LV Switchgear & L V Bus Duct)
5549,Manufacturing,MFG,2023-12-06,2024-10-15,,,,1.12.5.13(SBU - LV Switchgear & L V Bus Duct)
5550,Dispatch,DIS,2023-12-21,2024-10-30,,,,1.12.5.13(SBU - LV Switchgear & L V Bus Duct)
5551,RECEIPT AT SITE,REC,2024-01-10,2024-11-19,,,,1.12.5.13(SBU - LV Switchgear & L V Bus Duct)
5552,BOI- PEM - DC BATTERY CHARGER ,SUP,2023-09-02,2024-11-04,,,,1.12.5(Supply)
5553,Ordering,ORD,2023-09-02,2023-11-30,,,,1.12.5.14(BOI- PEM - DC BATTERY CHARGER )
5554,Detailed Engineering,ENG,2023-12-01,2024-04-18,,,,1.12.5.14(BOI- PEM - DC BATTERY CHARGER )
5555,Manufacturing,MFG,2024-04-19,2024-10-05,,,,1.12.5.14(BOI- PEM - DC BATTERY CHARGER )
5556,Dispatch,DIS,2024-10-06,2024-11-04,,,,1.12.5.14(BOI- PEM - DC BATTERY CHARGER )
5557,BOI-PEM - CABLE TRAYS & ACC. ,SUP,2023-08-23,2024-09-15,,,,1.12.5(Supply)
5558,Ordering,ORD,2023-08-23,2023-11-20,,,,1.12.5.15(BOI-PEM - CABLE TRAYS & ACC. )
5559,Detailed Engineering,ENG,2023-11-21,2024-04-18,,,,1.12.5.15(BOI-PEM - CABLE TRAYS & ACC. )
5560,Manufacturing,MFG,2024-04-19,2024-08-16,,,,1.12.5.15(BOI-PEM - CABLE TRAYS & ACC. )
5561,Dispatch,DIS,2024-08-17,2024-09-15,,,,1.12.5.15(BOI-PEM - CABLE TRAYS & ACC. )
5562,"BOI-PEM - ABOVE GROUND EARTHING MATERIALS EXCEPT CHP, AHP & SWITCHYARD",SUP,2023-09-22,2024-09-15,,,,1.12.5(Supply)
5563,Ordering,ORD,2023-09-22,2023-12-20,,,,"1.12.5.16(BOI-PEM - ABOVE GROUND EARTHING MATERIALS EXCEPT CHP, AHP & SWITCHYARD)"
5564,Detailed Engineering,ENG,2023-12-21,2024-04-18,,,,"1.12.5.16(BOI-PEM - ABOVE GROUND EARTHING MATERIALS EXCEPT CHP, AHP & SWITCHYARD)"
5565,Manufacturing,MFG,2024-04-19,2024-08-16,,,,"1.12.5.16(BOI-PEM - ABOVE GROUND EARTHING MATERIALS EXCEPT CHP, AHP & SWITCHYARD)"
5566,Dispatch,DIS,2024-08-17,2024-09-15,,,,"1.12.5.16(BOI-PEM - ABOVE GROUND EARTHING MATERIALS EXCEPT CHP, AHP & SWITCHYARD)"
5567,BOI-PEM - CABLE TERM.& JOINT KITS ,SUP,2023-09-22,2025-01-03,,,,1.12.5(Supply)
5568,Ordering,ORD,2023-09-22,2023-12-20,,,,1.12.5.17(BOI-PEM - CABLE TERM.& JOINT KITS )
5569,Detailed Engineering,ENG,2023-12-21,2024-04-18,,,,1.12.5.17(BOI-PEM - CABLE TERM.& JOINT KITS )
5570,Manufacturing,MFG,2024-04-19,2024-12-04,,,,1.12.5.17(BOI-PEM - CABLE TERM.& JOINT KITS )
5571,Dispatch,DIS,2024-12-05,2025-01-03,,,,1.12.5.17(BOI-PEM - CABLE TERM.& JOINT KITS )
5572,BOI-PEM - TREFOIL CLAMPS ,SUP,2023-09-22,2025-01-03,,,,1.12.5(Supply)
5573,Ordering,ORD,2023-09-22,2023-12-20,,,,1.12.5.18(BOI-PEM - TREFOIL CLAMPS )
5574,Detailed Engineering,ENG,2023-12-21,2024-04-18,,,,1.12.5.18(BOI-PEM - TREFOIL CLAMPS )
5575,Manufacturing,MFG,2024-04-19,2024-12-04,,,,1.12.5.18(BOI-PEM - TREFOIL CLAMPS )
5576,Dispatch,DIS,2024-12-05,2025-01-03,,,,1.12.5.18(BOI-PEM - TREFOIL CLAMPS )
5577,BOI- PEM - LT PVC CONTROL CABLE,SUP,2023-09-22,2025-01-03,,,,1.12.5(Supply)
5578,Ordering,ORD,2023-09-22,2023-12-20,,,,1.12.5.19(BOI- PEM - LT PVC CONTROL CABLE)
5579,Detailed Engineering,ENG,2023-12-21,2024-04-18,,,,1.12.5.19(BOI- PEM - LT PVC CONTROL CABLE)
5580,Manufacturing,MFG,2024-04-19,2024-12-04,,,,1.12.5.19(BOI- PEM - LT PVC CONTROL CABLE)
5581,Dispatch,DIS,2024-12-05,2025-01-03,,,,1.12.5.19(BOI- PEM - LT PVC CONTROL CABLE)
5582,BOI-PEM - DC Lead Acid/Nicad Battery,SUP,2023-12-01,2024-11-24,,,,1.12.5(Supply)
5583,Ordering,ORD,2023-12-01,2024-02-28,,,,1.12.5.20(BOI-PEM - DC Lead Acid/Nicad Battery)
5584,Detailed Engineering,ENG,2024-02-29,2024-06-27,,,,1.12.5.20(BOI-PEM - DC Lead Acid/Nicad Battery)
5585,Manufacturing,MFG,2024-06-28,2024-10-25,,,,1.12.5.20(BOI-PEM - DC Lead Acid/Nicad Battery)
5586,Dispatch,DIS,2024-10-26,2024-11-24,,,,1.12.5.20(BOI-PEM - DC Lead Acid/Nicad Battery)
5587,BOI-PEM - Electrical Lab (Calibration and diagnostics),SUP,2023-09-22,2025-01-03,,,,1.12.5(Supply)
5588,Ordering,ORD,2023-09-22,2023-12-20,,,,1.12.5.21(BOI-PEM - Electrical Lab (Calibration and diagnostics))
5589,Detailed Engineering,ENG,2023-12-21,2024-04-18,,,,1.12.5.21(BOI-PEM - Electrical Lab (Calibration and diagnostics))
5590,Manufacturing,MFG,2024-04-19,2024-12-04,,,,1.12.5.21(BOI-PEM - Electrical Lab (Calibration and diagnostics))
5591,Dispatch,DIS,2024-12-05,2025-01-03,,,,1.12.5.21(BOI-PEM - Electrical Lab (Calibration and diagnostics))
5592,BOI-PEM - Electrical Lab (Metering and testing),SUP,2024-03-10,2025-08-01,,,,1.12.5(Supply)
5593,Ordering,ORD,2024-03-10,2024-06-27,,,,1.12.5.22(BOI-PEM - Electrical Lab (Metering and testing))
5594,Detailed Engineering,ENG,2024-06-28,2025-02-02,,,,1.12.5.22(BOI-PEM - Electrical Lab (Metering and testing))
5595,Manufacturing,MFG,2025-02-03,2025-07-02,,,,1.12.5.22(BOI-PEM - Electrical Lab (Metering and testing))
5596,Dispatch,DIS,2025-07-03,2025-08-01,,,,1.12.5.22(BOI-PEM - Electrical Lab (Metering and testing))
5597,BOI-PEM - FIRE SEALING SYSTEM ,SUP,2024-10-24,2025-12-17,,,,1.12.5(Supply)
5598,Ordering,ORD,2024-10-24,2025-01-21,,,,1.12.5.23(BOI-PEM - FIRE SEALING SYSTEM )
5599,Detailed Engineering,ENG,2025-01-22,2025-06-20,,,,1.12.5.23(BOI-PEM - FIRE SEALING SYSTEM )
5600,Manufacturing,MFG,2025-06-21,2025-11-17,,,,1.12.5.23(BOI-PEM - FIRE SEALING SYSTEM )
5601,Dispatch,DIS,2025-11-18,2025-12-17,,,,1.12.5.23(BOI-PEM - FIRE SEALING SYSTEM )
5602,BOI-PEM - CABLE TRAY SUPPORT SYSTEM - BOLTABLE,SUP,2023-11-01,2025-03-09,,,,1.12.5(Supply)
5603,Ordering,ORD,2023-11-01,2024-01-29,,,,1.12.5.24(BOI-PEM - CABLE TRAY SUPPORT SYSTEM - BOLTABLE)
5604,Detailed Engineering,ENG,2024-01-30,2024-06-27,,,,1.12.5.24(BOI-PEM - CABLE TRAY SUPPORT SYSTEM - BOLTABLE)
5605,Manufacturing,MFG,2024-06-28,2025-02-07,,,,1.12.5.24(BOI-PEM - CABLE TRAY SUPPORT SYSTEM - BOLTABLE)
5606,Dispatch,DIS,2025-02-08,2025-03-09,,,,1.12.5.24(BOI-PEM - CABLE TRAY SUPPORT SYSTEM - BOLTABLE)
5607,BOI-PEM - HT XLPE CABLES ,SUP,2023-08-23,2024-10-15,,,,1.12.5(Supply)
5608,Ordering,ORD,2023-08-23,2023-11-20,,,,1.12.5.25(BOI-PEM - HT XLPE CABLES )
5609,Detailed Engineering,ENG,2023-11-21,2024-04-18,,,,1.12.5.25(BOI-PEM - HT XLPE CABLES )
5610,Manufacturing,MFG,2024-04-19,2024-09-15,,,,1.12.5.25(BOI-PEM - HT XLPE CABLES )
5611,Dispatch,DIS,2024-09-16,2024-10-15,,,,1.12.5.25(BOI-PEM - HT XLPE CABLES )
5612,BOI- PEM - LT XLPE POWER CABLE ,SUP,2023-08-23,2024-10-15,,,,1.12.5(Supply)
5613,Ordering,ORD,2023-08-23,2023-11-20,,,,1.12.5.26(BOI- PEM - LT XLPE POWER CABLE )
5614,Detailed Engineering,ENG,2023-11-21,2024-04-18,,,,1.12.5.26(BOI- PEM - LT XLPE POWER CABLE )
5615,Manufacturing,MFG,2024-04-19,2024-09-15,,,,1.12.5.26(BOI- PEM - LT XLPE POWER CABLE )
5616,Dispatch,DIS,2024-09-16,2024-10-15,,,,1.12.5.26(BOI- PEM - LT XLPE POWER CABLE )
5617,BOI-PEM - SCREENED CONTROL CABLES ,SUP,2023-10-12,2024-12-04,,,,1.12.5(Supply)
5618,Ordering,ORD,2023-10-12,2024-01-09,,,,1.12.5.27(BOI-PEM - SCREENED CONTROL CABLES )
5619,Detailed Engineering,ENG,2024-01-10,2024-06-07,,,,1.12.5.27(BOI-PEM - SCREENED CONTROL CABLES )
5620,Manufacturing,MFG,2024-06-08,2024-11-04,,,,1.12.5.27(BOI-PEM - SCREENED CONTROL CABLES )
5621,Dispatch,DIS,2024-11-05,2024-12-04,,,,1.12.5.27(BOI-PEM - SCREENED CONTROL CABLES )
5622,BOI-PEM - MS ROD FOR BELOW GROUND EARTHING ,SUP,2023-10-12,2024-12-04,,,,1.12.5(Supply)
5623,Ordering,ORD,2023-10-12,2024-01-09,,,,1.12.5.28(BOI-PEM - MS ROD FOR BELOW GROUND EARTHING )
5624,Detailed Engineering,ENG,2024-01-10,2024-06-07,,,,1.12.5.28(BOI-PEM - MS ROD FOR BELOW GROUND EARTHING )
5625,Manufacturing,MFG,2024-06-08,2024-11-04,,,,1.12.5.28(BOI-PEM - MS ROD FOR BELOW GROUND EARTHING )
5626,Dispatch,DIS,2024-11-05,2024-12-04,,,,1.12.5.28(BOI-PEM - MS ROD FOR BELOW GROUND EARTHING )
5627,BOI-PEM - NEUTRAL GROUNDING RESISTOR ,SUP,2023-09-14,2024-11-06,,,,1.12.5(Supply)
5628,Ordering,ORD,2023-09-14,2023-12-12,,,,1.12.5.29(BOI-PEM - NEUTRAL GROUNDING RESISTOR )
5629,Detailed Engineering,ENG,2023-12-13,2024-05-10,,,,1.12.5.29(BOI-PEM - NEUTRAL GROUNDING RESISTOR )
5630,Manufacturing,MFG,2024-05-11,2024-10-07,,,,1.12.5.29(BOI-PEM - NEUTRAL GROUNDING RESISTOR )
5631,Dispatch,DIS,2024-10-08,2024-11-06,,,,1.12.5.29(BOI-PEM - NEUTRAL GROUNDING RESISTOR )
5632,BOI-PEM - OIL FILLED SERVICE TRANSFORMER ,SUP,2023-09-22,2024-11-14,,,,1.12.5(Supply)
5633,Ordering,ORD,2023-09-22,2023-12-20,,,,1.12.5.30(BOI-PEM - OIL FILLED SERVICE TRANSFORMER )
5634,Detailed Engineering,ENG,2023-12-21,2024-05-18,,,,1.12.5.30(BOI-PEM - OIL FILLED SERVICE TRANSFORMER )
5635,Manufacturing,MFG,2024-05-19,2024-10-15,,,,1.12.5.30(BOI-PEM - OIL FILLED SERVICE TRANSFORMER )
5636,Dispatch,DIS,2024-10-16,2024-11-14,,,,1.12.5.30(BOI-PEM - OIL FILLED SERVICE TRANSFORMER )
5637,BOI-PEM - STATION LIGHTING SYSTEM ,SUP,2023-08-23,2024-12-04,,,,1.12.5(Supply)
5638,"Lighting Poles and Masts,",ORD,2023-08-23,2024-10-15,,,,1.12.5.31(BOI-PEM - STATION LIGHTING SYSTEM )
5639,Ordering,OTH,2023-08-23,2023-11-20,,,,"1.12.5.31.1(Lighting Poles and Masts,)"
5640,Detailed Engineering,ENG,2023-11-21,2024-04-18,,,,"1.12.5.31.1(Lighting Poles and Masts,)"
5641,Manufacturing,MFG,2024-04-19,2024-09-15,,,,"1.12.5.31.1(Lighting Poles and Masts,)"
5642,Dispatch,DIS,2024-09-16,2024-10-15,,,,"1.12.5.31.1(Lighting Poles and Masts,)"
5643,Lighting Distribution Boards,SUP,2023-08-23,2024-10-15,,,,1.12.5.31(BOI-PEM - STATION LIGHTING SYSTEM )
5644,Ordering,ORD,2023-08-23,2023-11-20,,,,1.12.5.31.2(Lighting Distribution Boards)
5645,Detailed Engineering,ENG,2023-11-21,2024-04-18,,,,1.12.5.31.2(Lighting Distribution Boards)
5646,Manufacturing,MFG,2024-04-19,2024-09-15,,,,1.12.5.31.2(Lighting Distribution Boards)
5647,Dispatch,DIS,2024-09-16,2024-10-15,,,,1.12.5.31.2(Lighting Distribution Boards)
5648,"Lighting Fixtures, Lamps & Misc. Items.",SUP,2023-08-23,2024-10-15,,,,1.12.5.31(BOI-PEM - STATION LIGHTING SYSTEM )
5649,Ordering,ORD,2023-08-23,2023-11-20,,,,"1.12.5.31.3(Lighting Fixtures, Lamps & Misc. Items.)"
5650,Detailed Engineering,ENG,2023-11-21,2024-04-18,,,,"1.12.5.31.3(Lighting Fixtures, Lamps & Misc. Items.)"
5651,Manufacturing,MFG,2024-04-19,2024-09-15,,,,"1.12.5.31.3(Lighting Fixtures, Lamps & Misc. Items.)"
5652,Dispatch,DIS,2024-09-16,2024-10-15,,,,"1.12.5.31.3(Lighting Fixtures, Lamps & Misc. Items.)"
5653,Lighting PVC wires,SUP,2023-10-12,2024-12-04,,,,1.12.5.31(BOI-PEM - STATION LIGHTING SYSTEM )
5654,Ordering,ORD,2023-10-12,2024-01-09,,,,1.12.5.31.4(Lighting PVC wires)
5655,Detailed Engineering,ENG,2024-01-10,2024-06-07,,,,1.12.5.31.4(Lighting PVC wires)
5656,Manufacturing,MFG,2024-06-08,2024-11-04,,,,1.12.5.31.4(Lighting PVC wires)
5657,Dispatch,DIS,2024-11-05,2024-12-04,,,,1.12.5.31.4(Lighting PVC wires)
5658,Lighting Rigid Steel Conduits,SUP,2023-10-12,2024-12-04,,,,1.12.5.31(BOI-PEM - STATION LIGHTING SYSTEM )
5659,Ordering,ORD,2023-10-12,2024-01-09,,,,1.12.5.31.5(Lighting Rigid Steel Conduits)
5660,Detailed Engineering,ENG,2024-01-10,2024-06-07,,,,1.12.5.31.5(Lighting Rigid Steel Conduits)
5661,Manufacturing,MFG,2024-06-08,2024-11-04,,,,1.12.5.31.5(Lighting Rigid Steel Conduits)
5662,Dispatch,DIS,2024-11-05,2024-12-04,,,,1.12.5.31.5(Lighting Rigid Steel Conduits)
5663,Erection,ERC,2023-04-10,2026-05-07,,,,1.12(Electrical)
5664,"Station Transformer, Service power transformer, Unit Transformer & Misc. Service Transformer",ERC,2025-02-21,2025-06-19,,,,1.12.6(Erection)
5665,"Placement of Main tank, erection of headers pipes, radiator bank, conservator",ERC,2025-02-21,2025-04-11,,,,"1.12.6.1(Station Transformer, Service power transformer, Unit Transformer & Misc. Service Transformer)"
5666,Pre-commissioning/Protection tests and Relays Testing.,COM,2025-05-02,2025-05-22,,,,"1.12.6.1(Station Transformer, Service power transformer, Unit Transformer & Misc. Service Transformer)"
5667,Statutory Clearance.,ERC,2025-05-23,2025-05-24,,,,"1.12.6.1(Station Transformer, Service power transformer, Unit Transformer & Misc. Service Transformer)"
5668,Transformer Charging.,ERC,2025-06-19,2025-06-19,,,,"1.12.6.1(Station Transformer, Service power transformer, Unit Transformer & Misc. Service Transformer)"
5669,"SP BUS DUCTS OF STATION BOARDS (0BA,0BB,0CC&0CB) AND RELATED TIE'S FOR UNIT BOARDS (6BA,6BB)",ERC,2025-04-23,2025-06-18,,,,1.12.6(Erection)
5670,Erection of support structure,ERC,2025-04-23,2025-05-07,,,,"1.12.6.2(SP BUS DUCTS OF STATION BOARDS (0BA,0BB,0CC&0CB) AND RELATED TIE'S FOR UNIT BOARDS (6BA,6BB))"
5671,Erection of SPBD from ST Transformer to Station Boards 11kV Boards (0BA&0BB),ERC,2025-05-08,2025-06-02,,,,"1.12.6.2(SP BUS DUCTS OF STATION BOARDS (0BA,0BB,0CC&0CB) AND RELATED TIE'S FOR UNIT BOARDS (6BA,6BB))"
5672,Tie from Station Boards to Unit Boards (11 KV) (6BA & 6BB) and to Station Boards (11 KV) (0CC& 0CD),ERC,2025-06-03,2025-06-10,,,,"1.12.6.2(SP BUS DUCTS OF STATION BOARDS (0BA,0BB,0CC&0CB) AND RELATED TIE'S FOR UNIT BOARDS (6BA,6BB))"
5673,Hi-pot & CRM of Bus duct,ERC,2025-06-11,2025-06-14,,,,"1.12.6.2(SP BUS DUCTS OF STATION BOARDS (0BA,0BB,0CC&0CB) AND RELATED TIE'S FOR UNIT BOARDS (6BA,6BB))"
5674,SBD of Station and Related TIE's ready for charging,ERC,2025-06-15,2025-06-18,,,,"1.12.6.2(SP BUS DUCTS OF STATION BOARDS (0BA,0BB,0CC&0CB) AND RELATED TIE'S FOR UNIT BOARDS (6BA,6BB))"
5675,HT SWITCH GEARS (Station and Unit Boards),ERC,2025-04-07,2025-08-18,,,,1.12.6(Erection)
5676,"Placement of panels, coupling, bus bar joints and released for cabling",ERC,2025-04-07,2025-05-06,,,,1.12.6.3(HT SWITCH GEARS (Station and Unit Boards))
5677,"Control bus, interpanel wiring",ERC,2025-05-07,2025-05-24,,,,1.12.6.3(HT SWITCH GEARS (Station and Unit Boards))
5678,contact resistance tests for bus bar joints,ERC,2025-05-25,2025-06-05,,,,1.12.6.3(HT SWITCH GEARS (Station and Unit Boards))
5679,HV test of power bus,ERC,2025-06-06,2025-06-09,,,,1.12.6.3(HT SWITCH GEARS (Station and Unit Boards))
5680,CT/PT/Relay testing,ERC,2025-06-10,2025-07-14,,,,1.12.6.3(HT SWITCH GEARS (Station and Unit Boards))
5681,Breaker commissioning checks,COM,2025-07-15,2025-08-13,,,,1.12.6.3(HT SWITCH GEARS (Station and Unit Boards))
5682,Switchgear Charging,ERC,2025-08-14,2025-08-18,,,,1.12.6.3(HT SWITCH GEARS (Station and Unit Boards))
5683,SERVICE & UNIT AUXILLARY TRANSFORMERS,ERC,2025-05-12,2025-08-27,,,,1.12.6(Erection)
5684,"Placement of Main intercanal of headers pipes, radiator bank, conservator",ERC,2025-05-12,2025-05-19,,,,1.12.6.4(SERVICE & UNIT AUXILLARY TRANSFORMERS)
5685,"Installation of turret, bushing",ERC,2025-05-20,2025-05-23,,,,1.12.6.4(SERVICE & UNIT AUXILLARY TRANSFORMERS)
5686,Vacuum Pulling and N2 Filling.,ERC,2025-05-24,2025-05-27,,,,1.12.6.4(SERVICE & UNIT AUXILLARY TRANSFORMERS)
5687,"Oil filteration, filling and dry out",ERC,2025-05-28,2025-06-02,,,,1.12.6.4(SERVICE & UNIT AUXILLARY TRANSFORMERS)
5688,"Power and control cabling ,cabling between marshalling box and transformer/fans",ERC,2025-06-03,2025-06-08,,,,1.12.6.4(SERVICE & UNIT AUXILLARY TRANSFORMERS)
5689,LV Testing of transformer.,ERC,2025-08-19,2025-08-20,,,,1.12.6.4(SERVICE & UNIT AUXILLARY TRANSFORMERS)
5690,Pre-commissioning/Protection tests and Relays Testing.,COM,2025-08-21,2025-08-23,,,,1.12.6.4(SERVICE & UNIT AUXILLARY TRANSFORMERS)
5691,Statutory Clearance.,ERC,2025-08-24,2025-08-25,,,,1.12.6.4(SERVICE & UNIT AUXILLARY TRANSFORMERS)
5692,Transformer Charging.,ERC,2025-08-26,2025-08-27,,,,1.12.6.4(SERVICE & UNIT AUXILLARY TRANSFORMERS)
5693,"HT SWITCH GEARS (Unit Auxiliary Boards and Station Auxiliary Boards (6CA, 0CA) 3.5 M EL",ERC,2025-04-07,2025-08-29,,,,1.12.6(Erection)
5694,"Placement of panels, coupling, bus bar joints and released for cabling",ERC,2025-04-07,2025-04-16,,,,"1.12.6.5(HT SWITCH GEARS (Unit Auxiliary Boards and Station Auxiliary Boards (6CA, 0CA) 3.5 M EL)"
5695,"Control bus, interpanel wiring",ERC,2025-04-17,2025-04-24,,,,"1.12.6.5(HT SWITCH GEARS (Unit Auxiliary Boards and Station Auxiliary Boards (6CA, 0CA) 3.5 M EL)"
5696,contact resistance tests for bus bar joints,ERC,2025-04-25,2025-04-28,,,,"1.12.6.5(HT SWITCH GEARS (Unit Auxiliary Boards and Station Auxiliary Boards (6CA, 0CA) 3.5 M EL)"
5697,HV test of power bus,ERC,2025-04-29,2025-04-30,,,,"1.12.6.5(HT SWITCH GEARS (Unit Auxiliary Boards and Station Auxiliary Boards (6CA, 0CA) 3.5 M EL)"
5698,CT/PT/Relay testing .,ERC,2025-05-01,2025-05-10,,,,"1.12.6.5(HT SWITCH GEARS (Unit Auxiliary Boards and Station Auxiliary Boards (6CA, 0CA) 3.5 M EL)"
5699,Breaker commissioning checks,COM,2025-05-11,2025-05-20,,,,"1.12.6.5(HT SWITCH GEARS (Unit Auxiliary Boards and Station Auxiliary Boards (6CA, 0CA) 3.5 M EL)"
5700,Switchgear Charging.,ERC,2025-08-28,2025-08-29,,,,"1.12.6.5(HT SWITCH GEARS (Unit Auxiliary Boards and Station Auxiliary Boards (6CA, 0CA) 3.5 M EL)"
5701,"LT SWITCHGEAR MCC,LT Transformers and LT Bus Ducts., LT Transformers and LT Bus Ducts.",ERC,2025-03-31,2025-11-08,,,,1.12.6(Erection)
5702,"Erection of Boiler MCC,LT Transformers ,LT Bus Ducts and LV Testing of Transformer and CT/PT/Relays/breaker Testing.",ERC,2025-03-31,2025-04-19,,,,"1.12.6.6(LT SWITCHGEAR MCC,LT Transformers and LT Bus Ducts., LT Transformers and LT Bus Ducts.)"
5703,"Erection of Turbine MCC,LT Transformers ,LT Bus Ducts and LV Testing of Transformer and CT/PT/Relays/breaker Testing.",ERC,2025-04-20,2025-05-09,,,,"1.12.6.6(LT SWITCHGEAR MCC,LT Transformers and LT Bus Ducts., LT Transformers and LT Bus Ducts.)"
5704,"Erection of Station Switch Gear PMCC/MCC,LT Transformers, LT Bus Ducts and LV Testing of Transformer and CT/PT/Relays/breaker Testing.",ERC,2025-05-10,2025-05-29,,,,"1.12.6.6(LT SWITCHGEAR MCC,LT Transformers and LT Bus Ducts., LT Transformers and LT Bus Ducts.)"
5705,"Erection of Unit Switch Gear PMCC/MCC,LT Transformers Bus Ducts and LV Testing of Transformer and CT/PT/Relays/breaker Testing.",ERC,2025-05-30,2025-06-18,,,,"1.12.6.6(LT SWITCHGEAR MCC,LT Transformers and LT Bus Ducts., LT Transformers and LT Bus Ducts.)"
5706,"Erection of Boiler Valve MCC,LT Transformers Bus Ducts and LV Testing of Transformer and CT/PT/Relays/breaker Testing.",ERC,2025-06-19,2025-07-08,,,,"1.12.6.6(LT SWITCHGEAR MCC,LT Transformers and LT Bus Ducts., LT Transformers and LT Bus Ducts.)"
5707,"Erection of Turbine Valve MCC,LT Transformers Bus Ducts and LV Testing of Transformer and CT/PT/Relays/breaker Testing.",ERC,2025-07-09,2025-07-28,,,,"1.12.6.6(LT SWITCHGEAR MCC,LT Transformers and LT Bus Ducts., LT Transformers and LT Bus Ducts.)"
5708,"Erection of FOPH MCC,LT Transformers Bus Ducts and LV Testing of Transformer and CT/PT/Relays/breaker Testing.",ERC,2025-07-29,2025-08-17,,,,"1.12.6.6(LT SWITCHGEAR MCC,LT Transformers and LT Bus Ducts., LT Transformers and LT Bus Ducts.)"
5709,"Erection of CWPH MCC,LT Transformers ,LT Bus Ducts and LV Testing of Transformer and CT/PT/Relays/breaker Testing.",ERC,2025-08-18,2025-09-06,,,,"1.12.6.6(LT SWITCHGEAR MCC,LT Transformers and LT Bus Ducts., LT Transformers and LT Bus Ducts.)"
5710,"Erection of Emergency MCC,LT Transformers ,LT Bus Ducts and LV Testing of Transformer and CT/PT/Relays Testing.",ERC,2025-09-07,2025-09-26,,,,"1.12.6.6(LT SWITCHGEAR MCC,LT Transformers and LT Bus Ducts., LT Transformers and LT Bus Ducts.)"
5711,"Erection of Soot Blower MCC,LT Transformers Bus Ducts and LV Testing of Transformer and CT/PT/Relays/breaker Testing.",ERC,2025-09-27,2025-10-16,,,,"1.12.6.6(LT SWITCHGEAR MCC,LT Transformers and LT Bus Ducts., LT Transformers and LT Bus Ducts.)"
5712,Other MCC,ERC,2025-09-27,2025-10-16,,,,"1.12.6.6(LT SWITCHGEAR MCC,LT Transformers and LT Bus Ducts., LT Transformers and LT Bus Ducts.)"
5713,IR checking and Interlock Trials of Swgrs.,ERC,2025-10-17,2025-10-28,,,,"1.12.6.6(LT SWITCHGEAR MCC,LT Transformers and LT Bus Ducts., LT Transformers and LT Bus Ducts.)"
5714,"LT SWITCHGEAR MCC,LT Transformers and LT Bus Ducts:LT Switchgear Charging.",ERC,2025-10-29,2025-11-08,,,,"1.12.6.6(LT SWITCHGEAR MCC,LT Transformers and LT Bus Ducts., LT Transformers and LT Bus Ducts.)"
5715,220 V MAIN PLANT DC BATTERY SYSTEM,ERC,2025-03-13,2025-09-21,,,,1.12.6(Erection)
5716,Placement of batteries,ERC,2025-03-13,2025-04-26,,,,1.12.6.7(220 V MAIN PLANT DC BATTERY SYSTEM)
5717,Placement of Battery Charger Panel & its DCDB,ERC,2025-04-27,2025-05-06,,,,1.12.6.7(220 V MAIN PLANT DC BATTERY SYSTEM)
5718,Cabling and connections,ERC,2025-05-07,2025-05-16,,,,1.12.6.7(220 V MAIN PLANT DC BATTERY SYSTEM)
5719,Connections with the DC main bus,ERC,2025-05-17,2025-05-26,,,,1.12.6.7(220 V MAIN PLANT DC BATTERY SYSTEM)
5720,Charging and Dis-Charging.,ERC,2025-08-30,2025-09-08,,,,1.12.6.7(220 V MAIN PLANT DC BATTERY SYSTEM)
5721,Main plant battery system ready for Re-Charging,ERC,2025-09-09,2025-09-20,,,,1.12.6.7(220 V MAIN PLANT DC BATTERY SYSTEM)
5722,Battery system commissioned,COM,2025-09-21,2025-09-21,,,,1.12.6.7(220 V MAIN PLANT DC BATTERY SYSTEM)
5723,HT/LT Cabling and Associated Tray Work for BLU,ERC,2025-09-14,2025-12-12,,,,1.12.6(Erection)
5724,Power and Control Cabling for Valves and Dampers for BLU,ERC,2025-09-14,2025-12-12,,,,1.12.6(Erection)
5725,Unit AUX Transformer,ERC,2025-04-22,2025-08-02,,,,1.12.6(Erection)
5726,"Placement of Main Ducts' of headers pipes, radiator bank, conservator",ERC,2025-04-22,2025-05-11,,,,1.12.6.10(Unit AUX Transformer)
5727,"Installation of turret, bushing",ERC,2025-05-12,2025-05-18,,,,1.12.6.10(Unit AUX Transformer)
5728,Vacuum Pulling and N2 Filling.,ERC,2025-05-19,2025-05-23,,,,1.12.6.10(Unit AUX Transformer)
5729,Oil Vacuum and dry out,ERC,2025-05-24,2025-06-01,,,,1.12.6.10(Unit AUX Transformer)
5730,"Power and control cabling ,cabling between marshalling box and transformer/fans",ERC,2025-06-02,2025-06-10,,,,1.12.6.10(Unit AUX Transformer)
5731,"LV Testing of transformer, SFRA, Tan Delta, OLTC, NGR etc.",ERC,2025-06-11,2025-06-17,,,,1.12.6.10(Unit AUX Transformer)
5732,Pre-commissioning/Protection tests and Relays Testing.,COM,2025-07-08,2025-07-27,,,,1.12.6.10(Unit AUX Transformer)
5733,Statutory Clearance.,ERC,2025-07-28,2025-08-01,,,,1.12.6.10(Unit AUX Transformer)
5734,Transformer Charging.,ERC,2025-08-02,2025-08-02,,,,1.12.6.10(Unit AUX Transformer)
5735,GENERATOR TRANSFORME (R/Y/B),ERC,2025-04-19,2026-04-20,,,,1.12.6(Erection)
5736,"Placement of Main tank ,Erection of headers pipes, radiator bank, conservator",ERC,2025-04-19,2025-07-17,,,,1.12.6.11(GENERATOR TRANSFORME (R/Y/B))
5737,"Installation of turret, bushing etc",ERC,2025-07-23,2025-08-21,,,,1.12.6.11(GENERATOR TRANSFORME (R/Y/B))
5738,Vacuum Pulling and N2 Filling.,ERC,2025-08-29,2025-09-27,,,,1.12.6.11(GENERATOR TRANSFORME (R/Y/B))
5739,"Oil filtration, filling and dry out",ERC,2025-10-03,2025-11-01,,,,1.12.6.11(GENERATOR TRANSFORME (R/Y/B))
5740,Cabling between marshalling box and transformer/fans& Pumps,ERC,2025-11-07,2025-11-21,,,,1.12.6.11(GENERATOR TRANSFORME (R/Y/B))
5741,"LV Testing of transformer, SFRA, Tan Delta etc.",ERC,2025-11-22,2025-12-16,,,,1.12.6.11(GENERATOR TRANSFORME (R/Y/B))
5742,Pre-commissioning/Protection tests and Relays Testing.,COM,2026-01-16,2026-03-16,,,,1.12.6.11(GENERATOR TRANSFORME (R/Y/B))
5743,Statutory Clearance.,ERC,2026-03-17,2026-04-05,,,,1.12.6.11(GENERATOR TRANSFORME (R/Y/B))
5744,Transformer Ready for charging,ERC,2026-04-06,2026-04-20,,,,1.12.6.11(GENERATOR TRANSFORME (R/Y/B))
5745,UNIT TRANSFORMERS,ERC,2024-12-25,2026-04-24,,,,1.12.6(Erection)
5746,"Placement of Main tank ,Erection of headers pipes, radiator bank, conservator",ERC,2024-12-25,2025-01-07,,,,1.12.6.12(UNIT TRANSFORMERS)
5747,"Installation of turret, bushing etc",ERC,2025-01-08,2025-01-15,,,,1.12.6.12(UNIT TRANSFORMERS)
5748,Vacuum Pulling and N2 Filling.,ERC,2025-10-03,2025-10-08,,,,1.12.6.12(UNIT TRANSFORMERS)
5749,"Oil filtration, filling and dry out",ERC,2025-11-07,2025-11-14,,,,1.12.6.12(UNIT TRANSFORMERS)
5750,"Power and control cabling ,cabling between marshalling box and transformer/fans",ERC,2025-11-15,2025-11-20,,,,1.12.6.12(UNIT TRANSFORMERS)
5751,"LV Testing of transformer, OLTC, NGR etc.",ERC,2025-11-21,2025-11-24,,,,1.12.6.12(UNIT TRANSFORMERS)
5752,Pre-commissioning/Protection tests and Relays Testing.,COM,2025-11-25,2025-12-04,,,,1.12.6.12(UNIT TRANSFORMERS)
5753,BTS readiness,ERC,2025-11-25,2025-12-04,,,,1.12.6.12(UNIT TRANSFORMERS)
5754,Statutory Clearance.,ERC,2026-04-06,2026-04-08,,,,1.12.6.12(UNIT TRANSFORMERS)
5755,Readiness for Transformer charging,ERC,2026-04-24,2026-04-24,,,,1.12.6.12(UNIT TRANSFORMERS)
5756,STATION TRANSFORMERS,ERC,2024-12-17,2025-04-27,,,,1.12.6(Erection)
5757,"Placement of Main tank ,Erection of headers pipes, radiator bank, conservator",ERC,2024-12-17,2024-12-30,,,,1.12.6.13(STATION TRANSFORMERS)
5758,"Installation of turret, bushing etc",ERC,2024-12-31,2025-01-07,,,,1.12.6.13(STATION TRANSFORMERS)
5759,Vacuum Pulling and N2 Filling.,ERC,2025-01-08,2025-01-13,,,,1.12.6.13(STATION TRANSFORMERS)
5760,"Oil filtration, filling and dry out",ERC,2025-01-14,2025-01-21,,,,1.12.6.13(STATION TRANSFORMERS)
5761,"Power and control cabling ,cabling between marshalling box and transformer/fans",ERC,2025-01-22,2025-01-27,,,,1.12.6.13(STATION TRANSFORMERS)
5762,"LV Testing of transformer, OLTC, NGR etc.",ERC,2025-01-28,2025-01-31,,,,1.12.6.13(STATION TRANSFORMERS)
5763,Pre-commissioning/Protection tests and Relays Testing.,COM,2025-02-01,2025-02-10,,,,1.12.6.13(STATION TRANSFORMERS)
5764,BTS readiness,ERC,2025-02-01,2025-02-10,,,,1.12.6.13(STATION TRANSFORMERS)
5765,Statutory Clearance.,ERC,2025-02-11,2025-02-13,,,,1.12.6.13(STATION TRANSFORMERS)
5766,Readiness for Transformer charging,ERC,2025-04-27,2025-04-27,,,,1.12.6.13(STATION TRANSFORMERS)
5767,SP BUS DUCTS OF UNIT BOARDS AND RELATED TIE'S,ERC,2025-05-03,2025-06-07,,,,1.12.6(Erection)
5768,"Erection of support structure,",ERC,2025-05-03,2025-05-12,,,,1.12.6.14(SP BUS DUCTS OF UNIT BOARDS AND RELATED TIE'S)
5769,Erection of SPBD from UT Transformer to Unit Boards11 kV Boards,ERC,2025-05-13,2025-05-28,,,,1.12.6.14(SP BUS DUCTS OF UNIT BOARDS AND RELATED TIE'S)
5770,Connection of Tie from Station Boards to Unit Boards (11kV).,ERC,2025-05-29,2025-06-03,,,,1.12.6.14(SP BUS DUCTS OF UNIT BOARDS AND RELATED TIE'S)
5771,Hi-pot & CRM of Bus duct,ERC,2025-06-04,2025-06-05,,,,1.12.6.14(SP BUS DUCTS OF UNIT BOARDS AND RELATED TIE'S)
5772,SPBD of Unit and Related TIE's ready for charging,ERC,2025-06-06,2025-06-07,,,,1.12.6.14(SP BUS DUCTS OF UNIT BOARDS AND RELATED TIE'S)
5773,IP BUS DUCTS,ERC,2025-07-18,2025-11-25,,,,1.12.6(Erection)
5774,IP BUS DUCTS: erection and foundation parts and supports for ducts,ERC,2025-07-18,2025-08-16,,,,1.12.6.15(IP BUS DUCTS)
5775,IP BUS DUCTS: Erection & Welding of conductor and duct enclosures for the main run,ERC,2025-08-17,2025-10-15,,,,1.12.6.15(IP BUS DUCTS)
5776,IP BUS Clearance & Welding of conductor and duct enclosures for the tap off run,ERC,2025-10-16,2025-11-04,,,,1.12.6.15(IP BUS DUCTS)
5777,IP BUS Clearance of NGT and LAVT .,ERC,2025-11-05,2025-11-14,,,,1.12.6.15(IP BUS DUCTS)
5778,"IP BUS DUCTS: Testing of NGT, LAVT.",ERC,2025-11-15,2025-11-20,,,,1.12.6.15(IP BUS DUCTS)
5779,IP BUS DUCTS: Hi-Pot test & CRM of IPBD,ERC,2025-11-21,2025-11-22,,,,1.12.6.15(IP BUS DUCTS)
5780,IP BUS DUCTS:IPBD ready for charging,ERC,2025-11-23,2025-11-25,,,,1.12.6.15(IP BUS DUCTS)
5781,"HT/LT Cabling & associated Tray, other Works for Rolling and Synchronisation.",ERC,2025-12-13,2026-04-11,,,,1.12.6(Erection)
5782,ESP Charging,ERC,2024-08-18,2025-12-20,,,,1.12.6(Erection)
5783,Erection and alignment of EC Panels and LTMSB and ACP Panels,ERC,2024-08-18,2024-09-16,,,,1.12.6.17(ESP Charging)
5784,"Checking of control bus, interpanel wiring",ERC,2024-09-17,2024-09-26,,,,1.12.6.17(ESP Charging)
5785,Contact resistance tests for bus bar joints,ERC,2024-09-27,2024-10-04,,,,1.12.6.17(ESP Charging)
5786,HT SWITCH GEARS:CT/PT/Relay testing after readiness of DC Supply,ERC,2024-10-05,2024-10-24,,,,1.12.6.17(ESP Charging)
5787,Testing of HVR's of ESP,ERC,2025-10-04,2025-10-19,,,,1.12.6.17(ESP Charging)
5788,Cable Laying and Termination of Cables for ESP,ERC,2025-10-20,2025-10-29,,,,1.12.6.17(ESP Charging)
5789,"Charging of LTMSB,ACP and EC Panels",ERC,2025-10-30,2025-11-04,,,,1.12.6.17(ESP Charging)
5790,"Dummy Load , SCC and OCC of Panels",ERC,2025-11-05,2025-11-18,,,,1.12.6.17(ESP Charging)
5791,Field Charging and Charging of heaters and operation or CERM and EERM.,ERC,2025-12-13,2025-12-20,,,,1.12.6.17(ESP Charging)
5792,"HT SWITCH GEARS FOR AHP,CHP, Fire along with Associated Auxiliary Transformers.",ERC,2025-01-30,2025-08-05,,,,1.12.6(Erection)
5793,"Placement of panels, coupling, bus bar joints and released for cabling",ERC,2025-01-30,2025-03-03,,,,"1.12.6.18(HT SWITCH GEARS FOR AHP,CHP, Fire along with Associated Auxiliary Transformers.)"
5794,"control bus, interpanel wiring",ERC,2025-03-04,2025-03-24,,,,"1.12.6.18(HT SWITCH GEARS FOR AHP,CHP, Fire along with Associated Auxiliary Transformers.)"
5795,contact resistance tests for bus bar joints,ERC,2025-03-25,2025-04-02,,,,"1.12.6.18(HT SWITCH GEARS FOR AHP,CHP, Fire along with Associated Auxiliary Transformers.)"
5796,HV test of power bus,ERC,2025-04-03,2025-04-08,,,,"1.12.6.18(HT SWITCH GEARS FOR AHP,CHP, Fire along with Associated Auxiliary Transformers.)"
5797,CT/PT/ Relay testing and LV Testing of Transformers.,ERC,2025-04-09,2025-04-29,,,,"1.12.6.18(HT SWITCH GEARS FOR AHP,CHP, Fire along with Associated Auxiliary Transformers.)"
5798,Breaker commissioning checks and Readiness of Transformers.,COM,2025-04-30,2025-05-20,,,,"1.12.6.18(HT SWITCH GEARS FOR AHP,CHP, Fire along with Associated Auxiliary Transformers.)"
5799,Switchgear energized,ERC,2025-08-03,2025-08-05,,,,"1.12.6.18(HT SWITCH GEARS FOR AHP,CHP, Fire along with Associated Auxiliary Transformers.)"
5800,Readiness of STRP,ERC,2025-03-16,2025-05-14,,,,1.12.6(Erection)
5801,"Erection and Commissioning of GRP, ECP, DATA concentrator panel & DAVR",COM,2025-08-17,2025-12-04,,,,1.12.6(Erection)
5802,Erection and Commissioning of DAVR,COM,2025-10-02,2026-04-19,,,,1.12.6(Erection)
5803,"HT/LT Cabling & associated Tray , other Works for Coal Firing and AHP & CHP",ERC,2025-08-06,2026-05-07,,,,1.12.6(Erection)
5804,"Completion of BOP Packages viz LT SWGRS,FIRE SYSTEMS AND FIRE SEALING.",ERC,2025-12-18,2026-03-01,,,,1.12.6(Erection)
5805,Erection of Below Ground earthing,ERC,2023-04-10,2025-08-21,,,,1.12.6(Erection)
5806,Erection Above Ground earthing,ERC,2025-03-23,2025-11-25,,,,1.12.6(Erection)
5807,Readiness of Trial Run COMPLETION including EMS,ERC,2026-03-02,2026-03-11,,,,1.12.6(Erection)
5808,Completion of Station Lighting Package,ERC,2024-04-19,2024-12-25,,,,1.12.6(Erection)
5809,Control & Instrumentation,ERC,2023-04-15,2026-05-15,,,,"1(EPC Package for Talcher Thermal Power Project, Stage-III (2X660MW))"
5810,Civil,CIV,2024-11-16,2025-09-01,,,,1.13(Control & Instrumentation)
5811,Main Control Room,CIV,2024-11-16,2025-09-01,,,,1.13.1(Civil)
5812,RCC in column encasing works,CIV,2024-11-16,2024-12-30,,,,1.13.1.1(Main Control Room)
5813,Brick Work & Plastering,CIV,2024-12-31,2025-02-18,,,,1.13.1.1(Main Control Room)
5814,Flooring,CIV,2025-02-19,2025-03-30,,,,1.13.1.1(Main Control Room)
5815,false ceiling & insulation works,CIV,2025-03-11,2025-06-03,,,,1.13.1.1(Main Control Room)
5816,"Door ,Window- glass ,aluminium fixing works",CIV,2025-06-04,2025-07-18,,,,1.13.1.1(Main Control Room)
5817,Finishing works,CIV,2025-07-19,2025-09-01,,,,1.13.1.1(Main Control Room)
5818,Supply,SUP,2023-04-15,2025-09-26,,,,1.13(Control & Instrumentation)
5819,BHEL EDN,SUP,2023-04-15,2025-02-02,,,,1.13.2(Supply)
5820,DAVR PACKAGE,SUP,2023-04-15,2024-12-24,,,,1.13.2.1(BHEL EDN)
5821,Engineering,ENG,2023-04-15,2024-06-07,,,,1.13.2.1.1(DAVR PACKAGE)
5822,Manufacturing ,MFG,2024-06-08,2024-11-04,,,,1.13.2.1.1(DAVR PACKAGE)
5823,Dispatch ,DIS,2024-08-07,2024-12-04,,,,1.13.2.1.1(DAVR PACKAGE)
5824,RECEIPT at Site ,REC,2024-08-27,2024-12-24,,,,1.13.2.1.1(DAVR PACKAGE)
5825,SG C&I PACKAGE ,SUP,2023-04-15,2024-10-05,,,,1.13.2.1(BHEL EDN)
5826,Engineering,ENG,2023-04-15,2024-03-19,,,,1.13.2.1.2(SG C&I PACKAGE )
5827,Manufacturing ,MFG,2024-03-20,2024-08-16,,,,1.13.2.1.2(SG C&I PACKAGE )
5828,Dispatch ,DIS,2024-05-19,2024-09-15,,,,1.13.2.1.2(SG C&I PACKAGE )
5829,RECEIPT at Site ,REC,2024-06-08,2024-10-05,,,,1.13.2.1.2(SG C&I PACKAGE )
5830,TG C&I PACKAGE ,SUP,2023-08-13,2025-02-02,,,,1.13.2.1(BHEL EDN)
5831,Engineering,ENG,2023-08-13,2024-07-17,,,,1.13.2.1.3(TG C&I PACKAGE )
5832,Manufacturing ,MFG,2024-07-18,2024-12-14,,,,1.13.2.1.3(TG C&I PACKAGE )
5833,Dispatch ,DIS,2024-09-16,2025-01-13,,,,1.13.2.1.3(TG C&I PACKAGE )
5834,RECEIPT at Site ,REC,2024-10-06,2025-02-02,,,,1.13.2.1.3(TG C&I PACKAGE )
5835,HMI,SUP,2023-12-21,2025-02-02,,,,1.13.2.1(BHEL EDN)
5836,Engineering,ENG,2023-12-21,2024-08-16,,,,1.13.2.1.4(HMI)
5837,Manufacturing ,MFG,2024-08-17,2024-12-14,,,,1.13.2.1.4(HMI)
5838,Dispatch ,DIS,2024-09-16,2025-01-13,,,,1.13.2.1.4(HMI)
5839,RECEIPT at Site ,REC,2024-10-06,2025-02-02,,,,1.13.2.1.4(HMI)
5840,Station C&I,SUP,2023-12-21,2025-02-02,,,,1.13.2.1(BHEL EDN)
5841,Engineering,ENG,2023-12-21,2024-08-16,,,,1.13.2.1.5(Station C&I)
5842,Manufacturing ,MFG,2024-08-17,2024-12-14,,,,1.13.2.1.5(Station C&I)
5843,Dispatch ,DIS,2024-09-16,2025-01-13,,,,1.13.2.1.5(Station C&I)
5844,RECEIPT at Site ,REC,2024-10-06,2025-02-02,,,,1.13.2.1.5(Station C&I)
5845,Offsite C&I,OTH,2023-12-21,2025-02-02,,,,1.13.2.1(BHEL EDN)
5846,Engineering,ENG,2023-12-21,2024-08-16,,,,1.13.2.1.6(Offsite C&I)
5847,Manufacturing ,MFG,2024-08-17,2024-12-14,,,,1.13.2.1.6(Offsite C&I)
5848,Dispatch ,DIS,2024-09-16,2025-01-13,,,,1.13.2.1.6(Offsite C&I)
5849,RECEIPT at Site ,REC,2024-10-06,2025-02-02,,,,1.13.2.1.6(Offsite C&I)
5850,FIELD INSTRUMENTS and erection MATERIALS,SUP,2023-12-21,2025-02-02,,,,1.13.2.1(BHEL EDN)
5851,Engineering,ENG,2023-12-21,2024-08-16,,,,1.13.2.1.7(FIELD INSTRUMENTS and erection MATERIALS)
5852,Manufacturing ,MFG,2024-08-17,2024-12-14,,,,1.13.2.1.7(FIELD INSTRUMENTS and erection MATERIALS)
5853,Dispatch ,DIS,2024-09-16,2025-01-13,,,,1.13.2.1.7(FIELD INSTRUMENTS and erection MATERIALS)
5854,RECEIPT at Site ,REC,2024-10-06,2025-02-02,,,,1.13.2.1.7(FIELD INSTRUMENTS and erection MATERIALS)
5855,CABLES AND CABLE TRAY,SUP,2023-08-23,2024-10-05,,,,1.13.2.1(BHEL EDN)
5856,Engineering,ENG,2023-08-23,2024-04-18,,,,1.13.2.1.8(CABLES AND CABLE TRAY)
5857,Manufacturing ,MFG,2024-04-19,2024-08-16,,,,1.13.2.1.8(CABLES AND CABLE TRAY)
5858,Dispatch ,DIS,2024-05-19,2024-09-15,,,,1.13.2.1.8(CABLES AND CABLE TRAY)
5859,RECEIPT at Site ,REC,2024-06-08,2024-10-05,,,,1.13.2.1.8(CABLES AND CABLE TRAY)
5860,CCTV,SUP,2023-12-21,2025-02-02,,,,1.13.2.1(BHEL EDN)
5861,Engineering,ENG,2023-12-21,2024-08-16,,,,1.13.2.1.9(CCTV)
5862,Manufacturing ,MFG,2024-08-17,2024-12-14,,,,1.13.2.1.9(CCTV)
5863,Dispatch ,DIS,2024-09-16,2025-01-13,,,,1.13.2.1.9(CCTV)
5864,RECEIPT at Site ,REC,2024-10-06,2025-02-02,,,,1.13.2.1.9(CCTV)
5865,LVS,SUP,2023-08-23,2024-10-05,,,,1.13.2.1(BHEL EDN)
5866,Engineering,ENG,2023-08-23,2024-04-18,,,,1.13.2.1.10(LVS)
5867,Manufacturing ,MFG,2024-04-19,2024-08-16,,,,1.13.2.1.10(LVS)
5868,Dispatch ,DIS,2024-05-19,2024-09-15,,,,1.13.2.1.10(LVS)
5869,RECEIPT at Site ,REC,2024-06-08,2024-10-05,,,,1.13.2.1.10(LVS)
5870,UPS & ACDB,SUP,2023-08-23,2024-10-05,,,,1.13.2.1(BHEL EDN)
5871,Engineering,ENG,2023-08-23,2024-04-18,,,,1.13.2.1.11(UPS & ACDB)
5872,Manufacturing ,MFG,2024-04-19,2024-08-16,,,,1.13.2.1.11(UPS & ACDB)
5873,Dispatch ,DIS,2024-05-19,2024-09-15,,,,1.13.2.1.11(UPS & ACDB)
5874,RECEIPT at Site ,REC,2024-06-08,2024-10-05,,,,1.13.2.1.11(UPS & ACDB)
5875,UPS BATTERY,SUP,2023-08-23,2024-10-05,,,,1.13.2.1(BHEL EDN)
5876,Engineering,ENG,2023-08-23,2024-04-18,,,,1.13.2.1.12(UPS BATTERY)
5877,Manufacturing ,MFG,2024-04-19,2024-08-16,,,,1.13.2.1.12(UPS BATTERY)
5878,Dispatch ,DIS,2024-05-19,2024-09-15,,,,1.13.2.1.12(UPS BATTERY)
5879,RECEIPT at Site ,REC,2024-06-08,2024-10-05,,,,1.13.2.1.12(UPS BATTERY)
5880,CHARGER FOR BATTERY,SUP,2023-08-23,2024-10-05,,,,1.13.2.1(BHEL EDN)
5881,Engineering,ENG,2023-08-23,2024-04-18,,,,1.13.2.1.13(CHARGER FOR BATTERY)
5882,Manufacturing ,MFG,2024-04-19,2024-08-16,,,,1.13.2.1.13(CHARGER FOR BATTERY)
5883,Dispatch ,DIS,2024-05-19,2024-09-15,,,,1.13.2.1.13(CHARGER FOR BATTERY)
5884,RECEIPT at Site ,REC,2024-06-08,2024-10-05,,,,1.13.2.1.13(CHARGER FOR BATTERY)
5885,MASTER SLAVE CLOCK,SUP,2023-12-21,2025-02-02,,,,1.13.2.1(BHEL EDN)
5886,Engineering,ENG,2023-12-21,2024-08-16,,,,1.13.2.1.14(MASTER SLAVE CLOCK)
5887,Manufacturing ,MFG,2024-08-17,2024-12-14,,,,1.13.2.1.14(MASTER SLAVE CLOCK)
5888,Dispatch ,DIS,2024-09-16,2025-01-13,,,,1.13.2.1.14(MASTER SLAVE CLOCK)
5889,RECEIPT at Site ,REC,2024-10-06,2025-02-02,,,,1.13.2.1.14(MASTER SLAVE CLOCK)
5890,HART MANAGEMENT SYSTEM,SUP,2023-12-21,2025-02-02,,,,1.13.2.1(BHEL EDN)
5891,Engineering,ENG,2023-12-21,2024-08-16,,,,1.13.2.1.15(HART MANAGEMENT SYSTEM)
5892,Manufacturing ,MFG,2024-08-17,2024-12-14,,,,1.13.2.1.15(HART MANAGEMENT SYSTEM)
5893,Dispatch ,DIS,2024-09-16,2025-01-13,,,,1.13.2.1.15(HART MANAGEMENT SYSTEM)
5894,RECEIPT at Site ,REC,2024-10-06,2025-02-02,,,,1.13.2.1.15(HART MANAGEMENT SYSTEM)
5895,TURBINE SUPERVISORY SSTEM,SUP,2023-12-21,2025-02-02,,,,1.13.2.1(BHEL EDN)
5896,Engineering,ENG,2023-12-21,2024-08-16,,,,1.13.2.1.16(TURBINE SUPERVISORY SSTEM)
5897,Manufacturing ,MFG,2024-08-17,2024-12-14,,,,1.13.2.1.16(TURBINE SUPERVISORY SSTEM)
5898,Dispatch ,DIS,2024-09-16,2025-01-13,,,,1.13.2.1.16(TURBINE SUPERVISORY SSTEM)
5899,RECEIPT at Site ,REC,2024-10-06,2025-02-02,,,,1.13.2.1.16(TURBINE SUPERVISORY SSTEM)
5900,"ANALYZERS AND MEASURING INSTRUMENTS INCLUDING SOx , NOx ",SUP,2023-12-21,2025-02-02,,,,1.13.2.1(BHEL EDN)
5901,Engineering,ENG,2023-12-21,2024-08-16,,,,"1.13.2.1.17(ANALYZERS AND MEASURING INSTRUMENTS INCLUDING SOx , NOx )"
5902,Manufacturing ,MFG,2024-08-17,2024-12-14,,,,"1.13.2.1.17(ANALYZERS AND MEASURING INSTRUMENTS INCLUDING SOx , NOx )"
5903,Dispatch ,DIS,2024-09-16,2025-01-13,,,,"1.13.2.1.17(ANALYZERS AND MEASURING INSTRUMENTS INCLUDING SOx , NOx )"
5904,RECEIPT at Site ,REC,2024-10-06,2025-02-02,,,,"1.13.2.1.17(ANALYZERS AND MEASURING INSTRUMENTS INCLUDING SOx , NOx )"
5905,HMI BOIs AND DIGITAL TECHNOLOGIES,SUP,2023-12-21,2025-02-02,,,,1.13.2.1(BHEL EDN)
5906,Engineering,ENG,2023-12-21,2024-08-16,,,,1.13.2.1.18(HMI BOIs AND DIGITAL TECHNOLOGIES)
5907,Manufacturing ,MFG,2024-08-17,2024-12-14,,,,1.13.2.1.18(HMI BOIs AND DIGITAL TECHNOLOGIES)
5908,Dispatch ,DIS,2024-09-16,2025-01-13,,,,1.13.2.1.18(HMI BOIs AND DIGITAL TECHNOLOGIES)
5909,RECEIPT at Site ,REC,2024-10-06,2025-02-02,,,,1.13.2.1.18(HMI BOIs AND DIGITAL TECHNOLOGIES)
5910,BOI- PEM,SUP,2023-08-23,2025-01-29,,,,1.13.2(Supply)
5911,BOI-PEM CONTROL VALVE ,SUP,2023-08-23,2024-10-15,,,,1.13.2.2(BOI- PEM)
5912,Ordering,ORD,2023-08-23,2023-11-20,,,,1.13.2.2.1(BOI-PEM CONTROL VALVE )
5913,Detailed Engineering,ENG,2023-11-21,2024-04-18,,,,1.13.2.2.1(BOI-PEM CONTROL VALVE )
5914,Manufacturing,MFG,2024-04-19,2024-09-15,,,,1.13.2.2.1(BOI-PEM CONTROL VALVE )
5915,Dispatch,DIS,2024-09-16,2024-10-15,,,,1.13.2.2.1(BOI-PEM CONTROL VALVE )
5916,BOI- PEM-FLOW ELEMENT - NOZZLE ,SUP,2023-12-07,2025-01-29,,,,1.13.2.2(BOI- PEM)
5917,Ordering,ORD,2023-12-07,2024-03-05,,,,1.13.2.2.2(BOI- PEM-FLOW ELEMENT - NOZZLE )
5918,Detailed Engineering,ENG,2024-03-06,2024-08-02,,,,1.13.2.2.2(BOI- PEM-FLOW ELEMENT - NOZZLE )
5919,Manufacturing,MFG,2024-08-03,2024-12-30,,,,1.13.2.2.2(BOI- PEM-FLOW ELEMENT - NOZZLE )
5920,Dispatch,DIS,2024-12-31,2025-01-29,,,,1.13.2.2.2(BOI- PEM-FLOW ELEMENT - NOZZLE )
5921,BOI-PEM-FLOW ELEMENT - ORIFICE ,SUP,2023-12-07,2025-01-29,,,,1.13.2.2(BOI- PEM)
5922,Ordering,ORD,2023-12-07,2024-03-05,,,,1.13.2.2.3(BOI-PEM-FLOW ELEMENT - ORIFICE )
5923,Detailed Engineering,ENG,2024-03-06,2024-08-02,,,,1.13.2.2.3(BOI-PEM-FLOW ELEMENT - ORIFICE )
5924,Manufacturing,MFG,2024-08-03,2024-12-30,,,,1.13.2.2.3(BOI-PEM-FLOW ELEMENT - ORIFICE )
5925,Dispatch,DIS,2024-12-31,2025-01-29,,,,1.13.2.2.3(BOI-PEM-FLOW ELEMENT - ORIFICE )
5926,BOI-PEM-ULTRASONIC FLOW METER,SUP,2023-12-07,2025-01-29,,,,1.13.2.2(BOI- PEM)
5927,Ordering,ORD,2023-12-07,2024-03-05,,,,1.13.2.2.4(BOI-PEM-ULTRASONIC FLOW METER)
5928,Detailed Engineering,ENG,2024-03-06,2024-08-02,,,,1.13.2.2.4(BOI-PEM-ULTRASONIC FLOW METER)
5929,Manufacturing,MFG,2024-08-03,2024-12-30,,,,1.13.2.2.4(BOI-PEM-ULTRASONIC FLOW METER)
5930,Dispatch,DIS,2024-12-31,2025-01-29,,,,1.13.2.2.4(BOI-PEM-ULTRASONIC FLOW METER)
5931,BOI-PEM-ELECTROMAGNETIC FLOW METER,SUP,2023-12-07,2025-01-29,,,,1.13.2.2(BOI- PEM)
5932,Ordering,ORD,2023-12-07,2024-03-05,,,,1.13.2.2.5(BOI-PEM-ELECTROMAGNETIC FLOW METER)
5933,Detailed Engineering,ENG,2024-03-06,2024-08-02,,,,1.13.2.2.5(BOI-PEM-ELECTROMAGNETIC FLOW METER)
5934,Manufacturing,MFG,2024-08-03,2024-12-30,,,,1.13.2.2.5(BOI-PEM-ELECTROMAGNETIC FLOW METER)
5935,Dispatch,DIS,2024-12-31,2025-01-29,,,,1.13.2.2.5(BOI-PEM-ELECTROMAGNETIC FLOW METER)
5936,BOI-PEM-ROTAMETER ,SUP,2023-12-01,2025-01-23,,,,1.13.2.2(BOI- PEM)
5937,Ordering,ORD,2023-12-01,2024-02-28,,,,1.13.2.2.6(BOI-PEM-ROTAMETER )
5938,Detailed Engineering,ENG,2024-02-29,2024-07-27,,,,1.13.2.2.6(BOI-PEM-ROTAMETER )
5939,Manufacturing,MFG,2024-07-28,2024-12-24,,,,1.13.2.2.6(BOI-PEM-ROTAMETER )
5940,Dispatch,DIS,2024-12-25,2025-01-23,,,,1.13.2.2.6(BOI-PEM-ROTAMETER )
5941,BHEL TRY,SUP,2023-06-20,2025-09-26,,,,1.13.2(Supply)
5942,Blr. Control and Instrumentation,SUP,2023-06-20,2025-09-26,,,,1.13.2.3(BHEL TRY)
5943,Boiler Fuel Firing Controls (PG-95),SUP,2023-07-23,2025-09-26,,,PG95,1.13.2.3.1(Blr. Control and Instrumentation)
5944,FSSS FLAME SCANNER (PGMA-95088),SUP,2023-07-23,2025-02-27,,,95088,1.13.2.3.1.1(Boiler Fuel Firing Controls (PG-95))
5945,Engineering,ENG,2023-07-23,2024-04-17,,,95088,1.13.2.3.1.1.1(FSSS FLAME SCANNER (PGMA-95088))
5946,Manufacturing,MFG,2024-04-18,2025-01-28,,,95088,1.13.2.3.1.1.1(FSSS FLAME SCANNER (PGMA-95088))
5947,Dispatch,DIS,2025-01-29,2025-02-27,,,95088,1.13.2.3.1.1.1(FSSS FLAME SCANNER (PGMA-95088))
5948,FSSS FLAME SCANNER (PGMA-95088),SUP,2023-07-23,2025-02-27,,,95088,1.13.2.3.1.1(Boiler Fuel Firing Controls (PG-95))
5949,Engineering,ENG,2023-07-23,2024-04-17,,,95088,1.13.2.3.1.1.2(FSSS FLAME SCANNER (PGMA-95088))
5950,Manufacturing,MFG,2024-04-18,2025-01-28,,,95088,1.13.2.3.1.1.2(FSSS FLAME SCANNER (PGMA-95088))
5951,Dispatch,DIS,2025-01-29,2025-02-27,,,95088,1.13.2.3.1.1.2(FSSS FLAME SCANNER (PGMA-95088))
5952,FSSS FIELD INTERCONNECTING EQUIPMENTS (PGMA-95091),SUP,2023-07-23,2025-02-27,,,95091,1.13.2.3.1.1(Boiler Fuel Firing Controls (PG-95))
5953,Engineering,ENG,2023-07-23,2024-04-17,,,95091,1.13.2.3.1.1.3(FSSS FIELD INTERCONNECTING EQUIPMENTS (PGMA-95091))
5954,Manufacturing,MFG,2024-04-18,2025-01-28,,,95091,1.13.2.3.1.1.3(FSSS FIELD INTERCONNECTING EQUIPMENTS (PGMA-95091))
5955,Dispatch,DIS,2025-01-29,2025-02-27,,,95091,1.13.2.3.1.1.3(FSSS FIELD INTERCONNECTING EQUIPMENTS (PGMA-95091))
5956,GRAVIMETRIC FEEDER REMOTE POWER CABINET (PGMA-95485),SUP,2023-10-21,2025-08-27,,,95485,1.13.2.3.1.1(Boiler Fuel Firing Controls (PG-95))
5957,Engineering,ENG,2023-10-21,2024-07-17,,,95485,1.13.2.3.1.1.4(GRAVIMETRIC FEEDER REMOTE POWER CABINET (PGMA-95485))
5958,Manufacturing,MFG,2024-07-18,2025-07-28,,,95485,1.13.2.3.1.1.4(GRAVIMETRIC FEEDER REMOTE POWER CABINET (PGMA-95485))
5959,Dispatch,DIS,2025-07-29,2025-08-27,,,95485,1.13.2.3.1.1.4(GRAVIMETRIC FEEDER REMOTE POWER CABINET (PGMA-95485))
5960,UCB MOUNTED INSTS & CALIBRATION KIT (PGMA-95487),SUP,2023-10-21,2025-08-27,,,95487,1.13.2.3.1.1(Boiler Fuel Firing Controls (PG-95))
5961,Engineering,ENG,2023-10-21,2024-07-17,,,95487,1.13.2.3.1.1.5(UCB MOUNTED INSTS & CALIBRATION KIT (PGMA-95487))
5962,Manufacturing,MFG,2024-07-18,2025-07-28,,,95487,1.13.2.3.1.1.5(UCB MOUNTED INSTS & CALIBRATION KIT (PGMA-95487))
5963,Dispatch,DIS,2025-07-29,2025-08-27,,,95487,1.13.2.3.1.1.5(UCB MOUNTED INSTS & CALIBRATION KIT (PGMA-95487))
5964,FEEDER MOUNTED C&I EQUIPMENTS (PGMA-95488),SUP,2023-10-21,2025-08-27,,,95488,1.13.2.3.1.1(Boiler Fuel Firing Controls (PG-95))
5965,Engineering,ENG,2023-10-21,2024-07-17,,,95488,1.13.2.3.1.1.6(FEEDER MOUNTED C&I EQUIPMENTS (PGMA-95488))
5966,Manufacturing,MFG,2024-07-18,2025-07-28,,,95488,1.13.2.3.1.1.6(FEEDER MOUNTED C&I EQUIPMENTS (PGMA-95488))
5967,Dispatch,DIS,2025-07-29,2025-08-27,,,95488,1.13.2.3.1.1.6(FEEDER MOUNTED C&I EQUIPMENTS (PGMA-95488))
5968,COAL FLOW MONITER (PGMA-95489),SUP,2023-10-21,2025-08-27,,,95489,1.13.2.3.1.1(Boiler Fuel Firing Controls (PG-95))
5969,Engineering,ENG,2023-10-21,2024-07-17,,,95489,1.13.2.3.1.1.7(COAL FLOW MONITER (PGMA-95489))
5970,Manufacturing,MFG,2024-07-18,2025-07-28,,,95489,1.13.2.3.1.1.7(COAL FLOW MONITER (PGMA-95489))
5971,Dispatch,DIS,2025-07-29,2025-08-27,,,95489,1.13.2.3.1.1.7(COAL FLOW MONITER (PGMA-95489))
5972,FUEL FIRING CONTROL COMMISSIONING SPARE (PGMA-95988),SUP,2023-10-21,2025-09-26,,,95988,1.13.2.3.1.1(Boiler Fuel Firing Controls (PG-95))
5973,Engineering,ENG,2023-10-21,2024-07-17,,,95988,1.13.2.3.1.1.8(FUEL FIRING CONTROL COMMISSIONING SPARE (PGMA-95988))
5974,Manufacturing,MFG,2024-07-18,2025-08-27,,,95988,1.13.2.3.1.1.8(FUEL FIRING CONTROL COMMISSIONING SPARE (PGMA-95988))
5975,Dispatch,DIS,2025-08-28,2025-09-26,,,95988,1.13.2.3.1.1.8(FUEL FIRING CONTROL COMMISSIONING SPARE (PGMA-95988))
5976,Boiler House Auxiliaries Control (PG-96),SUP,2023-10-21,2025-06-27,,,PG96,1.13.2.3.1(Blr. Control and Instrumentation)
5977,SOOT BLOWER MOTOR CONTROL CENTRE (PGMA-96186),SUP,2023-10-21,2025-06-27,,,96186,1.13.2.3.1.2(Boiler House Auxiliaries Control (PG-96))
5978,Engineering,ENG,2023-10-21,2024-07-16,,,96186,1.13.2.3.1.2.1(SOOT BLOWER MOTOR CONTROL CENTRE (PGMA-96186))
5979,Manufacturing,MFG,2024-07-17,2025-05-28,,,96186,1.13.2.3.1.2.1(SOOT BLOWER MOTOR CONTROL CENTRE (PGMA-96186))
5980,Dispatch,DIS,2025-05-29,2025-06-27,,,96186,1.13.2.3.1.2.1(SOOT BLOWER MOTOR CONTROL CENTRE (PGMA-96186))
5981,FURNACE TEMPARATURE PROBE STARTER BOX (PGMA-96188),SUP,2023-10-21,2025-06-27,,,96188,1.13.2.3.1.2(Boiler House Auxiliaries Control (PG-96))
5982,Engineering,ENG,2023-10-21,2024-07-16,,,96188,1.13.2.3.1.2.2(FURNACE TEMPARATURE PROBE STARTER BOX (PGMA-96188))
5983,Manufacturing,MFG,2024-07-17,2025-05-28,,,96188,1.13.2.3.1.2.2(FURNACE TEMPARATURE PROBE STARTER BOX (PGMA-96188))
5984,Dispatch,DIS,2025-05-29,2025-06-27,,,96188,1.13.2.3.1.2.2(FURNACE TEMPARATURE PROBE STARTER BOX (PGMA-96188))
5985,MISCELLANEOUS STARTER BOX (PGMA-96193),SUP,2023-10-21,2025-06-27,,,96193,1.13.2.3.1.2(Boiler House Auxiliaries Control (PG-96))
5986,Engineering,ENG,2023-10-21,2024-07-16,,,96193,1.13.2.3.1.2.3(MISCELLANEOUS STARTER BOX (PGMA-96193))
5987,Manufacturing,MFG,2024-07-17,2025-05-28,,,96193,1.13.2.3.1.2.3(MISCELLANEOUS STARTER BOX (PGMA-96193))
5988,Dispatch,DIS,2025-05-29,2025-06-27,,,96193,1.13.2.3.1.2.3(MISCELLANEOUS STARTER BOX (PGMA-96193))
5989,Boiler Instruments and Misc. Controls (PG-97),SUP,2023-06-20,2025-06-27,,,PG97,1.13.2.3.1(Blr. Control and Instrumentation)
5990,INSTRUMENTATION FIELD TRANSMITTERS (PGMA-97097),SUP,2023-07-23,2025-02-27,,,97097,1.13.2.3.1.3(Boiler Instruments and Misc. Controls (PG-97))
5991,Engineering,ENG,2023-07-23,2024-04-17,,,97097,1.13.2.3.1.3.1(INSTRUMENTATION FIELD TRANSMITTERS (PGMA-97097))
5992,Manufacturing,MFG,2024-04-18,2025-01-28,,,97097,1.13.2.3.1.3.1(INSTRUMENTATION FIELD TRANSMITTERS (PGMA-97097))
5993,Dispatch,DIS,2025-01-29,2025-02-27,,,97097,1.13.2.3.1.3.1(INSTRUMENTATION FIELD TRANSMITTERS (PGMA-97097))
5994,BOI-LU-FLOWMETERS (PGMA-97282),SUP,2023-12-01,2025-05-24,,,97282,1.13.2.3.1.3(Boiler Instruments and Misc. Controls (PG-97))
5995,NIT,ENQ,2023-12-01,2023-12-01,,,97282,1.13.2.3.1.3.2(BOI-LU-FLOWMETERS (PGMA-97282))
5996,Ordering,ORD,2023-12-02,2024-06-18,,,97282,1.13.2.3.1.3.2(BOI-LU-FLOWMETERS (PGMA-97282))
5997,Manufacturing,MFG,2024-06-19,2025-04-24,,,97282,1.13.2.3.1.3.2(BOI-LU-FLOWMETERS (PGMA-97282))
5998,Dispatch,DIS,2025-04-25,2025-05-24,,,97282,1.13.2.3.1.3.2(BOI-LU-FLOWMETERS (PGMA-97282))
5999,FIELD GAUGES (PGMA-97284),SUP,2023-10-21,2025-06-27,,,97284,1.13.2.3.1.3(Boiler Instruments and Misc. Controls (PG-97))
6000,Engineering,ENG,2023-10-21,2024-08-15,,,97284,1.13.2.3.1.3.3(FIELD GAUGES (PGMA-97284))
6001,Manufacturing,MFG,2024-08-16,2025-05-28,,,97284,1.13.2.3.1.3.3(FIELD GAUGES (PGMA-97284))
6002,Dispatch,DIS,2025-05-29,2025-06-27,,,97284,1.13.2.3.1.3.3(FIELD GAUGES (PGMA-97284))
6003,FIELD SWITCHES (PGMA-97285),SUP,2023-10-21,2025-06-27,,,97285,1.13.2.3.1.3(Boiler Instruments and Misc. Controls (PG-97))
6004,Engineering,ENG,2023-10-21,2024-07-16,,,97285,1.13.2.3.1.3.4(FIELD SWITCHES (PGMA-97285))
6005,Manufacturing,MFG,2024-07-17,2025-05-28,,,97285,1.13.2.3.1.3.4(FIELD SWITCHES (PGMA-97285))
6006,Dispatch,DIS,2025-05-29,2025-06-27,,,97285,1.13.2.3.1.3.4(FIELD SWITCHES (PGMA-97285))
6007,"INST & ACC IN STEAM,WATER,SB SYSTEM (PGMA-97287)",SUP,2023-10-21,2025-06-27,,,97287,1.13.2.3.1.3(Boiler Instruments and Misc. Controls (PG-97))
6008,Engineering,ENG,2023-10-21,2024-07-16,,,97287,"1.13.2.3.1.3.5(INST & ACC IN STEAM,WATER,SB SYSTEM (PGMA-97287))"
6009,Manufacturing,MFG,2024-07-17,2025-05-28,,,97287,"1.13.2.3.1.3.5(INST & ACC IN STEAM,WATER,SB SYSTEM (PGMA-97287))"
6010,Dispatch,DIS,2025-05-29,2025-06-27,,,97287,"1.13.2.3.1.3.5(INST & ACC IN STEAM,WATER,SB SYSTEM (PGMA-97287))"
6011,MTM CLAMPS AND PADS (PGMA-97297),SUP,2023-07-23,2025-02-27,,,97297,1.13.2.3.1.3(Boiler Instruments and Misc. Controls (PG-97))
6012,Engineering,ENG,2023-07-23,2024-04-17,,,97297,1.13.2.3.1.3.6(MTM CLAMPS AND PADS (PGMA-97297))
6013,Manufacturing,MFG,2024-04-18,2025-01-28,,,97297,1.13.2.3.1.3.6(MTM CLAMPS AND PADS (PGMA-97297))
6014,Dispatch,DIS,2025-01-29,2025-02-27,,,97297,1.13.2.3.1.3.6(MTM CLAMPS AND PADS (PGMA-97297))
6015,MTM THERMO COUPLES & JUNCTION BOXES (PGMA-97298),SUP,2023-07-23,2025-02-27,,,97298,1.13.2.3.1.3(Boiler Instruments and Misc. Controls (PG-97))
6016,Engineering,ENG,2023-07-23,2024-04-17,,,97298,1.13.2.3.1.3.7(MTM THERMO COUPLES & JUNCTION BOXES (PGMA-97298))
6017,Manufacturing,MFG,2024-04-18,2025-01-28,,,97298,1.13.2.3.1.3.7(MTM THERMO COUPLES & JUNCTION BOXES (PGMA-97298))
6018,Dispatch,DIS,2025-01-29,2025-02-27,,,97298,1.13.2.3.1.3.7(MTM THERMO COUPLES & JUNCTION BOXES (PGMA-97298))
6019,ACOUSTIC STEAM LEAK DETECTOR SYTEM (PGMA-97585),SUP,2023-10-21,2025-06-27,,,97585,1.13.2.3.1.3(Boiler Instruments and Misc. Controls (PG-97))
6020,Engineering,ENG,2023-10-21,2024-07-16,,,97585,1.13.2.3.1.3.8(ACOUSTIC STEAM LEAK DETECTOR SYTEM (PGMA-97585))
6021,Manufacturing,MFG,2024-07-17,2025-05-28,,,97585,1.13.2.3.1.3.8(ACOUSTIC STEAM LEAK DETECTOR SYTEM (PGMA-97585))
6022,Dispatch,DIS,2025-05-29,2025-06-27,,,97585,1.13.2.3.1.3.8(ACOUSTIC STEAM LEAK DETECTOR SYTEM (PGMA-97585))
6023,ACOUSTIC STEAM LEAK DETECTOR SYTEM (PGMA-97585),SUP,2023-10-21,2025-06-27,,,97585,1.13.2.3.1.3(Boiler Instruments and Misc. Controls (PG-97))
6024,Engineering,ENG,2023-10-21,2024-07-16,,,97585,1.13.2.3.1.3.9(ACOUSTIC STEAM LEAK DETECTOR SYTEM (PGMA-97585))
6025,Manufacturing,MFG,2024-07-17,2025-05-28,,,97585,1.13.2.3.1.3.9(ACOUSTIC STEAM LEAK DETECTOR SYTEM (PGMA-97585))
6026,Dispatch,DIS,2025-05-29,2025-06-27,,,97585,1.13.2.3.1.3.9(ACOUSTIC STEAM LEAK DETECTOR SYTEM (PGMA-97585))
6027,ERECTION MATERIALS (PGMA-97590),SUP,2023-06-20,2025-01-25,,,97590,1.13.2.3.1.3(Boiler Instruments and Misc. Controls (PG-97))
6028,Engineering,ENG,2023-06-20,2024-03-15,,,97590,1.13.2.3.1.3.10(ERECTION MATERIALS (PGMA-97590))
6029,Manufacturing,MFG,2024-03-16,2024-12-26,,,97590,1.13.2.3.1.3.10(ERECTION MATERIALS (PGMA-97590))
6030,Dispatch,DIS,2024-12-27,2025-01-25,,,97590,1.13.2.3.1.3.10(ERECTION MATERIALS (PGMA-97590))
6031,MISCELLANEOUS ITEMS (PGMA-97591),SUP,2023-07-23,2025-03-29,,,97591,1.13.2.3.1.3(Boiler Instruments and Misc. Controls (PG-97))
6032,Engineering,ENG,2023-07-23,2024-04-17,,,97591,1.13.2.3.1.3.11(MISCELLANEOUS ITEMS (PGMA-97591))
6033,Manufacturing,MFG,2024-04-18,2025-02-27,,,97591,1.13.2.3.1.3.11(MISCELLANEOUS ITEMS (PGMA-97591))
6034,Dispatch,DIS,2025-02-28,2025-03-29,,,97591,1.13.2.3.1.3.11(MISCELLANEOUS ITEMS (PGMA-97591))
6035,"PNEUMATIC TUBINGS & FITTINGS,AIRSET (PGMA-97592)",SUP,2023-07-23,2025-02-27,,,97592,1.13.2.3.1.3(Boiler Instruments and Misc. Controls (PG-97))
6036,Engineering,ENG,2023-07-23,2024-04-17,,,97592,"1.13.2.3.1.3.12(PNEUMATIC TUBINGS & FITTINGS,AIRSET (PGMA-97592))"
6037,Manufacturing,MFG,2024-04-18,2025-01-28,,,97592,"1.13.2.3.1.3.12(PNEUMATIC TUBINGS & FITTINGS,AIRSET (PGMA-97592))"
6038,Dispatch,DIS,2025-01-29,2025-02-27,,,97592,"1.13.2.3.1.3.12(PNEUMATIC TUBINGS & FITTINGS,AIRSET (PGMA-97592))"
6039,CLOSED CIRCUIT TELEVISION SYSTEM (PGMA-97596),SUP,2023-10-21,2025-06-27,,,97596,1.13.2.3.1.3(Boiler Instruments and Misc. Controls (PG-97))
6040,Engineering,ENG,2023-10-21,2024-07-16,,,97596,1.13.2.3.1.3.13(CLOSED CIRCUIT TELEVISION SYSTEM (PGMA-97596))
6041,Manufacturing,MFG,2024-07-17,2025-05-28,,,97596,1.13.2.3.1.3.13(CLOSED CIRCUIT TELEVISION SYSTEM (PGMA-97596))
6042,Dispatch,DIS,2025-05-29,2025-06-27,,,97596,1.13.2.3.1.3.13(CLOSED CIRCUIT TELEVISION SYSTEM (PGMA-97596))
6043,PNEUMATIC ACTUATOR IN AIR&FLUE GAS SYS (PGMA-97599),SUP,2023-10-21,2025-06-27,,,97599,1.13.2.3.1.3(Boiler Instruments and Misc. Controls (PG-97))
6044,Engineering,ENG,2023-10-21,2024-07-16,,,97599,1.13.2.3.1.3.14(PNEUMATIC ACTUATOR IN AIR&FLUE GAS SYS (PGMA-97599))
6045,Manufacturing,MFG,2024-07-17,2025-05-28,,,97599,1.13.2.3.1.3.14(PNEUMATIC ACTUATOR IN AIR&FLUE GAS SYS (PGMA-97599))
6046,Dispatch,DIS,2025-05-29,2025-06-27,,,97599,1.13.2.3.1.3.14(PNEUMATIC ACTUATOR IN AIR&FLUE GAS SYS (PGMA-97599))
6047,Erection,ERC,2024-09-14,2026-05-15,,,,1.13(Control & Instrumentation)
6048,Civil clearance for Control Room for C&I Work,CIV,2025-07-19,2025-07-19,,,,1.13.3(Erection)
6049,MAIN CONTROL ROOM,ERC,2025-07-20,2025-10-27,,,,1.13.3(Erection)
6050,"24 V DC Battery Charger, DCDB & its Battery Bank -E&C",ERC,2025-07-20,2025-10-17,,,,1.13.3.2(MAIN CONTROL ROOM)
6051,DCS Panels installation in CER,ERC,2025-07-20,2025-10-17,,,,1.13.3.2(MAIN CONTROL ROOM)
6052,Power Supply & earthing - cabling to DCS Panels,ERC,2025-08-09,2025-10-17,,,,1.13.3.2(MAIN CONTROL ROOM)
6053,Control Desk & Human Machine Interface (HMI) -E&C,ERC,2025-07-20,2025-10-17,,,,1.13.3.2(MAIN CONTROL ROOM)
6054,Network cabling,ERC,2025-08-09,2025-10-22,,,,1.13.3.2(MAIN CONTROL ROOM)
6055,Interpanel Cabling,ERC,2025-10-03,2025-10-22,,,,1.13.3.2(MAIN CONTROL ROOM)
6056,DCS Panels Charging,ERC,2025-10-23,2025-10-27,,,,1.13.3.2(MAIN CONTROL ROOM)
6057,BOILER OPERATING FLOOR (AB Elevation),ERC,2025-10-05,2025-12-19,,,,1.13.3(Erection)
6058,Copper Tubing for LOTV/Corner Valves/Control Valves,ERC,2025-10-05,2025-10-08,,,,1.13.3.3(BOILER OPERATING FLOOR (AB Elevation))
6059,Erection of JB Frames and JBs for AB Elevation,ERC,2025-10-09,2025-10-15,,,,1.13.3.3(BOILER OPERATING FLOOR (AB Elevation))
6060,Healthiness checking of Limit Switches & Adjusting the same,ERC,2025-10-16,2025-10-21,,,,1.13.3.3(BOILER OPERATING FLOOR (AB Elevation))
6061,Cabling for Valves & Limit Switches of AB Elevation,ERC,2025-10-22,2025-10-28,,,,1.13.3.3(BOILER OPERATING FLOOR (AB Elevation))
6062,Stroking of Corner Skid Valves,ERC,2025-10-29,2025-11-01,,,,1.13.3.3(BOILER OPERATING FLOOR (AB Elevation))
6063,Stroking of LOTV & LOCV,ERC,2025-11-02,2025-11-03,,,,1.13.3.3(BOILER OPERATING FLOOR (AB Elevation))
6064,"HEA Igniters, flame scanners, cabling and commissioning",COM,2025-12-10,2025-12-17,,,,1.13.3.3(BOILER OPERATING FLOOR (AB Elevation))
6065,"Firing Floor Instrumentation - PS, TS, PT, Flow TXR, etc",ERC,2025-12-10,2025-12-17,,,,1.13.3.3(BOILER OPERATING FLOOR (AB Elevation))
6066,Gun Trial,COM,2025-12-18,2025-12-19,,,,1.13.3.3(BOILER OPERATING FLOOR (AB Elevation))
6067,SADC,ERC,2024-09-14,2025-11-20,,,,1.13.3(Erection)
6068,"Erection of SADC I/P, Press. SW & AFR station after calibration",ERC,2024-09-14,2024-09-28,,,,1.13.3.4(SADC)
6069,Calibration of SADC Power Cylinders,ERC,2024-09-29,2024-10-13,,,,1.13.3.4(SADC)
6070,Erection of Trays for Cu Tubing,ERC,2024-10-14,2024-10-23,,,,1.13.3.4(SADC)
6071,Erection of Cu Tubing. & flexible hoses,ERC,2024-10-24,2024-11-12,,,,1.13.3.4(SADC)
6072,Cabling of SADC system,ERC,2024-11-13,2024-11-22,,,,1.13.3.4(SADC)
6073,Commissioning of SADC System,COM,2025-11-01,2025-11-20,,,,1.13.3.4(SADC)
6074,FD FAN,ERC,2025-07-20,2026-02-03,,,,1.13.3(Erection)
6075,First FD Fan,ERC,2025-07-20,2025-12-09,,,,1.13.3.5(FD FAN)
6076,Motor Winding & Bearing Temperature signals hookup to DCS,ERC,2025-07-20,2025-07-25,,,,1.13.3.5.1(First FD Fan)
6077,Motor Decoupled Trial Run,ERC,2025-09-24,2025-09-24,,,,1.13.3.5.1(First FD Fan)
6078,"Remote operation of drives like LOPs, Motor, Blade Pitch, Gates, etc",ERC,2025-11-14,2025-11-21,,,,1.13.3.5.1(First FD Fan)
6079,FDF Instrumentation,ERC,2025-11-22,2025-12-05,,,,1.13.3.5.1(First FD Fan)
6080,Lube Oil flushing,ERC,2025-08-14,2025-08-27,,,,1.13.3.5.1(First FD Fan)
6081,FDF Protection checking & Fan Trial,COM,2025-12-08,2025-12-09,,,,1.13.3.5.1(First FD Fan)
6082,Second FD Fan,ERC,2025-12-31,2026-02-03,,,,1.13.3.5(FD FAN)
6083,Motor Winding & Bearing Temperature signals hookup to DCS,ERC,2025-12-31,2026-01-05,,,,1.13.3.5.2(Second FD Fan)
6084,Motor Decoupled Trial Run,COM,2026-01-06,2026-01-06,,,,1.13.3.5.2(Second FD Fan)
6085,"Remote operation of drives like LOPs, Motor, Blade Pitch, Gates, etc",ERC,2026-01-07,2026-01-14,,,,1.13.3.5.2(Second FD Fan)
6086,FDF Instrumentation,ERC,2026-01-21,2026-01-30,,,,1.13.3.5.2(Second FD Fan)
6087,Lube Oil flushing,ERC,2026-01-03,2026-01-16,,,,1.13.3.5.2(Second FD Fan)
6088,FDF Protection checking & Fan Trial,COM,2026-02-02,2026-02-03,,,,1.13.3.5.2(Second FD Fan)
6089,ID FAN,ERC,2025-03-14,2026-03-31,,,,1.13.3(Erection)
6090,First ID Fan,ERC,2025-03-14,2025-12-31,,,,1.13.3.6(ID FAN)
6091,Motor Winding & Bearing Temperature signals hookup to DCS,ERC,2025-03-14,2025-03-19,,,,1.13.3.6.1(First ID Fan)
6092,Motor Decoupled Trial,COM,2025-09-19,2025-09-19,,,,1.13.3.6.1(First ID Fan)
6093,"Remote operation of drives like LOPs, Motor, IGV, Scoop, Gates, etc",ERC,2025-11-09,2025-11-18,,,,1.13.3.6.1(First ID Fan)
6094,IDF Instrumentation,ERC,2025-11-19,2025-11-30,,,,1.13.3.6.1(First ID Fan)
6095,Lube Oil flushing,ERC,2025-03-14,2025-04-02,,,,1.13.3.6.1(First ID Fan)
6096,IDF Protection checking & Fan Trial ,COM,2025-12-30,2025-12-31,,,,1.13.3.6.1(First ID Fan)
6097,Second ID Fan,ERC,2025-04-14,2026-03-31,,,,1.13.3.6(ID FAN)
6098, Motor Winding & Bearing Temperature signals hookup to DCS,ERC,2025-04-14,2025-04-19,,,,1.13.3.6.2(Second ID Fan)
6099, Motor Decoupled Trial,COM,2025-09-30,2025-09-30,,,,1.13.3.6.2(Second ID Fan)
6100," Remote operation of drives like LOPs, Motor, IGV, Scoop, Gates, etc",ERC,2025-12-09,2025-12-18,,,,1.13.3.6.2(Second ID Fan)
6101, IDF Instrumentation,ERC,2025-12-19,2025-12-30,,,,1.13.3.6.2(Second ID Fan)
6102, Lube Oil flushing,ERC,2025-04-14,2025-05-03,,,,1.13.3.6.2(Second ID Fan)
6103, IDF Protection checking & Fan Trial ,COM,2026-03-30,2026-03-31,,,,1.13.3.6.2(Second ID Fan)
6104,APH,ERC,2025-10-30,2026-02-01,,,,1.13.3(Erection)
6105,First APH,ERC,2025-10-30,2025-11-29,,,,1.13.3.7(APH)
6106,"APH Instrumentation like Brg RTD, Fire Sensing T/C, GO Switch, etc.",ERC,2025-10-30,2025-11-13,,,,1.13.3.7.1(First APH)
6107,"Remote operation of drives like LOPs, Electric Motor, Air Motor, etc",ERC,2025-11-14,2025-11-19,,,,1.13.3.7.1(First APH)
6108,Oil Flushing,ERC,2025-11-20,2025-11-27,,,,1.13.3.7.1(First APH)
6109,APH Protection checking & Motor / Fan Trial,COM,2025-11-28,2025-11-29,,,,1.13.3.7.1(First APH)
6110,Second APH,ERC,2026-01-02,2026-02-01,,,,1.13.3.7(APH)
6111," APH Instrumentation like Brg RTD, Fire Sensing T/C, GO Switch, etc.",ERC,2026-01-02,2026-01-16,,,,1.13.3.7.2(Second APH)
6112," Remote operation of drives like LOPs, Electric Motor, Air Motor, etc",ERC,2026-01-17,2026-01-22,,,,1.13.3.7.2(Second APH)
6113,Oil Flushing,ERC,2026-01-23,2026-01-30,,,,1.13.3.7.2(Second APH)
6114, SAPH Protection checking & Motor / Fan Trial,COM,2026-01-31,2026-02-01,,,,1.13.3.7.2(Second APH)
6115,SCANNER FAN,ERC,2025-10-16,2025-11-02,,,,1.13.3(Erection)
6116,DC Scanner Air Fan Starter Panel Erection & Cabling,ERC,2025-10-16,2025-10-25,,,,1.13.3.8(SCANNER FAN)
6117,Protection Checking & Motor & Fan Trial,COM,2025-10-26,2025-10-29,,,,1.13.3.8(SCANNER FAN)
6118,Commissioning of O/L Dampers & Scanner Air Parameters,COM,2025-10-30,2025-11-02,,,,1.13.3.8(SCANNER FAN)
6119,INSTRUMENTATION FOR BLU,ERC,2025-08-08,2026-01-01,,,,1.13.3(Erection)
6120,Boiler MTM Thermo-couple erection,ERC,2025-10-09,2025-11-02,,,,1.13.3.9(INSTRUMENTATION FOR BLU)
6121,ACW Pump Instrumentation & Commissioning,COM,2025-10-24,2025-11-04,,,,1.13.3.9(INSTRUMENTATION FOR BLU)
6122,SG DMCW Pump Instrumentation & Commissioning,COM,2025-08-08,2025-08-19,,,,1.13.3.9(INSTRUMENTATION FOR BLU)
6123,TG DMCW Pump Instrumentation & Commissioning,COM,2025-09-29,2025-10-10,,,,1.13.3.9(INSTRUMENTATION FOR BLU)
6124,Air & Flue Gas Path Instrumentation,ERC,2025-12-17,2025-12-28,,,,1.13.3.9(INSTRUMENTATION FOR BLU)
6125,"Remote operation of drives like Boiler Drains & Vents, FG Path Gates & Dampers",ERC,2025-12-27,2025-12-29,,,,1.13.3.9(INSTRUMENTATION FOR BLU)
6126,"Furnace Parameters readiness like Furnace Pressure  Secondary Air Flow, Flue Gas Pressures & Temperatures, etc.",ERC,2025-12-21,2025-12-30,,,,1.13.3.9(INSTRUMENTATION FOR BLU)
6127,Boiler Protection Trial,COM,2025-12-31,2026-01-01,,,,1.13.3.9(INSTRUMENTATION FOR BLU)
6128,C&I Readiness for BOILER LIGHT-UP,ERC,2026-01-02,2026-01-02,,,,1.13.3(Erection)
6129,BOILER OPERATING FLOOR (CD Elevation),ERC,2025-10-12,2025-11-20,,,,1.13.3(Erection)
6130,Copper Tubing for HOTV/Corner Valves/Control Valves,ERC,2025-10-12,2025-10-15,,,,1.13.3.11(BOILER OPERATING FLOOR (CD Elevation))
6131,Erection of JB Frames and JBs for CD Elevation,ERC,2025-10-16,2025-10-23,,,,1.13.3.11(BOILER OPERATING FLOOR (CD Elevation))
6132,Healthiness checking of Limit Switches & Adjusting the same,ERC,2025-10-24,2025-10-29,,,,1.13.3.11(BOILER OPERATING FLOOR (CD Elevation))
6133,Cabling for Valves & Limit Switches of CD Elevation,ERC,2025-10-30,2025-11-04,,,,1.13.3.11(BOILER OPERATING FLOOR (CD Elevation))
6134,Stroking of Corner Skid Valves,ERC,2025-11-05,2025-11-08,,,,1.13.3.11(BOILER OPERATING FLOOR (CD Elevation))
6135,Stroking of HOTV & HOFCV,ERC,2025-11-09,2025-11-10,,,,1.13.3.11(BOILER OPERATING FLOOR (CD Elevation))
6136,"Installation of HEA Igniters, flame scanners and its cabling and commissioning",COM,2025-11-11,2025-11-18,,,,1.13.3.11(BOILER OPERATING FLOOR (CD Elevation))
6137,"Firing Floor Instrumentation - PS, TS, PT, Flow TXR, etc",ERC,2025-11-11,2025-11-18,,,,1.13.3.11(BOILER OPERATING FLOOR (CD Elevation))
6138,Gun Trial,COM,2025-11-19,2025-11-20,,,,1.13.3.11(BOILER OPERATING FLOOR (CD Elevation))
6139,Readiness for BOILER CHEMICAL CLEANING,ERC,2025-11-21,2025-11-25,,,,1.13.3(Erection)
6140,BOILER OPERATING FLOOR (EF Elevation),ERC,2025-11-26,2026-01-13,,,,1.13.3(Erection)
6141,Copper Tubing for Corner Valves,ERC,2025-11-26,2025-12-03,,,,1.13.3.13(BOILER OPERATING FLOOR (EF Elevation))
6142,Erection of JB Frames and JBs for CD Elevation,ERC,2025-12-04,2025-12-11,,,,1.13.3.13(BOILER OPERATING FLOOR (EF Elevation))
6143,Healthiness checking of Limit Switches & Adjusting the same,ERC,2025-12-12,2025-12-19,,,,1.13.3.13(BOILER OPERATING FLOOR (EF Elevation))
6144,Cabling for Valves & Limit Switches of EF Elevation,ERC,2025-12-20,2025-12-27,,,,1.13.3.13(BOILER OPERATING FLOOR (EF Elevation))
6145,Stroking of Corner Skid Valves,ERC,2025-12-28,2026-01-01,,,,1.13.3.13(BOILER OPERATING FLOOR (EF Elevation))
6146,"Installation of HEA Igniters, flame scanners and its cabling and commissioning",COM,2026-01-02,2026-01-11,,,,1.13.3.13(BOILER OPERATING FLOOR (EF Elevation))
6147,Gun Trial,COM,2026-01-12,2026-01-13,,,,1.13.3.13(BOILER OPERATING FLOOR (EF Elevation))
6148,MDBFP,ERC,2025-06-05,2025-09-18,,,,1.13.3(Erection)
6149,Motor Winding/Brg RTD hookup to DCS & HT Breaker cabling & remote operation from DCS,ERC,2025-06-05,2025-06-14,,,,1.13.3.14(MDBFP)
6150,LGB & LIR Erection & Cabling,ERC,2025-06-15,2025-06-24,,,,1.13.3.14(MDBFP)
6151,"Impulse Piping of LO LGB, Seal Wtr LGB, FW LIR-HYD/EDN, BP/BFP Suction Strainer DPT, Suction Flow Txr, PT, etc.",ERC,2025-06-25,2025-07-09,,,,1.13.3.14(MDBFP)
6152,MDBFP Motor Trial,COM,2025-08-19,2025-08-19,,,,1.13.3.14(MDBFP)
6153,"Hydraulic Coupling Instrumentation - LS, Speed Probe, PT",ERC,2025-08-20,2025-08-29,,,,1.13.3.14(MDBFP)
6154,"Commissioning of scoop controller, Speed Measurement, etc",COM,2025-08-30,2025-09-03,,,,1.13.3.14(MDBFP)
6155,MDBFP Motor+Hydraulic Coupling Trial,COM,2025-09-04,2025-09-04,,,,1.13.3.14(MDBFP)
6156,FW System Instrumentation,ERC,2025-09-05,2025-09-14,,,,1.13.3.14(MDBFP)
6157,Copper tubing & commissioning of BFP Re-circulation valve,COM,2025-09-15,2025-09-16,,,,1.13.3.14(MDBFP)
6158,Discharge MOV commissioning,COM,2025-09-17,2025-09-17,,,,1.13.3.14(MDBFP)
6159,MDBFP Coupled Trial,COM,2025-09-18,2025-09-18,,,,1.13.3.14(MDBFP)
6160,Readiness for STEAM BLOWING,ERC,2025-12-01,2025-12-25,,,,1.13.3(Erection)
6161,Boiler C&I Required for Synchronisation,ERC,2025-09-16,2026-04-28,,,,1.13.3(Erection)
6162,Instrumentation - Air and Flue Gas Path,ERC,2026-03-25,2026-04-03,,,,1.13.3.16(Boiler C&I Required for Synchronisation)
6163,Instrumentation - Steam and Water Cycle,ERC,2026-01-26,2026-02-04,,,,1.13.3.16(Boiler C&I Required for Synchronisation)
6164,EWLI commissioning,COM,2026-02-05,2026-02-12,,,,1.13.3.16(Boiler C&I Required for Synchronisation)
6165,APRDS Instrumentation & Commissioning,COM,2025-09-16,2025-10-10,,,,1.13.3.16(Boiler C&I Required for Synchronisation)
6166,HPBP Instrumentation & Commissioning,COM,2026-04-21,2026-04-28,,,,1.13.3.16(Boiler C&I Required for Synchronisation)
6167,TG C&I READINESS FOR BARRING GEAR,ERC,2025-08-19,2026-01-26,,,,1.13.3(Erection)
6168,LO System Instrumentation,ERC,2025-10-07,2025-10-21,,,,1.13.3.17(TG C&I READINESS FOR BARRING GEAR)
6169,LO System Drives - Cabling Commissioning,COM,2025-10-22,2025-10-31,,,,1.13.3.17(TG C&I READINESS FOR BARRING GEAR)
6170,LO Temp. CV commissioning,COM,2025-10-27,2025-10-31,,,,1.13.3.17(TG C&I READINESS FOR BARRING GEAR)
6171,Seal Oil System Instrumentation & Drives Commissioning,COM,2025-08-19,2025-08-30,,,,1.13.3.17(TG C&I READINESS FOR BARRING GEAR)
6172,Turbine/Generator Bearing Temperature Measurement Instrumentation,ERC,2025-12-12,2025-12-15,,,,1.13.3.17(TG C&I READINESS FOR BARRING GEAR)
6173,Turbine Supervisory Instrumentation,ERC,2025-12-16,2025-12-20,,,,1.13.3.17(TG C&I READINESS FOR BARRING GEAR)
6174,LO System Interlocks & Protection Trial,ERC,2025-12-16,2025-12-28,,,,1.13.3.17(TG C&I READINESS FOR BARRING GEAR)
6175,Barring Gear,ERC,2026-01-26,2026-01-26,,,,1.13.3.17(TG C&I READINESS FOR BARRING GEAR)
6176,TG C&I READINESS FOR SYNCHRONISATION,ERC,2025-08-21,2026-04-27,,,,1.13.3(Erection)
6177,Gland Steam System Instrumentation,ERC,2025-11-10,2025-11-24,,,,1.13.3.18(TG C&I READINESS FOR SYNCHRONISATION)
6178,Vacuum System Instrumentation,ERC,2025-11-10,2025-11-23,,,,1.13.3.18(TG C&I READINESS FOR SYNCHRONISATION)
6179,Vacuum Breaker Commissioning,COM,2025-11-24,2025-11-26,,,,1.13.3.18(TG C&I READINESS FOR SYNCHRONISATION)
6180,Commissioning of Vacuum Pumps,COM,2025-11-27,2025-12-02,,,,1.13.3.18(TG C&I READINESS FOR SYNCHRONISATION)
6181,Primary Water Instrumentation,ERC,2025-08-21,2025-09-09,,,,1.13.3.18(TG C&I READINESS FOR SYNCHRONISATION)
6182,Generator Instrumentation,ERC,2026-04-11,2026-04-25,,,,1.13.3.18(TG C&I READINESS FOR SYNCHRONISATION)
6183,MAL Valves commissioning,COM,2025-11-20,2025-12-01,,,,1.13.3.18(TG C&I READINESS FOR SYNCHRONISATION)
6184,Turbine Integral Drain Valves commissioning,COM,2025-11-25,2025-12-04,,,,1.13.3.18(TG C&I READINESS FOR SYNCHRONISATION)
6185,Condensate System Instrumentation,ERC,2025-09-05,2025-09-19,,,,1.13.3.18(TG C&I READINESS FOR SYNCHRONISATION)
6186,Hotwell Instrumentation,ERC,2025-09-20,2025-09-29,,,,1.13.3.18(TG C&I READINESS FOR SYNCHRONISATION)
6187,CEP Instrumentation & Commissioning,COM,2025-11-04,2025-11-18,,,,1.13.3.18(TG C&I READINESS FOR SYNCHRONISATION)
6188,Control Valve Commissioning,COM,2025-11-04,2025-11-17,,,,1.13.3.18(TG C&I READINESS FOR SYNCHRONISATION)
6189,LP Bypass System Instrumentation - Commissioning,COM,2026-04-06,2026-04-20,,,,1.13.3.18(TG C&I READINESS FOR SYNCHRONISATION)
6190,Steam line instrumentation,ERC,2025-09-09,2025-09-23,,,,1.13.3.18(TG C&I READINESS FOR SYNCHRONISATION)
6191,Governing System Commissioning,COM,2026-04-06,2026-04-20,,,,1.13.3.18(TG C&I READINESS FOR SYNCHRONISATION)
6192,Stop Valve/Control Valve Position F/B Commissioning,COM,2026-04-21,2026-04-24,,,,1.13.3.18(TG C&I READINESS FOR SYNCHRONISATION)
6193,Turbine Protection checking,COM,2026-04-25,2026-04-27,,,,1.13.3.18(TG C&I READINESS FOR SYNCHRONISATION)
6194,C&I READINESS FOR COAL FIRING,ERC,2025-06-03,2026-05-05,,,,1.13.3(Erection)
6195,PA FAN,ERC,2025-06-10,2026-03-06,,,,1.13.3.19(C&I READINESS FOR COAL FIRING)
6196,Second PA Fan,ERC,2025-06-10,2026-03-06,,,,1.13.3.19.1(PA FAN)
6197,Motor Winding & Bearing Temperature signals hookup to DCS,ERC,2025-06-10,2025-06-15,,,,1.13.3.19.1.1(Second PA Fan)
6198,Motor Decoupled trial run,ERC,2025-09-14,2025-09-14,,,,1.13.3.19.1.1(Second PA Fan)
6199,"Remote operation of drives like LOPs, Motor, etc",ERC,2026-01-15,2026-01-22,,,,1.13.3.19.1.1(Second PA Fan)
6200,Lube Oil flushing,ERC,2025-07-10,2025-07-23,,,,1.13.3.19.1.1(Second PA Fan)
6201,PA FAN - Instrumentation,ERC,2026-02-02,2026-02-11,,,,1.13.3.19.1.1(Second PA Fan)
6202,Outlet Gate & Blade Pitch Commissioning,COM,2026-02-12,2026-02-17,,,,1.13.3.19.1.1(Second PA Fan)
6203,Hot PA Header Instrumentation,ERC,2026-02-18,2026-02-27,,,,1.13.3.19.1.1(Second PA Fan)
6204,Protection Check & Fan Trial run,COM,2026-03-05,2026-03-06,,,,1.13.3.19.1.1(Second PA Fan)
6205,First PA Fan:,ERC,2025-12-24,2026-02-19,,,,1.13.3.19.1(PA FAN)
6206,Motor Winding & Bearing Temperature signals hookup to DCS,ERC,2025-12-24,2025-12-29,,,,1.13.3.19.1.2(First PA Fan:)
6207,Motor Decoupled trial run,COM,2025-12-30,2025-12-30,,,,1.13.3.19.1.2(First PA Fan:)
6208,"Remote operation of drives like LOPs, Motor, etc",COM,2025-12-31,2026-01-07,,,,1.13.3.19.1.2(First PA Fan:)
6209,Lube Oil flushing,ERC,2025-12-29,2026-01-11,,,,1.13.3.19.1.2(First PA Fan:)
6210,PA FAN - Instrumentation,ERC,2026-01-18,2026-01-27,,,,1.13.3.19.1.2(First PA Fan:)
6211,Outlet Gate & Blade Pitch Commissioning,COM,2026-01-28,2026-02-02,,,,1.13.3.19.1.2(First PA Fan:)
6212,Hot PA Header Instrumentation,ERC,2026-02-03,2026-02-12,,,,1.13.3.19.1.2(First PA Fan:)
6213,Protection Check & Fan Trial run,COM,2026-02-18,2026-02-19,,,,1.13.3.19.1.2(First PA Fan:)
6214,MILLS,ERC,2025-09-02,2025-11-20,,,,1.13.3.19(C&I READINESS FOR COAL FIRING)
6215,Mills,ERC,2025-09-02,2025-11-20,,,,1.13.3.19.2(MILLS)
6216,Motor Winding & Bearing Temperature signals hookup to DCS,ERC,2025-09-02,2025-09-11,,,,1.13.3.19.2.1(Mills)
6217,"Remote operation of drives like LOPs, Motor, etc",COM,2025-09-12,2025-09-21,,,,1.13.3.19.2.1(Mills)
6218,Oil Flushing,ERC,2025-09-22,2025-10-16,,,,1.13.3.19.2.1(Mills)
6219,Mill Instrumentation,ERC,2025-10-17,2025-11-05,,,,1.13.3.19.2.1(Mills)
6220,Protection checking & Motor / Mill Trial,COM,2025-11-06,2025-11-15,,,,1.13.3.19.2.1(Mills)
6221,"Cabling, commissioning & calibration of Feeders",COM,2025-11-11,2025-11-20,,,,1.13.3.19.2.1(Mills)
6222,"Drives like I/L gates, O/L gates, HAD/G, CAD/G, etc commissioning",COM,2025-11-18,2025-11-20,,,,1.13.3.19.2.1(Mills)
6223,SEAL AIR FAN,ERC,2026-04-22,2026-05-05,,,,1.13.3.19(C&I READINESS FOR COAL FIRING)
6224,Seal Air System Instrumentation,ERC,2026-04-22,2026-05-01,,,,1.13.3.19.3(SEAL AIR FAN)
6225,Protection Checking & Motor & Fan Trial,COM,2026-05-02,2026-05-05,,,,1.13.3.19.3(SEAL AIR FAN)
6226,Boiler C&I Required for Coal Firing,ERC,2025-06-03,2026-04-25,,,,1.13.3.19(C&I READINESS FOR COAL FIRING)
6227,SH & RH Spray System,ERC,2026-03-27,2026-04-10,,,,1.13.3.19.4(Boiler C&I Required for Coal Firing)
6228,Burner Tilt Commissioning,COM,2026-04-06,2026-04-20,,,,1.13.3.19.4(Boiler C&I Required for Coal Firing)
6229,Erection & Commissioning of O2 Analysers,COM,2025-06-03,2025-09-30,,,,1.13.3.19.4(Boiler C&I Required for Coal Firing)
6230,ERV commissioning,COM,2026-04-06,2026-04-20,,,,1.13.3.19.4(Boiler C&I Required for Coal Firing)
6231,Soot Blower System Instrumentation & commissioning of MOVs/CVs/SOVs,COM,2025-07-30,2025-08-18,,,,1.13.3.19.4(Boiler C&I Required for Coal Firing)
6232,SWAS -Erection & Commissioning,COM,2026-04-06,2026-04-25,,,,1.13.3.19.4(Boiler C&I Required for Coal Firing)
6233,TDBFP,ERC,2026-02-11,2026-04-18,,,,1.13.3.19(C&I READINESS FOR COAL FIRING)
6234,L.O. System Instrumentation,ERC,2026-02-11,2026-02-20,,,,1.13.3.19.5(TDBFP)
6235,LGB & Commissioning & Cabling,COM,2026-02-11,2026-02-20,,,,1.13.3.19.5(TDBFP)
6236,"Impulse piping of LO LGB, Seal Wtr LGB, FW LIR-HYD, BP/BFP Suction Strainer DPT, etc.",ERC,2026-02-21,2026-03-04,,,,1.13.3.19.5(TDBFP)
6237,LO Drives commissioning,COM,2026-03-05,2026-03-09,,,,1.13.3.19.5(TDBFP)
6238,TSI & Speed Probes Installation,ERC,2026-03-10,2026-03-19,,,,1.13.3.19.5(TDBFP)
6239,Barring Gear,ERC,2026-03-20,2026-03-20,,,,1.13.3.19.5(TDBFP)
6240,"Stm Line, GS line, Exhaust - Instrumentation & CV commissioning",COM,2026-03-21,2026-03-28,,,,1.13.3.19.5(TDBFP)
6241,Governing System Commissioning,COM,2026-03-29,2026-04-01,,,,1.13.3.19.5(TDBFP)
6242,TDBFP Solo Run,COM,2026-04-02,2026-04-02,,,,1.13.3.19.5(TDBFP)
6243,Gearbox Instrumentation,ERC,2026-04-03,2026-04-04,,,,1.13.3.19.5(TDBFP)
6244,FW System Instrumentation,ERC,2026-04-05,2026-04-14,,,,1.13.3.19.5(TDBFP)
6245,Copper tubing & commissioning of BFP Re-circulation valve,COM,2026-04-15,2026-04-16,,,,1.13.3.19.5(TDBFP)
6246,Discharge MOV commissioning,COM,2026-04-17,2026-04-17,,,,1.13.3.19.5(TDBFP)
6247,TDBFP Coupled Trial,ERC,2026-04-18,2026-04-18,,,,1.13.3.19.5(TDBFP)
6248,E&C of EPABX (Telephone) system,ERC,2025-07-27,2026-04-17,,,,1.13.3(Erection)
6249,E&C of AAQMS,ERC,2026-04-16,2026-05-15,,,,1.13.3(Erection)
6250,BOP Systems,OTH,2022-09-27,2026-08-05,2022-09-27,,,"1(EPC Package for Talcher Thermal Power Project, Stage-III (2X660MW))"
6251,Chimney,OTH,2023-07-13,2025-11-30,,,,1.14(BOP Systems)
6252,Chimney- Detailed Engineering & RELEASE OF DRAWING,PE - RFC,2023-07-13,2023-07-13,,,,1.14.1(Chimney)
6253,Chimney- Readiness for BLU,COM,2025-09-01,2025-09-01,,,,1.14.1(Chimney)
6254,Chimney- Complete Readiness,COM,2025-11-30,2025-11-30,,,,1.14.1(Chimney)
6255,Chimney- CIVIL Work,CIV,2023-07-14,2024-11-27,,,,1.14.1(Chimney)
6256,Chimney- Excavation & PCC,CIV,2023-07-14,2023-08-17,,,,1.14.1.4(Chimney- CIVIL Work)
6257,Chimney- Reinforcement fixing & Raft segment casting,CIV,2023-08-03,2024-01-02,,,,1.14.1.4(Chimney- CIVIL Work)
6258,Chimney- Reinforcement cutting & Bending Works,CIV,2023-08-03,2023-09-21,,,,1.14.1.4.2(Chimney- Reinforcement fixing & Raft segment casting)
6259,Chimney- Raft ,CIV,2023-08-23,2023-12-20,,,,1.14.1.4.2(Chimney- Reinforcement fixing & Raft segment casting)
6260,Chimney- Starter Block for slipform work,CIV,2023-12-31,2024-01-02,,,,1.14.1.4.2(Chimney- Reinforcement fixing & Raft segment casting)
6261,Chimney- Backfilling Works,CIV,2023-12-26,2024-01-24,,,,1.14.1.4(Chimney- CIVIL Work)
6262,Chimney- Slipform apparatus arrival @ site,CIV,2023-12-20,2023-12-20,,,,1.14.1.4(Chimney- CIVIL Work)
6263,Chimney- Slipform Erection to start at site,CIV,2024-01-08,2024-03-02,,,,1.14.1.4(Chimney- CIVIL Work)
6264,Chimney- Shell Casting includes platforms & door openings,CIV,2024-03-13,2024-11-27,,,,1.14.1.4(Chimney- CIVIL Work)
6265,Chimney- Shell Casting includes platforms at 45 mtr height,CIV,2024-03-13,2024-05-06,,,,1.14.1.4.6(Chimney- Shell Casting includes platforms & door openings)
6266,Chimney- Shell Casting includes platforms at 90 mtr height,CIV,2024-05-14,2024-06-27,,,,1.14.1.4.6(Chimney- Shell Casting includes platforms & door openings)
6267,Chimney- Shell Casting includes platforms at 135 mtr height,CIV,2024-07-05,2024-08-13,,,,1.14.1.4.6(Chimney- Shell Casting includes platforms & door openings)
6268,Chimney- Shell Casting includes platforms at 180 mtr height,CIV,2024-08-21,2024-09-24,,,,1.14.1.4.6(Chimney- Shell Casting includes platforms & door openings)
6269,Chimney- Shell Casting includes platforms at 225 mtr height,CIV,2024-10-02,2024-10-31,,,,1.14.1.4.6(Chimney- Shell Casting includes platforms & door openings)
6270,Chimney- Shell Casting includes platforms at 270 mtr height,CIV,2024-11-08,2024-11-27,,,,1.14.1.4.6(Chimney- Shell Casting includes platforms & door openings)
6271,Chimney- Preassembly of Main beams & Supporting Beams of Inner Support Structure,CIV,2024-06-01,2024-11-27,,,,1.14.1(Chimney)
6272,Chimney- Preassembly of Steel Flue,CIV,2024-06-01,2024-11-27,,,,1.14.1(Chimney)
6273,"Chimney- Inner supporting structure Erection , alignment & fixing in position",CIV,2024-12-13,2025-05-01,,,,1.14.1(Chimney)
6274,Chimney-Erection & alignment at 270 Mtr height,CIV,2024-12-13,2025-01-11,,,,"1.14.1.7(Chimney- Inner supporting structure Erection , alignment & fixing in position)"
6275,Chimney-Erection & alignment at 225 Mtr height,CIV,2025-01-17,2025-02-10,,,,"1.14.1.7(Chimney- Inner supporting structure Erection , alignment & fixing in position)"
6276,Chimney-Erection & alignment at 180 Mtr height,CIV,2025-02-16,2025-03-07,,,,"1.14.1.7(Chimney- Inner supporting structure Erection , alignment & fixing in position)"
6277,Chimney-Erection & alignment at 135 Mtr height,CIV,2025-03-13,2025-04-01,,,,"1.14.1.7(Chimney- Inner supporting structure Erection , alignment & fixing in position)"
6278,Chimney-Erection & alignment at 90 Mtr height,CIV,2025-04-07,2025-04-21,,,,"1.14.1.7(Chimney- Inner supporting structure Erection , alignment & fixing in position)"
6279,Chimney-Erection & alignment at 45 mtr height,CIV,2025-04-22,2025-05-01,,,,"1.14.1.7(Chimney- Inner supporting structure Erection , alignment & fixing in position)"
6280,Chimney-Flue Erection with borosilicate/Titanium/C276 Alloy lining,CIV,2025-05-07,2025-09-01,,,,1.14.1(Chimney)
6281,Chimney-Erection from 275 Mtr to 225 Mtr height,CIV,2025-05-07,2025-05-26,,,,1.14.1.8(Chimney-Flue Erection with borosilicate/Titanium/C276 Alloy lining)
6282,Chimney-Erection 225 Mtr to 180 Mtr height,CIV,2025-06-01,2025-06-18,,,,1.14.1.8(Chimney-Flue Erection with borosilicate/Titanium/C276 Alloy lining)
6283,Chimney-Erection from 180 mtr to 135 Mtr height,CIV,2025-06-24,2025-07-09,,,,1.14.1.8(Chimney-Flue Erection with borosilicate/Titanium/C276 Alloy lining)
6284,Chimney-Erection from 135 mtr to 90 Mtr height,CIV,2025-07-15,2025-07-30,,,,1.14.1.8(Chimney-Flue Erection with borosilicate/Titanium/C276 Alloy lining)
6285,Chimney-Erection from 90 mtr to 45 Mtr height,CIV,2025-08-05,2025-08-17,,,,1.14.1.8(Chimney-Flue Erection with borosilicate/Titanium/C276 Alloy lining)
6286,Chimney-Erection from 45 Mtr to 0.00 mtr height,CIV,2025-08-23,2025-09-01,,,,1.14.1.8(Chimney-Flue Erection with borosilicate/Titanium/C276 Alloy lining)
6287,Chimney- Painting of Outer shell structure,CIV,2025-09-05,2025-11-03,,,,1.14.1(Chimney)
6288,Chimney- Painting upto platforms at 45 mtr height,CIV,2025-09-05,2025-09-14,,,,1.14.1.9(Chimney- Painting of Outer shell structure)
6289,Chimney- Painting upto platform at 90 mtr height,CIV,2025-09-15,2025-09-24,,,,1.14.1.9(Chimney- Painting of Outer shell structure)
6290,Chimney- Painting upto platform at 135 mtr height,CIV,2025-09-25,2025-10-04,,,,1.14.1.9(Chimney- Painting of Outer shell structure)
6291,Chimney- Painting upto platform at 180 mtr height,CIV,2025-10-05,2025-10-14,,,,1.14.1.9(Chimney- Painting of Outer shell structure)
6292,Chimney- Painting upto platform at 225 mtr height,CIV,2025-10-15,2025-10-24,,,,1.14.1.9(Chimney- Painting of Outer shell structure)
6293,Chimney- Painting upto platforms at 270 mtr height,CIV,2025-10-25,2025-11-03,,,,1.14.1.9(Chimney- Painting of Outer shell structure)
6294,Chimney- Grade slab Casting & earthing rod installation,CIV,2025-09-22,2025-11-20,,,,1.14.1(Chimney)
6295,"Chimney-Supply & Fixing of aviation lights, lightening arrestor, Chimney Lift &COMPLETION of other Electrical Works",CIV,2025-09-02,2025-11-30,,,,1.14.1(Chimney)
6296,NDCT cooling Tower,CIV,2023-05-19,2025-12-26,,,,1.14(BOP Systems)
6297, NDCT Execution Agency(Ordering by PEM),CIV,2023-05-19,2023-12-15,,,,1.14.2(NDCT cooling Tower)
6298,Enquiry,ENQ,2023-05-19,2023-05-19,,,,1.14.2.1( NDCT Execution Agency(Ordering by PEM))
6299,PO Placement,ORD,2023-05-20,2023-10-16,,,,1.14.2.1( NDCT Execution Agency(Ordering by PEM))
6300, Submission of Basic Engineering Design/Drgs,ENG,2023-10-17,2023-12-15,,,,1.14.2.1( NDCT Execution Agency(Ordering by PEM))
6301,Supply for Cooling Tower,SUP,2024-12-25,2025-05-23,,,,1.14.2(NDCT cooling Tower)
6302, Cooling  Tower- Dispatch: Fill,DIS,2024-12-25,2025-04-23,,,,1.14.2.2(Supply for Cooling Tower)
6303, Cooling  Tower- Dispatch: Distribution Pipe,DIS,2024-12-25,2025-04-23,,,,1.14.2.2(Supply for Cooling Tower)
6304, Cooling  Tower- Dispatch: Nozzles,DIS,2024-12-25,2025-04-23,,,,1.14.2.2(Supply for Cooling Tower)
6305, Cooling  Tower- Dispatch: Butterfly Valve,DIS,2024-12-25,2025-04-23,,,,1.14.2.2(Supply for Cooling Tower)
6306, Cooling  Tower- Dispatch: Pumps/ Motors and connecting pipes and valves,DIS,2024-12-25,2025-04-23,,,,1.14.2.2(Supply for Cooling Tower)
6307, Cooling  Tower- Dispatch: AW Lights and other lights and fittings,DIS,2024-12-25,2025-04-23,,,,1.14.2.2(Supply for Cooling Tower)
6308," Cooling  Tower- Dispatch: Cable, Tray and distribution board",DIS,2024-12-25,2025-04-23,,,,1.14.2.2(Supply for Cooling Tower)
6309, Cooling  Tower- Dispatch: Lighting protection equipment,DIS,2024-12-25,2025-04-23,,,,1.14.2.2(Supply for Cooling Tower)
6310, Cooling  Tower- Dispatch: Earthing,DIS,2024-12-25,2025-04-23,,,,1.14.2.2(Supply for Cooling Tower)
6311," Cooling  Tower- Dispatch: Miscellaneous items - Gates, Sluice valve, Thermowell etc",DIS,2024-12-25,2025-05-23,,,,1.14.2.2(Supply for Cooling Tower)
6312, Cooling Tower Civil Work,CIV,2023-12-16,2025-12-26,,,,1.14.2(NDCT cooling Tower)
6313, Cooling Tower Civil : Excavation,CIV,2023-12-16,2024-01-29,,,,1.14.2.3( Cooling Tower Civil Work)
6314, Cooling Tower Civil : PCC Under Foundation,CIV,2023-12-31,2024-02-13,,,,1.14.2.3( Cooling Tower Civil Work)
6315, Cooling Tower Civil : Raft/Footing Casting,CIV,2024-01-15,2024-03-19,,,,1.14.2.3( Cooling Tower Civil Work)
6316, Cooling Tower Civil : Pedestal Casting,CIV,2024-02-19,2024-03-31,,,,1.14.2.3( Cooling Tower Civil Work)
6317, Cooling Tower Civil : Racker Column Casting,CIV,2024-03-02,2024-07-29,,,,1.14.2.3( Cooling Tower Civil Work)
6318, Cooling Tower Civil : Tower Crane Erection,ERC,2024-02-19,2024-03-19,,,,1.14.2.3( Cooling Tower Civil Work)
6319, Cooling Tower Civil : Ring Beam Casting,CIV,2024-05-01,2024-08-28,,,,1.14.2.3( Cooling Tower Civil Work)
6320, Cooling Tower Civil : PCC for Pound,CIV,2024-02-29,2024-04-28,,,,1.14.2.3( Cooling Tower Civil Work)
6321, Cooling Tower Civil : RCC for pound floor ,CIV,2024-03-30,2024-07-27,,,,1.14.2.3( Cooling Tower Civil Work)
6322, Cooling Tower Civil : Pound wall RCC,CIV,2024-04-14,2024-08-11,,,,1.14.2.3( Cooling Tower Civil Work)
6323, Cooling Tower Civil : Shell Casting including top platform (Approx 100 Lift),CIV,2024-06-15,2025-07-02,,,,1.14.2.3( Cooling Tower Civil Work)
6324, Cooling Tower Civil : Shell casting Initial manual lifts,CIV,2024-09-01,2024-10-25,,,,1.14.2.3.11( Cooling Tower Civil : Shell Casting including top platform (Approx 100 Lift))
6325, Cooling Tower Civil : Jump form erection,CIV,2024-06-15,2024-09-22,,,,1.14.2.3.11( Cooling Tower Civil : Shell Casting including top platform (Approx 100 Lift))
6326, Cooling Tower Civil : Shell casting- next 27 nos lifts,CIV,2024-10-26,2024-12-19,,,,1.14.2.3.11( Cooling Tower Civil : Shell Casting including top platform (Approx 100 Lift))
6327, Cooling Tower Civil : Shell casting - next 23 nos lifts,CIV,2024-12-20,2025-02-02,,,,1.14.2.3.11( Cooling Tower Civil : Shell Casting including top platform (Approx 100 Lift))
6328, Cooling Tower Civil : shell casting - next 23 nos lifts,CIV,2025-02-03,2025-03-19,,,,1.14.2.3.11( Cooling Tower Civil : Shell Casting including top platform (Approx 100 Lift))
6329, Cooling Tower Civil : shell casting- next 25 nos  lift,CIV,2025-03-20,2025-05-08,,,,1.14.2.3.11( Cooling Tower Civil : Shell Casting including top platform (Approx 100 Lift))
6330, Cooling Tower Civil : shell casting COMPLETION including top platform,CIV,2025-05-09,2025-07-02,,,,1.14.2.3.11( Cooling Tower Civil : Shell Casting including top platform (Approx 100 Lift))
6331,Inner Grillage columns casting,CIV,2024-06-01,2025-11-12,,,,1.14.2.3( Cooling Tower Civil Work)
6332, Cooling Tower Civil : Grillage columns 1st lift,CIV,2024-06-01,2024-10-03,,,,1.14.2.3.12(Inner Grillage columns casting)
6333, Cooling Tower Civil : Grillage columns 2nd lift,CIV,2024-09-04,2025-01-06,,,,1.14.2.3.12(Inner Grillage columns casting)
6334, Cooling Tower Civil : Bottom connecting beam,CIV,2024-12-08,2025-04-01,,,,1.14.2.3.12(Inner Grillage columns casting)
6335, Cooling Tower Civil : Top connecting beam,CIV,2025-03-03,2025-06-25,,,,1.14.2.3.12(Inner Grillage columns casting)
6336, Cooling Tower Civil : Auxiliary /secondary connecting bottom beams,CIV,2025-05-27,2025-09-03,,,,1.14.2.3.12(Inner Grillage columns casting)
6337, Cooling Tower Civil : Auxiliary /secondary connecting top beams,CIV,2025-08-05,2025-11-12,,,,1.14.2.3.12(Inner Grillage columns casting)
6338, Cooling Tower Civil : Precast Auxiliary 1st tier,CIV,2025-04-02,2025-06-30,,,,1.14.2.3.12(Inner Grillage columns casting)
6339, Cooling Tower Civil : Precast Auxiliary 2nd tier,CIV,2025-07-01,2025-09-28,,,,1.14.2.3.12(Inner Grillage columns casting)
6340, Cooling Tower Civil :Erection of duct columns 1st lift,ERC,2025-04-02,2025-06-30,,,,1.14.2.3.12(Inner Grillage columns casting)
6341, Cooling Tower Civil :Erection of duct columns 2nd lift,ERC,2025-05-02,2025-07-30,,,,1.14.2.3.12(Inner Grillage columns casting)
6342, Cooling Tower Civil :Erection of grillage bracket 1st lift,ERC,2025-05-02,2025-07-30,,,,1.14.2.3.12(Inner Grillage columns casting)
6343, Cooling Tower Civil :Erection of grillage bracket 2nd lift,ERC,2025-06-01,2025-08-29,,,,1.14.2.3.12(Inner Grillage columns casting)
6344, Cooling Tower Civil : Stair case & Ladders,CIV,2025-06-03,2025-09-20,,,,1.14.2.3( Cooling Tower Civil Work)
6345, Cooling Tower Civil :COMPLETION of work,CIV,2025-11-13,2025-12-26,,,,1.14.2.3( Cooling Tower Civil Work)
6346, Cooling Tower E&C ,ERC,2025-01-04,2025-11-25,,,,1.14.2(NDCT cooling Tower)
6347," Cooling Tower E&C :Erection of Fill, Distribution pipe & Nozzle",ERC,2025-06-18,2025-10-15,,,,1.14.2.4( Cooling Tower E&C )
6348," Cooling Tower E&C :Erection of Pump, connecting pipes and Valve",ERC,2025-08-17,2025-10-15,,,,1.14.2.4( Cooling Tower E&C )
6349, Cooling Tower E&C : Fabrication Tower E&C of Hot water piping,ERC,2025-01-04,2025-06-02,,,,1.14.2.4( Cooling Tower E&C )
6350," Cooling Tower E&C :Erection of Cable Tray, AW Lights and other lights and fittings",ERC,2025-06-03,2025-09-10,,,,1.14.2.4( Cooling Tower E&C )
6351, Cooling Tower E&C :Erection of Lighting protection equipment,ERC,2025-06-03,2025-09-10,,,,1.14.2.4( Cooling Tower E&C )
6352," Cooling Tower E&C :Erection of Miscellaneous items - Gates, Sluice valve , Thermowell etc",ERC,2025-09-11,2025-10-10,,,,1.14.2.4( Cooling Tower E&C )
6353, Cooling Tower E&C : Commissioning,COM,2025-11-13,2025-11-25,,,,1.14.2.4( Cooling Tower E&C )
6354,Air Conditioning System,ERC,2023-10-27,2026-01-19,,,,1.14(BOP Systems)
6355, Rel of Dwg for Air conditioning system,PE - RFC,2024-06-18,2024-06-18,,,,1.14.3(Air Conditioning System)
6356, Air conditioning system Execution Agency,PRC,2023-10-27,2024-03-26,,,,1.14.3(Air Conditioning System)
6357,Enquiry,ENQ,2023-10-27,2023-10-27,,,,1.14.3.2( Air conditioning system Execution Agency)
6358,PO Placement,ORD,2024-03-26,2024-03-26,,,,1.14.3.2( Air conditioning system Execution Agency)
6359, Air Conditioning  System-Dispatch,DIS,2024-10-23,2025-01-20,,,,1.14.3(Air Conditioning System)
6360, Air Conditioning  System-Dispatch: Screw Chiller Unit,DIS,2024-10-23,2024-11-21,,,,1.14.3.3( Air Conditioning  System-Dispatch)
6361, Air Conditioning  System-Dispatch: Cooling Water Pumps,DIS,2024-10-23,2024-11-21,,,,1.14.3.3( Air Conditioning  System-Dispatch)
6362, Air Conditioning  System-Dispatch: Chilled Water Pumps,DIS,2024-10-23,2024-11-21,,,,1.14.3.3( Air Conditioning  System-Dispatch)
6363, Air Conditioning  System-Dispatch: Pipe & Fittings,DIS,2024-11-22,2024-12-21,,,,1.14.3.3( Air Conditioning  System-Dispatch)
6364, Air Conditioning  System-Dispatch: AHU,DIS,2024-12-22,2025-01-20,,,,1.14.3.3( Air Conditioning  System-Dispatch)
6365, Air Conditioning  System-Dispatch: Duct & Dampers,DIS,2024-12-22,2025-01-20,,,,1.14.3.3( Air Conditioning  System-Dispatch)
6366, Air Conditioning  System-Dispatch: Cable & Cable Tray,DIS,2024-12-22,2025-01-20,,,,1.14.3.3( Air Conditioning  System-Dispatch)
6367, Air Conditioning  System-Dispatch: Valves,DIS,2024-11-22,2024-12-21,,,,1.14.3.3( Air Conditioning  System-Dispatch)
6368, Air Conditioning  System-Dispatch: Misc. Items,DIS,2024-12-22,2025-01-20,,,,1.14.3.3( Air Conditioning  System-Dispatch)
6369,E&C for AIR CONDITIONING SYSTEM,ERC,2024-11-22,2026-01-19,,,,1.14.3(Air Conditioning System)
6370, AIR CONDITIONING SYSTEM E&C:Water cooled screw chiller unit,ERC,2024-11-22,2024-12-21,,,,1.14.3.4(E&C for AIR CONDITIONING SYSTEM)
6371, AIR CONDITIONING SYSTEM E&C:Condenser cooling water pumps,ERC,2024-12-22,2025-02-04,,,,1.14.3.4(E&C for AIR CONDITIONING SYSTEM)
6372, AIR CONDITIONING SYSTEM E&C:Chilled Water circulating Pumps,ERC,2025-02-05,2025-03-21,,,,1.14.3.4(E&C for AIR CONDITIONING SYSTEM)
6373, AIR CONDITIONING SYSTEM E&C:Cooling Tower,ERC,2025-03-22,2025-07-19,,,,1.14.3.4(E&C for AIR CONDITIONING SYSTEM)
6374, AIR CONDITIONING SYSTEM E&C:Interconnecting piping,ERC,2025-05-21,2025-09-17,,,,1.14.3.4(E&C for AIR CONDITIONING SYSTEM)
6375, AIR CONDITIONING SYSTEM E&C:Air Handling Units,ERC,2025-06-20,2025-10-17,,,,1.14.3.4(E&C for AIR CONDITIONING SYSTEM)
6376, AIR CONDITIONING SYSTEM E&C:Ducting / Dampers / Hangers / Supports / Fire dampers,ERC,2025-07-20,2025-12-16,,,,1.14.3.4(E&C for AIR CONDITIONING SYSTEM)
6377," AIR CONDITIONING SYSTEM E&C:Electrical & C&I, Misc. item",ERC,2025-08-19,2026-01-05,,,,1.14.3.4(E&C for AIR CONDITIONING SYSTEM)
6378, AIR CONDITIONING SYSTEME&C:AC SYSTEM Commissioning,COM,2026-01-06,2026-01-19,,,,1.14.3.4(E&C for AIR CONDITIONING SYSTEM)
6379,Air Compressor System,ERC,2023-08-23,2025-12-21,,,,1.14(BOP Systems)
6380, Rel of Dwg for Air compressor house,PE - RFC,2024-06-04,2024-06-04,,,PCE-04400,1.14.4(Air Compressor System)
6381, Air compressor system Execution Agency,PRC,2023-08-23,2024-01-20,,,,1.14.4(Air Compressor System)
6382,Enquiry,ENQ,2023-08-23,2023-08-23,,,,1.14.4.2( Air compressor system Execution Agency)
6383,PO Placement,ORD,2023-08-24,2024-01-20,,,,1.14.4.2( Air compressor system Execution Agency)
6384, Civil,CIV,2024-06-05,2025-12-21,,,,1.14.4(Air Compressor System)
6385, Air Compressor Building: Foundation,CIV,2024-06-05,2024-12-01,,,,1.14.4.3( Civil)
6386, Air Compressor Building: Structure Erection,ERC,2024-12-02,2025-03-31,,,,1.14.4.3( Civil)
6387, Air Compressor Building: Grade Slab,CIV,2025-04-01,2025-04-30,,,,1.14.4.3( Civil)
6388, Air Compressor Building: Cladding & Sheeting,CIV,2025-04-01,2025-04-30,,,,1.14.4.3( Civil)
6389, Air Compressor Building: EOT Erection,ERC,2025-04-01,2025-07-29,,,,1.14.4.3( Civil)
6390, Air Compressor Building: Brick Work & Plastering,CIV,2025-07-30,2025-10-27,,,,1.14.4.3( Civil)
6391, Air Compressor Building: Flooring,CIV,2025-10-28,2025-11-21,,,,1.14.4.3( Civil)
6392, Air Compressor Building: Finishing works,CIV,2025-11-22,2025-12-21,,,,1.14.4.3( Civil)
6393,Supply-PEM,SUP,2024-09-07,2024-10-21,,,,1.14.4(Air Compressor System)
6394,Dispatch of COMPRESSED AIR SYSTEM: Instrument & Service air Compressors,DIS,2024-09-07,2024-10-06,,,,1.14.4.4(Supply-PEM)
6395,Dispatch of COMPRESSED AIR SYSTEM: Air Dryer,DIS,2024-09-07,2024-10-06,,,,1.14.4.4(Supply-PEM)
6396,Dispatch of COMPRESSED AIR SYSTEM: Air receiver tank,DIS,2024-09-07,2024-10-06,,,,1.14.4.4(Supply-PEM)
6397,Dispatch of COMPRESSED AIR SYSTEM: Pipe & Fittings,DIS,2024-09-22,2024-10-21,,,,1.14.4.4(Supply-PEM)
6398,Dispatch of COMPRESSED AIR SYSTEM: Valves,DIS,2024-09-22,2024-10-21,,,,1.14.4.4(Supply-PEM)
6399,Dispatch of COMPRESSED AIR SYSTEM: Cables and cable tray and other electrical & C&I  items,DIS,2024-09-22,2024-10-21,,,,1.14.4.4(Supply-PEM)
6400,Dispatch of COMPRESSED AIR SYSTEM: PLC,DIS,2024-09-22,2024-10-21,,,,1.14.4.4(Supply-PEM)
6401,Dispatch of COMPRESSED AIR SYSTEM: Misc. Items,DIS,2024-09-22,2024-10-21,,,,1.14.4.4(Supply-PEM)
6402,Erection,ERC,2025-05-01,2025-10-24,,,,1.14.4(Air Compressor System)
6403,E&C for compressed air system: ERECTION OF DRYER FOR INSTRUMENT AIR COMPRESSOR,ERC,2025-05-01,2025-05-07,,,,1.14.4.5(Erection)
6404,E&C for compressed air Misc. OF RECEIVER TANK FOR INSTRUMENT AIR COMPRESSOR,ERC,2025-05-08,2025-05-14,,,,1.14.4.5(Erection)
6405,E&C for compressed air system: PLACEMENT OF INSTRUMENT AIR COMPRESSOR ON ON FOUNDATION,ERC,2025-05-15,2025-06-03,,,,1.14.4.5(Erection)
6406,E&C for compressed air system: PLACEMENT OF DRYER FOR SERVICE AIR COMPRESSOR,ERC,2025-06-04,2025-06-10,,,,1.14.4.5(Erection)
6407,E&C for compressed air system: PLACEMENT OF RECEIVER TANK FOR SERVICE AIR COMPRESSOR,ERC,2025-06-11,2025-06-17,,,,1.14.4.5(Erection)
6408,E&C for compressed air system: PLACEMENT OF SERVICE AIR COMPRESSOR ON ON FOUNDATION,ERC,2025-06-18,2025-07-07,,,,1.14.4.5(Erection)
6409,E&C for compressed air system: PLACEMENT OF PIPES AND FITTINGS,ERC,2025-07-08,2025-08-21,,,,1.14.4.5(Erection)
6410,E&C for compressed air system: PLACEMENT OF VALVES,ERC,2025-08-22,2025-09-08,,,,1.14.4.5(Erection)
6411,"E&C for compressed air system: PLACEMENT OF PLC, Electrical , C&I and misc. items FOR COMRESSED AIR SYSTEM",ERC,2025-09-09,2025-10-08,,,,1.14.4.5(Erection)
6412,E&C for compressed air system: Commissioning of compressed air system,COM,2025-10-09,2025-10-24,,,,1.14.4.5(Erection)
6413,Water Treatment system ,CIV,2023-06-04,2025-12-26,,,,1.14(BOP Systems)
6414,Raw Water Storage Reservoir & Pump house,CIV,2023-07-14,2025-04-14,,,,1.14.5(Water Treatment system )
6415,Civil,CIV,2023-07-14,2025-04-14,,,,1.14.5.1(Raw Water Storage Reservoir & Pump house)
6416,Rel of DWG for Raw water storage tank,PE - RFC,2023-09-27,2023-09-27,,,PCE-05700,1.14.5.1.1(Civil)
6417,Rel of DWG for Raw water PH,PE - RFC,2023-12-26,2023-12-26,,,PCE-05800,1.14.5.1.1(Civil)
6418,RAW WATER RESERVOIR,CIV,2023-10-28,2024-04-09,,,,1.14.5.1.1(Civil)
6419,  EXCAVATION,CIV,2023-10-28,2023-11-21,,,,1.14.5.1.1.3(RAW WATER RESERVOIR)
6420,  PCC,CIV,2023-11-22,2023-12-06,,,,1.14.5.1.1.3(RAW WATER RESERVOIR)
6421,  RCC,CIV,2023-12-07,2024-03-05,,,,1.14.5.1.1.3(RAW WATER RESERVOIR)
6422,  Backfilling,CIV,2024-03-06,2024-03-20,,,,1.14.5.1.1.3(RAW WATER RESERVOIR)
6423,  Finishing works,CIV,2024-03-21,2024-04-09,,,,1.14.5.1.1.3(RAW WATER RESERVOIR)
6424,RAW WATER CONTROL ROOM,CIV,2023-07-14,2023-12-25,,,,1.14.5.1.1(Civil)
6425,  EXCAVATION,CIV,2023-07-14,2023-08-07,,,,1.14.5.1.1.4(RAW WATER CONTROL ROOM)
6426,  PCC,CIV,2023-08-08,2023-08-22,,,,1.14.5.1.1.4(RAW WATER CONTROL ROOM)
6427,  RCC,CIV,2023-08-23,2023-11-20,,,,1.14.5.1.1.4(RAW WATER CONTROL ROOM)
6428,  Backfilling,CIV,2023-11-21,2023-12-05,,,,1.14.5.1.1.4(RAW WATER CONTROL ROOM)
6429,  Finishing works,CIV,2023-12-06,2023-12-25,,,,1.14.5.1.1.4(RAW WATER CONTROL ROOM)
6430,Raw Water Pump House,CIV,2024-01-26,2025-04-14,,,,1.14.5.1.1(Civil)
6431,Raw Water Pump House: EXCAVATION,CIV,2024-01-26,2024-02-19,,,,1.14.5.1.1.5(Raw Water Pump House)
6432,Raw Water Pump House: RCC in substructure including PCC,CIV,2024-02-20,2024-05-19,,,,1.14.5.1.1.5(Raw Water Pump House)
6433,Raw Water Pump House: RCC in superstructure including equipment foundation,CIV,2024-05-20,2024-09-16,,,,1.14.5.1.1.5(Raw Water Pump House)
6434,Raw Water Pump House: Brick Work & Plastering,CIV,2024-09-17,2024-12-15,,,,1.14.5.1.1.5(Raw Water Pump House)
6435,Raw Water Pump House: Flooring,CIV,2024-12-16,2025-01-14,,,,1.14.5.1.1.5(Raw Water Pump House)
6436,Raw Water Pump House: Backfilling,CIV,2025-01-15,2025-02-13,,,,1.14.5.1.1.5(Raw Water Pump House)
6437,Raw Water Pump House: Finishing works,CIV,2025-02-14,2025-04-14,,,,1.14.5.1.1.5(Raw Water Pump House)
6438,Erection,ERC,2023-11-01,2025-03-14,,,,1.14.5.1(Raw Water Storage Reservoir & Pump house)
6439,Raw water Piping and associated work,CIV,2023-11-01,2025-02-07,,,,1.14.5.1.2(Erection)
6440,Readiness of Control room,CIV,2023-12-06,2025-03-14,,,,1.14.5.1.2(Erection)
6441,Pre-treatment Plant,CIV,2023-06-04,2025-09-25,,,,1.14.5(Water Treatment system )
6442, PT Plant Execution Agency,PRC,2023-06-04,2024-06-15,,,,1.14.5.2(Pre-treatment Plant)
6443,Enquiry,ENQ,2023-06-04,2023-06-04,,,,1.14.5.2.1( PT Plant Execution Agency)
6444,PO Placement,ORD,2023-11-17,2023-11-17,,,,1.14.5.2.1( PT Plant Execution Agency)
6445, Rel of Drawing for Cascade Aerator/Flash Mixer/Stilting Chamber/Parshall Flume,PE - RFC,2024-05-16,2024-05-16,,,,1.14.5.2.1( PT Plant Execution Agency)
6446, Rel of Drg for CLARI FOCULATOR,PE - RFC,2024-06-15,2024-06-15,,,,1.14.5.2.1( PT Plant Execution Agency)
6447, Rel of Drg for Chemical House,PE - RFC,2024-06-15,2024-06-15,,,PCE-06100,1.14.5.2.1( PT Plant Execution Agency)
6448, Rel of Drg for Pump House,PE - RFC,2024-06-15,2024-06-15,,,PCE-06200,1.14.5.2.1( PT Plant Execution Agency)
6449,Civil Work,CIV,2024-06-16,2025-07-20,,,,1.14.5.2(Pre-treatment Plant)
6450, Cascade Aerator/Flash Mixer/Stilting Chamber/Parshall Flume,CIV,2024-06-16,2024-12-12,,,,1.14.5.2.2(Civil Work)
6451,EXCAVATION,CIV,2024-06-16,2024-07-10,,,,1.14.5.2.2.1( Cascade Aerator/Flash Mixer/Stilting Chamber/Parshall Flume)
6452,RCC in substructure including PCC,CIV,2024-07-11,2024-08-14,,,,1.14.5.2.2.1( Cascade Aerator/Flash Mixer/Stilting Chamber/Parshall Flume)
6453,RCC in superstructure,CIV,2024-08-15,2024-10-13,,,,1.14.5.2.2.1( Cascade Aerator/Flash Mixer/Stilting Chamber/Parshall Flume)
6454,Backfilling,CIV,2024-10-14,2024-10-28,,,,1.14.5.2.2.1( Cascade Aerator/Flash Mixer/Stilting Chamber/Parshall Flume)
6455,Finishing works,CIV,2024-10-29,2024-12-12,,,,1.14.5.2.2.1( Cascade Aerator/Flash Mixer/Stilting Chamber/Parshall Flume)
6456, CLARI FOCULATOR,CIV,2024-06-26,2025-02-20,,,,1.14.5.2.2(Civil Work)
6457,EXCAVATION,CIV,2024-06-26,2024-07-20,,,,1.14.5.2.2.2( CLARI FOCULATOR)
6458,RCC in substructure including PCC,CIV,2024-07-21,2024-09-13,,,,1.14.5.2.2.2( CLARI FOCULATOR)
6459,RCC in superstructure,CIV,2024-09-14,2024-12-07,,,,1.14.5.2.2.2( CLARI FOCULATOR)
6460,Backfilling,CIV,2024-12-08,2024-12-22,,,,1.14.5.2.2.2( CLARI FOCULATOR)
6461,Finishing works,CIV,2025-02-11,2025-02-20,,,,1.14.5.2.2.2( CLARI FOCULATOR)
6462, Chemical House,CIV,2024-06-26,2025-07-20,,,,1.14.5.2.2(Civil Work)
6463,EXCAVATION,CIV,2024-06-26,2024-07-10,,,,1.14.5.2.2.3( Chemical House)
6464,RCC in substructure including PCC,CIV,2024-07-11,2024-08-14,,,,1.14.5.2.2.3( Chemical House)
6465,RCC in superstructure including equipment foundation,CIV,2024-08-15,2024-11-12,,,,1.14.5.2.2.3( Chemical House)
6466,Brick Work & Plastering,CIV,2024-12-13,2025-03-12,,,,1.14.5.2.2.3( Chemical House)
6467,Flooring,CIV,2025-03-13,2025-04-01,,,,1.14.5.2.2.3( Chemical House)
6468,Backfilling,CIV,2025-04-02,2025-04-21,,,,1.14.5.2.2.3( Chemical House)
6469,Finishing works,CIV,2025-04-22,2025-07-20,,,,1.14.5.2.2.3( Chemical House)
6470, Pump House,CIV,2024-06-26,2025-06-15,,,,1.14.5.2.2(Civil Work)
6471,EXCAVATION,CIV,2024-06-26,2024-07-15,,,,1.14.5.2.2.4( Pump House)
6472,RCC in substructure including PCC,CIV,2024-07-16,2024-08-19,,,,1.14.5.2.2.4( Pump House)
6473,RCC in superstructure including equipment foundation,CIV,2024-08-20,2024-11-17,,,,1.14.5.2.2.4( Pump House)
6474,Brick Work & Plastering,CIV,2024-12-08,2025-02-05,,,,1.14.5.2.2.4( Pump House)
6475,Flooring,CIV,2025-02-06,2025-02-25,,,,1.14.5.2.2.4( Pump House)
6476,Backfilling,CIV,2025-02-26,2025-03-17,,,,1.14.5.2.2.4( Pump House)
6477,Finishing works,CIV,2025-03-18,2025-06-15,,,,1.14.5.2.2.4( Pump House)
6478,Supply,SUP,2024-07-15,2024-12-08,,,,1.14.5.2(Pre-treatment Plant)
6479,Dispatch of Rake mechanism with drive & motor,DIS,2024-08-04,2024-11-02,,,,1.14.5.2.3(Supply)
6480,Dispatch of Transfer Pumps,DIS,2024-07-15,2024-10-07,,,,1.14.5.2.3(Supply)
6481,Dispatch of Injection Pumps ,DIS,2024-08-14,2024-10-24,,,,1.14.5.2.3(Supply)
6482,Dispatch of Dosing Pumps,DIS,2024-08-14,2024-10-24,,,,1.14.5.2.3(Supply)
6483,Dispatch of Agitator with motor ,DIS,2024-08-04,2024-10-03,,,,1.14.5.2.3(Supply)
6484,"Dispatch of Piping, Fittings and valves",DIS,2024-08-14,2024-11-13,,,,1.14.5.2.3(Supply)
6485,"Dispatch of Electrical & C&I items (Transmitters, local instruments, cable, junction box, PLC etc.)",DIS,2024-08-14,2024-12-08,,,,1.14.5.2.3(Supply)
6486,Dispatch of Misc. Items & Potable pump,DIS,2024-08-14,2024-12-08,,,,1.14.5.2.3(Supply)
6487,Erection,ERC,2024-11-18,2025-09-25,,,,1.14.5.2(Pre-treatment Plant)
6488,Erection of Mixer cum solid recirculation device with drive and motor,ERC,2024-12-23,2025-02-10,,,,1.14.5.2.4(Erection)
6489,Erection of Rake mechanism with drive & motor,ERC,2024-12-23,2025-02-10,,,,1.14.5.2.4(Erection)
6490,"Erection of Transfer Pumps (Sludge, Lime Slake etc)",ERC,2024-11-23,2024-12-12,,,,1.14.5.2.4(Erection)
6491,Erection of Injection Pumps (Alum etc),ERC,2024-11-18,2024-12-07,,,,1.14.5.2.4(Erection)
6492,"Erection of Dosing Pumps (Poly electrolyte, lime solution etc)",ERC,2024-11-18,2024-12-07,,,,1.14.5.2.4(Erection)
6493,Erection of Agitator and motor for Alum/Lime Slaking/Lime Solution,ERC,2024-11-18,2024-12-07,,,,1.14.5.2.4(Erection)
6494,"Erection of Piping, Fittings and valves",ERC,2024-12-13,2025-02-10,,,,1.14.5.2.4(Erection)
6495,"Erection of Electrical, C&I & Misc. items",ERC,2025-02-11,2025-04-16,,,,1.14.5.2.4(Erection)
6496,Commissioning of clarifier along with Chlorination and Filter water system to feed the DM Plant,COM,2025-02-11,2025-02-15,,,,1.14.5.2.4(Erection)
6497,"Commissioning of 1st CW Clarifier, clarified water pumps and associated System to feed clarified water to CW system",COM,2025-04-17,2025-07-26,,,,1.14.5.2.4(Erection)
6498,Commissioning of 2nd Clarifier for CW System,COM,2025-07-27,2025-09-25,,,,1.14.5.2.4(Erection)
6499,Commissioning of Potable Water System,COM,2025-03-13,2025-05-26,,,,1.14.5.2.4(Erection)
6500,Commissioning of Service water system,COM,2025-03-13,2025-07-26,,,,1.14.5.2.4(Erection)
6501,DM Plant,OTH,2023-06-23,2025-07-20,,,,1.14.5(Water Treatment system )
6502, Rel of Dwg for DM Plant Building,PE - RFC,2024-02-09,2024-02-09,,,PCE-06300,1.14.5.3(DM Plant)
6503, Rel of Dwg for DM Plant equipment foundation,PE - RFC,2025-02-07,2025-02-07,,,PCE-06400,1.14.5.3(DM Plant)
6504, Rel of Dwg for DM Plant Neutralization Pit,PE - RFC,2024-09-09,2024-09-09,,,PCE-06500,1.14.5.3(DM Plant)
6505, DM Plant Execution Agency,PRC,2023-06-23,2024-01-19,,,,1.14.5.3(DM Plant)
6506,Enquiry,ENQ,2023-06-23,2023-06-23,,,,1.14.5.3.4( DM Plant Execution Agency)
6507,PO Placement,ORD,2023-06-24,2023-11-20,,,,1.14.5.3.4( DM Plant Execution Agency)
6508, Submission of Basic Engineering Design/Drgs,ENG,2023-11-21,2024-01-19,,,,1.14.5.3.4( DM Plant Execution Agency)
6509, Civil Works,CIV,2024-02-10,2025-05-19,,,,1.14.5.3(DM Plant)
6510, Acid alkali Unloading & storage area,CIV,2024-02-10,2024-12-25,,,,1.14.5.3.5( Civil Works)
6511,EXCAVATION,CIV,2024-02-10,2024-02-29,,,,1.14.5.3.5.1( Acid alkali Unloading & storage area)
6512,RCC in substructure including PCC,CIV,2024-03-01,2024-04-04,,,,1.14.5.3.5.1( Acid alkali Unloading & storage area)
6513,RCC in superstructure including equipment foundation,CIV,2024-04-05,2024-05-19,,,,1.14.5.3.5.1( Acid alkali Unloading & storage area)
6514,Brick Work & Plastering,CIV,2024-11-16,2024-11-25,,,,1.14.5.3.5.1( Acid alkali Unloading & storage area)
6515,Flooring,CIV,2024-11-26,2024-12-05,,,,1.14.5.3.5.1( Acid alkali Unloading & storage area)
6516,Backfilling,CIV,2024-12-06,2024-12-15,,,,1.14.5.3.5.1( Acid alkali Unloading & storage area)
6517,Finishing works,CIV,2024-12-16,2024-12-25,,,,1.14.5.3.5.1( Acid alkali Unloading & storage area)
6518, DM Plant Building including Vessel Foundation,CIV,2024-02-10,2025-05-19,,,,1.14.5.3.5( Civil Works)
6519,EXCAVATION,CIV,2024-02-10,2024-03-10,,,,1.14.5.3.5.2( DM Plant Building including Vessel Foundation)
6520,RCC in substructure including PCC,CIV,2024-03-11,2024-04-29,,,,1.14.5.3.5.2( DM Plant Building including Vessel Foundation)
6521,RCC in superstructure including equipment foundation,CIV,2024-04-30,2024-07-28,,,,1.14.5.3.5.2( DM Plant Building including Vessel Foundation)
6522,Backfilling,CIV,2024-07-29,2024-08-17,,,,1.14.5.3.5.2( DM Plant Building including Vessel Foundation)
6523,Brick Work & Plastering,CIV,2024-12-01,2025-01-29,,,,1.14.5.3.5.2( DM Plant Building including Vessel Foundation)
6524,Flooring,CIV,2025-01-30,2025-02-18,,,,1.14.5.3.5.2( DM Plant Building including Vessel Foundation)
6525,Finishing works,CIV,2025-02-19,2025-05-19,,,,1.14.5.3.5.2( DM Plant Building including Vessel Foundation)
6526, Neutralization Pit,CIV,2024-09-10,2025-02-21,,,,1.14.5.3.5( Civil Works)
6527,EXCAVATION,CIV,2024-09-10,2024-10-14,,,,1.14.5.3.5.3( Neutralization Pit)
6528,RCC in substructure including PCC,CIV,2024-10-15,2024-11-23,,,,1.14.5.3.5.3( Neutralization Pit)
6529,RCC in superstructure,CIV,2024-11-24,2024-12-23,,,,1.14.5.3.5.3( Neutralization Pit)
6530,Backfilling,CIV,2024-12-24,2025-01-07,,,,1.14.5.3.5.3( Neutralization Pit)
6531,Acid Proof lining,CIV,2025-01-08,2025-02-21,,,,1.14.5.3.5.3( Neutralization Pit)
6532,Supply for DM Plant,SUP,2024-04-04,2024-08-01,,,,1.14.5.3(DM Plant)
6533,Dispatch of Activated carbon filter,DIS,2024-04-04,2024-05-18,,,,1.14.5.3.6(Supply for DM Plant)
6534,Dispatch of Cation Exchange Unit,DIS,2024-04-04,2024-05-18,,,,1.14.5.3.6(Supply for DM Plant)
6535,Dispatch of Anion Exchange Unit,DIS,2024-04-04,2024-05-18,,,,1.14.5.3.6(Supply for DM Plant)
6536,Dispatch of Mix Bed Exchanger Unit,DIS,2024-04-04,2024-05-18,,,,1.14.5.3.6(Supply for DM Plant)
6537,Dispatch of Agitators,DIS,2024-05-19,2024-07-02,,,,1.14.5.3.6(Supply for DM Plant)
6538,Dispatch of Air Blowers,DIS,2024-05-19,2024-07-02,,,,1.14.5.3.6(Supply for DM Plant)
6539,Dispatch of Supply & Transfer Pumps,DIS,2024-04-04,2024-05-18,,,,1.14.5.3.6(Supply for DM Plant)
6540,Dispatch of Unloading Pumps,DIS,2024-04-04,2024-05-18,,,,1.14.5.3.6(Supply for DM Plant)
6541,Dispatch of Storage/Measuring Tanks,DIS,2024-04-04,2024-05-18,,,,1.14.5.3.6(Supply for DM Plant)
6542,"Dispatch of Pipe, Fittings & Valves",DIS,2024-04-04,2024-05-18,,,,1.14.5.3.6(Supply for DM Plant)
6543,"Dispatch of Electrical & C&I Items (Motors, Measuring instruments, Cable tray, JBs, Control panel etc.)",DIS,2024-06-18,2024-08-01,,,,1.14.5.3.6(Supply for DM Plant)
6544,Dispatch of Balance Items,DIS,2024-06-18,2024-08-01,,,,1.14.5.3.6(Supply for DM Plant)
6545,Erection,ERC,2024-07-19,2025-07-20,,,,1.14.5.3(DM Plant)
6546,Erection of Activated carbon filter,ERC,2024-07-29,2024-10-26,,,,1.14.5.3.7(Erection)
6547,Erection of Cation Exchange Unit,ERC,2024-07-29,2024-10-26,,,,1.14.5.3.7(Erection)
6548,Erection of Anion Exchange Unit,ERC,2024-07-29,2024-10-26,,,,1.14.5.3.7(Erection)
6549,Erection of Mix Bed Exchanger,ERC,2024-07-29,2024-10-26,,,,1.14.5.3.7(Erection)
6550,Agitators,ERC,2024-10-27,2024-11-10,,,,1.14.5.3.7(Erection)
6551,Erection of Air Blowers,ERC,2024-11-11,2024-11-30,,,,1.14.5.3.7(Erection)
6552,Erection of Supply & Transfer Pumps,ERC,2024-08-18,2024-11-05,,,,1.14.5.3.7(Erection)
6553,Erection of Unloading Pumps,ERC,2024-08-08,2024-10-26,,,,1.14.5.3.7(Erection)
6554,Erection of Storage/Measuring Tanks,ERC,2024-07-29,2024-11-15,,,,1.14.5.3.7(Erection)
6555,"Erection of Pipe, Fittings & Valves",ERC,2024-07-19,2024-11-05,,,,1.14.5.3.7(Erection)
6556,"Electrical , C&I and Misc. Items (DTT, Motors, Measuring instruments, Cable tray, JBs, Control panel etc.)",ERC,2024-09-22,2024-11-05,,,,1.14.5.3.7(Erection)
6557,Readiness for HT(Completion of DM Plant: 1st Stream along with associated systems and Charging of DM Fill System),ERC,2025-02-16,2025-02-20,,,,1.14.5.3.7(Erection)
6558,Completion of DM Plant (Balance streams),ERC,2025-02-21,2025-07-20,,,,1.14.5.3.7(Erection)
6559,Effluent Treatment Plant with ZLD,OTH,2023-12-01,2025-12-26,,,,1.14.5(Water Treatment system )
6560,ETP Execution Agency,PRC,2023-12-01,2024-08-27,,,,1.14.5.4(Effluent Treatment Plant with ZLD)
6561,Enquiry,ENQ,2023-12-01,2023-12-01,,,,1.14.5.4.1(ETP Execution Agency)
6562,PO Placement,ORD,2023-12-02,2024-06-28,,,,1.14.5.4.1(ETP Execution Agency)
6563,Engineering Design/Drgs,ENG,2024-06-29,2024-08-27,,,,1.14.5.4.1(ETP Execution Agency)
6564,Civil,CIV,2024-09-13,2025-07-14,,,,1.14.5.4(Effluent Treatment Plant with ZLD)
6565,EXCAVATION,CIV,2024-09-13,2024-10-27,,,,1.14.5.4.2(Civil)
6566,RCC in substructure including PCC,CIV,2024-10-28,2025-01-15,,,,1.14.5.4.2(Civil)
6567,RCC in superstructure including equipment foundation,CIV,2025-01-16,2025-05-15,,,,1.14.5.4.2(Civil)
6568,Backfilling,CIV,2025-05-16,2025-06-14,,,,1.14.5.4.2(Civil)
6569,Finishing works,CIV,2025-06-15,2025-07-14,,,,1.14.5.4.2(Civil)
6570,Supply,SUP,2025-03-16,2025-05-14,,,,1.14.5.4(Effluent Treatment Plant with ZLD)
6571,"ATMOSPHERIC TANKS (Flash Mixer, Floculator, Alkali Dosing and Alum Dosing Tank)",SUP,2025-03-16,2025-05-14,,,,1.14.5.4.3(Supply)
6572,"AGITATORS, STRAINERS ",SUP,2025-03-16,2025-05-14,,,,1.14.5.4.3(Supply)
6573,TUBES/MEDIA FOR INCLINED SURFACE SETTLER AND OIL WATER SEPERATOR ,SUP,2025-03-16,2025-05-14,,,,1.14.5.4.3(Supply)
6574,PUMPS & BLOWERS,SUP,2025-03-16,2025-05-14,,,,1.14.5.4.3(Supply)
6575,PIPING AND FITTINGS,SUP,2025-03-16,2025-05-14,,,,1.14.5.4.3(Supply)
6576,VALVES ,SUP,2025-03-16,2025-05-14,,,,1.14.5.4.3(Supply)
6577,ELECTRICAL ITEMS,SUP,2025-03-16,2025-05-14,,,,1.14.5.4.3(Supply)
6578,INSTRUMENTS AND CONTROL SYSTEM,SUP,2025-03-16,2025-05-14,,,,1.14.5.4.3(Supply)
6579,MISC ITEMS,SUP,2025-03-16,2025-05-14,,,,1.14.5.4.3(Supply)
6580,Erection,ERC,2025-07-15,2025-12-26,,,,1.14.5.4(Effluent Treatment Plant with ZLD)
6581,"ATMOSPHERIC TANKS (Flash Mixer, Floculator, Alkali Dosing and Alum Dosing Tank)",ERC,2025-07-15,2025-08-03,,,,1.14.5.4.4(Erection)
6582,TUBES/MEDIA FOR INCLINED SURFACE SETTLER AND OIL WATER SEPERATOR ,ERC,2025-08-04,2025-09-17,,,,1.14.5.4.4(Erection)
6583,"AGITATORS, STRAINERS ",ERC,2025-09-18,2025-10-07,,,,1.14.5.4.4(Erection)
6584,PUMPS & BLOWERS,ERC,2025-07-15,2025-08-03,,,,1.14.5.4.4(Erection)
6585,PIPING AND FITTINGS ALOGWITH VALVES,ERC,2025-08-04,2025-10-02,,,,1.14.5.4.4(Erection)
6586,ELECTRICAL ITEMS,ERC,2025-09-03,2025-11-01,,,,1.14.5.4.4(Erection)
6587,INSTRUMENTS AND CONTROL SYSTEM,ERC,2025-09-03,2025-11-11,,,,1.14.5.4.4(Erection)
6588,MISC ITEMS,ERC,2025-10-28,2025-11-26,,,,1.14.5.4.4(Erection)
6589,COMMISSIONING,COM,2025-11-27,2025-12-26,,,,1.14.5.4.4(Erection)
6590,Fuel Oil Handling system,OTH,2023-08-23,2025-11-17,,,,1.14(BOP Systems)
6591, Rel of DWG for LDO,PE - RFC,2024-06-14,2024-06-14,,,,1.14.6(Fuel Oil Handling system)
6592, Rel of DWG for FO TR Pump House,PE - RFC,2024-06-28,2024-06-28,,,,1.14.6(Fuel Oil Handling system)
6593, Rel of DWG for FO Pressurizing Pump House,PE - RFC,2024-06-14,2024-06-14,,,PCE-06800,1.14.6(Fuel Oil Handling system)
6594, FO system Execution Agency,PRC,2023-08-23,2024-03-20,,,,1.14.6(Fuel Oil Handling system)
6595,Enquiry,ENQ,2023-08-23,2023-08-23,,,,1.14.6.4( FO system Execution Agency)
6596,PO Placement,ORD,2023-08-24,2024-03-20,,,,1.14.6.4( FO system Execution Agency)
6597, Civil,CIV,2024-06-24,2025-09-17,,,,1.14.6(Fuel Oil Handling system)
6598,LDO Day Tank Foundation,CIV,2024-06-24,2024-10-27,,,,1.14.6.5( Civil)
6599,  LDO Day Tank Foundation: EXCAVATION,CIV,2024-06-24,2024-07-13,,,,1.14.6.5.1(LDO Day Tank Foundation)
6600,  LDO Day Tank Foundation: RCC in substructure including PCC,CIV,2024-07-14,2024-08-17,,,,1.14.6.5.1(LDO Day Tank Foundation)
6601,  LDO Day Tank Foundation: RCC in superstructure,CIV,2024-08-18,2024-10-01,,,,1.14.6.5.1(LDO Day Tank Foundation)
6602,  LDO Day Tank Foundation: Backfilling,CIV,2024-10-02,2024-10-11,,,,1.14.6.5.1(LDO Day Tank Foundation)
6603,  LDO Day Tank Foundation: Finishing works,CIV,2024-10-12,2024-10-27,,,,1.14.6.5.1(LDO Day Tank Foundation)
6604, FO Pressurizing pump house & Unloading pump house,CIV,2024-06-25,2025-09-17,,,,1.14.6.5( Civil)
6605, FO Pressurizing pump house: Foundation,CIV,2024-06-25,2024-12-21,,,,1.14.6.5.2( FO Pressurizing pump house & Unloading pump house)
6606," FO Pressurizing pump house: Mixer, Floculator, Alkali",CIV,2024-12-22,2025-04-20,,,,1.14.6.5.2( FO Pressurizing pump house & Unloading pump house)
6607, FO Pressurizing pump house: Grade Slab,CIV,2025-04-21,2025-05-20,,,,1.14.6.5.2( FO Pressurizing pump house & Unloading pump house)
6608, FO Pressurizing pump house: Cladding & Sheeting,CIV,2025-04-21,2025-05-20,,,,1.14.6.5.2( FO Pressurizing pump house & Unloading pump house)
6609," FO Pressurizing pump house: Mixer, Floculator, Alkali",CIV,2025-05-21,2025-09-17,,,,1.14.6.5.2( FO Pressurizing pump house & Unloading pump house)
6610, FO Pressurizing pump house: Brick Work & Plastering,CIV,2025-05-21,2025-08-18,,,,1.14.6.5.2( FO Pressurizing pump house & Unloading pump house)
6611, FO Pressurizing pump house: Flooring,CIV,2025-05-21,2025-06-14,,,,1.14.6.5.2( FO Pressurizing pump house & Unloading pump house)
6612, FO Pressurizing pump house: Finishing works,CIV,2025-08-19,2025-09-17,,,,1.14.6.5.2( FO Pressurizing pump house & Unloading pump house)
6613,Supply,SUP,2024-07-19,2025-01-14,,,,1.14.6(Fuel Oil Handling system)
6614,FOPH Dispatch- Steel for Day Tanks,SUP,2024-07-19,2024-09-16,,,,1.14.6.6(Supply)
6615,FOPH Dispatch-Transfer Pumps,SUP,2024-10-17,2024-12-15,,,,1.14.6.6(Supply)
6616,FOPH Dispatch- Pipes & Fittings,SUP,2024-11-16,2025-01-14,,,,1.14.6.6(Supply)
6617,FOPH Dispatch- Valves,SUP,2024-11-16,2025-01-14,,,,1.14.6.6(Supply)
6618,"FOPH Dispatch- Electrical and C&l items(Instruments, Cable & Cable Trays etc.)",SUP,2024-11-16,2025-01-14,,,,1.14.6.6(Supply)
6619,FOPH Dispatch- Misc. items,SUP,2024-11-16,2025-01-14,,,,1.14.6.6(Supply)
6620,Erection,ERC,2024-11-07,2025-11-17,,,,1.14.6(Fuel Oil Handling system)
6621,E&C FO System: Fabrication of  LDO Day Tank,ERC,2024-11-07,2025-03-21,,,,1.14.6.7(Erection)
6622,E&C FO System: Water fill Test of LDO Tank,ERC,2025-03-22,2025-03-31,,,,1.14.6.7(Erection)
6623,E&C FO System: Erection of transfer Pumps,ERC,2025-04-01,2025-04-20,,,,1.14.6.7(Erection)
6624,E&C FO Misc. of  LDO Pump,ERC,2025-05-21,2025-07-19,,,,1.14.6.7(Erection)
6625,E&C FO Misc. of Piping from PUMP House to Boiler,ERC,2025-07-20,2025-11-07,,,,1.14.6.7(Erection)
6626,E&C FO Misc. of piping and valves,ERC,2025-04-21,2025-05-30,,,,1.14.6.7(Erection)
6627,E&C FO System: Electrical and C&I /misc. items,ERC,2025-05-31,2025-06-19,,,,1.14.6.7(Erection)
6628,E&C FO System: Painting of Tanks,ERC,2025-06-20,2025-07-12,,,,1.14.6.7(Erection)
6629,E&C FO System: Testing & Commissioning,COM,2025-11-08,2025-11-17,,,,1.14.6.7(Erection)
6630,Site fabricated tank,OTH,2023-05-05,2025-12-24,,,,1.14(BOP Systems)
6631,Rel of dwg for Condensate storage tank,PE - RFC,2024-03-10,2024-03-10,,,PCE-06900,1.14.7(Site fabricated tank)
6632,Condensate Storage Tank,OTH,2023-05-05,2025-02-07,,,,1.14.7(Site fabricated tank)
6633,Site fabricated tank execution agency,OTH,2023-05-05,2024-04-02,,,,1.14.7.2(Condensate Storage Tank)
6634,Enquiry,ENQ,2023-05-05,2023-05-05,,,,1.14.7.2.1(Site fabricated tank execution agency)
6635,PO placement,ORD,2023-05-06,2023-10-02,,,,1.14.7.2.1(Site fabricated tank execution agency)
6636,Supply,SUP,2024-02-03,2024-04-02,,,,1.14.7.2.1(Site fabricated tank execution agency)
6637,Civil Work,CIV,2024-03-11,2024-07-23,,,,1.14.7.2(Condensate Storage Tank)
6638,Condensate Storage Tank Foundation,CIV,2024-03-11,2024-07-23,,,,1.14.7.2.2(Civil Work)
6639,Condensate Storage Tank Foundation - EXCAVATION,CIV,2024-03-11,2024-03-30,,,,1.14.7.2.2.1(Condensate Storage Tank Foundation)
6640,Condensate Storage Tank Foundation- PCC including RCC substructure,CIV,2024-03-31,2024-05-14,,,,1.14.7.2.2.1(Condensate Storage Tank Foundation)
6641,Condensate Storage Tank Foundation - RCC in super structure,CIV,2024-05-15,2024-06-28,,,,1.14.7.2.2.1(Condensate Storage Tank Foundation)
6642,Condensate Storage Tank Foundation - Backfilling,CIV,2024-06-29,2024-07-13,,,,1.14.7.2.2.1(Condensate Storage Tank Foundation)
6643,Condensate Storage Tank Foundation - Finishing,CIV,2024-07-14,2024-07-23,,,,1.14.7.2.2.1(Condensate Storage Tank Foundation)
6644,Erection,ERC,2024-07-24,2025-02-07,,,,1.14.7.2(Condensate Storage Tank)
6645,E&C of CST - Fabrication &Erection of Bottom Plate,ERC,2024-07-24,2024-08-07,,,,1.14.7.2.3(Erection)
6646,E&C of CST -Marking of edge preparation & Rolling of shell plates,ERC,2024-08-03,2024-08-27,,,,1.14.7.2.3(Erection)
6647,"E&C of CST -Shifting, Erection & Alignment of Shell Plates",ERC,2024-08-28,2024-10-26,,,,1.14.7.2.3(Erection)
6648,E&C of CST -Erection of Curb Angle,ERC,2024-10-27,2024-11-07,,,,1.14.7.2.3(Erection)
6649,E&C of CST -NDT of Tee & Horizontal Joint,ERC,2024-11-10,2024-11-16,,,,1.14.7.2.3(Erection)
6650,E&C of CST -Erection of Roof Structure,ERC,2024-11-17,2024-11-23,,,,1.14.7.2.3(Erection)
6651,E&C of CST -Erection of Roof Plate,ERC,2024-11-24,2024-11-30,,,,1.14.7.2.3(Erection)
6652,E&C of CST -Erection of Nozzles,ERC,2024-12-03,2024-12-05,,,,1.14.7.2.3(Erection)
6653,E&C of CST -Vacuum Test of Bottom Plate,ERC,2024-12-06,2024-12-07,,,,1.14.7.2.3(Erection)
6654,E&C of CST -Vacuum Test of Roof Plate,ERC,2024-12-08,2024-12-09,,,,1.14.7.2.3(Erection)
6655,E&C of CST -Erection of Staircase & Railing,ERC,2024-12-10,2024-12-21,,,,1.14.7.2.3(Erection)
6656,E&C of CST -Water Filled Test,ERC,2024-12-24,2024-12-28,,,,1.14.7.2.3(Erection)
6657,"E&C of CST -Cleaning , Sand Blasting & Painting of Tank (Internal)",ERC,2024-12-31,2025-01-08,,,,1.14.7.2.3(Erection)
6658,E&C of CST -Cleaning & Painting of Tank (External),ERC,2025-01-09,2025-01-17,,,,1.14.7.2.3(Erection)
6659,E&C of CST -Erection of NaOH Breather & Seal Pot,ERC,2025-01-28,2025-02-05,,,,1.14.7.2.3(Erection)
6660,E&C of CST - Readiness of CST,ERC,2025-02-06,2025-02-07,,,,1.14.7.2.3(Erection)
6661,Readiness of other site fabricated tank,ERC,2025-02-08,2025-12-24,,,,1.14.7(Site fabricated tank)
6662,CW & ACW System,ERC,2022-09-27,2025-11-25,,,,1.14(BOP Systems)
6663,Civil Work,CIV,2024-01-10,2025-11-25,,,,1.14.8(CW & ACW System)
6664, Rel of Drawing for CW Sump,PE - RFC,2024-01-10,2024-01-10,,,PCE-07000,1.14.8.1(Civil Work)
6665, Rel of Drawing for CW Pump House,PE - RFC,2024-07-08,2024-07-08,,,PCE-07100,1.14.8.1(Civil Work)
6666, Rel of Drawing for CW Channel,PE - RFC,2024-12-05,2024-12-05,,,,1.14.8.1(Civil Work)
6667, CW Pump House & ACW pump house,OTH,2024-01-11,2025-11-25,,,,1.14.8.1(Civil Work)
6668, CW & ACW Sump & Forebay,CIV,2024-01-11,2024-08-22,,,,1.14.8.1.4( CW Pump House & ACW pump house)
6669, CW & ACW Sump & Forebay: Excavation & PCC,CIV,2024-01-11,2024-02-09,,,,1.14.8.1.4.1( CW & ACW Sump & Forebay)
6670, CW & ACW Sump & Forebay: Sump Raft Casting,CIV,2024-02-10,2024-03-25,,,,1.14.8.1.4.1( CW & ACW Sump & Forebay)
6671, CW & ACW Sump & Forebay: Fore Bay Raft Casting,CIV,2024-03-26,2024-05-09,,,,1.14.8.1.4.1( CW & ACW Sump & Forebay)
6672, CW & ACW Sump & Forebay: Fore Bay Retaining walls Casting,CIV,2024-05-10,2024-08-07,,,,1.14.8.1.4.1( CW & ACW Sump & Forebay)
6673, CW & ACW Sump & Forebay: Backfilling,CIV,2024-08-08,2024-08-22,,,,1.14.8.1.4.1( CW & ACW Sump & Forebay)
6674, CW & ACW Sump & Forebay: Sump wall 1st Lift,CIV,2024-03-26,2024-04-14,,,,1.14.8.1.4.1( CW & ACW Sump & Forebay)
6675, CW & ACW Sump & Forebay: Sump wall 2nd Lift,CIV,2024-04-15,2024-05-04,,,,1.14.8.1.4.1( CW & ACW Sump & Forebay)
6676, CW & ACW Sump & Forebay: Sump wall final Lift,CIV,2024-05-05,2024-05-24,,,,1.14.8.1.4.1( CW & ACW Sump & Forebay)
6677, CW & ACW Sump & Forebay: Pump slab casting,CIV,2024-05-25,2024-06-23,,,,1.14.8.1.4.1( CW & ACW Sump & Forebay)
6678, Concrete Volute Pump,CIV,2024-05-05,2024-10-11,,,,1.14.8.1.4( CW Pump House & ACW pump house)
6679, Concrete Volute Pump: First Stage Casting,CIV,2024-05-05,2024-06-18,,,,1.14.8.1.4.2( Concrete Volute Pump)
6680, Concrete Volute Pump: Second Stage casting,CIV,2024-06-24,2024-08-07,,,,1.14.8.1.4.2( Concrete Volute Pump)
6681, Concrete Volute Pump: Third Stage Casting,CIV,2024-08-13,2024-09-11,,,,1.14.8.1.4.2( Concrete Volute Pump)
6682, Concrete Volute Pump: Final Stage Casting & HT,CIV,2024-09-17,2024-10-11,,,,1.14.8.1.4.2( Concrete Volute Pump)
6683, CW Pump House Building,CIV,2024-07-09,2025-11-25,,,,1.14.8.1.4( CW Pump House & ACW pump house)
6684,CW Pump House Building: Foundation,CIV,2024-07-09,2025-01-04,,,,1.14.8.1.4.3( CW Pump House Building)
6685,CW Pump House Building: Forebay: Fore,CIV,2025-01-05,2025-05-04,,,,1.14.8.1.4.3( CW Pump House Building)
6686,CW Pump House Building: Grade Slab,CIV,2025-05-05,2025-06-03,,,,1.14.8.1.4.3( CW Pump House Building)
6687,CW Pump House Building: Cladding & Sheeting,CIV,2025-05-05,2025-06-03,,,,1.14.8.1.4.3( CW Pump House Building)
6688,CW Pump House Building: EOT Erection,ERC,2025-06-04,2025-10-01,,,,1.14.8.1.4.3( CW Pump House Building)
6689,CW Pump House Building:: Brick Work & Plastering,CIV,2025-07-04,2025-10-01,,,,1.14.8.1.4.3( CW Pump House Building)
6690,CW Pump House Building: Flooring,CIV,2025-10-02,2025-10-26,,,,1.14.8.1.4.3( CW Pump House Building)
6691,CW Pump House Building: Finishing works,CIV,2025-10-27,2025-11-25,,,,1.14.8.1.4.3( CW Pump House Building)
6692,CW Channel,CIV,2024-07-19,2025-08-02,,,,1.14.8.1(Civil Work)
6693,Excavation,CIV,2025-02-04,2025-08-02,,,,1.14.8.1.5(CW Channel)
6694,PCC,CIV,2024-11-06,2025-05-04,,,,1.14.8.1.5(CW Channel)
6695,RCC,CIV,2024-07-19,2025-02-03,,,,1.14.8.1.5(CW Channel)
6696,Mechanical Erection (Valves/Gates etc),ERC,2025-02-04,2025-06-03,,,,1.14.8.1.5(CW Channel)
6697,Supply,SUP,2022-09-27,2025-04-22,,,,1.14.8(CW & ACW System)
6698,BOI- PEM - MISC.PUMPS (VERTICAL) ,SUP,2023-07-14,2024-09-05,,,,1.14.8.2(Supply)
6699,Ordering,ORD,2023-07-14,2023-10-11,,,,1.14.8.2.1(BOI- PEM - MISC.PUMPS (VERTICAL) )
6700,Detailed Engineering,ENG,2023-10-12,2024-03-09,,,,1.14.8.2.1(BOI- PEM - MISC.PUMPS (VERTICAL) )
6701,Manufacturing,MFG,2024-03-10,2024-08-06,,,,1.14.8.2.1(BOI- PEM - MISC.PUMPS (VERTICAL) )
6702,Dispatch,DIS,2024-08-07,2024-09-05,,,,1.14.8.2.1(BOI- PEM - MISC.PUMPS (VERTICAL) )
6703,BOI-PEM - M.E. BELLOWS ,SUP,2023-08-23,2024-10-15,,,,1.14.8.2(Supply)
6704,Ordering,ORD,2023-08-23,2023-11-20,,,,1.14.8.2.2(BOI-PEM - M.E. BELLOWS )
6705,Detailed Engineering,ENG,2023-11-21,2024-04-18,,,,1.14.8.2.2(BOI-PEM - M.E. BELLOWS )
6706,Manufacturing,MFG,2024-04-19,2024-09-15,,,,1.14.8.2.2(BOI-PEM - M.E. BELLOWS )
6707,Dispatch,DIS,2024-09-16,2024-10-15,,,,1.14.8.2.2(BOI-PEM - M.E. BELLOWS )
6708,BOI-PEM - SELF CLEANING STRAINERS ,SUP,2023-09-12,2024-11-04,,,,1.14.8.2(Supply)
6709,Ordering,ORD,2023-09-12,2023-12-10,,,,1.14.8.2.3(BOI-PEM - SELF CLEANING STRAINERS )
6710,Detailed Engineering,ENG,2023-12-11,2024-05-08,,,,1.14.8.2.3(BOI-PEM - SELF CLEANING STRAINERS )
6711,Manufacturing,MFG,2024-05-09,2024-10-05,,,,1.14.8.2.3(BOI-PEM - SELF CLEANING STRAINERS )
6712,Dispatch,DIS,2024-10-06,2024-11-04,,,,1.14.8.2.3(BOI-PEM - SELF CLEANING STRAINERS )
6713,BPL - CW Pump Motor,SUP,2023-07-27,2025-04-22,,,,1.14.8.2(Supply)
6714,"Engineering, INDENTING AND PROCUREMENT ",ENG,2023-07-27,2024-05-24,,,,1.14.8.2.4(BPL - CW Pump Motor)
6715,Manufacturing & TESTING ,MFG,2024-05-25,2025-02-21,,,,1.14.8.2.4(BPL - CW Pump Motor)
6716, Dispatch ,DIS,2025-02-22,2025-03-23,,,,1.14.8.2.4(BPL - CW Pump Motor)
6717,RECEIPT AT SITE ,REC,2025-03-24,2025-04-22,,,,1.14.8.2.4(BPL - CW Pump Motor)
6718,COOLING WATER PUMP (CV TYPE) -2 Nos (1 No Common for Both Units),OTH,2022-09-27,2025-01-17,,,,1.14.8.2(Supply)
6719,ENGINEERING & PROCUREMENT,ENG,2022-09-27,2023-12-25,,,,1.14.8.2.5(COOLING WATER PUMP (CV TYPE) -2 Nos (1 No Common for Both Units))
6720,MANUFACTURING,MFG,2023-12-26,2024-08-31,,,,1.14.8.2.5(COOLING WATER PUMP (CV TYPE) -2 Nos (1 No Common for Both Units))
6721,ASSEMBLY& TESTING,MFG,2024-09-01,2024-12-18,,,,1.14.8.2.5(COOLING WATER PUMP (CV TYPE) -2 Nos (1 No Common for Both Units))
6722,Dispatch OF COOLING WATER PUMP AND ALL ASSOCIATED ITEMS,DIS,2024-12-19,2025-01-17,,,,1.14.8.2.5(COOLING WATER PUMP (CV TYPE) -2 Nos (1 No Common for Both Units))
6723,Erection,ERC,2024-11-06,2025-10-09,,,,1.14.8(CW & ACW System)
6724,Placement and alignment of CW Pump,ERC,2025-06-04,2025-07-03,,,,1.14.8.3(Erection)
6725,Placement and alignment of CW Pump Motor,ERC,2025-06-04,2025-06-18,,,,1.14.8.3(Erection)
6726,Placement and alignment of ACW Pump,ERC,2025-06-04,2025-06-28,,,,1.14.8.3(Erection)
6727,Erection of SCS,ERC,2025-06-29,2025-07-13,,,,1.14.8.3(Erection)
6728,"Pipe, fittings & Valves for ACW system",ERC,2025-07-14,2025-10-09,,,,1.14.8.3(Erection)
6729,Erection of DISCHARGE PIPING FROM CWP TO CONDENSOR,ERC,2024-11-06,2025-07-03,,,,1.14.8.3(Erection)
6730,Erection of CW PIPING-CW INLET HEADER OF CONDENSER,ERC,2025-05-05,2025-07-03,,,,1.14.8.3(Erection)
6731,Erection of CW PIPING- CW OUTLET HEADER OF CONDENSER,ERC,2025-05-05,2025-07-03,,,,1.14.8.3(Erection)
6732,Erection of CW PIPING-HOT WATER PIPING FROM CONDENSER TO CT,ERC,2024-11-06,2025-07-03,,,,1.14.8.3(Erection)
6733,CW pump Electrical and C&I intersection,ERC,2025-02-04,2025-07-03,,,,1.14.8.3(Erection)
6734,CW pump trial,COM,2025-07-04,2025-07-13,,,,1.14.8.3(Erection)
6735,EOT Cranes For PH,OTH,2023-01-18,2024-07-28,,,,1.14(BOP Systems)
6736,Supply,SUP,2023-01-18,2024-03-12,,,,1.14.9(EOT Cranes For PH)
6737,BOI-PEM - D/G EOT CRANE,SUP,2023-01-18,2024-03-12,,,,1.14.9.1(Supply)
6738,Ordering,ORD,2023-01-18,2023-04-17,,,,1.14.9.1.1(BOI-PEM - D/G EOT CRANE)
6739,Detailed Engineering,ENG,2023-04-18,2023-09-14,,,,1.14.9.1.1(BOI-PEM - D/G EOT CRANE)
6740,Manufacturing,MFG,2023-09-15,2024-02-11,,,,1.14.9.1.1(BOI-PEM - D/G EOT CRANE)
6741,Dispatch,DIS,2024-02-12,2024-03-12,,,,1.14.9.1.1(BOI-PEM - D/G EOT CRANE)
6742,Erection,ERC,2024-03-28,2024-07-28,,,,1.14.9(EOT Cranes For PH)
6743,Inspection of power house AB Bay,ERC,2024-03-28,2024-04-01,,,,1.14.9.2(Erection)
6744,Erection of Crane girder in AB Bay,ERC,2024-04-02,2024-04-29,,,,1.14.9.2(Erection)
6745,Erection of Rails in AB Bay,ERC,2024-04-30,2024-06-10,,,,1.14.9.2(Erection)
6746,Assembly of Crane on girder in AB Bay,ERC,2024-06-11,2024-07-08,,,,1.14.9.2(Erection)
6747,Load testing of EOT crane in AB Bay,COM,2024-07-09,2024-07-18,,,,1.14.9.2(Erection)
6748,Commissioning of EOT crane in AB Bay,COM,2024-07-19,2024-07-28,,,,1.14.9.2(Erection)
6749,Ventilation System,OTH,2023-08-23,2026-03-26,,,,1.14(BOP Systems)
6750,RFC Air Washer Building drawings,PE - RFC,2024-05-29,2024-05-29,,,PCE-07500,1.14.10(Ventilation System)
6751, Ventilation system Execution Agency,PRC,2023-08-23,2024-01-20,,,,1.14.10(Ventilation System)
6752,Enquiry,ENQ,2023-08-23,2023-08-23,,,,1.14.10.2( Ventilation system Execution Agency)
6753,PO Placement,ORD,2023-08-24,2024-01-20,,,,1.14.10.2( Ventilation system Execution Agency)
6754, Ventilation System,PRC,2024-05-30,2025-06-03,,,,1.14.10(Ventilation System)
6755,Air Washer Building: EXCAVATION,CIV,2024-05-30,2024-06-18,,,,1.14.10.3( Ventilation System)
6756,Air Washer Building: RCC in substructure including PCC,CIV,2024-06-19,2024-07-28,,,,1.14.10.3( Ventilation System)
6757,Air Washer Building: RCC in superstructure along with equipment foundation,CIV,2024-07-29,2024-10-26,,,,1.14.10.3( Ventilation System)
6758,Air Washer Building: Brick Work & Plastering,CIV,2024-10-27,2025-01-24,,,,1.14.10.3( Ventilation System)
6759,Air Washer Building: Flooring,CIV,2025-01-25,2025-02-18,,,,1.14.10.3( Ventilation System)
6760,Air Washer Building: Backfilling,CIV,2025-02-19,2025-03-05,,,,1.14.10.3( Ventilation System)
6761,Air Washer Building: Finishing works,CIV,2025-03-06,2025-06-03,,,,1.14.10.3( Ventilation System)
6762,Supply,SUP,2024-09-17,2025-01-14,,,,1.14.10(Ventilation System)
6763,Ventilation System,SUP,2024-09-17,2025-01-14,,,,1.14.10.4(Supply)
6764,VENTILATION SYSTEM Dispatch-Centrifugal Fans,DIS,2024-10-17,2024-11-15,,,,1.14.10.4.1(Ventilation System)
6765,VENTILATION SYSTEM Dispatch-Air washer units,DIS,2024-10-17,2024-11-15,,,,1.14.10.4.1(Ventilation System)
6766,VENTILATION SYSTEM Dispatch-Air Filtration system,DIS,2024-10-17,2024-11-15,,,,1.14.10.4.1(Ventilation System)
6767,VENTILATION SYSTEM Dispatch-Roof Exhausters,DIS,2024-10-17,2024-11-15,,,,1.14.10.4.1(Ventilation System)
6768,VENTILATION SYSTEM Dispatch-Ducting / Dampers / Hangers / Supports / Fire dampers etc,DIS,2024-09-17,2025-01-14,,,,1.14.10.4.1(Ventilation System)
6769,VENTILATION SYSTEM Dispatch-Misc. Items,DIS,2024-10-17,2024-11-15,,,,1.14.10.4.1(Ventilation System)
6770,E&C for VENTILATION SYSTEM,ERC,2024-11-16,2026-03-26,,,,1.14.10(Ventilation System)
6771,E&C for VENTILATION Misc. of Centrifugal Fans complete,ERC,2024-11-16,2025-01-04,,,,1.14.10.5(E&C for VENTILATION SYSTEM)
6772,E&C for VENTILATION Misc. of Air washer units complete,ERC,2025-01-05,2025-03-05,,,,1.14.10.5(E&C for VENTILATION SYSTEM)
6773,E&C for VENTILATION Misc. of Air Filtration system complete,ERC,2025-03-06,2025-04-20,,,,1.14.10.5(E&C for VENTILATION SYSTEM)
6774,E&C for VENTILATION Misc. of Roof Exhausters complete,ERC,2025-04-21,2025-05-30,,,,1.14.10.5(E&C for VENTILATION SYSTEM)
6775,E&C for VENTILATION Misc. of Ducting / Dampers / Hangers / Supports / Fire dampers complete,ERC,2025-05-31,2025-11-26,,,,1.14.10.5(E&C for VENTILATION SYSTEM)
6776,E&C for VENTILATION SYSTEM: Electrical & C&I/Misc. items,ERC,2025-05-31,2025-11-26,,,,1.14.10.5(E&C for VENTILATION SYSTEM)
6777,E&C for VENTILATION SYSTEM:VENTILATION SYSTEM COMPLETE,ERC,2025-11-27,2026-03-26,,,,1.14.10.5(E&C for VENTILATION SYSTEM)
6778,Condensate Polishing Unit ,OTH,2023-07-24,2026-02-24,,,,1.14(BOP Systems)
6779,Rel of Dwg for CPU foundation,PE - RFC,2024-03-21,2024-03-21,,,PCE-07600,1.14.11(Condensate Polishing Unit )
6780,Condensate Polishing Unit,OTH,2023-07-24,2023-12-21,,,,1.14.11(Condensate Polishing Unit )
6781,Enquiry,ENQ,2023-07-24,2023-07-24,,,,1.14.11.2(Condensate Polishing Unit)
6782,PO Placement,ORD,2023-07-25,2023-12-21,,,,1.14.11.2(Condensate Polishing Unit)
6783,Civil,CIV,2024-04-21,2025-03-16,,,,1.14.11(Condensate Polishing Unit )
6784,Condensate Polishing Unit Regeneration Building: EXCAVATION,CIV,2024-04-21,2024-05-20,,,,1.14.11.3(Civil)
6785,Condensate Polishing Unit Regeneration Building: RCC in substructure including PCC,CIV,2024-05-21,2024-08-08,,,,1.14.11.3(Civil)
6786,Condensate Polishing Unit Regeneration Building: RCC in superstructure,CIV,2024-08-09,2025-01-15,,,,1.14.11.3(Civil)
6787,Condensate Polishing Unit Regeneration Building: Backfilling,CIV,2025-01-16,2025-02-14,,,,1.14.11.3(Civil)
6788,Condensate Polishing Unit Regeneration Building: Finishing works,CIV,2025-02-15,2025-03-16,,,,1.14.11.3(Civil)
6789,Supply for Condensate POLISHING SYSTEM,SUP,2024-08-08,2024-12-15,,,,1.14.11(Condensate Polishing Unit )
6790,CONDENSATE POLISHING SYSTEM: Dispatch of CPU-Condensate Polisher Mixed Beds,DIS,2024-08-08,2024-11-05,,,,1.14.11.4(Supply for Condensate POLISHING SYSTEM)
6791,"CONDENSATE POLISHING SYSTEM: Dispatch of CPU-Interconnecting Pipe, Valves & Fittings",DIS,2024-08-18,2024-12-15,,,,1.14.11.4(Supply for Condensate POLISHING SYSTEM)
6792,CONDENSATE POLISHING SYSTEM: Dispatch of CPU External Regeneration System,DIS,2024-08-18,2024-11-15,,,,1.14.11.4(Supply for Condensate POLISHING SYSTEM)
6793,CONDENSATE POLISHING SYSTEM: Dispatch of Misc. Items,DIS,2024-08-18,2024-12-15,,,,1.14.11.4(Supply for Condensate POLISHING SYSTEM)
6794,E&C for Condensate POLISHING SYSTEM,DIS,2025-03-17,2026-02-24,,,,1.14.11(Condensate Polishing Unit )
6795,CONDENSATE POLISHING SYSTEM: Dispatch of CPU-Erection of Condensate Polisher Mixed Beds complete,ERC,2025-03-17,2025-07-04,,,,1.14.11.5(E&C for Condensate POLISHING SYSTEM)
6796,"CONDENSATE POLISHING SYSTEM: Dispatch of CPU-Erection of Interconnecting Piping Valves, Fittings complete",ERC,2025-07-05,2025-11-01,,,,1.14.11.5(E&C for Condensate POLISHING SYSTEM)
6797,CONDENSATE POLISHING SYSTEM: Dispatch of CPU-Erection of External Regeneration System complete,ERC,2025-11-02,2026-01-15,,,,1.14.11.5(E&C for Condensate POLISHING SYSTEM)
6798,CONDENSATE POLISHING SYSTEM: Dispatch of CPU ready for testing and commissioning,COM,2026-01-16,2026-02-24,,,,1.14.11.5(E&C for Condensate POLISHING SYSTEM)
6799,CW Treatment System,OTH,2023-08-24,2025-12-15,,,,1.14(BOP Systems)
6800,Rel of Dwg for CW treatment building,PE - RFC,2024-09-16,2024-09-16,,,,1.14.12(CW Treatment System)
6801,Supply,SUP,2023-08-24,2025-01-15,,,,1.14.12(CW Treatment System)
6802,Enquiry,ENQ,2023-08-24,2023-08-24,,,,1.14.12.2(Supply)
6803,PO placement,ORD,2023-08-25,2024-01-21,,,,1.14.12.2(Supply)
6804,"Tanks - (Sulphuric acid storage tanks, Sulphuric acid day tanks, Corrosion inhibitor tank, Scale inhibitor /corrosion inhibitor tank, Biocide tank etc)",SUP,2024-08-09,2024-11-06,,,,1.14.12.2(Supply)
6805,Pumps - (Transfer & Dosing etc.),SUP,2024-08-29,2024-11-26,,,,1.14.12.2(Supply)
6806,Skid/Ladder/Platform for Tanks,SUP,2024-09-18,2024-12-16,,,,1.14.12.2(Supply)
6807,Strainer,SUP,2024-09-18,2024-12-16,,,,1.14.12.2(Supply)
6808,Valves,SUP,2024-09-18,2024-12-16,,,,1.14.12.2(Supply)
6809,C&I ITEMS,SUP,2024-10-18,2025-01-15,,,,1.14.12.2(Supply)
6810,ELECTRICAL ITEMS,SUP,2024-10-18,2025-01-15,,,,1.14.12.2(Supply)
6811,INTERCONNECTING PIPING & FITTINGS,SUP,2024-10-18,2025-01-15,,,,1.14.12.2(Supply)
6812,MISCELLANEOUS ITEMS,SUP,2024-10-18,2025-01-15,,,,1.14.12.2(Supply)
6813,Civil,CIV,2024-10-07,2025-10-01,,,,1.14.12(CW Treatment System)
6814,CW treatment Building including Equipment Foundation,CIV,2024-10-07,2025-10-01,,,,1.14.12.3(Civil)
6815, EXCAVATION,CIV,2024-10-07,2024-11-05,,,,1.14.12.3.1(CW treatment Building including Equipment Foundation)
6816, RCC in substructure including PCC,CIV,2024-11-06,2024-12-25,,,,1.14.12.3.1(CW treatment Building including Equipment Foundation)
6817, RCC in superstructure including equipment foundation,CIV,2024-12-26,2025-03-25,,,,1.14.12.3.1(CW treatment Building including Equipment Foundation)
6818, Backfilling,CIV,2025-03-26,2025-04-14,,,,1.14.12.3.1(CW treatment Building including Equipment Foundation)
6819, Brick Work & Plastering,CIV,2025-04-15,2025-06-13,,,,1.14.12.3.1(CW treatment Building including Equipment Foundation)
6820, Flooring,CIV,2025-06-14,2025-07-03,,,,1.14.12.3.1(CW treatment Building including Equipment Foundation)
6821, Finishing works,CIV,2025-07-04,2025-10-01,,,,1.14.12.3.1(CW treatment Building including Equipment Foundation)
6822,Erection,ERC,2025-04-15,2025-12-15,,,,1.14.12(CW Treatment System)
6823," Tanks - (Sulphuric acid storage tanks, Sulphuric acid day tanks, Corrosion inhibitor tank, Scale inhibitor /corrosion inhibitor tank, Biocide tank etc)",ERC,2025-04-15,2025-06-13,,,,1.14.12.4(Erection)
6824, Pumps - (Transfer & Dosing etc.),ERC,2025-04-30,2025-06-28,,,,1.14.12.4(Erection)
6825, Skid/Ladder/Platform for Tanks,ERC,2025-06-29,2025-08-27,,,,1.14.12.4(Erection)
6826, Strainer,ERC,2025-06-29,2025-10-26,,,,1.14.12.4(Erection)
6827, Valves,ERC,2025-06-29,2025-10-26,,,,1.14.12.4(Erection)
6828, C&I ITEMS,ERC,2025-07-29,2025-11-25,,,,1.14.12.4(Erection)
6829, ELECTRICAL ITEMS,ERC,2025-07-29,2025-11-25,,,,1.14.12.4(Erection)
6830, INTERCONNECTING PIPING & FITTINGS,ERC,2025-06-29,2025-10-26,,,,1.14.12.4(Erection)
6831, MISCELLANEOUS ITEMS,ERC,2025-09-12,2025-12-05,,,,1.14.12.4(Erection)
6832,Commissioning,COM,2025-12-06,2025-12-15,,,,1.14.12.4(Erection)
6833,Fire Detection & Protection Sys,OTH,2023-02-24,2026-08-05,,,,1.14(BOP Systems)
6834,Supply (BHEL- PESD),SUP,2023-04-15,2025-04-15,,,,1.14.13(Fire Detection & Protection Sys)
6835,Hydrant Valve,SUP,2023-04-15,2024-08-13,,,,1.14.13.1(Supply (BHEL- PESD))
6836,Engineering,ENG,2023-04-15,2024-01-13,,,,1.14.13.1.1(Hydrant Valve)
6837,Ordering & Manufacturing,ORD,2023-11-15,2024-04-15,,,,1.14.13.1.1(Hydrant Valve)
6838,Dispatch,DIS,2024-04-16,2024-08-13,,,,1.14.13.1.1(Hydrant Valve)
6839,Water Monitor & Water cum Foam monitor,SUP,2023-04-15,2024-08-13,,,,1.14.13.1(Supply (BHEL- PESD))
6840,Engineering,ENG,2023-04-15,2024-01-13,,,,1.14.13.1.2(Water Monitor & Water cum Foam monitor)
6841,Ordering & Manufacturing,ORD,2023-11-15,2024-04-15,,,,1.14.13.1.2(Water Monitor & Water cum Foam monitor)
6842,Dispatch,DIS,2024-04-16,2024-08-13,,,,1.14.13.1.2(Water Monitor & Water cum Foam monitor)
6843,Deluge Valve,OTH,2023-04-15,2024-08-13,,,,1.14.13.1(Supply (BHEL- PESD))
6844,Engineering,ENG,2023-04-15,2024-01-13,,,,1.14.13.1.3(Deluge Valve)
6845,Ordering & Manufacturing,ORD,2023-11-15,2024-04-15,,,,1.14.13.1.3(Deluge Valve)
6846,Dispatch,DIS,2024-04-16,2024-08-13,,,,1.14.13.1.3(Deluge Valve)
6847,Spray Nozzles,OTH,2023-04-15,2024-08-13,,,,1.14.13.1(Supply (BHEL- PESD))
6848,Engineering,ENG,2023-04-15,2024-01-13,,,,1.14.13.1.4(Spray Nozzles)
6849,Ordering & Manufacturing,ORD,2023-11-15,2024-04-15,,,,1.14.13.1.4(Spray Nozzles)
6850,Dispatch,DIS,2024-04-16,2024-08-13,,,,1.14.13.1.4(Spray Nozzles)
6851,QBD,OTH,2023-04-15,2025-04-15,,,,1.14.13.1(Supply (BHEL- PESD))
6852,Engineering,ENG,2023-04-15,2024-01-13,,,,1.14.13.1.5(QBD)
6853,Ordering & Manufacturing,ORD,2024-01-14,2024-12-13,,,,1.14.13.1.5(QBD)
6854,Dispatch,DIS,2024-12-14,2025-04-15,,,,1.14.13.1.5(QBD)
6855,Hose Box,OTH,2023-04-15,2025-04-15,,,,1.14.13.1(Supply (BHEL- PESD))
6856,Engineering,ENG,2023-04-15,2024-01-13,,,,1.14.13.1.6(Hose Box)
6857,Ordering & Manufacturing,ORD,2024-01-14,2024-12-13,,,,1.14.13.1.6(Hose Box)
6858,Dispatch,DIS,2024-12-14,2025-04-15,,,,1.14.13.1.6(Hose Box)
6859,Foam Branch Pipe,OTH,2023-04-15,2025-04-15,,,,1.14.13.1(Supply (BHEL- PESD))
6860,Engineering,ENG,2023-04-15,2024-01-13,,,,1.14.13.1.7(Foam Branch Pipe)
6861,Ordering & Manufacturing,ORD,2024-01-14,2024-12-13,,,,1.14.13.1.7(Foam Branch Pipe)
6862,Dispatch,DIS,2024-12-14,2025-04-15,,,,1.14.13.1.7(Foam Branch Pipe)
6863,Inline Balance Proportioner,OTH,2023-04-15,2025-04-15,,,,1.14.13.1(Supply (BHEL- PESD))
6864,Engineering,ENG,2023-04-15,2024-01-13,,,,1.14.13.1.8(Inline Balance Proportioner)
6865,Ordering & Manufacturing,ORD,2024-01-14,2024-12-13,,,,1.14.13.1.8(Inline Balance Proportioner)
6866,Dispatch,DIS,2024-12-14,2025-04-15,,,,1.14.13.1.8(Inline Balance Proportioner)
6867,Foam Chamber with Deflector,OTH,2023-04-15,2025-04-15,,,,1.14.13.1(Supply (BHEL- PESD))
6868,Engineering,ENG,2023-04-15,2024-01-13,,,,1.14.13.1.9(Foam Chamber with Deflector)
6869,Ordering & Manufacturing,ORD,2024-01-14,2024-12-13,,,,1.14.13.1.9(Foam Chamber with Deflector)
6870,Dispatch,DIS,2024-12-14,2025-04-15,,,,1.14.13.1.9(Foam Chamber with Deflector)
6871,Fire Hose with Coupling,OTH,2023-04-15,2024-08-13,,,,1.14.13.1(Supply (BHEL- PESD))
6872,Engineering,ENG,2023-04-15,2024-01-13,,,,1.14.13.1.10(Fire Hose with Coupling)
6873,Ordering & Manufacturing,ORD,2023-11-15,2024-04-15,,,,1.14.13.1.10(Fire Hose with Coupling)
6874,Dispatch,DIS,2024-04-16,2024-08-13,,,,1.14.13.1.10(Fire Hose with Coupling)
6875,Hose Reel,OTH,2023-04-15,2025-04-15,,,,1.14.13.1(Supply (BHEL- PESD))
6876,Engineering,ENG,2023-04-15,2024-01-13,,,,1.14.13.1.11(Hose Reel)
6877,Ordering & Manufacturing,ORD,2024-01-14,2024-12-13,,,,1.14.13.1.11(Hose Reel)
6878,Dispatch,DIS,2024-12-14,2025-04-15,,,,1.14.13.1.11(Hose Reel)
6879,Branch Pipe with Nozzle,OTH,2023-04-15,2025-04-15,,,,1.14.13.1(Supply (BHEL- PESD))
6880,Engineering,ENG,2023-04-15,2024-01-13,,,,1.14.13.1.12(Branch Pipe with Nozzle)
6881,Ordering & Manufacturing,ORD,2024-01-14,2024-12-13,,,,1.14.13.1.12(Branch Pipe with Nozzle)
6882,Dispatch,DIS,2024-12-14,2025-04-15,,,,1.14.13.1.12(Branch Pipe with Nozzle)
6883,Foam Concentrated Control Valve,OTH,2023-04-15,2025-04-15,,,,1.14.13.1(Supply (BHEL- PESD))
6884,Engineering,ENG,2023-04-15,2024-01-13,,,,1.14.13.1.13(Foam Concentrated Control Valve)
6885,Ordering & Manufacturing,ORD,2024-01-14,2024-12-13,,,,1.14.13.1.13(Foam Concentrated Control Valve)
6886,Dispatch,DIS,2024-12-14,2025-04-15,,,,1.14.13.1.13(Foam Concentrated Control Valve)
6887,Solenoid Valve,OTH,2023-04-15,2024-08-13,,,,1.14.13.1(Supply (BHEL- PESD))
6888,Engineering,ENG,2023-04-15,2024-01-13,,,,1.14.13.1.14(Solenoid Valve)
6889,Ordering & Manufacturing,ORD,2023-11-15,2024-04-15,,,,1.14.13.1.14(Solenoid Valve)
6890,Dispatch,DIS,2024-04-16,2024-08-13,,,,1.14.13.1.14(Solenoid Valve)
6891,Foam Concentrate,OTH,2023-04-15,2025-04-15,,,,1.14.13.1(Supply (BHEL- PESD))
6892,Engineering,ENG,2023-04-15,2024-01-13,,,,1.14.13.1.15(Foam Concentrate)
6893,Ordering & Manufacturing,ORD,2024-01-14,2024-12-13,,,,1.14.13.1.15(Foam Concentrate)
6894,Dispatch,DIS,2024-12-14,2025-04-15,,,,1.14.13.1.15(Foam Concentrate)
6895,Gun Metal Valve for ARV,OTH,2023-04-15,2025-04-15,,,,1.14.13.1(Supply (BHEL- PESD))
6896,Engineering,ENG,2023-04-15,2024-01-13,,,,1.14.13.1.16(Gun Metal Valve for ARV)
6897,Ordering & Manufacturing,ORD,2024-01-14,2024-12-13,,,,1.14.13.1.16(Gun Metal Valve for ARV)
6898,Dispatch,DIS,2024-12-14,2025-04-15,,,,1.14.13.1.16(Gun Metal Valve for ARV)
6899,Air Release Valve,OTH,2023-04-15,2025-04-15,,,,1.14.13.1(Supply (BHEL- PESD))
6900,Engineering,ENG,2023-04-15,2024-01-13,,,,1.14.13.1.17(Air Release Valve)
6901,Ordering & Manufacturing,ORD,2024-01-14,2024-12-13,,,,1.14.13.1.17(Air Release Valve)
6902,Dispatch,DIS,2024-12-14,2025-04-15,,,,1.14.13.1.17(Air Release Valve)
6903,DV LCP,OTH,2023-04-15,2025-04-15,,,,1.14.13.1(Supply (BHEL- PESD))
6904,Engineering,ENG,2023-04-15,2024-01-13,,,,1.14.13.1.18(DV LCP)
6905,Ordering & Manufacturing,ORD,2024-01-14,2024-12-13,,,,1.14.13.1.18(DV LCP)
6906,Dispatch,DIS,2024-12-14,2025-04-15,,,,1.14.13.1.18(DV LCP)
6907,Sprinkler system,OTH,2023-04-15,2025-04-15,,,,1.14.13.1(Supply (BHEL- PESD))
6908,Engineering,ENG,2023-04-15,2024-01-13,,,,1.14.13.1.19(Sprinkler system)
6909,Ordering & Manufacturing,ORD,2024-01-14,2024-12-13,,,,1.14.13.1.19(Sprinkler system)
6910,Dispatch,DIS,2024-12-14,2025-04-15,,,,1.14.13.1.19(Sprinkler system)
6911,Pressure Regulating Valve (Foam System),OTH,2023-04-15,2025-04-15,,,,1.14.13.1(Supply (BHEL- PESD))
6912,Engineering,ENG,2023-04-15,2024-01-13,,,,1.14.13.1.20(Pressure Regulating Valve (Foam System))
6913,Ordering & Manufacturing,ORD,2024-01-14,2024-12-13,,,,1.14.13.1.20(Pressure Regulating Valve (Foam System))
6914,Dispatch,DIS,2024-12-14,2025-04-15,,,,1.14.13.1.20(Pressure Regulating Valve (Foam System))
6915,Pressure Relief Valve,OTH,2023-04-15,2025-04-15,,,,1.14.13.1(Supply (BHEL- PESD))
6916,Engineering,ENG,2023-04-15,2024-01-13,,,,1.14.13.1.21(Pressure Relief Valve)
6917,Ordering & Manufacturing,ORD,2024-01-14,2024-12-13,,,,1.14.13.1.21(Pressure Relief Valve)
6918,Dispatch,DIS,2024-12-14,2025-04-15,,,,1.14.13.1.21(Pressure Relief Valve)
6919,Foam Tank,OTH,2023-04-15,2025-04-15,,,,1.14.13.1(Supply (BHEL- PESD))
6920,Engineering,ENG,2023-04-15,2024-01-13,,,,1.14.13.1.22(Foam Tank)
6921,Ordering & Manufacturing,ORD,2024-01-14,2024-12-13,,,,1.14.13.1.22(Foam Tank)
6922,Dispatch,DIS,2024-12-14,2025-04-15,,,,1.14.13.1.22(Foam Tank)
6923,Air Compressor,OTH,2023-04-15,2025-04-15,,,,1.14.13.1(Supply (BHEL- PESD))
6924,Engineering,ENG,2023-04-15,2024-01-13,,,,1.14.13.1.23(Air Compressor)
6925,Ordering & Manufacturing,ORD,2024-01-14,2024-12-13,,,,1.14.13.1.23(Air Compressor)
6926,Dispatch,DIS,2024-12-14,2025-04-15,,,,1.14.13.1.23(Air Compressor)
6927,Hydro Pneumatic Tank,OTH,2023-04-15,2025-04-15,,,,1.14.13.1(Supply (BHEL- PESD))
6928,Engineering,ENG,2023-04-15,2024-01-13,,,,1.14.13.1.24(Hydro Pneumatic Tank)
6929,Ordering & Manufacturing,ORD,2024-01-14,2024-12-13,,,,1.14.13.1.24(Hydro Pneumatic Tank)
6930,Dispatch,DIS,2024-12-14,2025-04-15,,,,1.14.13.1.24(Hydro Pneumatic Tank)
6931,Foam Pump,OTH,2023-04-15,2025-04-15,,,,1.14.13.1(Supply (BHEL- PESD))
6932,Engineering,ENG,2023-04-15,2024-01-13,,,,1.14.13.1.25(Foam Pump)
6933,Ordering & Manufacturing,ORD,2024-01-14,2024-12-13,,,,1.14.13.1.25(Foam Pump)
6934,Dispatch,DIS,2024-12-14,2025-04-15,,,,1.14.13.1.25(Foam Pump)
6935,Pressure Transmitters,OTH,2023-04-15,2024-08-13,,,,1.14.13.1(Supply (BHEL- PESD))
6936,Engineering,ENG,2023-04-15,2024-01-13,,,,1.14.13.1.26(Pressure Transmitters)
6937,Ordering & Manufacturing,ORD,2023-11-15,2024-04-15,,,,1.14.13.1.26(Pressure Transmitters)
6938,Dispatch,DIS,2024-04-16,2024-08-13,,,,1.14.13.1.26(Pressure Transmitters)
6939,Pressure Switches,OTH,2023-04-15,2024-04-19,,,,1.14.13.1(Supply (BHEL- PESD))
6940,Engineering,ENG,2023-04-15,2023-12-13,,,,1.14.13.1.27(Pressure Switches)
6941,Ordering & Manufacturing,ORD,2023-12-14,2024-03-20,,,,1.14.13.1.27(Pressure Switches)
6942,Dispatch,DIS,2024-03-21,2024-04-19,,,,1.14.13.1.27(Pressure Switches)
6943,Level Switches,OTH,2023-04-15,2025-04-15,,,,1.14.13.1(Supply (BHEL- PESD))
6944,Engineering,ENG,2023-04-15,2024-01-13,,,,1.14.13.1.28(Level Switches)
6945,Ordering & Manufacturing,ORD,2024-01-14,2024-12-13,,,,1.14.13.1.28(Level Switches)
6946,Dispatch,DIS,2024-12-14,2025-04-15,,,,1.14.13.1.28(Level Switches)
6947,Flow Switches,OTH,2023-04-15,2025-04-15,,,,1.14.13.1(Supply (BHEL- PESD))
6948,Engineering,ENG,2023-04-15,2024-01-13,,,,1.14.13.1.29(Flow Switches)
6949,Ordering & Manufacturing,ORD,2024-01-14,2024-12-13,,,,1.14.13.1.29(Flow Switches)
6950,Dispatch,DIS,2024-12-14,2025-04-15,,,,1.14.13.1.29(Flow Switches)
6951,Pressure Gauges,OTH,2023-04-15,2024-08-13,,,,1.14.13.1(Supply (BHEL- PESD))
6952,Engineering,ENG,2023-04-15,2024-01-13,,,,1.14.13.1.30(Pressure Gauges)
6953,Ordering & Manufacturing,ORD,2023-11-15,2024-04-15,,,,1.14.13.1.30(Pressure Gauges)
6954,Dispatch,DIS,2024-04-16,2024-08-13,,,,1.14.13.1.30(Pressure Gauges)
6955,Differential pressure Gauges,OTH,2023-04-15,2024-08-13,,,,1.14.13.1(Supply (BHEL- PESD))
6956,Engineering,ENG,2023-04-15,2024-01-13,,,,1.14.13.1.31(Differential pressure Gauges)
6957,Ordering & Manufacturing,ORD,2023-11-15,2024-04-15,,,,1.14.13.1.31(Differential pressure Gauges)
6958,Dispatch,DIS,2024-04-16,2024-08-13,,,,1.14.13.1.31(Differential pressure Gauges)
6959,Radar Level Transmitters,OTH,2023-04-15,2025-04-15,,,,1.14.13.1(Supply (BHEL- PESD))
6960,Engineering,ENG,2023-04-15,2024-01-13,,,,1.14.13.1.32(Radar Level Transmitters)
6961,Ordering & Manufacturing,ORD,2024-01-14,2024-12-13,,,,1.14.13.1.32(Radar Level Transmitters)
6962,Dispatch,DIS,2024-12-14,2025-04-15,,,,1.14.13.1.32(Radar Level Transmitters)
6963,IGES Package,OTH,2023-04-15,2025-04-15,,,,1.14.13.1(Supply (BHEL- PESD))
6964,Engineering,ENG,2023-04-15,2024-01-13,,,,1.14.13.1.33(IGES Package)
6965,Ordering & Manufacturing,ORD,2024-01-14,2024-12-13,,,,1.14.13.1.33(IGES Package)
6966,Dispatch,DIS,2024-12-14,2025-04-15,,,,1.14.13.1.33(IGES Package)
6967,Portable Fire Extinguishers,OTH,2023-04-15,2024-08-13,,,,1.14.13.1(Supply (BHEL- PESD))
6968,Engineering,ENG,2023-04-15,2024-01-13,,,,1.14.13.1.34(Portable Fire Extinguishers)
6969,Ordering & Manufacturing,ORD,2023-11-15,2024-04-15,,,,1.14.13.1.34(Portable Fire Extinguishers)
6970,Dispatch,DIS,2024-04-16,2024-08-13,,,,1.14.13.1.34(Portable Fire Extinguishers)
6971,Fire Water Pipes,OTH,2023-04-15,2024-08-13,,,,1.14.13.1(Supply (BHEL- PESD))
6972,Engineering,ENG,2023-04-15,2024-01-13,,,,1.14.13.1.35(Fire Water Pipes)
6973,Ordering & Manufacturing,ORD,2023-11-15,2024-04-15,,,,1.14.13.1.35(Fire Water Pipes)
6974,Dispatch,DIS,2024-04-16,2024-08-13,,,,1.14.13.1.35(Fire Water Pipes)
6975,Fire Fighting System Conventional Valves,OTH,2023-04-15,2025-04-15,,,,1.14.13.1(Supply (BHEL- PESD))
6976,Engineering,ENG,2023-04-15,2024-01-13,,,,1.14.13.1.36(Fire Fighting System Conventional Valves)
6977,Ordering & Manufacturing,ORD,2024-01-14,2024-12-13,,,,1.14.13.1.36(Fire Fighting System Conventional Valves)
6978,Dispatch,DIS,2024-12-14,2025-04-15,,,,1.14.13.1.36(Fire Fighting System Conventional Valves)
6979,Fire Water Flanges,OTH,2023-04-15,2024-08-13,,,,1.14.13.1(Supply (BHEL- PESD))
6980,Engineering,ENG,2023-04-15,2024-01-13,,,,1.14.13.1.37(Fire Water Flanges)
6981,Ordering & Manufacturing,ORD,2023-11-15,2024-04-15,,,,1.14.13.1.37(Fire Water Flanges)
6982,Dispatch,DIS,2024-04-16,2024-08-13,,,,1.14.13.1.37(Fire Water Flanges)
6983,Fire Water Butt welded Fittings,OTH,2023-04-15,2024-08-13,,,,1.14.13.1(Supply (BHEL- PESD))
6984,Engineering,ENG,2023-04-15,2024-01-13,,,,1.14.13.1.38(Fire Water Butt welded Fittings)
6985,Ordering & Manufacturing,ORD,2023-11-15,2024-04-15,,,,1.14.13.1.38(Fire Water Butt welded Fittings)
6986,Dispatch,DIS,2024-04-16,2024-08-13,,,,1.14.13.1.38(Fire Water Butt welded Fittings)
6987,Fire Water Flanged Fittings,OTH,2023-04-15,2024-08-13,,,,1.14.13.1(Supply (BHEL- PESD))
6988,Engineering,ENG,2023-04-15,2024-01-13,,,,1.14.13.1.39(Fire Water Flanged Fittings)
6989,Ordering & Manufacturing,ORD,2023-11-15,2024-04-15,,,,1.14.13.1.39(Fire Water Flanged Fittings)
6990,Dispatch,DIS,2024-04-16,2024-08-13,,,,1.14.13.1.39(Fire Water Flanged Fittings)
6991,Gaskets,OTH,2023-04-15,2024-08-13,,,,1.14.13.1(Supply (BHEL- PESD))
6992,Engineering,ENG,2023-04-15,2024-01-13,,,,1.14.13.1.40(Gaskets)
6993,Ordering & Manufacturing,ORD,2023-11-15,2024-04-15,,,,1.14.13.1.40(Gaskets)
6994,Dispatch,DIS,2024-04-16,2024-08-13,,,,1.14.13.1.40(Gaskets)
6995,"Bolts, U Bolts, Nuts & Clamps",OTH,2023-04-15,2024-08-13,,,,1.14.13.1(Supply (BHEL- PESD))
6996,Engineering,ENG,2023-04-15,2024-01-13,,,,"1.14.13.1.41(Bolts, U Bolts, Nuts & Clamps)"
6997,Ordering & Manufacturing,ORD,2023-11-15,2024-04-15,,,,"1.14.13.1.41(Bolts, U Bolts, Nuts & Clamps)"
6998,Dispatch,DIS,2024-04-16,2024-08-13,,,,"1.14.13.1.41(Bolts, U Bolts, Nuts & Clamps)"
6999,Structural Material,OTH,2023-04-15,2025-04-15,,,,1.14.13.1(Supply (BHEL- PESD))
7000,Engineering,ENG,2023-04-15,2024-01-13,,,,1.14.13.1.42(Structural Material)
7001,Ordering & Manufacturing,ORD,2024-01-14,2024-12-13,,,,1.14.13.1.42(Structural Material)
7002,Dispatch,DIS,2024-12-14,2025-04-15,,,,1.14.13.1.42(Structural Material)
7003,Fire Detection & Alarm System,OTH,2023-04-15,2024-08-13,,,,1.14.13.1(Supply (BHEL- PESD))
7004,Engineering,ENG,2023-04-15,2024-01-13,,,,1.14.13.1.43(Fire Detection & Alarm System)
7005,Ordering & Manufacturing,ORD,2023-11-15,2024-04-15,,,,1.14.13.1.43(Fire Detection & Alarm System)
7006,Dispatch,DIS,2024-04-16,2024-08-13,,,,1.14.13.1.43(Fire Detection & Alarm System)
7007,Fire Alarm Cables,OTH,2023-04-15,2024-08-13,,,,1.14.13.1(Supply (BHEL- PESD))
7008,Engineering,ENG,2023-04-15,2024-01-13,,,,1.14.13.1.44(Fire Alarm Cables)
7009,Ordering & Manufacturing,ORD,2023-11-15,2024-04-15,,,,1.14.13.1.44(Fire Alarm Cables)
7010,Dispatch,DIS,2024-04-16,2024-08-13,,,,1.14.13.1.44(Fire Alarm Cables)
7011,Fire Protection System PLC,OTH,2023-04-15,2024-08-13,,,,1.14.13.1(Supply (BHEL- PESD))
7012,Engineering,ENG,2023-04-15,2024-01-13,,,,1.14.13.1.45(Fire Protection System PLC)
7013,Ordering & Manufacturing,ORD,2023-11-15,2024-04-15,,,,1.14.13.1.45(Fire Protection System PLC)
7014,Dispatch,DIS,2024-04-16,2024-08-13,,,,1.14.13.1.45(Fire Protection System PLC)
7015,E&C for PLC system,OTH,2023-04-15,2024-08-13,,,,1.14.13.1(Supply (BHEL- PESD))
7016,Engineering,ENG,2023-04-15,2024-01-13,,,,1.14.13.1.46(E&C for PLC system)
7017,Ordering & Manufacturing,ORD,2023-11-15,2024-04-15,,,,1.14.13.1.46(E&C for PLC system)
7018,Dispatch,DIS,2024-04-16,2024-08-13,,,,1.14.13.1.46(E&C for PLC system)
7019,Spares for PLC system,OTH,2023-04-15,2024-08-13,,,,1.14.13.1(Supply (BHEL- PESD))
7020,Engineering,ENG,2023-04-15,2024-01-13,,,,1.14.13.1.47(Spares for PLC system)
7021,Ordering & Manufacturing,ORD,2023-11-15,2024-04-15,,,,1.14.13.1.47(Spares for PLC system)
7022,Dispatch,DIS,2024-04-16,2024-08-13,,,,1.14.13.1.47(Spares for PLC system)
7023,Cable Trays & Accessories,OTH,2023-04-15,2025-04-15,,,,1.14.13.1(Supply (BHEL- PESD))
7024,Engineering,ENG,2023-04-15,2024-01-13,,,,1.14.13.1.48(Cable Trays & Accessories)
7025,Ordering & Manufacturing,ORD,2024-01-14,2024-12-13,,,,1.14.13.1.48(Cable Trays & Accessories)
7026,Dispatch,DIS,2024-12-14,2025-04-15,,,,1.14.13.1.48(Cable Trays & Accessories)
7027,Fire Water Pumps & Auxiliaries,OTH,2023-04-15,2025-04-15,,,,1.14.13.1(Supply (BHEL- PESD))
7028,Engineering,ENG,2023-04-15,2024-01-13,,,,1.14.13.1.49(Fire Water Pumps & Auxiliaries)
7029,Ordering & Manufacturing,ORD,2024-01-14,2024-12-13,,,,1.14.13.1.49(Fire Water Pumps & Auxiliaries)
7030,Dispatch,DIS,2024-12-14,2025-04-15,,,,1.14.13.1.49(Fire Water Pumps & Auxiliaries)
7031,Fire Water Storage Tank,OTH,2023-04-15,2025-04-15,,,,1.14.13.1(Supply (BHEL- PESD))
7032,Engineering,ENG,2023-04-15,2024-01-13,,,,1.14.13.1.50(Fire Water Storage Tank)
7033,Ordering & Manufacturing,ORD,2024-01-14,2024-12-13,,,,1.14.13.1.50(Fire Water Storage Tank)
7034,Dispatch,DIS,2024-12-14,2025-04-15,,,,1.14.13.1.50(Fire Water Storage Tank)
7035,Paint & Primer,OTH,2023-04-15,2025-04-15,,,,1.14.13.1(Supply (BHEL- PESD))
7036,Engineering,ENG,2023-04-15,2024-01-13,,,,1.14.13.1.51(Paint & Primer)
7037,Ordering & Manufacturing,ORD,2024-01-14,2024-12-13,,,,1.14.13.1.51(Paint & Primer)
7038,Dispatch,DIS,2024-12-14,2025-04-15,,,,1.14.13.1.51(Paint & Primer)
7039,Wrapping & Coating for Underground Piping,OTH,2023-04-15,2025-04-15,,,,1.14.13.1(Supply (BHEL- PESD))
7040,Engineering,ENG,2023-04-15,2024-01-13,,,,1.14.13.1.52(Wrapping & Coating for Underground Piping)
7041,Ordering & Manufacturing,ORD,2024-01-14,2024-12-13,,,,1.14.13.1.52(Wrapping & Coating for Underground Piping)
7042,Dispatch,DIS,2024-12-14,2025-04-15,,,,1.14.13.1.52(Wrapping & Coating for Underground Piping)
7043,Civil ,CIV,2023-02-24,2024-02-18,,,,1.14.13(Fire Detection & Protection Sys)
7044,Civil Readiness of Fire water pump house including pipe pedestal & tank foundation and Booster pump house,CIV,2023-02-24,2024-02-18,,,,1.14.13.2(Civil )
7045,Erection,ERC,2025-03-31,2026-08-05,,,,1.14.13(Fire Detection & Protection Sys)
7046,Erection: PUMPs with motor,ERC,2025-04-16,2025-07-24,,,,1.14.13.3(Erection)
7047,Erection: TANK,ERC,2025-04-26,2025-08-03,,,,1.14.13.3(Erection)
7048,Erection: AIR COMPRESSOR,ERC,2025-06-05,2025-08-03,,,,1.14.13.3(Erection)
7049,"Erection: Pipe, Fittings & Valves",ERC,2025-07-25,2025-11-01,,,,1.14.13.3(Erection)
7050,Erection: Electrical & C&I work,ERC,2025-08-19,2025-11-01,,,,1.14.13.3(Erection)
7051,Erection: Commissioning of pump,COM,2025-11-02,2025-11-06,,,,1.14.13.3(Erection)
7052,Erection: Commissioning of FPS for BLU including foam system,COM,2025-11-07,2026-01-05,,,,1.14.13.3(Erection)
7053,Erection: Commissioning of Balance FPS,COM,2026-01-06,2026-04-15,,,,1.14.13.3(Erection)
7054,HYDRANT SYSTEM,ERC,2025-07-25,2026-05-20,,,,1.14.13.3(Erection)
7055,HYDRANT SYSTEM: PIPING,ERC,2025-07-25,2026-03-21,,,,1.14.13.3.9(HYDRANT SYSTEM)
7056,HYDRANT SYSTEM: VALVE,ERC,2026-01-21,2026-04-20,,,,1.14.13.3.9(HYDRANT SYSTEM)
7057,HYDRANT SYSTEM: FIRE HOSE,ERC,2026-02-20,2026-05-20,,,,1.14.13.3.9(HYDRANT SYSTEM)
7058,SPRAY SYSTEM,ERC,2025-08-24,2026-06-29,,,,1.14.13.3(Erection)
7059,SPRAY SYSTEM: PIPING,ERC,2025-08-24,2026-06-19,,,,1.14.13.3.10(SPRAY SYSTEM)
7060,SPRAY SYSTEM: VALVE,ERC,2026-02-20,2026-06-09,,,,1.14.13.3.10(SPRAY SYSTEM)
7061,SPRAY SYSTEM: FITTINGS,ERC,2026-03-12,2026-06-29,,,,1.14.13.3.10(SPRAY SYSTEM)
7062,HVWS SYSTEM FOR TRANSFORMERS,ERC,2025-09-03,2026-08-05,,,,1.14.13.3(Erection)
7063,HVWS SYSTEM FOR TRANSFORMERS: DELUGE VALVES,ERC,2025-09-03,2026-05-10,,,,1.14.13.3.11(HVWS SYSTEM FOR TRANSFORMERS)
7064,"HVWS SYSTEM FOR TRANSFORMERS: Pipe, valves and fittings",ERC,2025-10-23,2026-08-05,,,,1.14.13.3.11(HVWS SYSTEM FOR TRANSFORMERS)
7065,N2 injection system for GT & ST (if applicable),ERC,2026-03-09,2026-08-05,,,,1.14.13.3(Erection)
7066,HVWS SYSTEM FOR OIL EQUIPMENTS,ERC,2025-04-30,2025-10-01,,,,1.14.13.3(Erection)
7067,HVWS SYSTEM FOR OIL EQUIPMENTS: DELUGE VALVES,ERC,2025-04-30,2025-08-27,,,,1.14.13.3.13(HVWS SYSTEM FOR OIL EQUIPMENTS)
7068,"HVWS SYSTEM FOR OIL EQUIPMENTS: Pipe, valves and fittings",ERC,2025-04-30,2025-09-16,,,,1.14.13.3.13(HVWS SYSTEM FOR OIL EQUIPMENTS)
7069,HVWS SYSTEM FOR OIL EQUIPMENTS: INSTRUMENT & GAUGES,ERC,2025-09-17,2025-10-01,,,,1.14.13.3.13(HVWS SYSTEM FOR OIL EQUIPMENTS)
7070,HVWS SYSTEM FOR BOILER BURNER FRONT,ERC,2025-11-07,2026-01-17,,,,1.14.13.3(Erection)
7071,HVWS SYSTEM FOR BOILER BURNER FRONT: DELUGE VALVES,ERC,2025-11-07,2026-01-17,,,,1.14.13.3.14(HVWS SYSTEM FOR BOILER BURNER FRONT)
7072,"HVWS SYSTEM FOR BOILER BURNER FRONT: Pipe, valves and fittings",ERC,2025-11-07,2026-01-17,,,,1.14.13.3.14(HVWS SYSTEM FOR BOILER BURNER FRONT)
7073,HVWS SYSTEM FOR BOILER BURNER FRONT: INSTRUMENT & GAUGES,ERC,2025-11-07,2026-01-17,,,,1.14.13.3.14(HVWS SYSTEM FOR BOILER BURNER FRONT)
7074,MVWS - SYSTEM -- ESP 0.0 MTR ELEVATION,ERC,2025-07-06,2025-11-17,,,,1.14.13.3(Erection)
7075,MVWS - SYSTEM -- ESP 0.0 MTR ELEVATION: DELUGE VALVES,ERC,2025-07-06,2025-11-02,,,,1.14.13.3.15(MVWS - SYSTEM -- ESP 0.0 MTR ELEVATION)
7076,"MVWS - SYSTEM -- ESP 0.0 MTR ELEVATION: Pipe, valves and fittings",ERC,2025-07-06,2025-11-02,,,,1.14.13.3.15(MVWS - SYSTEM -- ESP 0.0 MTR ELEVATION)
7077,MVWS - SYSTEM -- ESP 0.0 MTR ELEVATION: INSTRUMENT & GAUGES,ERC,2025-11-03,2025-11-17,,,,1.14.13.3.15(MVWS - SYSTEM -- ESP 0.0 MTR ELEVATION)
7078,MVWS SYSTEM - TG BUILDING CABLE GALLERIES,ERC,2025-09-02,2026-02-18,,,,1.14.13.3(Erection)
7079,MVWS SYSTEM - TG BUILDING CABLE GALLERIES: DELUGE VALVES,ERC,2025-09-02,2025-12-30,,,,1.14.13.3.16(MVWS SYSTEM - TG BUILDING CABLE GALLERIES)
7080,"MVWS SYSTEM - TG BUILDING CABLE GALLERIES: Pipe, valves and fittings",ERC,2025-09-02,2026-01-29,,,,1.14.13.3.16(MVWS SYSTEM - TG BUILDING CABLE GALLERIES)
7081,MVWS SYSTEM - TG BUILDING CABLE GALLERIES: INSTRUMENT & GAUGES,ERC,2026-01-30,2026-02-18,,,,1.14.13.3.16(MVWS SYSTEM - TG BUILDING CABLE GALLERIES)
7082,MVWS SYSTEM FOR DIESEL TANK IN DG HOUSE,ERC,2025-05-23,2025-08-05,,,,1.14.13.3(Erection)
7083,MVWS SYSTEM FOR DIESEL TANK IN DG HOUSE: DELUGE VALVES,ERC,2025-06-07,2025-08-05,,,,1.14.13.3.17(MVWS SYSTEM FOR DIESEL TANK IN DG HOUSE)
7084,"MVWS SYSTEM FOR DIESEL TANK IN DG HOUSE: Pipe, valves and fittings",ERC,2025-05-23,2025-07-21,,,,1.14.13.3.17(MVWS SYSTEM FOR DIESEL TANK IN DG HOUSE)
7085,MVWS SYSTEM FOR DIESEL TANK IN DG HOUSE: INSTRUMENT & GAUGES,ERC,2025-07-22,2025-08-05,,,,1.14.13.3.17(MVWS SYSTEM FOR DIESEL TANK IN DG HOUSE)
7086,FIRE DETECTION SYSTEM,ERC,2026-01-06,2026-08-05,,,,1.14.13.3(Erection)
7087,FIRE DETECTION SYSTEM: FIRE ALARM PANELS,ERC,2026-01-06,2026-08-05,,,,1.14.13.3.18(FIRE DETECTION SYSTEM)
7088,FIRE DETECTION SYSTEM: DETECTORS,ERC,2026-01-06,2026-08-05,,,,1.14.13.3.18(FIRE DETECTION SYSTEM)
7089,FIRE DETECTION SYSTEM: CABLES,ERC,2026-01-06,2026-08-05,,,,1.14.13.3.18(FIRE DETECTION SYSTEM)
7090,Inert Gas System,ERC,2025-03-31,2025-11-15,,,,1.14.13.3(Erection)
7091,Coal Handling Plant,OTH,2022-09-27,2026-01-26,2022-09-27,,,1.14(BOP Systems)
7092, Civil Works,CIV,2022-09-27,2025-03-14,,,,1.14.14(Coal Handling Plant)
7093,Rel of Dwg for Track Hopper,PE - RFC,2023-10-01,2023-10-01,,,,1.14.14.1( Civil Works)
7094,Rel of Dwg for MCCs,PE - RFC,2023-07-23,2023-07-23,,,,1.14.14.1( Civil Works)
7095,Rel of Dwg for penthouse,PE - RFC,2023-08-12,2023-08-12,,,,1.14.14.1( Civil Works)
7096,Rel of Dwg for Stacker Reclaimer,PE - RFC,2023-09-26,2023-09-26,,,,1.14.14.1( Civil Works)
7097,Rel of Dwg for Stock yard,PE - RFC,2023-07-23,2023-07-23,,,,1.14.14.1( Civil Works)
7098,Rel of Dwg for Coal Shed,PE - RFC,2022-09-27,2022-09-27,,,,1.14.14.1( Civil Works)
7099,Rel of Dwg for Crusher House,PE - RFC,2023-11-20,2023-11-20,,,,1.14.14.1( Civil Works)
7100,Rel of Dwg for Conveyor Gallery & Trestles,PE - RFC,2023-07-23,2023-07-23,,,,1.14.14.1( Civil Works)
7101,Rel of Dwg for TPs,PE - RFC,2023-10-01,2023-10-01,,,,1.14.14.1( Civil Works)
7102, Track Hopper,OTH,2023-10-02,2024-06-27,,,,1.14.14.1( Civil Works)
7103, Track Hopper: EXCAVATION,CIV,2023-10-02,2023-10-31,,,,1.14.14.1.10( Track Hopper)
7104, Track Hopper: RCC in substructure including PCC,CIV,2023-11-01,2024-03-29,,,,1.14.14.1.10( Track Hopper)
7105, Track Hopper: Grade Slab,CIV,2024-03-30,2024-04-13,,,,1.14.14.1.10( Track Hopper)
7106, Track Hopper: RCC in superstructure,CIV,2024-04-14,2024-05-13,,,,1.14.14.1.10( Track Hopper)
7107, Track Hopper: Backfilling,CIV,2024-05-14,2024-06-12,,,,1.14.14.1.10( Track Hopper)
7108, Track Hopper: Finishing works,CIV,2024-06-13,2024-06-27,,,,1.14.14.1.10( Track Hopper)
7109, CHP Main Control cum MCC Room,CIV,2023-07-24,2025-03-14,,,,1.14.14.1( Civil Works)
7110, Main Control Room: EXCAVATION,CIV,2023-07-24,2023-08-22,,,,1.14.14.1.11( CHP Main Control cum MCC Room)
7111, Main Control Room: RCC in substructure including PCC,CIV,2023-08-23,2023-12-20,,,,1.14.14.1.11( CHP Main Control cum MCC Room)
7112, Main Control Room: RCC/Structure work in superstructure,CIV,2023-12-21,2024-08-16,,,,1.14.14.1.11( CHP Main Control cum MCC Room)
7113, Main Control Room: backfilling,CIV,2024-08-02,2024-08-26,,,,1.14.14.1.11( CHP Main Control cum MCC Room)
7114, Main Control Room: Brick Work & Plastering,CIV,2024-08-17,2024-10-15,,,,1.14.14.1.11( CHP Main Control cum MCC Room)
7115, Main Control Room: Flooring,CIV,2024-10-16,2024-12-14,,,,1.14.14.1.11( CHP Main Control cum MCC Room)
7116, Main Control Room: Finishing work,CIV,2024-12-15,2025-03-14,,,,1.14.14.1.11( CHP Main Control cum MCC Room)
7117, CHP MCC Room,CIV,2023-07-24,2024-08-04,,,,1.14.14.1( Civil Works)
7118, MCC Room: EXCAVATION,CIV,2023-07-24,2023-08-07,,,,1.14.14.1.12( CHP MCC Room)
7119, MCC Room: RCC in substructure including PCC,CIV,2023-08-08,2023-09-06,,,,1.14.14.1.12( CHP MCC Room)
7120, MCC Room: RCC/Structure work in superstructure,CIV,2023-09-07,2024-03-07,,,,1.14.14.1.12( CHP MCC Room)
7121, MCC Room: Brick Work & Plastering,CIV,2024-03-08,2024-05-06,,,,1.14.14.1.12( CHP MCC Room)
7122, MCC Room: Flooring,CIV,2024-05-07,2024-05-21,,,,1.14.14.1.12( CHP MCC Room)
7123, MCC Room: Backfilling,CIV,2024-05-22,2024-06-05,,,,1.14.14.1.12( CHP MCC Room)
7124, MCC Room: Finishing works,CIV,2024-06-06,2024-08-04,,,,1.14.14.1.12( CHP MCC Room)
7125,"Common CHP, LHP & GHP Pump House",COM,2023-07-24,2024-08-04,,,,1.14.14.1( Civil Works)
7126, Pump House: EXCAVATION,CIV,2023-07-24,2023-08-07,,,,"1.14.14.1.13(Common CHP, LHP & GHP Pump House)"
7127, Pump House: RCC in substructure including PCC,CIV,2023-08-08,2023-09-06,,,,"1.14.14.1.13(Common CHP, LHP & GHP Pump House)"
7128, Pump House: RCC/Structure work in superstructure,CIV,2023-09-07,2024-03-07,,,,"1.14.14.1.13(Common CHP, LHP & GHP Pump House)"
7129, Pump House: Brick Work & Plastering,CIV,2024-03-08,2024-05-06,,,,"1.14.14.1.13(Common CHP, LHP & GHP Pump House)"
7130, Pump House: Flooring,CIV,2024-05-07,2024-05-21,,,,"1.14.14.1.13(Common CHP, LHP & GHP Pump House)"
7131, Pump House: Backfilling,CIV,2024-05-22,2024-06-05,,,,"1.14.14.1.13(Common CHP, LHP & GHP Pump House)"
7132, Pump House: Finishing works,CIV,2024-06-06,2024-08-04,,,,"1.14.14.1.13(Common CHP, LHP & GHP Pump House)"
7133,CHP Workshop cum office Building ,CIV,2023-07-24,2024-08-04,,,,1.14.14.1( Civil Works)
7134, CHP Workshop: EXCAVATION,CIV,2023-07-24,2023-08-07,,,,1.14.14.1.14(CHP Workshop cum office Building )
7135, CHP Workshop: RCC in substructure including PCC,CIV,2023-08-08,2023-09-06,,,,1.14.14.1.14(CHP Workshop cum office Building )
7136, CHP Workshop: RCC/Structure work in superstructure,CIV,2023-09-07,2024-03-07,,,,1.14.14.1.14(CHP Workshop cum office Building )
7137, CHP Workshop: Brick Work & Plastering,CIV,2024-03-08,2024-05-06,,,,1.14.14.1.14(CHP Workshop cum office Building )
7138, CHP Workshop: Flooring,CIV,2024-05-07,2024-05-21,,,,1.14.14.1.14(CHP Workshop cum office Building )
7139, CHP Workshop: Backfilling,CIV,2024-05-22,2024-06-05,,,,1.14.14.1.14(CHP Workshop cum office Building )
7140, CHP Workshop: Finishing works,CIV,2024-06-06,2024-08-04,,,,1.14.14.1.14(CHP Workshop cum office Building )
7141,CHP Dozer Shed,CIV,2023-07-24,2024-08-04,,,,1.14.14.1( Civil Works)
7142, Dozer Shed: EXCAVATION,CIV,2023-07-24,2023-08-07,,,,1.14.14.1.15(CHP Dozer Shed)
7143, Dozer Shed: RCC in substructure including PCC,CIV,2023-08-08,2023-09-06,,,,1.14.14.1.15(CHP Dozer Shed)
7144, Dozer Shed: RCC/Structure work in superstructure,CIV,2023-09-07,2024-03-07,,,,1.14.14.1.15(CHP Dozer Shed)
7145, Dozer Shed: Brick Work & Plastering,CIV,2024-03-08,2024-05-06,,,,1.14.14.1.15(CHP Dozer Shed)
7146, Dozer Shed: Flooring,CIV,2024-05-07,2024-05-21,,,,1.14.14.1.15(CHP Dozer Shed)
7147, Dozer Shed: Backfilling,CIV,2024-05-22,2024-06-05,,,,1.14.14.1.15(CHP Dozer Shed)
7148, Dozer Shed: Finishing works,CIV,2024-06-06,2024-08-04,,,,1.14.14.1.15(CHP Dozer Shed)
7149,CHP Coal Settling Pond ( CSSP),CIV,2023-10-02,2024-06-27,,,,1.14.14.1( Civil Works)
7150,CSSP: EXCAVATION,CIV,2023-10-02,2023-10-31,,,,1.14.14.1.16(CHP Coal Settling Pond ( CSSP))
7151,CSSP: RCC in substructure including PCC,CIV,2023-11-01,2024-03-29,,,,1.14.14.1.16(CHP Coal Settling Pond ( CSSP))
7152,CSSP: Grade Slab,CIV,2024-03-30,2024-04-13,,,,1.14.14.1.16(CHP Coal Settling Pond ( CSSP))
7153,CSSP: RCC in superstructure,CIV,2024-04-14,2024-05-13,,,,1.14.14.1.16(CHP Coal Settling Pond ( CSSP))
7154,CSSP: Backfilling,CIV,2024-05-14,2024-06-12,,,,1.14.14.1.16(CHP Coal Settling Pond ( CSSP))
7155,CSSP: Finishing works,CIV,2024-06-13,2024-06-27,,,,1.14.14.1.16(CHP Coal Settling Pond ( CSSP))
7156, Stacker Reclaimer ,CIV,2023-09-27,2024-06-22,,,,1.14.14.1( Civil Works)
7157, Stacker Reclaimer: EXCAVATION,CIV,2023-09-27,2023-11-25,,,,1.14.14.1.17( Stacker Reclaimer )
7158, Stacker Reclaimer: RCC in substructure including PCC,CIV,2023-11-26,2024-03-24,,,,1.14.14.1.17( Stacker Reclaimer )
7159, Stacker Reclaimer: RCC in superstructure (Drive house),CIV,2024-03-25,2024-04-23,,,,1.14.14.1.17( Stacker Reclaimer )
7160, Stacker Reclaimer: Backfilling,CIV,2024-04-24,2024-05-23,,,,1.14.14.1.17( Stacker Reclaimer )
7161, Stacker Reclaimer: Finishing works,CIV,2024-05-24,2024-06-22,,,,1.14.14.1.17( Stacker Reclaimer )
7162, Stock Yard,CIV,2023-07-24,2023-11-05,,,,1.14.14.1( Civil Works)
7163, Stock Yard: EXCAVATION,CIV,2023-07-24,2023-09-06,,,,1.14.14.1.18( Stock Yard)
7164, Stock Yard: RCC with PCC,CIV,2023-09-07,2023-11-05,,,,1.14.14.1.18( Stock Yard)
7165, Crusher House,CIV,2023-11-01,2025-02-02,,,,1.14.14.1( Civil Works)
7166, Crusher House: EXCAVATION,CIV,2023-11-21,2023-12-05,,,,1.14.14.1.19( Crusher House)
7167, Crusher House: RCC in substructure including PCC,CIV,2023-12-06,2024-01-19,,,,1.14.14.1.19( Crusher House)
7168, Crusher House: RCC/Steel Structure in superstructure,CIV,2024-01-20,2025-01-03,,,,1.14.14.1.19( Crusher House)
7169, Crusher House: Backfilling,CIV,2025-01-04,2025-01-18,,,,1.14.14.1.19( Crusher House)
7170, Crusher House: Finishing works,CIV,2025-01-19,2025-02-02,,,,1.14.14.1.19( Crusher House)
7171, Transfer Points,CIV,2023-11-21,2024-06-29,,,,1.14.14.1.19( Crusher House)
7172,CHP Transfer Point-1,CIV,2023-11-21,2024-06-29,,,,1.14.14.1.19.6( Transfer Points)
7173, Transfer Point-2: EXCAVATION,CIV,2023-11-21,2023-11-27,,,,1.14.14.1.19.6.1(CHP Transfer Point-1)
7174, Transfer Point-2: RCC in substructure including PCC,CIV,2023-11-28,2024-01-11,,,,1.14.14.1.19.6.1(CHP Transfer Point-1)
7175, Transfer Point-2: RCC in superstructure,CIV,2024-01-12,2024-01-31,,,,1.14.14.1.19.6.1(CHP Transfer Point-1)
7176, Transfer Point-2: Backfilling,CIV,2024-02-01,2024-02-15,,,,1.14.14.1.19.6.1(CHP Transfer Point-1)
7177, Transfer Point-2: Finishing works,CIV,2024-02-16,2024-03-01,,,,1.14.14.1.19.6.1(CHP Transfer Point-1)
7178, Transfer Point-2: Structural works,CIV,2024-03-02,2024-06-29,,,,1.14.14.1.19.6.1(CHP Transfer Point-1)
7179,CHP Transfer Point-2,CIV,2023-11-21,2024-06-29,,,,1.14.14.1.19.6( Transfer Points)
7180, Transfer Point-2: EXCAVATION,CIV,2023-11-21,2023-11-27,,,,1.14.14.1.19.6.2(CHP Transfer Point-2)
7181, Transfer Point-2: RCC in substructure including PCC,CIV,2023-11-28,2024-01-11,,,,1.14.14.1.19.6.2(CHP Transfer Point-2)
7182, Transfer Point-2: RCC in superstructure,CIV,2024-01-12,2024-01-31,,,,1.14.14.1.19.6.2(CHP Transfer Point-2)
7183, Transfer Point-2: Backfilling,CIV,2024-02-01,2024-02-15,,,,1.14.14.1.19.6.2(CHP Transfer Point-2)
7184, Transfer Point-2: Finishing works,CIV,2024-02-16,2024-03-01,,,,1.14.14.1.19.6.2(CHP Transfer Point-2)
7185, Transfer Point-2: Structural works,CIV,2024-03-02,2024-06-29,,,,1.14.14.1.19.6.2(CHP Transfer Point-2)
7186,CHP Transfer Point-3 & any additional TPs,CIV,2023-11-21,2024-06-29,,,,1.14.14.1.19.6( Transfer Points)
7187, Transfer Point-3: EXCAVATION,CIV,2023-11-21,2023-11-27,,,,1.14.14.1.19.6.3(CHP Transfer Point-3 & any additional TPs)
7188, Transfer Point-3: RCC in substructure including PCC,CIV,2023-11-28,2024-01-11,,,,1.14.14.1.19.6.3(CHP Transfer Point-3 & any additional TPs)
7189, Transfer Point-3: RCC in superstructure,CIV,2024-01-12,2024-01-31,,,,1.14.14.1.19.6.3(CHP Transfer Point-3 & any additional TPs)
7190, Transfer Point-3: Backfilling,CIV,2024-02-01,2024-02-15,,,,1.14.14.1.19.6.3(CHP Transfer Point-3 & any additional TPs)
7191, Transfer Point-3: Finishing works,CIV,2024-02-16,2024-03-01,,,,1.14.14.1.19.6.3(CHP Transfer Point-3 & any additional TPs)
7192, Transfer Point-3: Structural works,CIV,2024-03-02,2024-06-29,,,,1.14.14.1.19.6.3(CHP Transfer Point-3 & any additional TPs)
7193,Drive House,CIV,2023-11-21,2024-06-29,,,,1.14.14.1.19.6( Transfer Points)
7194,Drive House:  EXCAVATION,CIV,2023-11-21,2023-11-27,,,,1.14.14.1.19.6.4(Drive House)
7195,Drive House: RCC in substructure including PCC,CIV,2023-11-28,2024-01-11,,,,1.14.14.1.19.6.4(Drive House)
7196,Drive House:  RCC in superstructure,CIV,2024-01-12,2024-01-31,,,,1.14.14.1.19.6.4(Drive House)
7197,Drive House: Backfilling,CIV,2024-02-01,2024-02-15,,,,1.14.14.1.19.6.4(Drive House)
7198,Drive House:  Finishing works,CIV,2024-02-16,2024-03-01,,,,1.14.14.1.19.6.4(Drive House)
7199,Drive House:  Structural works,CIV,2024-03-02,2024-06-29,,,,1.14.14.1.19.6.4(Drive House)
7200, Conveyor Tunnel,CIV,2023-11-01,2024-06-27,,,,1.14.14.1.19( Crusher House)
7201,Conv. 1A & 1B TUNNEL: Excavation,CIV,2023-11-21,2023-11-27,,,,1.14.14.1.19.7( Conveyor Tunnel)
7202,Conv. 1A & 1B TUNNEL: RCC in substructure including PCC,CIV,2023-11-01,2024-03-29,,,,1.14.14.1.19.7( Conveyor Tunnel)
7203,Conv. 1A & 1B TUNNEL: Grade Slab,CIV,2024-03-30,2024-04-13,,,,1.14.14.1.19.7( Conveyor Tunnel)
7204,Conv. 1A & 1B TUNNEL: RCC in superstructure,CIV,2024-04-14,2024-05-13,,,,1.14.14.1.19.7( Conveyor Tunnel)
7205,Conv. 1A & 1B TUNNEL: Backfilling,CIV,2024-05-14,2024-06-12,,,,1.14.14.1.19.7( Conveyor Tunnel)
7206,Conv. 1A & 1B TUNNEL: Finishing works,CIV,2024-06-13,2024-06-27,,,,1.14.14.1.19.7( Conveyor Tunnel)
7207, Conveyor Galleries with Trestles,CIV,2023-11-21,2024-09-27,,,,1.14.14.1.19( Crusher House)
7208, Conveyor Gallery -1A & 1B,CIV,2024-02-01,2024-09-27,,,,1.14.14.1.19.8( Conveyor Galleries with Trestles)
7209, Conveyor Gallery -1A & 1B: EXCAVATION,CIV,2024-02-01,2024-03-01,,,,1.14.14.1.19.8.1( Conveyor Gallery -1A & 1B)
7210, Conveyor Gallery -1A & 1B: RCC in substructure including PCC,CIV,2024-03-02,2024-04-30,,,,1.14.14.1.19.8.1( Conveyor Gallery -1A & 1B)
7211, Conveyor Gallery -1A & 1B: RCC/Structure in superstructure,CIV,2024-05-01,2024-05-30,,,,1.14.14.1.19.8.1( Conveyor Gallery -1A & 1B)
7212, Conveyor Gallery -1A & 1B: Backfilling,CIV,2024-05-31,2024-06-29,,,,1.14.14.1.19.8.1( Conveyor Gallery -1A & 1B)
7213, Conveyor Gallery -1A & 1B: Finishing works,CIV,2024-06-30,2024-07-14,,,,1.14.14.1.19.8.1( Conveyor Gallery -1A & 1B)
7214, Conveyor Gallery -1A & 1B: Structural work,ERC,2024-05-31,2024-09-27,,,,1.14.14.1.19.8.1( Conveyor Gallery -1A & 1B)
7215, Conveyor Gallery -2A & 2B,CIV,2024-02-01,2024-09-27,,,,1.14.14.1.19.8( Conveyor Galleries with Trestles)
7216, Conveyor Gallery -2A & 2B: EXCAVATION,CIV,2024-02-01,2024-03-01,,,,1.14.14.1.19.8.2( Conveyor Gallery -2A & 2B)
7217, Conveyor Gallery -2A & 2B: RCC in substructure including PCC,CIV,2024-03-02,2024-04-30,,,,1.14.14.1.19.8.2( Conveyor Gallery -2A & 2B)
7218, Conveyor Gallery -2A & 2B: RCC/Structure in superstructure,CIV,2024-05-01,2024-05-30,,,,1.14.14.1.19.8.2( Conveyor Gallery -2A & 2B)
7219, Conveyor Gallery -2A & 2B: Backfilling,CIV,2024-05-31,2024-06-29,,,,1.14.14.1.19.8.2( Conveyor Gallery -2A & 2B)
7220, Conveyor Gallery -2A & 2B: Finishing works,CIV,2024-06-30,2024-07-14,,,,1.14.14.1.19.8.2( Conveyor Gallery -2A & 2B)
7221, Conveyor Gallery -2A & 2B: Structural work,ERC,2024-05-31,2024-09-27,,,,1.14.14.1.19.8.2( Conveyor Gallery -2A & 2B)
7222, Conveyor Gallery -3A & 3B,CIV,2024-02-01,2024-09-27,,,,1.14.14.1.19.8( Conveyor Galleries with Trestles)
7223, Conveyor Gallery -3A & 3B: EXCAVATION,CIV,2024-02-01,2024-03-01,,,,1.14.14.1.19.8.3( Conveyor Gallery -3A & 3B)
7224, Conveyor Gallery -3A & 3B: RCC in substructure including PCC,CIV,2024-03-02,2024-04-30,,,,1.14.14.1.19.8.3( Conveyor Gallery -3A & 3B)
7225, Conveyor Gallery -3A & 3B: RCC/Structure in superstructure,CIV,2024-05-01,2024-05-30,,,,1.14.14.1.19.8.3( Conveyor Gallery -3A & 3B)
7226, Conveyor Gallery -3A & 3B: Backfilling,CIV,2024-05-31,2024-06-29,,,,1.14.14.1.19.8.3( Conveyor Gallery -3A & 3B)
7227, Conveyor Gallery -3A & 3B: Finishing works,CIV,2024-06-30,2024-07-14,,,,1.14.14.1.19.8.3( Conveyor Gallery -3A & 3B)
7228, Conveyor Gallery -3A & 3B: Structural work,ERC,2024-05-31,2024-09-27,,,,1.14.14.1.19.8.3( Conveyor Gallery -3A & 3B)
7229, Conveyor Gallery -4A & 4B,CIV,2024-02-01,2024-09-27,,,,1.14.14.1.19.8( Conveyor Galleries with Trestles)
7230, Conveyor Gallery -4A & 4B: EXCAVATION,CIV,2024-02-01,2024-03-01,,,,1.14.14.1.19.8.4( Conveyor Gallery -4A & 4B)
7231, Conveyor Gallery -4A & 4B: RCC in substructure including PCC,CIV,2024-03-02,2024-04-30,,,,1.14.14.1.19.8.4( Conveyor Gallery -4A & 4B)
7232, Conveyor Gallery -4A & 4B: RCC/Structure in superstructure,CIV,2024-05-01,2024-05-30,,,,1.14.14.1.19.8.4( Conveyor Gallery -4A & 4B)
7233, Conveyor Gallery -4A & 4B: Backfilling,CIV,2024-05-31,2024-06-29,,,,1.14.14.1.19.8.4( Conveyor Gallery -4A & 4B)
7234, Conveyor Gallery -4A & 4B: Finishing works,CIV,2024-06-30,2024-07-14,,,,1.14.14.1.19.8.4( Conveyor Gallery -4A & 4B)
7235, Conveyor Gallery -4A & 4B: Structural work,ERC,2024-05-31,2024-09-27,,,,1.14.14.1.19.8.4( Conveyor Gallery -4A & 4B)
7236, Conveyor Gallery -5A & 5B,CIV,2024-02-01,2024-09-27,,,,1.14.14.1.19.8( Conveyor Galleries with Trestles)
7237, Conveyor Gallery -5A & 5B: EXCAVATION,CIV,2024-02-01,2024-03-01,,,,1.14.14.1.19.8.5( Conveyor Gallery -5A & 5B)
7238, Conveyor Gallery -5A & 5B: RCC in substructure including PCC,CIV,2024-03-02,2024-04-30,,,,1.14.14.1.19.8.5( Conveyor Gallery -5A & 5B)
7239, Conveyor Gallery -5A & 5B: RCC/Structure in superstructure,CIV,2024-05-01,2024-05-30,,,,1.14.14.1.19.8.5( Conveyor Gallery -5A & 5B)
7240, Conveyor Gallery -5A & 5B: Backfilling,CIV,2024-05-31,2024-06-29,,,,1.14.14.1.19.8.5( Conveyor Gallery -5A & 5B)
7241, Conveyor Gallery -5A & 5B: Finishing works,CIV,2024-06-30,2024-07-14,,,,1.14.14.1.19.8.5( Conveyor Gallery -5A & 5B)
7242, Conveyor Gallery -5A & 5B: Structural work,ERC,2024-05-31,2024-09-27,,,,1.14.14.1.19.8.5( Conveyor Gallery -5A & 5B)
7243, Reversible Yard Conveyor Gallery -6,CIV,2023-11-21,2024-08-28,,,,1.14.14.1.19.8( Conveyor Galleries with Trestles)
7244, Conveyor Gallery -6: EXCAVATION,CIV,2024-02-01,2024-03-01,,,,1.14.14.1.19.8.6( Reversible Yard Conveyor Gallery -6)
7245, Conveyor Gallery -6: RCC in substructure including PCC,CIV,2024-03-02,2024-04-30,,,,1.14.14.1.19.8.6( Reversible Yard Conveyor Gallery -6)
7246, Conveyor Gallery -6: RCC/Structure in superstructure,CIV,2024-05-01,2024-05-30,,,,1.14.14.1.19.8.6( Reversible Yard Conveyor Gallery -6)
7247, Conveyor Gallery -6: Backfilling,CIV,2024-05-31,2024-06-29,,,,1.14.14.1.19.8.6( Reversible Yard Conveyor Gallery -6)
7248, Conveyor Gallery -6: Finishing works,CIV,2024-06-30,2024-07-14,,,,1.14.14.1.19.8.6( Reversible Yard Conveyor Gallery -6)
7249, Conveyor Gallery -6: Structural work,ERC,2024-05-31,2024-08-28,,,,1.14.14.1.19.8.6( Reversible Yard Conveyor Gallery -6)
7250,Cable Trestle/Cable Gallery,CIV,2023-11-21,2024-06-17,,,,1.14.14.1.19.8.6( Reversible Yard Conveyor Gallery -6)
7251, Cable Gallery: EXCAVATION,CIV,2023-11-21,2023-12-20,,,,1.14.14.1.19.8.6.7(Cable Trestle/Cable Gallery)
7252, Cable Gallery: RCC in substructure including PCC,CIV,2023-12-21,2024-02-18,,,,1.14.14.1.19.8.6.7(Cable Trestle/Cable Gallery)
7253, Cable Gallery: RCC/Structure in superstructure,CIV,2024-02-19,2024-03-19,,,,1.14.14.1.19.8.6.7(Cable Trestle/Cable Gallery)
7254, Cable Gallery: Backfilling,CIV,2024-03-20,2024-04-18,,,,1.14.14.1.19.8.6.7(Cable Trestle/Cable Gallery)
7255, Cable Gallery: Finishing works,CIV,2024-04-19,2024-05-03,,,,1.14.14.1.19.8.6.7(Cable Trestle/Cable Gallery)
7256, Cable Gallery: Structural work,ERC,2024-03-20,2024-06-17,,,,1.14.14.1.19.8.6.7(Cable Trestle/Cable Gallery)
7257,"Engineering, Supply &Erection",CIV,2022-09-27,2026-01-26,2022-09-27,,,1.14.14(Coal Handling Plant)
7258,Finalisation of CHP layout,ENG,2022-09-27,2022-10-06,,,,"1.14.14.2(Engineering, Supply &Erection)"
7259," Basic Engineering for CHP ( Flow Diagram, Profiles )",ENG,2022-10-07,2022-10-21,,,,"1.14.14.2(Engineering, Supply &Erection)"
7260, Track Hopper (Paddle Feeder),PRC,2022-11-20,2026-01-26,,,,"1.14.14.2(Engineering, Supply &Erection)"
7261, NIT,ENQ,2022-11-20,2022-11-20,,,,1.14.14.2.3( Track Hopper (Paddle Feeder))
7262, Order Placement,ORD,2022-11-21,2023-03-20,,,,1.14.14.2.3( Track Hopper (Paddle Feeder))
7263,Detailed Engineering& Approval of Dwgs datasheet and QAP,ENG,2023-03-21,2024-01-14,,,,1.14.14.2.3( Track Hopper (Paddle Feeder))
7264,Manufacturing,MFG,2023-11-16,2024-09-10,,,,1.14.14.2.3( Track Hopper (Paddle Feeder))
7265,Dispatch,DIS,2024-02-14,2024-12-09,,,,1.14.14.2.3( Track Hopper (Paddle Feeder))
7266,Erection of mechanical equipments,ERC,2024-05-24,2025-06-07,,,,1.14.14.2.3( Track Hopper (Paddle Feeder))
7267,Erection of Electrical & C&I Items including cabling etc,ERC,2025-04-09,2025-07-07,,,,1.14.14.2.3( Track Hopper (Paddle Feeder))
7268, Commissioning,COM,2025-07-08,2025-12-04,,,,1.14.14.2.3( Track Hopper (Paddle Feeder))
7269, Trial Run with load,COM,2025-12-28,2026-01-26,,,,1.14.14.2.3( Track Hopper (Paddle Feeder))
7270, Stacker Reclaimer (Reversible),PRC,2022-11-20,2026-01-26,2022-09-27,,,"1.14.14.2(Engineering, Supply &Erection)"
7271, NIT,ENQ,2022-11-20,2022-11-20,2022-09-27,,,1.14.14.2.4( Stacker Reclaimer (Reversible))
7272, Order Placement,ORD,2022-11-21,2023-02-18,2022-12-02,,,1.14.14.2.4( Stacker Reclaimer (Reversible))
7273,Detailed Engineering& Approval of Dwgs datasheet and QAP,ENG,2023-02-19,2023-12-15,,,,1.14.14.2.4( Stacker Reclaimer (Reversible))
7274,Manufacturing,MFG,2023-07-19,2024-06-22,,,,1.14.14.2.4( Stacker Reclaimer (Reversible))
7275,dispatch,OTH,2023-10-17,2024-08-11,,,,1.14.14.2.4( Stacker Reclaimer (Reversible))
7276,Erection of mechanical equipments,ERC,2024-05-14,2025-03-09,,,,1.14.14.2.4( Stacker Reclaimer (Reversible))
7277,Erection of Electrical & C&I Items including cabling etc,ERC,2025-02-08,2025-05-08,,,,1.14.14.2.4( Stacker Reclaimer (Reversible))
7278, Commissioning,COM,2025-05-09,2025-11-04,,,,1.14.14.2.4( Stacker Reclaimer (Reversible))
7279, Trial Run with load,COM,2025-12-28,2026-01-26,,,,1.14.14.2.4( Stacker Reclaimer (Reversible))
7280," Conveyor System for CHP, LHP & GHP (incl. Conv, CR, ACVS, DE & Boiler tripper)",PRC,2022-12-20,2026-01-26,,,,"1.14.14.2(Engineering, Supply &Erection)"
7281, NIT,ENQ,2022-12-20,2022-12-20,,,,"1.14.14.2.5( Conveyor System for CHP, LHP & GHP (incl. Conv, CR, ACVS, DE & Boiler tripper))"
7282, Order Placement,ORD,2022-12-21,2023-04-19,,,,"1.14.14.2.5( Conveyor System for CHP, LHP & GHP (incl. Conv, CR, ACVS, DE & Boiler tripper))"
7283,Detailed Engineering& Approval of Dwgs datasheet and QAP,ENG,2023-04-20,2024-04-18,,,,"1.14.14.2.5( Conveyor System for CHP, LHP & GHP (incl. Conv, CR, ACVS, DE & Boiler tripper))"
7284,Manufacturing,MFG,2024-01-20,2024-11-14,,,,"1.14.14.2.5( Conveyor System for CHP, LHP & GHP (incl. Conv, CR, ACVS, DE & Boiler tripper))"
7285,"Inspection, Dispatch and RECEIPT at site",DIS,2024-04-19,2025-02-12,,,,"1.14.14.2.5( Conveyor System for CHP, LHP & GHP (incl. Conv, CR, ACVS, DE & Boiler tripper))"
7286,Erection of technological structure,ERC,2024-10-26,2025-05-23,,,,"1.14.14.2.5( Conveyor System for CHP, LHP & GHP (incl. Conv, CR, ACVS, DE & Boiler tripper))"
7287,Erection of mechanical equipments including tripper,ERC,2025-01-24,2025-08-21,,,,"1.14.14.2.5( Conveyor System for CHP, LHP & GHP (incl. Conv, CR, ACVS, DE & Boiler tripper))"
7288,DE Erection,ERC,2025-01-14,2025-07-12,,,,"1.14.14.2.5( Conveyor System for CHP, LHP & GHP (incl. Conv, CR, ACVS, DE & Boiler tripper))"
7289,Erection of Belt,ERC,2025-05-24,2025-07-22,,,,"1.14.14.2.5( Conveyor System for CHP, LHP & GHP (incl. Conv, CR, ACVS, DE & Boiler tripper))"
7290,Erection of Electrical & C&I Items including cabling etc,ERC,2025-01-24,2025-06-22,,,,"1.14.14.2.5( Conveyor System for CHP, LHP & GHP (incl. Conv, CR, ACVS, DE & Boiler tripper))"
7291,Commissioning,COM,2025-06-23,2025-12-19,,,,"1.14.14.2.5( Conveyor System for CHP, LHP & GHP (incl. Conv, CR, ACVS, DE & Boiler tripper))"
7292, Trial Run with load,COM,2025-12-28,2026-01-26,,,,"1.14.14.2.5( Conveyor System for CHP, LHP & GHP (incl. Conv, CR, ACVS, DE & Boiler tripper))"
7293, Crusher House (Part of Conv. System),ERC,2023-04-20,2026-01-26,,,,"1.14.14.2(Engineering, Supply &Erection)"
7294,Detailed Engineering& Approval of Dwgs datasheet and QAP,ENG,2023-04-20,2024-04-18,,,,1.14.14.2.6( Crusher House (Part of Conv. System))
7295,Manufacturing,MFG,2024-01-20,2024-11-14,,,,1.14.14.2.6( Crusher House (Part of Conv. System))
7296,"Inspection, Dispatch and RECEIPT at site",DIS,2024-04-19,2025-02-12,,,,1.14.14.2.6( Crusher House (Part of Conv. System))
7297,Erection of mechanical equipments,ERC,2024-10-26,2025-06-22,,,,1.14.14.2.6( Crusher House (Part of Conv. System))
7298,and RECEIPT,REC,2025-03-25,2025-08-21,,,,1.14.14.2.6( Crusher House (Part of Conv. System))
7299,Erection of Electrical & C&I Items including cabling etc,ERC,2025-05-09,2025-09-05,,,,1.14.14.2.6( Crusher House (Part of Conv. System))
7300, Commissioning,COM,2025-07-08,2025-11-04,,,,1.14.14.2.6( Crusher House (Part of Conv. System))
7301, Trial Run with load,COM,2025-12-28,2026-01-26,,,,1.14.14.2.6( Crusher House (Part of Conv. System))
7302, DS & Water System + BOBR,PRC,2023-02-18,2025-06-04,,,,"1.14.14.2(Engineering, Supply &Erection)"
7303, NIT,ENQ,2023-02-18,2023-02-18,,,,1.14.14.2.7( DS & Water System + BOBR)
7304, Order Placement,ORD,2023-02-19,2023-06-18,,,,1.14.14.2.7( DS & Water System + BOBR)
7305,Detailed Engineering& Approval of Dwgs datasheet and QAP,ENG,2023-06-19,2024-04-13,,,,1.14.14.2.7( DS & Water System + BOBR)
7306,Manufacturing,MFG,2024-01-15,2024-11-09,,,,1.14.14.2.7( DS & Water System + BOBR)
7307,"Inspection, Dispatch and RECEIPT at site",DIS,2024-04-14,2024-12-29,,,,1.14.14.2.7( DS & Water System + BOBR)
7308,Erection of mechanical equipments,ERC,2024-06-13,2025-03-06,,,,1.14.14.2.7( DS & Water System + BOBR)
7309,Erection of Electrical & C&I Items including cabling etc,ERC,2025-03-07,2025-06-04,,,,1.14.14.2.7( DS & Water System + BOBR)
7310,"JHS - 16MVA, 11/3.45 KV CHP AUX Transformer ",ERC,2023-04-05,2025-06-04,,,,"1.14.14.2(Engineering, Supply &Erection)"
7311,Engineering,ENG,2023-04-05,2023-10-31,,,,"1.14.14.2.8(JHS - 16MVA, 11/3.45 KV CHP AUX Transformer )"
7312,Manufacturing & testing,MFG,2023-08-03,2024-11-16,,,,"1.14.14.2.8(JHS - 16MVA, 11/3.45 KV CHP AUX Transformer )"
7313," Packing, Dispatch",DIS,2024-07-20,2024-12-16,,,,"1.14.14.2.8(JHS - 16MVA, 11/3.45 KV CHP AUX Transformer )"
7314,Erection of Aux Transformer,ERC,2025-01-16,2025-06-04,,,,"1.14.14.2.8(JHS - 16MVA, 11/3.45 KV CHP AUX Transformer )"
7315,Commissioning of Stacker Reclaimer & Crusher House for coal feeding,COM,2025-06-23,2025-11-27,,,,"1.14.14.2(Engineering, Supply &Erection)"
7316,Commissioning of Coal Handling system including Coal Transportation system for achieving Coal Firing of Unit # 1,COM,2025-11-05,2026-01-25,,,,"1.14.14.2(Engineering, Supply &Erection)"
7317, Trial Run with load,COM,2025-11-28,2025-12-27,,,,"1.14.14.2(Engineering, Supply &Erection)"
7318,Ash Handling Plant,OTH,2022-12-25,2026-04-26,,,,1.14(BOP Systems)
7319, Civil Works,CIV,2023-04-10,2025-05-08,,,,1.14.15(Ash Handling Plant)
7320,"Rel of Dwg for ASH WATER, ASH SLURRY PUMP HOUSE",PE - RFC,2024-02-18,2024-02-18,,,,1.14.15.1( Civil Works)
7321,Rel of dwg for Compressor House,PE - RFC,2023-09-26,2023-09-26,,,,1.14.15.1( Civil Works)
7322,Rel of dwg for Silos,PE - RFC,2023-11-25,2023-11-25,,,,1.14.15.1( Civil Works)
7323,Rel of dwg for Pipe Rack,PE - RFC,2023-11-25,2023-11-25,,,,1.14.15.1( Civil Works)
7324,Rel of dwg for Pipe pedestal,PE - RFC,2023-10-26,2023-10-26,,,,1.14.15.1( Civil Works)
7325,Rel of dwg for MCCs,PE - RFC,2023-09-26,2023-09-26,,,,1.14.15.1( Civil Works)
7326, Bottom Ash Hopper,CIV,2023-04-10,2023-08-22,,,,1.14.15.1( Civil Works)
7327, Bottom Ash Hopper: EXCAVATION,OTH,2023-04-10,2023-04-24,,,,1.14.15.1.7( Bottom Ash Hopper)
7328, Bottom Ash Hopper: RCC in substructure including PCC,CIV,2023-04-25,2023-05-24,,,,1.14.15.1.7( Bottom Ash Hopper)
7329, Bottom Ash Hopper: RCC in superstructure,CIV,2023-05-25,2023-07-23,,,,1.14.15.1.7( Bottom Ash Hopper)
7330, Bottom Ash Hopper: Backfilling,CIV,2023-07-24,2023-08-07,,,,1.14.15.1.7( Bottom Ash Hopper)
7331, Bottom Ash Hopper: Finishing works,CIV,2023-08-08,2023-08-22,,,,1.14.15.1.7( Bottom Ash Hopper)
7332,ASH SLURRY PUMP HOUSE,CIV,2024-03-20,2025-05-08,,,,1.14.15.1( Civil Works)
7333,ASH SLURRY PUMP HOUSE: EXCAVATION,CIV,2024-03-20,2024-05-03,,,,1.14.15.1.8(ASH SLURRY PUMP HOUSE)
7334,ASH SLURRY PUMP HOUSE: RCC in substructure including PCC,CIV,2024-05-04,2024-07-27,,,,1.14.15.1.8(ASH SLURRY PUMP HOUSE)
7335,ASH SLURRY PUMP HOUSE: RCC in superstructure,CIV,2024-07-28,2024-11-24,,,,1.14.15.1.8(ASH SLURRY PUMP HOUSE)
7336,ASH SLURRY PUMP HOUSE: Brick Work & Plastering,CIV,2024-11-25,2025-01-23,,,,1.14.15.1.8(ASH SLURRY PUMP HOUSE)
7337,ASH SLURRY PUMP HOUSE: Flooring,CIV,2025-01-24,2025-02-22,,,,1.14.15.1.8(ASH SLURRY PUMP HOUSE)
7338,ASH SLURRY PUMP HOUSE: Backfilling,CIV,2025-02-23,2025-03-09,,,,1.14.15.1.8(ASH SLURRY PUMP HOUSE)
7339,ASH SLURRY PUMP HOUSE: Finishing works,CIV,2025-03-10,2025-05-08,,,,1.14.15.1.8(ASH SLURRY PUMP HOUSE)
7340,ASH WATER PUMP HOUSE,CIV,2024-03-20,2025-05-08,,,,1.14.15.1( Civil Works)
7341,ASH WATER PUMP HOUSE: EXCAVATION,CIV,2024-03-20,2024-05-03,,,,1.14.15.1.9(ASH WATER PUMP HOUSE)
7342,ASH WATER PUMP HOUSE: RCC in substructure including PCC,CIV,2024-05-04,2024-07-27,,,,1.14.15.1.9(ASH WATER PUMP HOUSE)
7343,ASH WATER PUMP HOUSE: RCC in superstructure,CIV,2024-07-28,2024-11-24,,,,1.14.15.1.9(ASH WATER PUMP HOUSE)
7344,ASH WATER PUMP HOUSE: Brick Work & Plastering,CIV,2024-11-25,2025-01-23,,,,1.14.15.1.9(ASH WATER PUMP HOUSE)
7345,ASH WATER PUMP HOUSE: Flooring,CIV,2025-01-24,2025-02-22,,,,1.14.15.1.9(ASH WATER PUMP HOUSE)
7346,ASH WATER PUMP HOUSE: Backfilling,CIV,2025-02-23,2025-03-09,,,,1.14.15.1.9(ASH WATER PUMP HOUSE)
7347,ASH WATER PUMP HOUSE: Finishing works,CIV,2025-03-10,2025-05-08,,,,1.14.15.1.9(ASH WATER PUMP HOUSE)
7348,Compressor House,CIV,2023-10-27,2024-06-17,,,,1.14.15.1( Civil Works)
7349,Compressor House: EXCAVATION,CIV,2023-10-27,2023-11-05,,,,1.14.15.1.10(Compressor House)
7350,Compressor House: RCC in substructure including PCC,CIV,2023-11-06,2024-01-19,,,,1.14.15.1.10(Compressor House)
7351,Compressor House: RCC in superstructure,CIV,2024-01-20,2024-05-08,,,,1.14.15.1.10(Compressor House)
7352,Compressor House: Backfilling,CIV,2024-05-09,2024-05-18,,,,1.14.15.1.10(Compressor House)
7353,Compressor House: Finishing works,CIV,2024-05-19,2024-06-17,,,,1.14.15.1.10(Compressor House)
7354,Fly Ash Silo,CIV,2023-12-26,2024-10-31,,,,1.14.15.1( Civil Works)
7355,Fly Ash Silo: EXCAVATION,CIV,2023-12-26,2024-01-04,,,,1.14.15.1.11(Fly Ash Silo)
7356,Fly Ash Silo: RCC in substructure including PCC,CIV,2024-01-05,2024-03-05,,,,1.14.15.1.11(Fly Ash Silo)
7357,"Fly Ash Silo: RCC shell, column, tie beam and staircase",CIV,2024-03-06,2024-09-11,,,,1.14.15.1.11(Fly Ash Silo)
7358,Fly Ash Silo: RCC slab,CIV,2024-09-12,2024-10-11,,,,1.14.15.1.11(Fly Ash Silo)
7359,Fly Ash Silo: Backfilling,CIV,2024-10-12,2024-10-21,,,,1.14.15.1.11(Fly Ash Silo)
7360,Fly Ash Silo: Finishing works,CIV,2024-10-22,2024-10-31,,,,1.14.15.1.11(Fly Ash Silo)
7361,Intermediate Silo,CIV,2023-12-26,2024-10-31,,,,1.14.15.1( Civil Works)
7362,Intermediate Silo: EXCAVATION,CIV,2023-12-26,2024-01-04,,,,1.14.15.1.12(Intermediate Silo)
7363,Intermediate Silo: RCC in substructure including PCC,CIV,2024-01-05,2024-03-05,,,,1.14.15.1.12(Intermediate Silo)
7364,"Intermediate Silo: RCC shell, column, tie beam and staircase",CIV,2024-03-06,2024-09-11,,,,1.14.15.1.12(Intermediate Silo)
7365,Intermediate Silo: RCC slab,CIV,2024-09-12,2024-10-11,,,,1.14.15.1.12(Intermediate Silo)
7366,Intermediate Silo: Backfilling,CIV,2024-10-12,2024-10-21,,,,1.14.15.1.12(Intermediate Silo)
7367,Intermediate Silo: Finishing works,CIV,2024-10-22,2024-10-31,,,,1.14.15.1.12(Intermediate Silo)
7368,Silo Utility Building,CIV,2023-10-27,2024-10-30,,,,1.14.15.1( Civil Works)
7369,Silo Utility Building: EXCAVATION,CIV,2023-10-27,2023-11-05,,,,1.14.15.1.13(Silo Utility Building)
7370,Silo Utility Building: RCC in substructure including PCC,CIV,2023-11-06,2024-02-03,,,,1.14.15.1.13(Silo Utility Building)
7371,Silo Utility Building: RCC in superstructure,CIV,2024-02-04,2024-05-23,,,,1.14.15.1.13(Silo Utility Building)
7372,Silo Utility Building: Brick work & plastering,CIV,2024-05-24,2024-08-21,,,,1.14.15.1.13(Silo Utility Building)
7373,Silo Utility Building: Flooring,CIV,2024-08-22,2024-09-20,,,,1.14.15.1.13(Silo Utility Building)
7374,Silo Utility Building: Backfilling,CIV,2024-09-21,2024-09-30,,,,1.14.15.1.13(Silo Utility Building)
7375,Silo Utility Building: Finishing works,CIV,2024-10-01,2024-10-30,,,,1.14.15.1.13(Silo Utility Building)
7376,Classifier Silo,CIV,2023-10-27,2024-10-30,,,,1.14.15.1( Civil Works)
7377,Classifier Silo: EXCAVATION,CIV,2023-10-27,2023-11-05,,,,1.14.15.1.14(Classifier Silo)
7378,Classifier Silo: RCC in substructure including PCC,CIV,2023-11-06,2024-02-03,,,,1.14.15.1.14(Classifier Silo)
7379,Classifier Silo: RCC in superstructure,CIV,2024-02-04,2024-05-23,,,,1.14.15.1.14(Classifier Silo)
7380,Classifier Silo: Brick work & plastering,CIV,2024-05-24,2024-08-21,,,,1.14.15.1.14(Classifier Silo)
7381,Classifier Silo: Flooring,CIV,2024-08-22,2024-09-20,,,,1.14.15.1.14(Classifier Silo)
7382,Classifier Silo: Backfilling,CIV,2024-09-21,2024-09-30,,,,1.14.15.1.14(Classifier Silo)
7383,Classifier Silo: Finishing works,CIV,2024-10-01,2024-10-30,,,,1.14.15.1.14(Classifier Silo)
7384, Pipe Rack (Inside Plant),CIV,2023-11-26,2024-05-20,,,,1.14.15.1( Civil Works)
7385, Pipe Rack (Inside Plant): EXCAVATION,CIV,2023-11-26,2023-12-02,,,,1.14.15.1.15( Pipe Rack (Inside Plant))
7386, Pipe Rack (Inside Plant): RCC & Steel Structure in substructure including PCC,CIV,2023-12-03,2024-01-01,,,,1.14.15.1.15( Pipe Rack (Inside Plant))
7387, Pipe Rack (Inside Plant): RCC in superstructure,CIV,2024-01-02,2024-04-30,,,,1.14.15.1.15( Pipe Rack (Inside Plant))
7388, Pipe Rack (Inside Plant): Backfilling,CIV,2024-05-01,2024-05-10,,,,1.14.15.1.15( Pipe Rack (Inside Plant))
7389, Pipe Rack (Inside Plant): Finishing works,CIV,2024-05-11,2024-05-20,,,,1.14.15.1.15( Pipe Rack (Inside Plant))
7390, Pipe pedestal,CIV,2023-09-27,2024-10-08,,,,1.14.15.1( Civil Works)
7391, Pipe pedestal: EXCAVATION,CIV,2023-10-27,2023-11-02,,,,1.14.15.1.16( Pipe pedestal)
7392, Pipe pedestal : RCC in substructure including PCC,CIV,2023-11-03,2023-12-02,,,,1.14.15.1.16( Pipe pedestal)
7393, Pipe pedestal: RCC in superstructure,CIV,2023-12-03,2024-01-06,,,,1.14.15.1.16( Pipe pedestal)
7394, Pipe pedestal : Backfilling,CIV,2024-01-07,2024-01-16,,,,1.14.15.1.16( Pipe pedestal)
7395, Pipe pedestal (Outside Plant): Finishing works,CIV,2024-01-17,2024-01-26,,,,1.14.15.1.16( Pipe pedestal)
7396, AHP Main Control cum MCC Room & LHS MCC Room,CIV,2023-09-27,2024-10-08,,,,1.14.15.1.16( Pipe pedestal)
7397, Main Control Room: EXCAVATION,CIV,2023-09-27,2023-10-11,,,,1.14.15.1.16.6( AHP Main Control cum MCC Room & LHS MCC Room)
7398, Main Control Room: RCC in substructure including PCC,CIV,2023-10-12,2023-11-10,,,,1.14.15.1.16.6( AHP Main Control cum MCC Room & LHS MCC Room)
7399, Main Control Room: RCC/Structure work in superstructure,CIV,2023-11-11,2024-05-11,,,,1.14.15.1.16.6( AHP Main Control cum MCC Room & LHS MCC Room)
7400, Main Control Room: Brick Work & Plastering,CIV,2024-05-12,2024-07-10,,,,1.14.15.1.16.6( AHP Main Control cum MCC Room & LHS MCC Room)
7401, Main Control Room: Flooring,CIV,2024-07-11,2024-07-25,,,,1.14.15.1.16.6( AHP Main Control cum MCC Room & LHS MCC Room)
7402, Main Control Room: Backfilling,CIV,2024-07-26,2024-08-09,,,,1.14.15.1.16.6( AHP Main Control cum MCC Room & LHS MCC Room)
7403, Main Control Room: Finishing works,CIV,2024-08-10,2024-10-08,,,,1.14.15.1.16.6( AHP Main Control cum MCC Room & LHS MCC Room)
7404, AHP MCC Room,CIV,2023-09-27,2024-10-08,,,,1.14.15.1.16( Pipe pedestal)
7405, MCC Room: EXCAVATION,CIV,2023-09-27,2023-10-11,,,,1.14.15.1.16.7( AHP MCC Room)
7406, MCC Room: RCC in substructure including PCC,CIV,2023-10-12,2023-11-10,,,,1.14.15.1.16.7( AHP MCC Room)
7407, MCC Room: RCC/Structure work in superstructure,CIV,2023-11-11,2024-05-11,,,,1.14.15.1.16.7( AHP MCC Room)
7408, MCC Room: Brick Work & Plastering,CIV,2024-05-12,2024-07-10,,,,1.14.15.1.16.7( AHP MCC Room)
7409, MCC Room: Flooring,CIV,2024-07-11,2024-07-25,,,,1.14.15.1.16.7( AHP MCC Room)
7410, MCC Room: Backfilling,CIV,2024-07-26,2024-08-09,,,,1.14.15.1.16.7( AHP MCC Room)
7411, MCC Room: Finishing works,CIV,2024-08-10,2024-10-08,,,,1.14.15.1.16.7( AHP MCC Room)
7412,"Engineering, Supply &Erection",ENG,2022-12-25,2026-04-26,,,,1.14.15(Ash Handling Plant)
7413,Bottom Ash Handling & Coarse Ash Handling System,PRC,2022-12-25,2026-01-13,,,,"1.14.15.2(Engineering, Supply &Erection)"
7414,NIT,ENQ,2022-12-25,2022-12-25,,,,1.14.15.2.1(Bottom Ash Handling & Coarse Ash Handling System)
7415,Order placement,ORD,2022-12-26,2023-04-24,,,,1.14.15.2.1(Bottom Ash Handling & Coarse Ash Handling System)
7416,"Bottom Ash Hopper, Coarse Ash System, Equipment & Piping from Boiler area to BA Slurry PH",OTH,2023-04-25,2026-01-13,,,,1.14.15.2.1(Bottom Ash Handling & Coarse Ash Handling System)
7417,Detailed Engineering,ENG,2023-04-25,2024-04-23,,,,"1.14.15.2.1.3(Bottom Ash Hopper, Coarse Ash System, Equipment & Piping from Boiler area to BA Slurry PH)"
7418,Manufacturing,MFG,2024-01-25,2025-01-23,,,,"1.14.15.2.1.3(Bottom Ash Hopper, Coarse Ash System, Equipment & Piping from Boiler area to BA Slurry PH)"
7419,"Inspection, Dispatch and RECEIPT at site",DIS,2024-07-23,2025-05-18,,,,"1.14.15.2.1.3(Bottom Ash Hopper, Coarse Ash System, Equipment & Piping from Boiler area to BA Slurry PH)"
7420, Equipment Erection,ERC,2024-09-21,2025-09-15,,,,"1.14.15.2.1.3(Bottom Ash Hopper, Coarse Ash System, Equipment & Piping from Boiler area to BA Slurry PH)"
7421,BAH: Structure Fabrication,ERC,2024-09-21,2024-12-04,,,,1.14.15.2.1.3.4( Equipment Erection)
7422,BAH: and RECEIPT,ERC,2024-12-05,2025-02-17,,,,1.14.15.2.1.3.4( Equipment Erection)
7423,Application of Refractory,ERC,2025-02-18,2025-04-18,,,,1.14.15.2.1.3.4( Equipment Erection)
7424,"Erection of BAH area Equipment(Clinker grinder, jet pump etc)",ERC,2025-04-19,2025-07-17,,,,1.14.15.2.1.3.4( Equipment Erection)
7425,"Erection in Eco, APH and Duct area",ERC,2024-09-21,2024-11-19,,,,1.14.15.2.1.3.4( Equipment Erection)
7426,BAH: Erection of BAH Slurry Piping & APH/Duct slurry piping,ERC,2025-05-19,2025-09-15,,,,1.14.15.2.1.3.4( Equipment Erection)
7427,Botheration of Electrical & C&I Items including cabling etc,ERC,2025-06-18,2025-09-15,,,,1.14.15.2.1.3.4( Equipment Erection)
7428,Bottom ash: Commissioning,COM,2025-09-16,2025-12-14,,,,"1.14.15.2.1.3(Bottom Ash Hopper, Coarse Ash System, Equipment & Piping from Boiler area to BA Slurry PH)"
7429,Readiness of Bottom Ash Handling system including Ash transportation system up to slurry pump house for BLU of U#1,ERC,2025-12-15,2026-01-13,,,,"1.14.15.2.1.3(Bottom Ash Hopper, Coarse Ash System, Equipment & Piping from Boiler area to BA Slurry PH)"
7430,"Ash water PH, Ash Slurry PH & piping upto plant Boundary",OTH,2023-04-25,2025-09-25,,,,1.14.15.2.1(Bottom Ash Handling & Coarse Ash Handling System)
7431,Detailed Engineering,ENG,2023-04-25,2024-04-23,,,,"1.14.15.2.1.4(Ash water PH, Ash Slurry PH & piping upto plant Boundary)"
7432,Manufacturing,MFG,2024-01-25,2025-01-23,,,,"1.14.15.2.1.4(Ash water PH, Ash Slurry PH & piping upto plant Boundary)"
7433,"Inspection, Dispatch and RECEIPT at site",DIS,2024-07-23,2025-05-18,,,,"1.14.15.2.1.4(Ash water PH, Ash Slurry PH & piping upto plant Boundary)"
7434, and RECEIPT,ERC,2024-09-21,2025-09-25,,,,"1.14.15.2.1.4(Ash water PH, Ash Slurry PH & piping upto plant Boundary)"
7435,Erection of mechanical Equipment in Slurry PH & Ash Water PH,ERC,2024-09-21,2025-02-27,,,,1.14.15.2.1.4.4( and RECEIPT)
7436,Ash Slurry Pump House and Ash Water Pump House - Piping,ERC,2025-02-28,2025-06-27,,,,1.14.15.2.1.4.4( and RECEIPT)
7437,Piping upto Plant Boundary,ERC,2025-03-30,2025-07-27,,,,1.14.15.2.1.4.4( and RECEIPT)
7438,Erection of Electrical & C&I Items including cabling etc.,ERC,2025-06-28,2025-09-25,,,,1.14.15.2.1.4.4( and RECEIPT)
7439,Commissioning,COM,2024-09-22,2024-12-20,,,,"1.14.15.2.1.4(Ash water PH, Ash Slurry PH & piping upto plant Boundary)"
7440,Trial Run with load,COM,2024-12-21,2025-01-19,,,,"1.14.15.2.1.4(Ash water PH, Ash Slurry PH & piping upto plant Boundary)"
7441, Fly Ash Conveying System,PRC,2022-12-25,2026-01-18,,,,"1.14.15.2(Engineering, Supply &Erection)"
7442, NIT,ENQ,2022-12-25,2022-12-25,,,,1.14.15.2.2( Fly Ash Conveying System)
7443, Order Placement,ORD,2022-12-26,2023-04-24,,,,1.14.15.2.2( Fly Ash Conveying System)
7444,Compressor house,OTH,2023-04-25,2026-01-18,,,,1.14.15.2.2( Fly Ash Conveying System)
7445,Detailed Engineering,ENG,2023-04-25,2024-04-23,,,,1.14.15.2.2.3(Compressor house)
7446,Manufacturing,MFG,2024-01-25,2024-11-19,,,,1.14.15.2.2.3(Compressor house)
7447,"Inspection, Dispatch and RECEIPT at site",DIS,2024-05-19,2024-12-04,,,,1.14.15.2.2.3(Compressor house)
7448, and RECEIPT,REC,2025-01-04,2025-09-30,,,,1.14.15.2.2.3(Compressor house)
7449,Compressor house -Erection of mechanical equipments,ERC,2025-01-04,2025-05-03,,,,1.14.15.2.2.3.4( and RECEIPT)
7450,Compressor house - Piping,ERC,2025-05-04,2025-09-30,,,,1.14.15.2.2.3.4( and RECEIPT)
7451,Compressor house -Erection of Electrical & C&I items including cabling,ERC,2025-05-04,2025-08-31,,,,1.14.15.2.2.3.4( and RECEIPT)
7452,Commissioning,COM,2025-09-01,2025-12-19,,,,1.14.15.2.2.3(Compressor house)
7453,Trial Run with load,COM,2025-12-20,2026-01-18,,,,1.14.15.2.2.3(Compressor house)
7454,ESP area,ERC,2023-04-25,2025-12-14,,,,1.14.15.2.2( Fly Ash Conveying System)
7455,Detailed Engineering,ENG,2023-04-25,2024-04-23,,,,1.14.15.2.2.4(ESP area)
7456,Manufacturing,MFG,2024-01-25,2025-01-23,,,,1.14.15.2.2.4(ESP area)
7457,"Inspection, Dispatch and RECEIPT at site",DIS,2024-07-23,2025-05-18,,,,1.14.15.2.2.4(ESP area)
7458, and RECEIPT,REC,2024-10-31,2025-09-15,,,,1.14.15.2.2.4(ESP area)
7459,Erection of mechanical equipments,ERC,2024-11-20,2025-06-17,,,,1.14.15.2.2.4.4( and RECEIPT)
7460,Erection of Structure & Pipe Trestle from ESP to FA Silo,ERC,2024-10-31,2025-07-27,,,,1.14.15.2.2.4.4( and RECEIPT)
7461,Piping from ESP to Intermediate Silo/Classifier Silo/Fly Ash Silo,ERC,2024-11-20,2025-08-16,,,,1.14.15.2.2.4.4( and RECEIPT)
7462,Erection of Electrical & C&I Items including cabling etc.,ERC,2025-06-18,2025-09-15,,,,1.14.15.2.2.4.4( and RECEIPT)
7463,Commissioning,COM,2025-08-17,2025-11-14,,,,1.14.15.2.2.4(ESP area)
7464,Trial Run with load,COM,2025-11-15,2025-12-14,,,,1.14.15.2.2.4(ESP area)
7465,Intermediate Silo & Fly Ash Silo Equipment,ERC,2023-04-25,2025-11-14,,,,1.14.15.2.2( Fly Ash Conveying System)
7466,Detailed Engineering,ERC,2023-04-25,2024-04-23,,,,1.14.15.2.2.5(Intermediate Silo & Fly Ash Silo Equipment)
7467,Manufacturing,MFG,2024-01-25,2025-01-23,,,,1.14.15.2.2.5(Intermediate Silo & Fly Ash Silo Equipment)
7468,"Inspection, Dispatch and RECEIPT at site",DIS,2024-07-23,2025-05-08,,,,1.14.15.2.2.5(Intermediate Silo & Fly Ash Silo Equipment)
7469, and RECEIPT,REC,2024-11-20,2025-11-14,,,,1.14.15.2.2.5(Intermediate Silo & Fly Ash Silo Equipment)
7470, and RECEIPT in Intermediate silo,REC,2024-11-20,2025-07-17,,,,1.14.15.2.2.5.4( and RECEIPT)
7471, and RECEIPT in FA silo,REC,2024-11-20,2025-08-16,,,,1.14.15.2.2.5.4( and RECEIPT)
7472,Erection of Electrical & C&I Items including cabling etc.,ERC,2025-07-18,2025-11-14,,,,1.14.15.2.2.5.4( and RECEIPT)
7473,Commissioning,COM,2025-07-18,2025-10-15,,,,1.14.15.2.2.5(Intermediate Silo & Fly Ash Silo Equipment)
7474,Trial Run with load,COM,2025-10-16,2025-11-14,,,,1.14.15.2.2.5(Intermediate Silo & Fly Ash Silo Equipment)
7475,Fly ash Classifier,ERC,2023-04-25,2026-01-13,,,,"1.14.15.2(Engineering, Supply &Erection)"
7476,Detailed Engineering,ENG,2023-04-25,2024-04-23,,,,1.14.15.2.3(Fly ash Classifier)
7477,Manufacturing,MFG,2024-01-25,2025-01-23,,,,1.14.15.2.3(Fly ash Classifier)
7478,"Inspection, Dispatch and RECEIPT at site",DIS,2024-07-23,2025-05-08,,,,1.14.15.2.3(Fly ash Classifier)
7479, and RECEIPT,REC,2024-11-20,2025-10-15,,,,1.14.15.2.3(Fly ash Classifier)
7480,Erection of mechanical  Equipment,ERC,2024-11-20,2025-07-17,,,,1.14.15.2.3.4( and RECEIPT)
7481,Piping from clarifier to FA silo,ERC,2024-11-20,2025-08-16,,,,1.14.15.2.3.4( and RECEIPT)
7482,Erection of Electrical & C&I Items including cabling etc.,ERC,2025-07-18,2025-10-15,,,,1.14.15.2.3.4( and RECEIPT)
7483,Commissioning,COM,2025-08-17,2025-12-14,,,,1.14.15.2.3(Fly ash Classifier)
7484,Trial Run with load,ERC,2025-12-15,2026-01-13,,,,1.14.15.2.3(Fly ash Classifier)
7485,Fly ash Bagging System,ERC,2023-04-25,2026-01-08,,,,"1.14.15.2(Engineering, Supply &Erection)"
7486,Detailed Engineering,ENG,2023-04-25,2024-03-19,,,,1.14.15.2.4(Fly ash Bagging System)
7487,Manufacturing,MFG,2023-12-21,2024-12-19,,,,1.14.15.2.4(Fly ash Bagging System)
7488,"Inspection, Dispatch and RECEIPT at site",DIS,2024-06-18,2025-04-03,,,,1.14.15.2.4(Fly ash Bagging System)
7489,Erection of mechanical  Equipment,ERC,2024-10-16,2025-08-11,,,,1.14.15.2.4(Fly ash Bagging System)
7490,Erection of Electrical & C&I Items including cabling etc.,ERC,2025-08-12,2025-11-09,,,,1.14.15.2.4(Fly ash Bagging System)
7491,Commissioning,COM,2025-08-12,2025-12-09,,,,1.14.15.2.4(Fly ash Bagging System)
7492,Trial Run with load,ERC,2025-12-10,2026-01-08,,,,1.14.15.2.4(Fly ash Bagging System)
7493,"JHS - 12.5MVA, 11/3.45 KV AHP AUX Transformer",ERC,2023-06-04,2025-11-01,,,,"1.14.15.2(Engineering, Supply &Erection)"
7494,Engineering,ENG,2023-06-04,2023-12-30,,,,"1.14.15.2.5(JHS - 12.5MVA, 11/3.45 KV AHP AUX Transformer)"
7495,Manufacturing & testing,MFG,2023-10-02,2025-01-15,,,,"1.14.15.2.5(JHS - 12.5MVA, 11/3.45 KV AHP AUX Transformer)"
7496," Packing, Dispatch",DIS,2024-09-18,2025-02-14,,,,"1.14.15.2.5(JHS - 12.5MVA, 11/3.45 KV AHP AUX Transformer)"
7497,Erection of Aux Transformer,ERC,2025-03-17,2025-08-03,,,,"1.14.15.2.5(JHS - 12.5MVA, 11/3.45 KV AHP AUX Transformer)"
7498,Commissioning of Aux Transformer,COM,2025-08-04,2025-11-01,,,,"1.14.15.2.5(JHS - 12.5MVA, 11/3.45 KV AHP AUX Transformer)"
7499,Readiness of Ash Handling system for Steam Blowing,ERC,2026-01-14,2026-02-27,,,,"1.14.15.2(Engineering, Supply &Erection)"
7500,Readiness of Fly Ash system Handling system,ERC,2026-01-19,2026-04-26,,,,"1.14.15.2(Engineering, Supply &Erection)"
7501,"Illumination Package for CHP, AHP, LHP & GHP",PRC,2023-02-18,2025-05-08,,,,1.14(BOP Systems)
7502, NIT,ENQ,2023-02-18,2023-02-18,,,,"1.14.16(Illumination Package for CHP, AHP, LHP & GHP)"
7503, Order Placement,ORD,2023-02-19,2023-06-18,,,,"1.14.16(Illumination Package for CHP, AHP, LHP & GHP)"
7504,Detailed Engineering& Approval of Dwgs datasheet and QAP,ENG,2023-06-19,2024-03-14,,,,"1.14.16(Illumination Package for CHP, AHP, LHP & GHP)"
7505,Manufacturing,MFG,2023-09-17,2024-08-06,,,,"1.14.16(Illumination Package for CHP, AHP, LHP & GHP)"
7506,"Inspection, Dispatch and RECEIPT at site",DIS,2024-02-09,2024-11-04,,,,"1.14.16(Illumination Package for CHP, AHP, LHP & GHP)"
7507,Erection of Illumination package,ERC,2024-04-09,2025-04-08,,,,"1.14.16(Illumination Package for CHP, AHP, LHP & GHP)"
7508, Commissioning,COM,2025-01-09,2025-05-08,,,,"1.14.16(Illumination Package for CHP, AHP, LHP & GHP)"
7509,"Electrical: E&C for CHP, AHP, LHP & GHP",PRC,2023-09-21,2025-12-19,,,,1.14(BOP Systems)
7510,NIT,ENQ,2023-09-21,2023-09-21,,,,"1.14.17(Electrical: E&C for CHP, AHP, LHP & GHP)"
7511,Order placement,ORD,2023-09-22,2024-01-19,,,,"1.14.17(Electrical: E&C for CHP, AHP, LHP & GHP)"
7512,Detailed Engineering,ENG,2024-01-20,2024-06-27,,,,"1.14.17(Electrical: E&C for CHP, AHP, LHP & GHP)"
7513,Manufacturing,MFG,2024-03-30,2025-04-23,,,,"1.14.17(Electrical: E&C for CHP, AHP, LHP & GHP)"
7514,Dispatch,DIS,2024-09-26,2025-06-12,,,,"1.14.17(Electrical: E&C for CHP, AHP, LHP & GHP)"
7515,EARTHING,ERC,2024-11-25,2025-05-23,,,,"1.14.17(Electrical: E&C for CHP, AHP, LHP & GHP)"
7516,CABLE TRAY & SUPPORTS AND CABLE LAYING,ERC,2025-01-24,2025-09-20,,,,"1.14.17(Electrical: E&C for CHP, AHP, LHP & GHP)"
7517,OIL TYPE TRANSFORMER,OTH,2025-03-25,2025-05-23,,,,"1.14.17(Electrical: E&C for CHP, AHP, LHP & GHP)"
7518,BUSDUCT,OTH,2025-05-24,2025-08-21,,,,"1.14.17(Electrical: E&C for CHP, AHP, LHP & GHP)"
7519,MCC,OTH,2025-05-24,2025-08-21,,,,"1.14.17(Electrical: E&C for CHP, AHP, LHP & GHP)"
7520,"DCS INCLUDING BATTERY, CHARGER, UPS",OTH,2025-07-23,2025-09-20,,,,"1.14.17(Electrical: E&C for CHP, AHP, LHP & GHP)"
7521,220V DC BATTERY & CHARGER,OTH,2025-07-23,2025-09-20,,,,"1.14.17(Electrical: E&C for CHP, AHP, LHP & GHP)"
7522,"COMMISSIONING OF TRANSFORMER, BUSDUCT, MCC, DCS, BATTERY & CHARGER",COM,2025-04-24,2025-12-19,,,,"1.14.17(Electrical: E&C for CHP, AHP, LHP & GHP)"
7523,DG,OTH,2023-06-15,2025-08-27,,,,1.14(BOP Systems)
7524, Rel of Dwg for DG,PE - RFC,2024-05-29,2024-05-29,,,,1.14.18(DG)
7525,Supply,SUP,2023-06-15,2025-04-07,,,,1.14.18(DG)
7526,DG Set,SUP,2023-06-15,2025-04-07,,,,1.14.18.2(Supply)
7527,PO Placement,ORD,2023-06-15,2023-10-15,,,,1.14.18.2.1(DG Set)
7528,Engineering,ENG,2023-10-16,2024-02-12,,,,1.14.18.2.1(DG Set)
7529,Dispatch of DG Set with Associated items,DIS,2024-10-10,2025-04-07,,,,1.14.18.2.1(DG Set)
7530,E&C DG SET,OTH,2025-04-08,2025-08-27,,,,1.14.18(DG)
7531,E&C DG SET: Erection of Diesel Generator set,ERC,2025-04-08,2025-05-07,,,,1.14.18.3(E&C DG SET)
7532,E&C DG Redefection of Fuel Oil System (DG SET),ERC,2025-05-08,2025-06-06,,,,1.14.18.3(E&C DG SET)
7533,E&C DG Redefection of Cooling water system consisting of Pumps / Heaters / expansion tanks/ radiators etc,ERC,2025-06-07,2025-07-01,,,,1.14.18.3(E&C DG SET)
7534,E&C DG Redefection of DG Battery Bank along with DG Battery Charger,ERC,2025-07-02,2025-07-26,,,,1.14.18.3(E&C DG SET)
7535,E&C DG Redefection of DG Switchgear,ERC,2025-07-27,2025-08-20,,,,1.14.18.3(E&C DG SET)
7536,E&C DG SET: Commissioning of DG Set,COM,2025-08-21,2025-08-27,,,,1.14.18.3(E&C DG SET)
7537,MILL REJECT SYSTEM,SUP,2023-05-15,2026-06-20,,,,1.14(BOP Systems)
7538,Supply,SUP,2023-05-15,2026-01-11,,,,1.14.19(MILL REJECT SYSTEM)
7539,MILL REJECT SYSTEM ,OTH,2023-05-15,2026-01-11,,,,1.14.19.1(Supply)
7540,Ordering,ORD,2023-05-15,2023-10-11,,,,1.14.19.1.1(MILL REJECT SYSTEM )
7541,Engineering,ENG,2023-10-12,2024-07-07,,,,1.14.19.1.1(MILL REJECT SYSTEM )
7542,Manufacturing,MFG,2024-07-08,2025-08-14,,,,1.14.19.1.1(MILL REJECT SYSTEM )
7543,Dispatch of Conveying Air compressors,DIS,2025-08-15,2026-01-11,,,,1.14.19.1.1(MILL REJECT SYSTEM )
7544,Dispatch of Pyrite hoppers,DIS,2025-08-15,2026-01-11,,,,1.14.19.1.1(MILL REJECT SYSTEM )
7545,Dispatch of pipings and other balance items,DIS,2025-08-15,2026-01-11,,,,1.14.19.1.1(MILL REJECT SYSTEM )
7546,Civil,CIV,2024-09-16,2025-07-27,,,,1.14.19(MILL REJECT SYSTEM)
7547,Conveying Air Compressor Foundation,CIV,2024-09-16,2025-04-28,,,,1.14.19.2(Civil)
7548,EXCAVATION,CIV,2024-09-16,2024-10-30,,,,1.14.19.2.1(Conveying Air Compressor Foundation)
7549,RCC in substructure including PCC,CIV,2024-10-31,2025-01-03,,,,1.14.19.2.1(Conveying Air Compressor Foundation)
7550,RCC in superstructure,CIV,2025-01-04,2025-04-03,,,,1.14.19.2.1(Conveying Air Compressor Foundation)
7551,Backfilling,CIV,2025-04-04,2025-04-18,,,,1.14.19.2.1(Conveying Air Compressor Foundation)
7552,Finishing works,CIV,2025-04-19,2025-04-28,,,,1.14.19.2.1(Conveying Air Compressor Foundation)
7553,Silo Structure Foundation,CIV,2025-04-29,2025-07-27,,,,1.14.19.2(Civil)
7554, EXCAVATION,CIV,2025-04-29,2025-05-08,,,,1.14.19.2.2(Silo Structure Foundation)
7555, RCC in substructure including PCC,CIV,2025-05-09,2025-06-02,,,,1.14.19.2.2(Silo Structure Foundation)
7556, RCC in superstructure,CIV,2025-06-03,2025-07-12,,,,1.14.19.2.2(Silo Structure Foundation)
7557, Backfilling,CIV,2025-07-13,2025-07-22,,,,1.14.19.2.2(Silo Structure Foundation)
7558, Finishing works,CIV,2025-07-23,2025-07-27,,,,1.14.19.2.2(Silo Structure Foundation)
7559,Erection,ERC,2025-04-29,2026-06-20,,,,1.14.19(MILL REJECT SYSTEM)
7560, MILL REJECT SYSTEM: Conveying Air compressors: inspection of foundations,ERC,2025-04-29,2025-05-18,,,,1.14.19.3(Erection)
7561, MILL REJECT SYSTEM: Conveying Air compressors: placement of Conveying Air compressors on foundation,ERC,2025-05-19,2025-06-07,,,,1.14.19.3(Erection)
7562, MILL REJECT SYSTEM: Conveying Air compressors: Erection of Valves,ERC,2025-06-08,2025-07-27,,,,1.14.19.3(Erection)
7563, MILL REJECT SYSTEM:PYRITE HOPPERS: Placement of pyrite hoppers,ERC,2025-07-28,2025-09-25,,,,1.14.19.3(Erection)
7564, MILL REJECT SYSTEM:PYRITE Hoppers: Erection of Deluge Valves,ERC,2025-09-26,2025-11-09,,,,1.14.19.3(Erection)
7565, MILL REJECT SYSTEM: Conveying piping: Erection of Conveying Air piping for compressor,ERC,2025-11-10,2025-12-13,,,,1.14.19.3(Erection)
7566, MILL REJECT SYSTEM: Conveying SYSTEM: Conveying of associated fittings,ERC,2025-12-14,2026-01-16,,,,1.14.19.3(Erection)
7567, MILL REJECT SYSTEM:MILL REJECT SILO: Fabrication of Structure,ERC,2026-01-17,2026-02-10,,,,1.14.19.3(Erection)
7568, MILL REJECT SYSTEM:MILL REJECT SILO: Fabrication of Silo,ERC,2026-02-11,2026-03-27,,,,1.14.19.3(Erection)
7569, MILL REJECT SYSTEM:MILL REJECT SILO: Erection of support structure for Silo,ERC,2026-03-28,2026-04-16,,,,1.14.19.3(Erection)
7570, MILL REJECT SYSTEM:MILL REJECT SILO: Lifting of Silo cone,ERC,2026-04-17,2026-04-21,,,,1.14.19.3(Erection)
7571, MILL REJECT SYSTEM:MILL REJECT SILO: Welding of Silo Cone with structure,ERC,2026-04-22,2026-05-01,,,,1.14.19.3(Erection)
7572, MILL REJECT SYSTEM:MILL REJECT SILO: lifting of Silo Shell,ERC,2026-05-02,2026-05-06,,,,1.14.19.3(Erection)
7573, MILL REJECT SYSTEM:MILL REJECT SILO:WELDING OF SILO SHELL,ERC,2026-05-07,2026-05-16,,,,1.14.19.3(Erection)
7574, MILL REJECT SYSTEM:MILL REJECT SILO:LINING INSIDE MILL REJECT SILO,ERC,2026-05-17,2026-05-23,,,,1.14.19.3(Erection)
7575," MILL REJECT SYSTEM:ERECTION OF Electrical, C&I and PLC SYSTEM",ERC,2026-05-24,2026-06-12,,,,1.14.19.3(Erection)
7576, MILL REJECT SYSTEM:COMMISSIONING of MRS,COM,2026-06-13,2026-06-20,,,,1.14.19.3(Erection)
7577,400kV Switchyard,OTH,2023-04-25,2026-03-27,,,,1.14(BOP Systems)
7578,Engineering Activities,ENG,2023-04-25,2023-07-18,,,,1.14.20(400kV Switchyard)
7579,400 kV Single Line Diagram,ENG,2023-04-25,2023-05-09,,,,1.14.20.1(Engineering Activities)
7580,Layout Plan & Section - 400 kV,ENG,2023-05-10,2023-05-29,,,,1.14.20.1(Engineering Activities)
7581,Civil Design Basis,ENG,2023-05-30,2023-07-18,,,,1.14.20.1(Engineering Activities)
7582,Ordering of BOIs - 400 kV Switchyard,ORD,2023-05-30,2023-09-11,,,,1.14.20(400kV Switchyard)
7583,400 kV Gas Insulated Switchgear,ORD,2023-05-30,2023-08-27,,,,1.14.20.2(Ordering of BOIs - 400 kV Switchyard)
7584,400 kV BPI,ORD,2023-05-30,2023-07-18,,,,1.14.20.2(Ordering of BOIs - 400 kV Switchyard)
7585,336 kV LA,ORD,2023-05-30,2023-07-18,,,,1.14.20.2(Ordering of BOIs - 400 kV Switchyard)
7586,400 kV WT,ORD,2023-06-04,2023-07-23,,,,1.14.20.2(Ordering of BOIs - 400 kV Switchyard)
7587,FOTE,ORD,2023-05-30,2023-07-18,,,,1.14.20.2(Ordering of BOIs - 400 kV Switchyard)
7588,Control & Power Cable,ORD,2023-05-30,2023-07-18,,,,1.14.20.2(Ordering of BOIs - 400 kV Switchyard)
7589,Marshalling Kiosk & JBs,ORD,2023-05-30,2023-07-18,,,,1.14.20.2(Ordering of BOIs - 400 kV Switchyard)
7590,Earthing Material,ORD,2023-05-30,2023-07-18,,,,1.14.20.2(Ordering of BOIs - 400 kV Switchyard)
7591,Shield Wire,ORD,2023-05-30,2023-07-18,,,,1.14.20.2(Ordering of BOIs - 400 kV Switchyard)
7592,ACSR Conductor,ORD,2023-05-30,2023-07-18,,,,1.14.20.2(Ordering of BOIs - 400 kV Switchyard)
7593,Al tube,ORD,2023-05-30,2023-07-18,,,,1.14.20.2(Ordering of BOIs - 400 kV Switchyard)
7594,Cable Trench Material,ORD,2023-05-30,2023-07-18,,,,1.14.20.2(Ordering of BOIs - 400 kV Switchyard)
7595,Structures & Hardwares,ORD,2023-05-30,2023-07-18,,,,1.14.20.2(Ordering of BOIs - 400 kV Switchyard)
7596,Battery & Battery Chargers,ORD,2023-05-30,2023-07-18,,,,1.14.20.2(Ordering of BOIs - 400 kV Switchyard)
7597,Auxiliary Transformer,ORD,2023-07-24,2023-09-11,,,,1.14.20.2(Ordering of BOIs - 400 kV Switchyard)
7598,Illumination System,ORD,2023-05-30,2023-07-18,,,,1.14.20.2(Ordering of BOIs - 400 kV Switchyard)
7599,Fire Protection System,OTH,2023-05-30,2023-07-18,,,,1.14.20.2(Ordering of BOIs - 400 kV Switchyard)
7600,Air Conditioning and Ventilation System,OTH,2023-05-30,2023-07-18,,,,1.14.20.2(Ordering of BOIs - 400 kV Switchyard)
7601,EOT Crane,OTH,2023-05-30,2023-07-18,,,,1.14.20.2(Ordering of BOIs - 400 kV Switchyard)
7602,Self Power Hydraulic Aerial Working Platform,OTH,2023-05-30,2023-07-18,,,,1.14.20.2(Ordering of BOIs - 400 kV Switchyard)
7603,Detailed Engineering for 400 kV Switchyard,ENG,2023-04-25,2023-11-25,,,,1.14.20(400kV Switchyard)
7604,400 kV Structure Layout and Section,OTH,2023-06-09,2023-07-08,,,,1.14.20.3(Detailed Engineering for 400 kV Switchyard)
7605,"400 kV EKD - Plan, Section and BOM",OTH,2023-06-29,2023-07-28,,,,1.14.20.3(Detailed Engineering for 400 kV Switchyard)
7606,400 kV Clearance Check Diagram,OTH,2023-06-19,2023-07-18,,,,1.14.20.3(Detailed Engineering for 400 kV Switchyard)
7607,400 kV DSLP Calculation and Layout - Overall,OTH,2023-06-24,2023-07-23,,,,1.14.20.3(Detailed Engineering for 400 kV Switchyard)
7608,400 kV Earthing Layout - Overall,OTH,2023-06-14,2023-07-13,,,,1.14.20.3(Detailed Engineering for 400 kV Switchyard)
7609,"400 kV CVT - Drawing, Data Sheet, TTR, MQP",ENG,2023-07-29,2023-08-27,,,,1.14.20.3(Detailed Engineering for 400 kV Switchyard)
7610,"400 kV CVT - Structural Design, Drawing",ENG,2023-07-29,2023-08-27,,,,1.14.20.3(Detailed Engineering for 400 kV Switchyard)
7611,400 kV CVT - Proto Corrected Structural Drawing,ENG,2023-07-29,2023-08-27,,,,1.14.20.3(Detailed Engineering for 400 kV Switchyard)
7612,"400 kV CVT - Foundation Design, Drawing",CIV,2023-07-29,2023-08-27,,,,1.14.20.3(Detailed Engineering for 400 kV Switchyard)
7613,"336 kV LA - Drawing, Data Sheet, TTR, MQP",ENG,2023-07-29,2023-08-27,,,,1.14.20.3(Detailed Engineering for 400 kV Switchyard)
7614,"336 kV LA - Structural Design, Drawing",ENG,2023-07-29,2023-08-27,,,,1.14.20.3(Detailed Engineering for 400 kV Switchyard)
7615,336 kV LA - Proto Corrected Structural Drawing,ENG,2023-07-29,2023-08-27,,,,1.14.20.3(Detailed Engineering for 400 kV Switchyard)
7616,"336 kV LA - Foundation Design, Drawing",CIV,2023-07-29,2023-08-27,,,,1.14.20.3(Detailed Engineering for 400 kV Switchyard)
7617,"400 kV BPI - Drawing, Data Sheet, TTR, MQP",ENG,2023-07-29,2023-08-27,,,,1.14.20.3(Detailed Engineering for 400 kV Switchyard)
7618,"400 kV BPI - Structural Design, Drawing",ENG,2023-07-29,2023-08-27,,,,1.14.20.3(Detailed Engineering for 400 kV Switchyard)
7619,400 kV BPI - Proto Corrected Structural Drawing,ENG,2023-07-29,2023-08-27,,,,1.14.20.3(Detailed Engineering for 400 kV Switchyard)
7620,"400 kV BPI - Foundation Design, Drawing",CIV,2023-07-29,2023-08-27,,,,1.14.20.3(Detailed Engineering for 400 kV Switchyard)
7621,"400 kV Wave Trap - Drawing, Data Sheet, TTR, MQP",ENG,2023-08-03,2023-09-01,,,,1.14.20.3(Detailed Engineering for 400 kV Switchyard)
7622,"400 kV Wave Trap - Structural Design, Drawing",ENG,2023-08-03,2023-09-01,,,,1.14.20.3(Detailed Engineering for 400 kV Switchyard)
7623,400 kV Wave Trap - Proto Corrected Structural Drawing,ENG,2023-08-03,2023-09-01,,,,1.14.20.3(Detailed Engineering for 400 kV Switchyard)
7624,"400 kV Wave Trap- Foundation Design, Drawing",CIV,2023-08-03,2023-09-01,,,,1.14.20.3(Detailed Engineering for 400 kV Switchyard)
7625,"FOTE - Drawing, Data Sheet, TTR, MQP",ENG,2023-07-29,2023-08-27,,,,1.14.20.3(Detailed Engineering for 400 kV Switchyard)
7626,125 MVAr Reactor,OTH,2023-04-25,2023-05-24,,,,1.14.20.3(Detailed Engineering for 400 kV Switchyard)
7627,Composite Long Rod Insulator,OTH,2023-04-25,2023-05-24,,,,1.14.20.3(Detailed Engineering for 400 kV Switchyard)
7628,LT Switchgear,OTH,2023-04-25,2023-05-24,,,,1.14.20.3(Detailed Engineering for 400 kV Switchyard)
7629,"Control & Power Cable- Drawing, Data Sheet, TTR, MQP",ENG,2023-07-29,2023-08-27,,,,1.14.20.3(Detailed Engineering for 400 kV Switchyard)
7630,"Marshalling Kiosk & JBs- Drawing, Data Sheet, TTR, MQP",ENG,2023-07-29,2023-08-27,,,,1.14.20.3(Detailed Engineering for 400 kV Switchyard)
7631,Shield Wire - Drawing and Data sheet,ENG,2023-07-29,2023-08-27,,,,1.14.20.3(Detailed Engineering for 400 kV Switchyard)
7632,ACSR Conductor- Drawing and Data sheet,ENG,2023-07-29,2023-08-27,,,,1.14.20.3(Detailed Engineering for 400 kV Switchyard)
7633,Al tube- Drawing and Data sheet,ENG,2023-07-29,2023-08-27,,,,1.14.20.3(Detailed Engineering for 400 kV Switchyard)
7634,Cable Trench Material- Drawing and Data sheet,ENG,2023-07-29,2023-08-27,,,,1.14.20.3(Detailed Engineering for 400 kV Switchyard)
7635,"Battery & Battery Chargers- Drawing, Data Sheet, TTR, MQP",ENG,2023-07-29,2023-08-27,,,,1.14.20.3(Detailed Engineering for 400 kV Switchyard)
7636,"Auxiliary Transformer- Drawing, Data Sheet, TTR, MQP",ENG,2023-09-22,2023-10-21,,,,1.14.20.3(Detailed Engineering for 400 kV Switchyard)
7637,"Illumination System- Drawing, Data Sheet, TTR, MQP",ENG,2023-07-29,2023-08-27,,,,1.14.20.3(Detailed Engineering for 400 kV Switchyard)
7638,"Fire Protection System- Drawing, Data Sheet, TTR, MQP",ENG,2023-07-29,2023-08-27,,,,1.14.20.3(Detailed Engineering for 400 kV Switchyard)
7639,"Air Conditioning and Ventilation System- Drawing, Data Sheet, TTR, MQP",ENG,2023-07-29,2023-08-27,,,,1.14.20.3(Detailed Engineering for 400 kV Switchyard)
7640,"EOT Crane- Drawing, Data Sheet, TTR, MQP",ENG,2023-07-29,2023-08-27,,,,1.14.20.3(Detailed Engineering for 400 kV Switchyard)
7641,"Self Power Hydraulic Aerial Working Platform- Drawing, Data Sheet, TTR, MQP",ENG,2023-07-29,2023-08-27,,,,1.14.20.3(Detailed Engineering for 400 kV Switchyard)
7642,Control & Relay Panel & SAS for 400 kV Switchyard,OTH,2023-04-25,2023-06-23,,,,1.14.20.3(Detailed Engineering for 400 kV Switchyard)
7643,400 kV Protection SLD,OTH,2023-05-30,2023-06-28,,,,1.14.20.3(Detailed Engineering for 400 kV Switchyard)
7644,Control & Power Cable Schedule,ENG,2023-07-24,2023-08-22,,,,1.14.20.3(Detailed Engineering for 400 kV Switchyard)
7645,"GA & Architectural Plan, Elevation and Sections for 400 kV GIS Building",ENG,2023-09-27,2023-10-26,,,,1.14.20.3(Detailed Engineering for 400 kV Switchyard)
7646,GA and Data Sheet of Circuit Breaker (GIS),ENG,2023-09-27,2023-11-25,,,,1.14.20.3(Detailed Engineering for 400 kV Switchyard)
7647,GA and Data Sheet of Disconnecting Switch (GIS),ENG,2023-09-27,2023-11-25,,,,1.14.20.3(Detailed Engineering for 400 kV Switchyard)
7648,GA and Data Sheet of Earthing Switch (GIS),ENG,2023-09-27,2023-11-25,,,,1.14.20.3(Detailed Engineering for 400 kV Switchyard)
7649,GA and Data Sheet of Operating Mechanism for DS & ES (GIS),ENG,2023-09-27,2023-11-25,,,,1.14.20.3(Detailed Engineering for 400 kV Switchyard)
7650,GA and Data Sheet of Current Transformer (GIS),ENG,2023-09-27,2023-11-25,,,,1.14.20.3(Detailed Engineering for 400 kV Switchyard)
7651,GA and Data Sheet of Bus Voltage Transformer (For reference) (GIS),ENG,2023-09-27,2023-11-25,,,,1.14.20.3(Detailed Engineering for 400 kV Switchyard)
7652,GA and Data Sheet of Circuit Breaker (GIS),ENG,2023-09-27,2023-11-25,,,,1.14.20.3(Detailed Engineering for 400 kV Switchyard)
7653,"400 kV GIS Building - Load Calculation, Analysis & Design",ENG,2023-09-27,2023-10-26,,,,1.14.20.3(Detailed Engineering for 400 kV Switchyard)
7654,400 kV GIS Building - Design of Crane Runway girder,ENG,2023-09-27,2023-10-26,,,,1.14.20.3(Detailed Engineering for 400 kV Switchyard)
7655,400 kV GIS Building - Design of Roof Purlins,ENG,2023-09-27,2023-10-26,,,,1.14.20.3(Detailed Engineering for 400 kV Switchyard)
7656,400 kV GIS Building - Design of Indoor Cable Trench,ENG,2023-09-27,2023-10-26,,,,1.14.20.3(Detailed Engineering for 400 kV Switchyard)
7657,400 kV GIS Building - Layout and details of foundations and column pedestals,ENG,2023-09-27,2023-10-26,,,,1.14.20.3(Detailed Engineering for 400 kV Switchyard)
7658,400 kV GIS Building - GA and Details of structural steel columns including tie beams and bracings,ENG,2023-09-27,2023-10-26,,,,1.14.20.3(Detailed Engineering for 400 kV Switchyard)
7659,400 kV GIS Building - GA and RC details of plinth beam,ENG,2023-09-27,2023-10-26,,,,1.14.20.3(Detailed Engineering for 400 kV Switchyard)
7660,400 kV GIS Building - GA and details of Roof Truss including roof bracings ,ENG,2023-09-27,2023-10-26,,,,1.14.20.3(Detailed Engineering for 400 kV Switchyard)
7661,400 kV GIS Building - Layout & details of Roof and wall,ENG,2023-09-27,2023-10-26,,,,1.14.20.3(Detailed Engineering for 400 kV Switchyard)
7662,400 kV GIS Building - Details of EOT crane girder,ENG,2023-09-27,2023-10-26,,,,1.14.20.3(Detailed Engineering for 400 kV Switchyard)
7663,400 kV GIS Building - Layout and RCC details of Indoor cable trenches,CIV,2023-09-27,2023-10-26,,,,1.14.20.3(Detailed Engineering for 400 kV Switchyard)
7664,400 kV GIS Building - GA and RC details of GIS equipments,ENG,2023-09-27,2023-10-26,,,,1.14.20.3(Detailed Engineering for 400 kV Switchyard)
7665,400 kV GIS Building - Details of Door & Windows,ENG,2023-09-27,2023-10-26,,,,1.14.20.3(Detailed Engineering for 400 kV Switchyard)
7666,"Manufacturing, Testing and Dispatch",MFG,2023-05-25,2024-08-21,,,,1.14.20(400kV Switchyard)
7667,400 kV Gas Insulated Switchgear,OTH,2023-11-26,2024-08-21,,,,"1.14.20.4(Manufacturing, Testing and Dispatch)"
7668,Manufacturing,MFG,2023-11-26,2024-05-23,,,,1.14.20.4.1(400 kV Gas Insulated Switchgear)
7669,"Testing, Inspection &Dispatch",DIS,2024-05-24,2024-07-22,,,,1.14.20.4.1(400 kV Gas Insulated Switchgear)
7670,Receipt at Site,OTH,2024-07-23,2024-08-21,,,,1.14.20.4.1(400 kV Gas Insulated Switchgear)
7671,400 kV CVT,OTH,2023-08-28,2023-12-05,,,,"1.14.20.4(Manufacturing, Testing and Dispatch)"
7672,Manufacturing,MFG,2023-08-28,2023-10-16,,,,1.14.20.4.2(400 kV CVT)
7673,"Testing, Inspection &Dispatch",DIS,2023-10-17,2023-11-15,,,,1.14.20.4.2(400 kV CVT)
7674,Receipt at Site,OTH,2023-11-16,2023-12-05,,,,1.14.20.4.2(400 kV CVT)
7675,400 kV BPI,OTH,2023-08-28,2023-12-05,,,,"1.14.20.4(Manufacturing, Testing and Dispatch)"
7676,Manufacturing,MFG,2023-08-28,2023-10-16,,,,1.14.20.4.3(400 kV BPI)
7677,"Testing, Inspection &Dispatch",DIS,2023-10-17,2023-11-15,,,,1.14.20.4.3(400 kV BPI)
7678,Receipt at Site,OTH,2023-11-16,2023-12-05,,,,1.14.20.4.3(400 kV BPI)
7679,336 kV LA,OTH,2023-08-28,2023-12-05,,,,"1.14.20.4(Manufacturing, Testing and Dispatch)"
7680,Manufacturing,MFG,2023-08-28,2023-10-16,,,,1.14.20.4.4(336 kV LA)
7681,"Testing, Inspection &Dispatch",DIS,2023-10-17,2023-11-15,,,,1.14.20.4.4(336 kV LA)
7682,Receipt at Site,OTH,2023-11-16,2023-12-05,,,,1.14.20.4.4(336 kV LA)
7683,400 kV WT,OTH,2023-09-02,2023-12-10,,,,"1.14.20.4(Manufacturing, Testing and Dispatch)"
7684,Manufacturing,MFG,2023-09-02,2023-10-21,,,,1.14.20.4.5(400 kV WT)
7685,"Testing, Inspection &Dispatch",DIS,2023-10-22,2023-11-20,,,,1.14.20.4.5(400 kV WT)
7686,Receipt at Site,OTH,2023-11-21,2023-12-10,,,,1.14.20.4.5(400 kV WT)
7687,400 kV Control & Relay Panels and SAS,,2023-06-24,2023-11-10,,,,"1.14.20.4(Manufacturing, Testing and Dispatch)"
7688,Manufacturing,MFG,2023-06-24,2023-09-21,,,,1.14.20.4.6(400 kV Control & Relay Panels and SAS)
7689,"Testing, Inspection &Dispatch",DIS,2023-09-22,2023-10-21,,,,1.14.20.4.6(400 kV Control & Relay Panels and SAS)
7690,Receipt at Site,OTH,2023-10-22,2023-11-10,,,,1.14.20.4.6(400 kV Control & Relay Panels and SAS)
7691,FOTE,OTH,2023-08-28,2023-12-05,,,,"1.14.20.4(Manufacturing, Testing and Dispatch)"
7692,Manufacturing,MFG,2023-08-28,2023-10-16,,,,1.14.20.4.7(FOTE)
7693,"Testing, Inspection &Dispatch",DIS,2023-10-17,2023-11-15,,,,1.14.20.4.7(FOTE)
7694,Receipt at Site,OTH,2023-11-16,2023-12-05,,,,1.14.20.4.7(FOTE)
7695,Control & Power Cable,OTH,2023-08-28,2024-01-14,,,,"1.14.20.4(Manufacturing, Testing and Dispatch)"
7696,Manufacturing,MFG,2023-08-28,2023-11-25,,,,1.14.20.4.8(Control & Power Cable)
7697,"Testing, Inspection &Dispatch",DIS,2023-11-26,2023-12-25,,,,1.14.20.4.8(Control & Power Cable)
7698,Receipt at Site,OTH,2023-12-26,2024-01-14,,,,1.14.20.4.8(Control & Power Cable)
7699,125 MVAr Reactor,OTH,2023-05-25,2023-10-11,,,,"1.14.20.4(Manufacturing, Testing and Dispatch)"
7700,Manufacturing,MFG,2023-05-25,2023-08-22,,,,1.14.20.4.9(125 MVAr Reactor)
7701,"Testing, Inspection &Dispatch",DIS,2023-08-23,2023-09-21,,,,1.14.20.4.9(125 MVAr Reactor)
7702,Receipt at Site,OTH,2023-09-22,2023-10-11,,,,1.14.20.4.9(125 MVAr Reactor)
7703,Composite Long Rod Insulator,OTH,2023-05-25,2023-10-11,,,,"1.14.20.4(Manufacturing, Testing and Dispatch)"
7704,Manufacturing,MFG,2023-05-25,2023-08-22,,,,1.14.20.4.10(Composite Long Rod Insulator)
7705,"Testing, Inspection &Dispatch",DIS,2023-08-23,2023-09-21,,,,1.14.20.4.10(Composite Long Rod Insulator)
7706,Receipt at Site,OTH,2023-09-22,2023-10-11,,,,1.14.20.4.10(Composite Long Rod Insulator)
7707,LT Switchgear,OTH,2023-05-25,2023-10-11,,,,"1.14.20.4(Manufacturing, Testing and Dispatch)"
7708,Manufacturing,MFG,2023-05-25,2023-08-22,,,,1.14.20.4.11(LT Switchgear)
7709,"Testing, Inspection &Dispatch",DIS,2023-08-23,2023-09-21,,,,1.14.20.4.11(LT Switchgear)
7710,Receipt at Site,OTH,2023-09-22,2023-10-11,,,,1.14.20.4.11(LT Switchgear)
7711,Marshalling Kiosk & JBs,OTH,2023-08-28,2023-12-05,,,,"1.14.20.4(Manufacturing, Testing and Dispatch)"
7712,Manufacturing,MFG,2023-08-28,2023-10-16,,,,1.14.20.4.12(Marshalling Kiosk & JBs)
7713,"Testing, Inspection &Dispatch",DIS,2023-10-17,2023-11-15,,,,1.14.20.4.12(Marshalling Kiosk & JBs)
7714,Receipt at Site,OTH,2023-11-16,2023-12-05,,,,1.14.20.4.12(Marshalling Kiosk & JBs)
7715,Earthing Material,OTH,2023-07-19,2023-10-06,,,,"1.14.20.4(Manufacturing, Testing and Dispatch)"
7716,Manufacturing,MFG,2023-07-19,2023-08-17,,,,1.14.20.4.13(Earthing Material)
7717,"Testing, Inspection &Dispatch",DIS,2023-08-18,2023-09-16,,,,1.14.20.4.13(Earthing Material)
7718,Receipt at Site,OTH,2023-09-17,2023-10-06,,,,1.14.20.4.13(Earthing Material)
7719,Shield Wire,OTH,2023-08-28,2023-12-05,,,,"1.14.20.4(Manufacturing, Testing and Dispatch)"
7720,Manufacturing,MFG,2023-08-28,2023-10-16,,,,1.14.20.4.14(Shield Wire)
7721,"Testing, Inspection &Dispatch",DIS,2023-10-17,2023-11-15,,,,1.14.20.4.14(Shield Wire)
7722,Receipt at Site,OTH,2023-11-16,2023-12-05,,,,1.14.20.4.14(Shield Wire)
7723,ACSR Conductor,OTH,2023-08-28,2023-12-05,,,,"1.14.20.4(Manufacturing, Testing and Dispatch)"
7724,Manufacturing,MFG,2023-08-28,2023-10-16,,,,1.14.20.4.15(ACSR Conductor)
7725,"Testing, Inspection &Dispatch",DIS,2023-10-17,2023-11-15,,,,1.14.20.4.15(ACSR Conductor)
7726,Receipt at Site,OTH,2023-11-16,2023-12-05,,,,1.14.20.4.15(ACSR Conductor)
7727,Al tube,OTH,2023-08-28,2023-12-05,,,,"1.14.20.4(Manufacturing, Testing and Dispatch)"
7728,Manufacturing,MFG,2023-08-28,2023-10-16,,,,1.14.20.4.16(Al tube)
7729,"Testing, Inspection &Dispatch",DIS,2023-10-17,2023-11-15,,,,1.14.20.4.16(Al tube)
7730,Receipt at Site,OTH,2023-11-16,2023-12-05,,,,1.14.20.4.16(Al tube)
7731,Cable Trench Material,OTH,2023-08-28,2023-12-05,,,,"1.14.20.4(Manufacturing, Testing and Dispatch)"
7732,Manufacturing,MFG,2023-08-28,2023-10-16,,,,1.14.20.4.17(Cable Trench Material)
7733,"Testing, Inspection &Dispatch",DIS,2023-10-17,2023-11-15,,,,1.14.20.4.17(Cable Trench Material)
7734,Receipt at Site,OTH,2023-11-16,2023-12-05,,,,1.14.20.4.17(Cable Trench Material)
7735,Structures & Hardwares,OTH,2023-08-18,2023-11-25,,,,"1.14.20.4(Manufacturing, Testing and Dispatch)"
7736,Manufacturing,MFG,2023-08-18,2023-10-06,,,,1.14.20.4.18(Structures & Hardwares)
7737,"Testing, Inspection &Dispatch",DIS,2023-10-07,2023-11-05,,,,1.14.20.4.18(Structures & Hardwares)
7738,Receipt at Site,OTH,2023-11-06,2023-11-25,,,,1.14.20.4.18(Structures & Hardwares)
7739,Battery & Battery Chargers,OTH,2023-08-28,2023-12-15,,,,"1.14.20.4(Manufacturing, Testing and Dispatch)"
7740,Manufacturing,MFG,2023-08-28,2023-10-26,,,,1.14.20.4.19(Battery & Battery Chargers)
7741,"Testing, Inspection &Dispatch",DIS,2023-10-27,2023-11-25,,,,1.14.20.4.19(Battery & Battery Chargers)
7742,Receipt at Site,OTH,2023-11-26,2023-12-15,,,,1.14.20.4.19(Battery & Battery Chargers)
7743,Auxiliary Transformer,OTH,2023-10-22,2024-01-29,,,,"1.14.20.4(Manufacturing, Testing and Dispatch)"
7744,Manufacturing,MFG,2023-10-22,2023-12-10,,,,1.14.20.4.20(Auxiliary Transformer)
7745,"Testing, Inspection &Dispatch",DIS,2023-12-11,2024-01-09,,,,1.14.20.4.20(Auxiliary Transformer)
7746,Receipt at Site,OTH,2024-01-10,2024-01-29,,,,1.14.20.4.20(Auxiliary Transformer)
7747,Illumination System,OTH,2023-08-28,2023-12-15,,,,"1.14.20.4(Manufacturing, Testing and Dispatch)"
7748,Manufacturing,MFG,2023-08-28,2023-10-26,,,,1.14.20.4.21(Illumination System)
7749,"Testing, Inspection &Dispatch",DIS,2023-10-27,2023-11-25,,,,1.14.20.4.21(Illumination System)
7750,Receipt at Site,OTH,2023-11-26,2023-12-15,,,,1.14.20.4.21(Illumination System)
7751,Fire Protection System,OTH,2023-08-28,2024-01-14,,,,"1.14.20.4(Manufacturing, Testing and Dispatch)"
7752,Manufacturing,MFG,2023-08-28,2023-11-25,,,,1.14.20.4.22(Fire Protection System)
7753,"Testing, Inspection &Dispatch",DIS,2023-11-26,2023-12-25,,,,1.14.20.4.22(Fire Protection System)
7754,Receipt at Site,OTH,2023-12-26,2024-01-14,,,,1.14.20.4.22(Fire Protection System)
7755,Air Conditioning and Ventilation System,OTH,2023-08-28,2024-01-14,,,,"1.14.20.4(Manufacturing, Testing and Dispatch)"
7756,Manufacturing,MFG,2023-08-28,2023-11-25,,,,1.14.20.4.23(Air Conditioning and Ventilation System)
7757,"Testing, Inspection &Dispatch",DIS,2023-11-26,2023-12-25,,,,1.14.20.4.23(Air Conditioning and Ventilation System)
7758,Receipt at Site,OTH,2023-12-26,2024-01-14,,,,1.14.20.4.23(Air Conditioning and Ventilation System)
7759,EOT Crane,OTH,2023-08-28,2024-01-14,,,,"1.14.20.4(Manufacturing, Testing and Dispatch)"
7760,Manufacturing,MFG,2023-08-28,2023-11-25,,,,1.14.20.4.24(EOT Crane)
7761,"Testing, Inspection &Dispatch",DIS,2023-11-26,2023-12-25,,,,1.14.20.4.24(EOT Crane)
7762,Receipt at Site,OTH,2023-12-26,2024-01-14,,,,1.14.20.4.24(EOT Crane)
7763,Self Power Hydraulic Aerial Working Platform,OTH,2023-08-28,2024-01-14,,,,"1.14.20.4(Manufacturing, Testing and Dispatch)"
7764,Manufacturing,MFG,2023-08-28,2023-11-25,,,,1.14.20.4.25(Self Power Hydraulic Aerial Working Platform)
7765,"Testing, Inspection &Dispatch",DIS,2023-11-26,2023-12-25,,,,1.14.20.4.25(Self Power Hydraulic Aerial Working Platform)
7766,Receipt at Site,OTH,2023-12-26,2024-01-14,,,,1.14.20.4.25(Self Power Hydraulic Aerial Working Platform)
7767,Civil,CIV,2023-05-30,2025-01-23,,,,1.14.20(400kV Switchyard)
7768,Switchyard Equipment foundation,CIV,2023-05-30,2024-04-23,,,,1.14.20.5(Civil)
7769,GIS Building,CIV,2023-05-30,2024-04-03,,,,1.14.20.5(Civil)
7770,Foundation ,CIV,2023-05-30,2023-08-27,,,,1.14.20.5.2(GIS Building)
7771,Columns & Superstructure ,CIV,2023-08-28,2023-11-25,,,,1.14.20.5.2(GIS Building)
7772,Roof sheeting,CIV,2023-11-26,2024-02-23,,,,1.14.20.5.2(GIS Building)
7773,Brick work and finishing work,CIV,2023-12-16,2024-04-03,,,,1.14.20.5.2(GIS Building)
7774,Control Room,CIV,2023-09-07,2024-11-24,,,,1.14.20.5(Civil)
7775,EXCAVATION,CIV,2023-09-07,2023-10-01,,,,1.14.20.5.3(Control Room)
7776,RCC in substructure including PCC,CIV,2023-10-02,2023-12-30,,,,1.14.20.5.3(Control Room)
7777,RCC/Structure work in superstructure,CIV,2023-12-31,2024-05-28,,,,1.14.20.5.3(Control Room)
7778,Brick Work & Plastering,CIV,2024-05-29,2024-07-27,,,,1.14.20.5.3(Control Room)
7779,Flooring,CIV,2024-07-28,2024-09-10,,,,1.14.20.5.3(Control Room)
7780,Backfilling,CIV,2024-09-11,2024-09-25,,,,1.14.20.5.3(Control Room)
7781,Finishing works,CIV,2024-09-26,2024-11-24,,,,1.14.20.5.3(Control Room)
7782,AHU Building,CIV,2023-09-07,2025-01-23,,,,1.14.20.5(Civil)
7783,EXCAVATION,CIV,2023-09-07,2023-10-01,,,,1.14.20.5.4(AHU Building)
7784,RCC in substructure including PCC,CIV,2023-10-02,2023-12-30,,,,1.14.20.5.4(AHU Building)
7785,RCC/Structure work in superstructure,CIV,2023-12-31,2024-07-27,,,,1.14.20.5.4(AHU Building)
7786,Brick Work & Plastering,CIV,2024-07-28,2024-09-25,,,,1.14.20.5.4(AHU Building)
7787,Flooring,CIV,2024-09-26,2024-11-09,,,,1.14.20.5.4(AHU Building)
7788,Backfilling,CIV,2024-11-10,2024-11-24,,,,1.14.20.5.4(AHU Building)
7789,Finishing works,CIV,2024-11-25,2025-01-23,,,,1.14.20.5.4(AHU Building)
7790,and Dispatch,OTH,2023-09-18,2025-08-04,,,,1.14.20(400kV Switchyard)
7791,Towers and Gantry,ERC,2023-09-18,2024-01-15,,,,1.14.20.6(and Dispatch)
7792,400 kV Reactor,ERC,2024-05-01,2024-08-08,,,,1.14.20.6(and Dispatch)
7793,EOT Crane,ERC,2024-02-24,2024-06-22,,,,1.14.20.6(and Dispatch)
7794,Air Conditioning and Ventilation System,ERC,2025-01-24,2025-05-23,,,,1.14.20.6(and Dispatch)
7795,Fire Protection System,ERC,2024-04-04,2024-08-01,,,,1.14.20.6(and Dispatch)
7796,Illumination System,ERC,2023-12-26,2024-04-23,,,,1.14.20.6(and Dispatch)
7797,LT System (Including Battery and Battery Chargers) (Control room Building),ERC,2024-11-25,2025-01-23,,,,1.14.20.6(and Dispatch)
7798,"Outdoor Equipments (LA, BPI, CVT, WT) (Outdoor)",ERC,2023-12-26,2024-03-14,,,,1.14.20.6(and Dispatch)
7799,400 kV Control & Relay Panel & SAS (Control room Building),ERC,2024-11-25,2025-01-23,,,,1.14.20.6(and Dispatch)
7800,FOTE (Control room Building),ERC,2024-11-25,2025-01-23,,,,1.14.20.6(and Dispatch)
7801,Auxiliary Transformer (Outdoor),ERC,2024-02-29,2024-04-28,,,,1.14.20.6(and Dispatch)
7802,Readiness of Priority bays for charging for Start-up Power(400 kV Priority area for start up power including priority bays with bus bar covering GIS & AIS system),ERC,2024-08-22,2025-04-26,,,,1.14.20.6(and Dispatch)
7803,400 kV Balance Area,ERC,2025-04-27,2025-08-04,,,,1.14.20.6(and Dispatch)
7804,"Readiness of line bays, Generator Transformer Bay for Unit # 1, Coupler Bays, Transfer Bays etc. with Common",COM,2025-08-05,2026-01-26,,,,1.14.20(400kV Switchyard)
7805,Balance COF U#1,ERC,2026-01-27,2026-03-27,,,,1.14.20(400kV Switchyard)
7806,Station C&I,ERC,2025-02-03,2026-06-17,,,,1.14(BOP Systems)
7807,Readiness of DDCMIS for Water System & Make-Up Water System ,ERC,2025-02-03,2025-03-26,,,,1.14.21(Station C&I)
7808,Readiness of DDCMIS Systems required for Boiler Light Up,ERC,2025-02-03,2025-11-09,,,,1.14.21(Station C&I)
7809,Readiness of DDCMIS For Main Plant & Standalone Common System,COM,2025-02-03,2026-01-08,,,,1.14.21(Station C&I)
7810,Readiness of DDCMIS for AHP & CHP and other balance works,ERC,2025-02-03,2026-02-17,,,,1.14.21(Station C&I)
7811,Completion of facilities for C&I system ,ERC,2026-02-18,2026-06-17,,,,1.14.21(Station C&I)
7812,Chlorine Dioxide dosing system,OTH,2022-12-26,2025-08-13,,,,1.14(BOP Systems)
7813, Rel of Dwg for CW Chlorination system,PE - RFC,2024-06-04,2024-06-04,,,,1.14.22(Chlorine Dioxide dosing system)
7814,Award of  Execution Agency,PRC,2022-12-26,2023-05-25,,,,1.14.22(Chlorine Dioxide dosing system)
7815,Enquiry,ENQ,2022-12-26,2022-12-26,,,,1.14.22.2(Award of  Execution Agency)
7816,PO Placement,ORD,2022-12-27,2023-05-25,,,,1.14.22.2(Award of  Execution Agency)
7817, Civil,OTH,2024-06-05,2025-03-31,,,,1.14.22(Chlorine Dioxide dosing system)
7818,Excavation,CIV,2024-06-05,2024-07-04,,,,1.14.22.3( Civil)
7819,RCC Sub-structure,CIV,2024-07-05,2024-12-01,,,,1.14.22.3( Civil)
7820,RCC Super-Structure,CIV,2024-12-02,2025-03-31,,,,1.14.22.3( Civil)
7821,Supply,OTH,2023-11-22,2024-05-19,,,,1.14.22(Chlorine Dioxide dosing system)
7822,Tanks,OTH,2023-11-22,2024-03-20,,,,1.14.22.4(Supply)
7823,Pumps,OTH,2023-11-22,2024-05-19,,,,1.14.22.4(Supply)
7824,"Pipes, fittings & Valves",OTH,2023-11-22,2024-05-19,,,,1.14.22.4(Supply)
7825,Erection,ERC,2025-04-01,2025-08-13,,,,1.14.22(Chlorine Dioxide dosing system)
7826,Tanks,ERC,2025-04-01,2025-05-15,,,,1.14.22.5(Erection)
7827,Pumps,ERC,2025-05-16,2025-06-14,,,,1.14.22.5(Erection)
7828,INTERCONNECTING PIPING & FITTINGS,ERC,2025-06-15,2025-07-14,,,,1.14.22.5(Erection)
7829,Commissioning,COM,2025-07-15,2025-08-13,,,,1.14.22.5(Erection)
7830,"Pipe Rack and Cable Trestle, Station Piping",OTH,2023-08-23,2026-01-29,,,,1.14(BOP Systems)
7831,Release of Drawings,PE - RFC,2023-08-23,2023-08-23,,,,"1.14.23(Pipe Rack and Cable Trestle, Station Piping)"
7832,Award of  Execution Agency,PRC,2023-08-23,2024-01-20,,,,"1.14.23(Pipe Rack and Cable Trestle, Station Piping)"
7833,NIT,ENQ,2023-08-23,2023-08-23,,,,1.14.23.2(Award of  Execution Agency)
7834,PO Placement,ORD,2023-08-24,2024-01-20,,,,1.14.23.2(Award of  Execution Agency)
7835, Civil,CIV,2024-02-20,2024-10-16,,,,"1.14.23(Pipe Rack and Cable Trestle, Station Piping)"
7836,Excavation,CIV,2024-02-20,2024-03-20,,,,1.14.23.3( Civil)
7837,Pedestal footing- Priority path,OTH,2024-03-21,2024-06-18,,,,1.14.23.3( Civil)
7838,Pedestal footing- Balance,OTH,2024-06-19,2024-10-16,,,,1.14.23.3( Civil)
7839,Supply,OTH,2024-09-07,2025-03-05,,,,"1.14.23(Pipe Rack and Cable Trestle, Station Piping)"
7840,Cable trestle,OTH,2024-09-07,2025-01-04,,,,1.14.23.4(Supply)
7841,Pipe rack,OTH,2024-09-07,2025-03-05,,,,1.14.23.4(Supply)
7842,Erection,ERC,2025-04-05,2026-01-29,,,,"1.14.23(Pipe Rack and Cable Trestle, Station Piping)"
7843,"Pipe rack, Cable trestle, Piping & Cable laying",ERC,2025-04-05,2026-01-29,,,,1.14.23.5(Erection)
7844,Readiness for HT,ERC,2025-05-05,2025-07-03,,,,1.14.23.5(Erection)
7845,Readiness for BLU,ERC,2025-07-04,2025-09-01,,,,1.14.23.5(Erection)
7846,Readiness for Full loading,ERC,2025-09-02,2026-01-29,,,,1.14.23.5(Erection)
7847,Misc. Elevators,OTH,2023-09-03,2025-11-17,,,,1.14(BOP Systems)
7848,Supply,OTH,2023-09-03,2025-11-17,,,,1.14.24(Misc. Elevators)
7849,Elevator,OTH,2023-09-03,2024-10-26,,,,1.14.24.1(Supply)
7850,Ordering,OTH,2023-09-03,2023-12-01,,,,1.14.24.1.1(Elevator)
7851,Detailed Engineering,ENG,2023-12-02,2024-04-29,,,,1.14.24.1.1(Elevator)
7852,Manufacturing,MFG,2024-04-30,2024-09-26,,,,1.14.24.1.1(Elevator)
7853,Dispatch,DIS,2024-09-27,2024-10-26,,,,1.14.24.1.1(Elevator)
7854,Civil,OTH,2024-09-24,2025-05-21,,,,1.14.24.1(Supply)
7855,Readiness of Elevator Pit & Shaft,OTH,2024-09-24,2025-05-21,,,,1.14.24.1.2(Civil)
7856,Erection,ERC,2025-05-22,2025-11-17,,,,1.14.24.1(Supply)
7857,Erection and commissioning of Elevator,COM,2025-05-22,2025-11-17,,,,1.14.24.1.3(Erection)
7858,Lifting Equipments,OTH,2023-05-15,2026-06-03,,,,1.14(BOP Systems)
7859,Supply,SUP,2023-05-15,2026-06-03,,,,1.14.25(Lifting Equipments)
7860,Lifting Tackles (PG-99),SUP,2023-05-15,2025-07-28,,,PG99,1.14.25.1(Supply)
7861,MISC CHAIN PULLEY BLOCKS (PGMA-99099),SUP,2023-10-21,2025-07-28,,,99099,1.14.25.1.1(Lifting Tackles (PG-99))
7862,Ordering & Engineering,ENG,2023-10-21,2024-10-15,,,99099,1.14.25.1.1.1(MISC CHAIN PULLEY BLOCKS (PGMA-99099))
7863,Manufacturing,MFG,2024-10-16,2025-07-28,,,99099,1.14.25.1.1.1(MISC CHAIN PULLEY BLOCKS (PGMA-99099))
7864,Dispatch,DIS,2025-04-30,2025-05-29,,,99099,1.14.25.1.1.1(MISC CHAIN PULLEY BLOCKS (PGMA-99099))
7865,FAN HANDLING EQUIPMENT (PGMA-99100),SUP,2023-07-23,2025-02-27,,,99100,1.14.25.1.1(Lifting Tackles (PG-99))
7866,Ordering & Engineering,ENG,2023-07-23,2024-04-17,,,99100,1.14.25.1.1.2(FAN HANDLING EQUIPMENT (PGMA-99100))
7867,Manufacturing,MFG,2024-04-18,2025-01-28,,,99100,1.14.25.1.1.2(FAN HANDLING EQUIPMENT (PGMA-99100))
7868,Dispatch,DIS,2025-01-29,2025-02-27,,,99100,1.14.25.1.1.2(FAN HANDLING EQUIPMENT (PGMA-99100))
7869,CIR PUMP / FEED PUMP HANDLING EQUIPMENT (PGMA-99300),SUP,2023-05-24,2024-12-26,,,99300,1.14.25.1.1(Lifting Tackles (PG-99))
7870,Ordering & Engineering,ENG,2023-05-24,2024-02-17,,,99300,1.14.25.1.1.3(CIR PUMP / FEED PUMP HANDLING EQUIPMENT (PGMA-99300))
7871,Manufacturing,MFG,2024-02-18,2024-11-26,,,99300,1.14.25.1.1.3(CIR PUMP / FEED PUMP HANDLING EQUIPMENT (PGMA-99300))
7872,Dispatch,DIS,2024-11-27,2024-12-26,,,99300,1.14.25.1.1.3(CIR PUMP / FEED PUMP HANDLING EQUIPMENT (PGMA-99300))
7873,"AIRHEATER,STEAMCOIL AIRHEATER HANDLG E (PGMA-99400)",SUP,2023-07-23,2025-02-27,,,99400,1.14.25.1.1(Lifting Tackles (PG-99))
7874,Ordering & Engineering,ENG,2023-07-23,2024-04-17,,,99400,"1.14.25.1.1.4(AIRHEATER,STEAMCOIL AIRHEATER HANDLG E (PGMA-99400))"
7875,Manufacturing,MFG,2024-04-18,2025-01-28,,,99400,"1.14.25.1.1.4(AIRHEATER,STEAMCOIL AIRHEATER HANDLG E (PGMA-99400))"
7876,Dispatch,DIS,2025-01-29,2025-02-27,,,99400,"1.14.25.1.1.4(AIRHEATER,STEAMCOIL AIRHEATER HANDLG E (PGMA-99400))"
7877,FURNACE CRADLE -WALL COVERAGE ELECTR (PGMA-99512),SUP,2023-07-23,2025-02-27,,,99512,1.14.25.1.1(Lifting Tackles (PG-99))
7878,Ordering & Engineering,ENG,2023-07-23,2024-04-17,,,99512,1.14.25.1.1.5(FURNACE CRADLE -WALL COVERAGE ELECTR (PGMA-99512))
7879,Manufacturing,MFG,2024-04-18,2025-01-28,,,99512,1.14.25.1.1.5(FURNACE CRADLE -WALL COVERAGE ELECTR (PGMA-99512))
7880,Dispatch,DIS,2025-01-29,2025-02-27,,,99512,1.14.25.1.1.5(FURNACE CRADLE -WALL COVERAGE ELECTR (PGMA-99512))
7881,FO SYSTEM HANDLING EQUIPMENT (PGMA-99600),SUP,2023-07-23,2025-02-27,,,99600,1.14.25.1.1(Lifting Tackles (PG-99))
7882,Ordering & Engineering,ENG,2023-07-23,2024-04-17,,,99600,1.14.25.1.1.6(FO SYSTEM HANDLING EQUIPMENT (PGMA-99600))
7883,Manufacturing,MFG,2024-04-18,2025-01-28,,,99600,1.14.25.1.1.6(FO SYSTEM HANDLING EQUIPMENT (PGMA-99600))
7884,Dispatch,DIS,2025-01-29,2025-02-27,,,99600,1.14.25.1.1.6(FO SYSTEM HANDLING EQUIPMENT (PGMA-99600))
7885,BOI-PEM - CHAIN PULLEY BLOCK ,SUP,2023-12-05,2025-01-27,,,,1.14.25.1.1(Lifting Tackles (PG-99))
7886,Ordering,ORD,2023-12-05,2024-03-03,,,,1.14.25.1.1.7(BOI-PEM - CHAIN PULLEY BLOCK )
7887,Detailed Engineering,ENG,2024-03-04,2024-07-31,,,,1.14.25.1.1.7(BOI-PEM - CHAIN PULLEY BLOCK )
7888,Manufacturing,MFG,2024-08-01,2024-12-28,,,,1.14.25.1.1.7(BOI-PEM - CHAIN PULLEY BLOCK )
7889,Dispatch,DIS,2024-12-29,2025-01-27,,,,1.14.25.1.1.7(BOI-PEM - CHAIN PULLEY BLOCK )
7890,BOI-PEM - ELECTRIC HOIST ,SUP,2023-12-01,2025-01-23,,,,1.14.25.1.1(Lifting Tackles (PG-99))
7891,Ordering,ORD,2023-12-01,2024-02-28,,,,1.14.25.1.1.8(BOI-PEM - ELECTRIC HOIST )
7892,Detailed Engineering,ENG,2024-02-29,2024-07-27,,,,1.14.25.1.1.8(BOI-PEM - ELECTRIC HOIST )
7893,Manufacturing,MFG,2024-07-28,2024-12-24,,,,1.14.25.1.1.8(BOI-PEM - ELECTRIC HOIST )
7894,Dispatch,DIS,2024-12-25,2025-01-23,,,,1.14.25.1.1.8(BOI-PEM - ELECTRIC HOIST )
7895,BOI-PEM - D/G EOT CRANE (UPTO 100 T) ,SUP,2023-05-15,2024-07-07,,,,1.14.25.1.1(Lifting Tackles (PG-99))
7896,Ordering,ORD,2023-05-15,2023-08-12,,,,1.14.25.1.1.9(BOI-PEM - D/G EOT CRANE (UPTO 100 T) )
7897,Detailed Engineering,ENG,2023-08-13,2024-01-09,,,,1.14.25.1.1.9(BOI-PEM - D/G EOT CRANE (UPTO 100 T) )
7898,Manufacturing,MFG,2024-01-10,2024-06-07,,,,1.14.25.1.1.9(BOI-PEM - D/G EOT CRANE (UPTO 100 T) )
7899,Dispatch,DIS,2024-06-08,2024-07-07,,,,1.14.25.1.1.9(BOI-PEM - D/G EOT CRANE (UPTO 100 T) )
7900,BOI-PEM - Single Girder EOT / HOT Misc. Cranes ,SUP,2023-11-11,2025-01-03,,,,1.14.25.1.1(Lifting Tackles (PG-99))
7901,Ordering,ORD,2023-11-11,2024-02-08,,,,1.14.25.1.1.10(BOI-PEM - Single Girder EOT / HOT Misc. Cranes )
7902,Detailed Engineering,ENG,2024-02-09,2024-07-07,,,,1.14.25.1.1.10(BOI-PEM - Single Girder EOT / HOT Misc. Cranes )
7903,Manufacturing,MFG,2024-07-08,2024-12-04,,,,1.14.25.1.1.10(BOI-PEM - Single Girder EOT / HOT Misc. Cranes )
7904,Dispatch,DIS,2024-12-05,2025-01-03,,,,1.14.25.1.1.10(BOI-PEM - Single Girder EOT / HOT Misc. Cranes )
7905,Erection,ERC,2025-05-30,2026-06-03,,,,1.14.25.1(Supply)
7906,E&C of Lifting equipments,ERC,2025-05-30,2026-06-03,,,,1.14.25.1.2(Erection)
7907,Misc. Building,OTH,2023-01-05,2025-07-03,,,,1.14(BOP Systems)
7908,NON PLANT Building,OTH,2023-01-05,2025-07-03,,,,1.14.26(Misc. Building)
7909, Rel of Dwg for Administration Building,PE - RFC,2024-01-10,2024-01-10,,,PCE-09700,1.14.26.1(NON PLANT Building)
7910, Rel of Dwg for Construction office,PE - RFC,2023-01-05,2023-01-05,,,,1.14.26.1(NON PLANT Building)
7911, Rel of Dwg for Canteen Building,PE - RFC,2024-08-27,2024-08-27,,,PCE-04300,1.14.26.1(NON PLANT Building)
7912, Rel of Dwg for O&M Workshop Building,PE - RFC,2024-07-08,2024-07-08,,,,1.14.26.1(NON PLANT Building)
7913, Rel of Dwg for Gate Complex along with CISF Building,PE - RFC,2023-06-04,2023-06-04,,,,1.14.26.1(NON PLANT Building)
7914, Rel of Dwg for Fire station building with Drill Tower,PE - RFC,2023-11-11,2023-11-11,,,,1.14.26.1(NON PLANT Building)
7915, Rel of Dwg for CHP office cum Workshop Building,PE - RFC,2023-07-24,2023-07-24,,,,1.14.26.1(NON PLANT Building)
7916, Rel of Dwg for Dozer Shed,PE - RFC,2025-03-15,2025-03-15,,,,1.14.26.1(NON PLANT Building)
7917,Gate Complex along with CISF Building,CIV,2024-01-16,2024-09-20,,,,1.14.26.1(NON PLANT Building)
7918, TIME OFFICE & SECURITY OFFICE: EXCAVATION,CIV,2024-01-16,2024-01-30,,,,1.14.26.1.9(Gate Complex along with CISF Building)
7919, TIME OFFICE & SECURITY OFFICE:RCC in substructure including PCC,CIV,2024-01-31,2024-02-19,,,,1.14.26.1.9(Gate Complex along with CISF Building)
7920, TIME OFFICE & SECURITY OFFICE: RCC in superstructure,CIV,2024-02-20,2024-04-19,,,,1.14.26.1.9(Gate Complex along with CISF Building)
7921, TIME OFFICE & SECURITY OFFICE: Brick Work & Plastering,CIV,2024-05-04,2024-06-17,,,,1.14.26.1.9(Gate Complex along with CISF Building)
7922, TIME OFFICE & SECURITY OFFICE: Flooring,CIV,2024-06-18,2024-07-07,,,,1.14.26.1.9(Gate Complex along with CISF Building)
7923, TIME OFFICE & SECURITY OFFICE: Backfilling,CIV,2024-07-08,2024-07-22,,,,1.14.26.1.9(Gate Complex along with CISF Building)
7924, TIME OFFICE & SECURITY OFFICE: Finishing works,CIV,2024-07-23,2024-09-20,,,,1.14.26.1.9(Gate Complex along with CISF Building)
7925,Construction office,CIV,2023-01-06,2023-06-23,,,,1.14.26.1(NON PLANT Building)
7926,EXCAVATION,CIV,2023-01-06,2023-01-20,,,,1.14.26.1.10(Construction office)
7927,RCC in substructure including PCC,CIV,2023-01-21,2023-02-04,,,,1.14.26.1.10(Construction office)
7928,RCC in superstructure,CIV,2023-02-05,2023-03-06,,,,1.14.26.1.10(Construction office)
7929,Brick Work & Plastering,CIV,2023-03-21,2023-04-19,,,,1.14.26.1.10(Construction office)
7930,Flooring,CIV,2023-04-20,2023-05-04,,,,1.14.26.1.10(Construction office)
7931,Backfilling,CIV,2023-05-05,2023-05-14,,,,1.14.26.1.10(Construction office)
7932,Finishing works,CIV,2023-05-15,2023-06-23,,,,1.14.26.1.10(Construction office)
7933, CANTEEN BUILDING,CIV,2024-09-02,2025-07-03,,,,1.14.26.1(NON PLANT Building)
7934,   EXCAVATION,CIV,2024-09-02,2024-09-21,,,,1.14.26.1.11( CANTEEN BUILDING)
7935,   RCC in substructure including PCC,CIV,2024-09-22,2024-10-16,,,,1.14.26.1.11( CANTEEN BUILDING)
7936,   RCC in superstructure,CIV,2024-10-17,2025-01-14,,,,1.14.26.1.11( CANTEEN BUILDING)
7937,   Brick Work & Plastering,CIV,2025-01-15,2025-03-10,,,,1.14.26.1.11( CANTEEN BUILDING)
7938,   Flooring,CIV,2025-03-11,2025-04-04,,,,1.14.26.1.11( CANTEEN BUILDING)
7939,   Backfilling,CIV,2025-04-05,2025-04-19,,,,1.14.26.1.11( CANTEEN BUILDING)
7940,   Finishing works,CIV,2025-04-20,2025-07-03,,,,1.14.26.1.11( CANTEEN BUILDING)
7941,Fire Station building and Drill Tower,CIV,2024-09-02,2025-07-03,,,,1.14.26.1(NON PLANT Building)
7942,   EXCAVATION,CIV,2024-09-02,2024-09-21,,,,1.14.26.1.12(Fire Station building and Drill Tower)
7943,   RCC in substructure including PCC,CIV,2024-09-22,2024-10-16,,,,1.14.26.1.12(Fire Station building and Drill Tower)
7944,   RCC in superstructure,CIV,2024-10-17,2025-01-14,,,,1.14.26.1.12(Fire Station building and Drill Tower)
7945,   Brick Work & Plastering,CIV,2025-01-15,2025-03-10,,,,1.14.26.1.12(Fire Station building and Drill Tower)
7946,   Flooring,CIV,2025-03-11,2025-04-04,,,,1.14.26.1.12(Fire Station building and Drill Tower)
7947,   Backfilling,CIV,2025-04-05,2025-04-19,,,,1.14.26.1.12(Fire Station building and Drill Tower)
7948,   Finishing works,CIV,2025-04-20,2025-07-03,,,,1.14.26.1.12(Fire Station building and Drill Tower)
7949,FQA Lab building,CIV,2024-09-02,2025-07-03,,,,1.14.26.1(NON PLANT Building)
7950,   EXCAVATION,CIV,2024-09-02,2024-09-21,,,,1.14.26.1.13(FQA Lab building)
7951,   RCC in substructure including PCC,CIV,2024-09-22,2024-10-16,,,,1.14.26.1.13(FQA Lab building)
7952,   RCC in superstructure,CIV,2024-10-17,2025-01-14,,,,1.14.26.1.13(FQA Lab building)
7953,   Brick Work & Plastering,CIV,2025-01-15,2025-03-10,,,,1.14.26.1.13(FQA Lab building)
7954,   Flooring,CIV,2025-03-11,2025-04-04,,,,1.14.26.1.13(FQA Lab building)
7955,   Backfilling,CIV,2025-04-05,2025-04-19,,,,1.14.26.1.13(FQA Lab building)
7956,   Finishing works,CIV,2025-04-20,2025-07-03,,,,1.14.26.1.13(FQA Lab building)
7957,CHP office cum Workshop Building,CIV,2024-09-02,2025-07-03,,,,1.14.26.1(NON PLANT Building)
7958,   EXCAVATION,CIV,2024-09-02,2024-09-21,,,,1.14.26.1.14(CHP office cum Workshop Building)
7959,   RCC in substructure including PCC,CIV,2024-09-22,2024-10-16,,,,1.14.26.1.14(CHP office cum Workshop Building)
7960,   RCC in superstructure,CIV,2024-10-17,2025-01-14,,,,1.14.26.1.14(CHP office cum Workshop Building)
7961,   Brick Work & Plastering,CIV,2025-01-15,2025-03-10,,,,1.14.26.1.14(CHP office cum Workshop Building)
7962,   Flooring,CIV,2025-03-11,2025-04-04,,,,1.14.26.1.14(CHP office cum Workshop Building)
7963,   Backfilling,CIV,2025-04-05,2025-04-19,,,,1.14.26.1.14(CHP office cum Workshop Building)
7964,   Finishing works,CIV,2025-04-20,2025-07-03,,,,1.14.26.1.14(CHP office cum Workshop Building)
7965,Administration Building,CIV,2024-09-02,2025-07-03,,,,1.14.26.1(NON PLANT Building)
7966,   EXCAVATION,CIV,2024-09-02,2024-09-21,,,,1.14.26.1.15(Administration Building)
7967,   RCC in substructure including PCC,CIV,2024-09-22,2024-10-16,,,,1.14.26.1.15(Administration Building)
7968,   RCC in superstructure,CIV,2024-10-17,2025-01-14,,,,1.14.26.1.15(Administration Building)
7969,   Brick Work & Plastering,CIV,2025-01-15,2025-03-10,,,,1.14.26.1.15(Administration Building)
7970,   Flooring,CIV,2025-03-11,2025-04-04,,,,1.14.26.1.15(Administration Building)
7971,   Backfilling,CIV,2025-04-05,2025-04-19,,,,1.14.26.1.15(Administration Building)
7972,   Finishing works,CIV,2025-04-20,2025-07-03,,,,1.14.26.1.15(Administration Building)
7973,O&M Workshop Building,CIV,2024-09-02,2025-07-03,,,,1.14.26.1(NON PLANT Building)
7974,   EXCAVATION,CIV,2024-09-02,2024-09-21,,,,1.14.26.1.16(O&M Workshop Building)
7975,   RCC in substructure including PCC,CIV,2024-09-22,2024-10-16,,,,1.14.26.1.16(O&M Workshop Building)
7976,   RCC in superstructure,CIV,2024-10-17,2025-01-14,,,,1.14.26.1.16(O&M Workshop Building)
7977,   Brick Work & Plastering,CIV,2025-01-15,2025-03-10,,,,1.14.26.1.16(O&M Workshop Building)
7978,   Flooring,CIV,2025-03-11,2025-04-04,,,,1.14.26.1.16(O&M Workshop Building)
7979,   Backfilling,CIV,2025-04-05,2025-04-19,,,,1.14.26.1.16(O&M Workshop Building)
7980,   Finishing works,CIV,2025-04-20,2025-07-03,,,,1.14.26.1.16(O&M Workshop Building)
7981,1.4 MWp Solar Rooftop Pkg,OTH,2024-02-19,2026-06-21,,,,1.14(BOP Systems)
7982,Engineering,ENG,2024-02-19,2024-06-27,,,,1.14.27(1.4 MWp Solar Rooftop Pkg)
7983,Submission of quality plan,ENG,2024-02-19,2024-03-09,,,,1.14.27.1(Engineering)
7984,Submission of field quality plan,ENG,2024-03-10,2024-03-29,,,,1.14.27.1(Engineering)
7985,Subcontracting & Vendor List Approval,ENG,2024-03-30,2024-04-28,,,,1.14.27.1(Engineering)
7986,Drawing Submission from BHEL,ENG,2024-04-29,2024-05-13,,,,1.14.27.1(Engineering)
7987,Drawing Approval from customer,ENG,2024-05-14,2024-06-27,,,,1.14.27.1(Engineering)
7988,"Procurement, Manufacturing & Dispatch",MFG,2024-06-28,2026-02-09,,,,1.14.27(1.4 MWp Solar Rooftop Pkg)
7989,Sub-tendering for SPV Modules,OTH,2024-06-28,2024-08-11,,,,"1.14.27.2(Procurement, Manufacturing & Dispatch)"
7990,Placement of Order on SPV modules OEM,OTH,2024-08-12,2024-08-18,,,,"1.14.27.2(Procurement, Manufacturing & Dispatch)"
7991,Manufacturing of SPV Modules,MFG,2024-08-19,2024-10-17,,,,"1.14.27.2(Procurement, Manufacturing & Dispatch)"
7992,Inspection of SPV Modules,MFG,2024-10-18,2024-11-01,,,,"1.14.27.2(Procurement, Manufacturing & Dispatch)"
7993,Dispatch of SPV modules,DIS,2024-11-02,2024-12-01,,,,"1.14.27.2(Procurement, Manufacturing & Dispatch)"
7994,Procurement of Inverters,PRC,2024-12-02,2025-01-15,,,,"1.14.27.2(Procurement, Manufacturing & Dispatch)"
7995,Dispatch of Inverters,DIS,2025-01-16,2025-03-16,,,,"1.14.27.2(Procurement, Manufacturing & Dispatch)"
7996,Procurement of MMS,PRC,2025-03-17,2025-05-15,,,,"1.14.27.2(Procurement, Manufacturing & Dispatch)"
7997,Inspection &Dispatch,DIS,2025-05-16,2025-07-14,,,,"1.14.27.2(Procurement, Manufacturing & Dispatch)"
7998,Procurement of Transformers,PRC,2025-07-15,2025-09-12,,,,"1.14.27.2(Procurement, Manufacturing & Dispatch)"
7999,Inspection &Dispatch,DIS,2025-09-13,2025-10-27,,,,"1.14.27.2(Procurement, Manufacturing & Dispatch)"
8000,Procurement of BOS,PRC,2025-10-28,2025-12-26,,,,"1.14.27.2(Procurement, Manufacturing & Dispatch)"
8001,Dispatch of BOS,DIS,2025-12-27,2026-02-09,,,,"1.14.27.2(Procurement, Manufacturing & Dispatch)"
8002,Site Mobilisation,OTH,2024-04-06,2024-04-20,,,,1.14.27(1.4 MWp Solar Rooftop Pkg)
8003,Erection & Commissioning,OTH,2025-01-15,2026-06-21,,,,1.14.27(1.4 MWp Solar Rooftop Pkg)
8004,Civil Work - Structures & buildings,CIV,2025-01-15,2025-04-14,,,,1.14.27.4(Erection & Commissioning)
8005,Civil Work -Others,CIV,2025-01-15,2025-04-14,,,,1.14.27.4(Erection & Commissioning)
8006,415V/11 kV Substation Erection,ERC,2025-11-02,2025-12-31,,,,1.14.27.4(Erection & Commissioning)
8007,Steel Structures Erection,ERC,2025-11-02,2026-03-01,,,,1.14.27.4(Erection & Commissioning)
8008,Modules Laying,ERC,2026-01-16,2026-05-05,,,,1.14.27.4(Erection & Commissioning)
8009,Cable Laying,ERC,2026-01-16,2026-05-05,,,,1.14.27.4(Erection & Commissioning)
8010,Inverters Erection,ERC,2026-01-16,2026-02-14,,,,1.14.27.4(Erection & Commissioning)
8011,BOS Erection,ERC,2026-01-16,2026-05-15,,,,1.14.27.4(Erection & Commissioning)
8012,Commissioning,COM,2026-05-16,2026-06-14,,,,1.14.27.4(Erection & Commissioning)
8013,Synchronisation,ERC,2026-06-15,2026-06-21,,,,1.14.27.4(Erection & Commissioning)
8014,Aux Boiler,OTH,2023-04-29,2025-11-14,,,,1.14(BOP Systems)
8015,"Engineering (LO, GA and P&ID)",ENG,2023-04-29,2023-10-25,,,,1.14.28(Aux Boiler)
8016,Foundation Materials and Structure,CIV,2023-10-26,2024-10-19,,,,1.14.28(Aux Boiler)
8017,Release of MIs,ENG,2023-10-26,2023-12-24,,,,1.14.28.2(Foundation Materials and Structure)
8018,Engineering Documents,ENG,2023-10-26,2024-01-03,,,,1.14.28.2(Foundation Materials and Structure)
8019,Release of Purchase Orders,PRC,2023-12-25,2024-02-22,,,,1.14.28.2(Foundation Materials and Structure)
8020,Receipt of material at HPVP,OTH,2024-02-23,2024-06-01,,,,1.14.28.2(Foundation Materials and Structure)
8021,Fabrication,OTH,2024-06-02,2024-09-29,,,,1.14.28.2(Foundation Materials and Structure)
8022,Dispatches,DIS,2024-08-21,2024-10-19,,,,1.14.28.2(Foundation Materials and Structure)
8023,"Boiler Drums, PG 04",OTH,2024-01-04,2025-07-31,,,,1.14.28(Aux Boiler)
8024,Release of MIs,ENG,2024-01-04,2024-03-18,,,,"1.14.28.3(Boiler Drums, PG 04)"
8025,Engineering Documents,ENG,2024-03-19,2024-04-17,,,,"1.14.28.3(Boiler Drums, PG 04)"
8026,Release of Purchase Orders,PRC,2024-03-19,2024-05-17,,,,"1.14.28.3(Boiler Drums, PG 04)"
8027,Receipt of material at HPVP,OTH,2024-05-18,2024-09-14,,,,"1.14.28.3(Boiler Drums, PG 04)"
8028,Shop Fabrication,OTH,2024-09-15,2025-05-22,,,,"1.14.28.3(Boiler Drums, PG 04)"
8029,Dispatches,DIS,2025-05-23,2025-07-31,,,,"1.14.28.3(Boiler Drums, PG 04)"
8030,"Pressure Parts, PG 06,07,08,09,10,11,12,19",OTH,2024-02-03,2025-09-25,,,,1.14.28(Aux Boiler)
8031,Release of MIs,ENG,2024-02-03,2024-04-17,,,,"1.14.28.4(Pressure Parts, PG 06,07,08,09,10,11,12,19)"
8032,Engineering Documents,ENG,2024-04-18,2024-05-17,,,,"1.14.28.4(Pressure Parts, PG 06,07,08,09,10,11,12,19)"
8033,Release of Purchase Orders,PRC,2024-04-18,2024-06-16,,,,"1.14.28.4(Pressure Parts, PG 06,07,08,09,10,11,12,19)"
8034,Receipt of material at HPVP,OTH,2024-06-17,2024-10-14,,,,"1.14.28.4(Pressure Parts, PG 06,07,08,09,10,11,12,19)"
8035,Shop Fabrication,OTH,2024-10-15,2025-06-27,,,,"1.14.28.4(Pressure Parts, PG 06,07,08,09,10,11,12,19)"
8036,Dispatches,DIS,2025-06-28,2025-09-25,,,,"1.14.28.4(Pressure Parts, PG 06,07,08,09,10,11,12,19)"
8037,"Soot Blowers Valves & Fittings, PG 20,21",OTH,2024-04-18,2025-02-16,,,,1.14.28(Aux Boiler)
8038,Release of MIs,ENG,2024-04-18,2024-07-11,,,,"1.14.28.5(Soot Blowers Valves & Fittings, PG 20,21)"
8039,Engineering Documents,ENG,2024-07-12,2024-08-10,,,,"1.14.28.5(Soot Blowers Valves & Fittings, PG 20,21)"
8040,Release of Purchase Orders,PRC,2024-07-12,2024-08-20,,,,"1.14.28.5(Soot Blowers Valves & Fittings, PG 20,21)"
8041,Receipt,OTH,2024-08-21,2025-02-16,,,,"1.14.28.5(Soot Blowers Valves & Fittings, PG 20,21)"
8042,"Fuel Firing System, PG 41, 42",OTH,2024-04-18,2025-07-05,,,,1.14.28(Aux Boiler)
8043,Release of MIs,ENG,2024-04-18,2024-06-16,,,,"1.14.28.6(Fuel Firing System, PG 41, 42)"
8044,Engineering Documents,ENG,2024-06-17,2024-07-26,,,,"1.14.28.6(Fuel Firing System, PG 41, 42)"
8045,Release of Purchase Orders,ENG,2024-06-17,2024-08-15,,,,"1.14.28.6(Fuel Firing System, PG 41, 42)"
8046,Receipt of material at HPVP,OTH,2024-08-16,2024-11-13,,,,"1.14.28.6(Fuel Firing System, PG 41, 42)"
8047,Fabrication,OTH,2024-11-14,2025-06-21,,,,"1.14.28.6(Fuel Firing System, PG 41, 42)"
8048,Dispatches,DIS,2025-06-22,2025-07-05,,,,"1.14.28.6(Fuel Firing System, PG 41, 42)"
8049,"Ducts, PG 48",OTH,2024-06-17,2025-03-17,,,,1.14.28(Aux Boiler)
8050,Release of MIs,ENG,2024-06-17,2024-07-16,,,,"1.14.28.7(Ducts, PG 48)"
8051,Engineering Documents,ENG,2024-07-17,2024-08-15,,,,"1.14.28.7(Ducts, PG 48)"
8052,Release of Purchase Orders,PRC,2024-07-17,2024-09-14,,,,"1.14.28.7(Ducts, PG 48)"
8053,Receipt of material at HPVP,OTH,2024-09-15,2024-11-03,,,,"1.14.28.7(Ducts, PG 48)"
8054,Fabrication,OTH,2024-11-04,2025-03-03,,,,"1.14.28.7(Ducts, PG 48)"
8055,Dispatches,DIS,2025-03-04,2025-03-17,,,,"1.14.28.7(Ducts, PG 48)"
8056,BAP - Damper FD fan outlet (PGMA 57013),SUP,2024-05-19,2025-06-22,,,57013,1.14.28(Aux Boiler)
8057,Engineering,ENG,2024-05-19,2024-06-17,,,57013,1.14.28.8(BAP - Damper FD fan outlet (PGMA 57013))
8058,Manufacturing ,MFG,2024-06-18,2025-02-22,,,57013,1.14.28.8(BAP - Damper FD fan outlet (PGMA 57013))
8059,Dispatch,DIS,2025-02-23,2025-06-22,,,57013,1.14.28.8(BAP - Damper FD fan outlet (PGMA 57013))
8060,BAP - Aux fan (PG 56),SUP,2024-05-19,2025-06-22,,,PG 56,1.14.28(Aux Boiler)
8061,Engineering,ENG,2024-05-19,2024-06-17,,,56,1.14.28.9(BAP - Aux fan (PG 56))
8062,Manufacturing ,MFG,2024-06-18,2025-02-22,,,56,1.14.28.9(BAP - Aux fan (PG 56))
8063,Dispatch,DIS,2025-02-23,2025-06-22,,,56,1.14.28.9(BAP - Aux fan (PG 56))
8064,BAP - CYLINDRICAL Chimney (SELF SUPPORTED)- H-35 M (PG- 87),SUP,2024-05-19,2025-06-22,,,87,1.14.28(Aux Boiler)
8065,Engineering,ENG,2024-05-19,2024-06-17,,,87,1.14.28.10(BAP - CYLINDRICAL Chimney (SELF SUPPORTED)- H-35 M (PG- 87))
8066,Manufacturing ,MFG,2024-06-18,2025-02-22,,,87,1.14.28.10(BAP - CYLINDRICAL Chimney (SELF SUPPORTED)- H-35 M (PG- 87))
8067,Dispatch,DIS,2025-02-23,2025-06-22,,,87,1.14.28.10(BAP - CYLINDRICAL Chimney (SELF SUPPORTED)- H-35 M (PG- 87))
8068,"Lining & Insulation, PG 33",SUP,2024-07-17,2025-10-19,,,33,1.14.28(Aux Boiler)
8069,Release of MIs,ENG,2024-07-17,2024-08-25,,,,"1.14.28.11(Lining & Insulation, PG 33)"
8070,Engineering Documents,ENG,2024-07-17,2024-11-13,,,,"1.14.28.11(Lining & Insulation, PG 33)"
8071,Release of Purchase Orders,PRC,2024-11-14,2025-01-22,,,,"1.14.28.11(Lining & Insulation, PG 33)"
8072,Manufacturing & Dispatch,MFG,2025-04-23,2025-10-19,,,,"1.14.28.11(Lining & Insulation, PG 33)"
8073,"Electrical and C&I, PG 95, 97",OTH,2024-07-17,2025-03-27,,,95/97,1.14.28(Aux Boiler)
8074,Release of MIs,ENG,2024-07-17,2024-08-14,,,,"1.14.28.12(Electrical and C&I, PG 95, 97)"
8075,Engineering Documents,ENG,2024-08-15,2024-09-13,,,,"1.14.28.12(Electrical and C&I, PG 95, 97)"
8076,Release of Purchase Orders,PRC,2024-08-15,2024-11-12,,,,"1.14.28.12(Electrical and C&I, PG 95, 97)"
8077,Manufacturing & Dispatch,MFG,2024-11-13,2025-03-27,,,,"1.14.28.12(Electrical and C&I, PG 95, 97)"
8078,Dispatch of piping & valves ,DIS,2024-11-29,2025-05-31,,,,1.14.28(Aux Boiler)
8079,Foundation work ,CIV,2024-10-10,2025-04-27,,,,1.14.28(Aux Boiler)
8080,"Erection of pressure parts, drum, ducting ",ERC,2025-04-28,2025-09-24,,,,1.14.28(Aux Boiler)
8081,Erection of Chimney ,ERC,2025-04-28,2025-09-24,,,,1.14.28(Aux Boiler)
8082,"Erection of fan, Gate and dampers",ERC,2025-04-28,2025-11-13,,,,1.14.28(Aux Boiler)
8083,Erection of piping valve ,ERC,2025-06-07,2025-09-24,,,,1.14.28(Aux Boiler)
8084,Hydro test ,ERC,2025-09-25,2025-09-27,,,,1.14.28(Aux Boiler)
8085,Insulation and refractory work ,ERC,2025-09-28,2025-10-27,,,,1.14.28(Aux Boiler)
8086,Aux Boiler light up ,COM,2025-10-27,2025-10-27,,,,1.14.28(Aux Boiler)
8087,Chemical cleaning ,ERC,2025-10-28,2025-10-30,,,,1.14.28(Aux Boiler)
8088,Steam blowing of piping up to Aux PRDS ,ERC,2025-10-31,2025-11-14,,,,1.14.28(Aux Boiler)
8089,FGD ,OTH,2022-09-27,2026-05-18,,,,1.14(BOP Systems)
8090,Engineering,ENG,2022-10-27,2024-04-13,,,,1.14.29(FGD )
8091,Basic Engineering,ENG,2022-10-27,2023-02-23,,,,1.14.29.1(Engineering)
8092,Detailed Engineering,ENG,2023-02-24,2024-04-13,,,,1.14.29.1(Engineering)
8093,Gypsum Dewatering building,OTH,2023-11-12,2026-01-20,,,,1.14.29(FGD )
8094,Engineering &Supply,ENG,2023-11-12,2025-05-29,,,,1.14.29.2(Gypsum Dewatering building)
8095,FOUNDATION MATERIALS,SUP,2024-02-14,2024-05-28,,,,1.14.29.2.1(Engineering &Supply)
8096,Engineering,ENG,2024-02-14,2024-02-28,,,,1.14.29.2.1.1(FOUNDATION MATERIALS)
8097,Manufacturing,MFG,2024-02-29,2024-04-28,,,,1.14.29.2.1.1(FOUNDATION MATERIALS)
8098,Dispatch,DIS,2024-04-29,2024-05-28,,,,1.14.29.2.1.1(FOUNDATION MATERIALS)
8099,COLUMNS,SUP,2024-07-03,2024-11-14,,,,1.14.29.2.1(Engineering &Supply)
8100,Engineering,ENG,2024-07-03,2024-08-16,,,,1.14.29.2.1.2(COLUMNS)
8101,Manufacturing,MFG,2024-08-17,2024-10-15,,,,1.14.29.2.1.2(COLUMNS)
8102,Dispatch,DIS,2024-10-16,2024-11-14,,,,1.14.29.2.1.2(COLUMNS)
8103,BEAMS & BRACING,SUP,2024-08-17,2024-12-29,,,,1.14.29.2.1(Engineering &Supply)
8104,Engineering,ENG,2024-08-17,2024-09-30,,,,1.14.29.2.1.3(BEAMS & BRACING)
8105,Manufacturing,MFG,2024-10-01,2024-11-29,,,,1.14.29.2.1.3(BEAMS & BRACING)
8106,Dispatch,DIS,2024-11-30,2024-12-29,,,,1.14.29.2.1.3(BEAMS & BRACING)
8107,FLOOR & PLATFORMS,SUP,2024-08-17,2025-01-13,,,,1.14.29.2.1(Engineering &Supply)
8108,Engineering,ENG,2024-08-17,2024-09-30,,,,1.14.29.2.1.4(FLOOR & PLATFORMS)
8109,Manufacturing,MFG,2024-10-01,2024-12-14,,,,1.14.29.2.1.4(FLOOR & PLATFORMS)
8110,Dispatch,DIS,2024-12-15,2025-01-13,,,,1.14.29.2.1.4(FLOOR & PLATFORMS)
8111,WALL BEAMS,SUP,2024-08-17,2024-12-29,,,,1.14.29.2.1(Engineering &Supply)
8112,Engineering,ENG,2024-08-17,2024-09-30,,,,1.14.29.2.1.5(WALL BEAMS)
8113,Manufacturing,MFG,2024-10-01,2024-11-29,,,,1.14.29.2.1.5(WALL BEAMS)
8114,Dispatch,DIS,2024-11-30,2024-12-29,,,,1.14.29.2.1.5(WALL BEAMS)
8115,STAIRS,SUP,2024-10-01,2025-02-12,,,,1.14.29.2.1(Engineering &Supply)
8116,Engineering,ENG,2024-10-01,2024-11-14,,,,1.14.29.2.1.6(STAIRS)
8117,Manufacturing,MFG,2024-11-15,2025-01-13,,,,1.14.29.2.1.6(STAIRS)
8118,Dispatch,DIS,2025-01-14,2025-02-12,,,,1.14.29.2.1.6(STAIRS)
8119,MISC STRUCTURES,SUP,2024-10-01,2025-02-12,,,,1.14.29.2.1(Engineering &Supply)
8120,Engineering,ENG,2024-10-01,2024-11-14,,,,1.14.29.2.1.7(MISC STRUCTURES)
8121,Manufacturing,MFG,2024-11-15,2025-01-13,,,,1.14.29.2.1.7(MISC STRUCTURES)
8122,Dispatch,DIS,2025-01-14,2025-02-12,,,,1.14.29.2.1.7(MISC STRUCTURES)
8123,Equipments (Sub-Assembly),SUP,2024-04-14,2025-02-22,,,,1.14.29.2.1(Engineering &Supply)
8124,Enquiry & NIT,ENQ,2024-04-14,2024-04-28,,,,1.14.29.2.1.8(Equipments (Sub-Assembly))
8125,Ordering,ORD,2024-04-29,2024-05-28,,,,1.14.29.2.1.8(Equipments (Sub-Assembly))
8126,Detailed Engineering,ENG,2024-05-29,2024-07-27,,,,1.14.29.2.1.8(Equipments (Sub-Assembly))
8127,Dispatch,DIS,2025-01-24,2025-02-22,,,,1.14.29.2.1.8(Equipments (Sub-Assembly))
8128,LIME FEEDING/DOSING SYSTEM,SUP,2023-11-12,2025-05-29,,,,1.14.29.2.1(Engineering &Supply)
8129,Enquiry & NIT,ENQ,2023-11-12,2023-11-26,,,,1.14.29.2.1.9(LIME FEEDING/DOSING SYSTEM)
8130,Ordering & Engineering,ORD,2023-11-27,2024-06-13,,,,1.14.29.2.1.9(LIME FEEDING/DOSING SYSTEM)
8131,Manufacturing,MFG,2024-06-14,2024-12-10,,,,1.14.29.2.1.9(LIME FEEDING/DOSING SYSTEM)
8132,Dispatch,DIS,2024-12-11,2025-05-29,,,,1.14.29.2.1.9(LIME FEEDING/DOSING SYSTEM)
8133,BOI-PEM-  ELEVATORS,SUP,2024-06-03,2025-05-17,,,,1.14.29.2.1(Engineering &Supply)
8134,Enquiry & NIT,ENQ,2024-06-03,2024-07-12,,,,1.14.29.2.1.10(BOI-PEM-  ELEVATORS)
8135,Ordering & Engineering,ORD,2024-07-13,2024-09-09,,,,1.14.29.2.1.10(BOI-PEM-  ELEVATORS)
8136,Manufacturing,MFG,2024-09-10,2025-01-07,,,,1.14.29.2.1.10(BOI-PEM-  ELEVATORS)
8137,Dispatch,DIS,2025-04-18,2025-05-17,,,,1.14.29.2.1.10(BOI-PEM-  ELEVATORS)
8138,Civil Works,OTH,2024-04-14,2025-07-07,,,,1.14.29.2(Gypsum Dewatering building)
8139,RFC Superstructure drawing,PE - RFC,2024-06-03,2024-07-02,,,,1.14.29.2.2(Civil Works)
8140,RFC Civil Building foundation,PE - RFC,2024-04-14,2024-06-12,,,,1.14.29.2.2(Civil Works)
8141,RFC Civil Equipment foundation,PE - RFC,2024-06-03,2024-07-02,,,,1.14.29.2.2(Civil Works)
8142,Excavation,CIV,2024-06-13,2024-07-12,,,,1.14.29.2.2(Civil Works)
8143,RCC,CIV,2024-07-13,2025-07-07,,,,1.14.29.2.2(Civil Works)
8144,Erection of Structure,ERC,2025-06-08,2025-11-04,,,,1.14.29.2(Gypsum Dewatering building)
8145,FOUNDATION MATERIALSGYPSUM DEWAT,ERC,2025-06-08,2025-07-07,,,,1.14.29.2.3(Erection of Structure)
8146,GYPSUM DEWAT COLUMNS,ERC,2025-07-08,2025-09-20,,,,1.14.29.2.3(Erection of Structure)
8147,GYPSUM DEWAT BEAMS & BRACING,ERC,2025-07-23,2025-10-20,,,,1.14.29.2.3(Erection of Structure)
8148,GYPSUM DEWAT FLOOR & PLATFORMS,ERC,2025-08-07,2025-10-20,,,,1.14.29.2.3(Erection of Structure)
8149,GYPSUM DEWAT WALL BEAMS,ERC,2025-07-23,2025-10-05,,,,1.14.29.2.3(Erection of Structure)
8150,GYPSUM DEWAT STAIRS,ERC,2025-08-22,2025-11-04,,,,1.14.29.2.3(Erection of Structure)
8151,GYPSUM DEWAT MISC STRUCTURES,ERC,2025-08-22,2025-11-04,,,,1.14.29.2.3(Erection of Structure)
8152,Erection of Equipment,ERC,2025-05-18,2025-11-21,,,,1.14.29.2(Gypsum Dewatering building)
8153,Gypsum Dewatering Eqpt(Sub-Assembly of FGD),ERC,2025-08-07,2025-11-04,,,,1.14.29.2.4(Erection of Equipment)
8154,LIME FEEDING/DOSING SYSTEM,ERC,2025-09-21,2025-11-19,,,,1.14.29.2.4(Erection of Equipment)
8155,ELEVATORS,ERC,2025-05-18,2025-11-21,,,,1.14.29.2.4(Erection of Equipment)
8156,Commissioning of Equipments,COM,2025-09-06,2026-01-20,,,,1.14.29.2(Gypsum Dewatering building)
8157,Gypsum Dewatering Eqpt/(Sub-Assembly of FGD),OTH,2025-09-06,2026-01-03,,,,1.14.29.2.5(Commissioning of Equipments)
8158,LIME FEEDING/DOSING SYSTEM,OTH,2025-09-21,2026-01-18,,,,1.14.29.2.5(Commissioning of Equipments)
8159,ELEVATORS,OTH,2025-11-22,2026-01-20,,,,1.14.29.2.5(Commissioning of Equipments)
8160,Ball Mill Building and Ball Mills,OTH,2022-09-27,2025-05-07,,,,1.14.29(FGD )
8161,Engineering &Supply,ENG,2022-09-27,2024-10-29,,,,1.14.29.3(Ball Mill Building and Ball Mills)
8162,HYD - Wet Ball Mill,SUP,2022-09-27,2024-10-19,,,,1.14.29.3.1(Engineering &Supply)
8163,PROCUREMENT,ORD,2022-09-27,2023-12-25,,,,1.14.29.3.1.1(HYD - Wet Ball Mill)
8164,MANUFACTURING,MFG,2023-12-26,2024-06-02,,,,1.14.29.3.1.1(HYD - Wet Ball Mill)
8165,ASSEMBLY & TESTING,MFG,2024-06-03,2024-09-19,,,,1.14.29.3.1.1(HYD - Wet Ball Mill)
8166,Dispatch OF WET BALL MILLING SYSTEM AND ALL ASSOCIATED ITEMS,DIS,2024-09-20,2024-10-19,,,,1.14.29.3.1.1(HYD - Wet Ball Mill)
8167,BPL - Ball Mill Motor,SUP,2022-09-27,2024-10-29,,,,1.14.29.3.1(Engineering &Supply)
8168,Engineering,ENG,2022-09-27,2023-12-25,,,,1.14.29.3.1.2(BPL - Ball Mill Motor)
8169,Manufacturing,MFG,2023-12-26,2024-07-12,,,,1.14.29.3.1.2(BPL - Ball Mill Motor)
8170,Dispatch,DIS,2024-07-13,2024-10-29,,,,1.14.29.3.1.2(BPL - Ball Mill Motor)
8171,FOUNDATION MATERIALS FOR BALL MILL BLDG,SUP,2023-12-21,2024-04-18,,,,1.14.29.3.1(Engineering &Supply)
8172,Engineering,ENG,2023-12-21,2024-01-04,,,,1.14.29.3.1.3(FOUNDATION MATERIALS FOR BALL MILL BLDG)
8173,Manufacturing,MFG,2024-01-05,2024-03-19,,,,1.14.29.3.1.3(FOUNDATION MATERIALS FOR BALL MILL BLDG)
8174,Dispatch,DIS,2024-03-20,2024-04-18,,,,1.14.29.3.1.3(FOUNDATION MATERIALS FOR BALL MILL BLDG)
8175, BALL MILL BLDG COLUMNS,SUP,2023-12-21,2024-05-03,,,,1.14.29.3.1(Engineering &Supply)
8176,Engineering,ENG,2023-12-21,2024-02-03,,,,1.14.29.3.1.4( BALL MILL BLDG COLUMNS)
8177,Manufacturing,MFG,2024-02-04,2024-04-03,,,,1.14.29.3.1.4( BALL MILL BLDG COLUMNS)
8178,Dispatch,DIS,2024-04-04,2024-05-03,,,,1.14.29.3.1.4( BALL MILL BLDG COLUMNS)
8179,BALL MILL BUILDING BEAMS & BRACING,SUP,2024-01-05,2024-05-18,,,,1.14.29.3.1(Engineering &Supply)
8180,Engineering,ENG,2024-01-05,2024-02-18,,,,1.14.29.3.1.5(BALL MILL BUILDING BEAMS & BRACING)
8181,Manufacturing,MFG,2024-02-19,2024-04-18,,,,1.14.29.3.1.5(BALL MILL BUILDING BEAMS & BRACING)
8182,Dispatch,DIS,2024-04-19,2024-05-18,,,,1.14.29.3.1.5(BALL MILL BUILDING BEAMS & BRACING)
8183,BALL MILL BUILDING FLOOR & PLATFORMS,SUP,2024-01-05,2024-06-02,,,,1.14.29.3.1(Engineering &Supply)
8184,Engineering,ENG,2024-01-05,2024-03-04,,,,1.14.29.3.1.6(BALL MILL BUILDING FLOOR & PLATFORMS)
8185,Manufacturing,MFG,2024-03-05,2024-05-03,,,,1.14.29.3.1.6(BALL MILL BUILDING FLOOR & PLATFORMS)
8186,Dispatch,DIS,2024-05-04,2024-06-02,,,,1.14.29.3.1.6(BALL MILL BUILDING FLOOR & PLATFORMS)
8187,BALL MILL BUILDING WALL BEAMS,SUP,2024-01-05,2024-05-18,,,,1.14.29.3.1(Engineering &Supply)
8188,Engineering,ENG,2024-01-05,2024-02-18,,,,1.14.29.3.1.7(BALL MILL BUILDING WALL BEAMS)
8189,Manufacturing,MFG,2024-02-19,2024-04-18,,,,1.14.29.3.1.7(BALL MILL BUILDING WALL BEAMS)
8190,Dispatch,DIS,2024-04-19,2024-05-18,,,,1.14.29.3.1.7(BALL MILL BUILDING WALL BEAMS)
8191,Civil Works,OTH,2023-09-22,2024-05-18,,,,1.14.29.3(Ball Mill Building and Ball Mills)
8192, RFC Civil Mill Foundation drawing,PE - RFC,2023-09-22,2023-10-21,,,,1.14.29.3.2(Civil Works)
8193, RFC Civil Building foundation drawing,PE - RFC,2023-10-22,2023-11-30,,,,1.14.29.3.2(Civil Works)
8194, RFC Superstructure drawing,PE - RFC,2023-11-11,2023-12-20,,,,1.14.29.3.2(Civil Works)
8195,Excavation,CIV,2023-10-22,2023-11-20,,,,1.14.29.3.2(Civil Works)
8196,RCC,CIV,2023-11-21,2024-05-18,,,,1.14.29.3.2(Civil Works)
8197,Erection,ERC,2024-05-19,2025-04-07,,,,1.14.29.3(Ball Mill Building and Ball Mills)
8198,Erection of Structure,ERC,2024-05-19,2024-12-14,,,,1.14.29.3.3(Erection)
8199,Erection of Wet Ball Mill,ERC,2024-10-20,2025-03-18,,,,1.14.29.3.3(Erection)
8200,Erection of Ball Mill Motor,ERC,2025-03-09,2025-04-07,,,,1.14.29.3.3(Erection)
8201,Commissioning,COM,2025-03-09,2025-05-07,,,,1.14.29.3(Ball Mill Building and Ball Mills)
8202,Day Silo,OTH,2022-09-27,2025-05-02,,,,1.14.29(FGD )
8203,Engineering &Supply,ENG,2022-09-27,2024-10-19,,,,1.14.29.4(Day Silo)
8204, FOUNDATION MATERIALS,SUP,2023-10-02,2024-01-29,,,,1.14.29.4.1(Engineering &Supply)
8205,Engineering,ENG,2023-10-02,2023-10-16,,,,1.14.29.4.1.1( FOUNDATION MATERIALS)
8206,Manufacturing,MFG,2023-10-17,2023-12-30,,,,1.14.29.4.1.1( FOUNDATION MATERIALS)
8207,Dispatch,DIS,2023-12-31,2024-01-29,,,,1.14.29.4.1.1( FOUNDATION MATERIALS)
8208,COLUMNS,SUP,2023-10-02,2024-03-14,,,,1.14.29.4.1(Engineering &Supply)
8209,Engineering,ENG,2023-10-02,2023-11-15,,,,1.14.29.4.1.2(COLUMNS)
8210,Manufacturing,MFG,2023-11-16,2024-02-13,,,,1.14.29.4.1.2(COLUMNS)
8211,Dispatch,DIS,2024-02-14,2024-03-14,,,,1.14.29.4.1.2(COLUMNS)
8212,BEAMS & BRACING,SUP,2023-11-16,2024-03-29,,,,1.14.29.4.1(Engineering &Supply)
8213,Engineering,ENG,2023-11-16,2023-12-15,,,,1.14.29.4.1.3(BEAMS & BRACING)
8214,Manufacturing,MFG,2023-12-16,2024-02-28,,,,1.14.29.4.1.3(BEAMS & BRACING)
8215,Dispatch,DIS,2024-02-29,2024-03-29,,,,1.14.29.4.1.3(BEAMS & BRACING)
8216,FLOOR & PLATFORMS,SUP,2023-11-16,2024-04-13,,,,1.14.29.4.1(Engineering &Supply)
8217,Engineering,ENG,2023-11-16,2023-12-30,,,,1.14.29.4.1.4(FLOOR & PLATFORMS)
8218,Manufacturing,MFG,2023-12-31,2024-03-14,,,,1.14.29.4.1.4(FLOOR & PLATFORMS)
8219,Dispatch,DIS,2024-03-15,2024-04-13,,,,1.14.29.4.1.4(FLOOR & PLATFORMS)
8220,WALL BEAMS,SUP,2023-11-16,2024-03-29,,,,1.14.29.4.1(Engineering &Supply)
8221,Engineering,ENG,2023-11-16,2023-12-30,,,,1.14.29.4.1.5(WALL BEAMS)
8222,Manufacturing,MFG,2023-12-31,2024-02-28,,,,1.14.29.4.1.5(WALL BEAMS)
8223,Dispatch,DIS,2024-02-29,2024-03-29,,,,1.14.29.4.1.5(WALL BEAMS)
8224,STAIRS,SUP,2023-11-16,2024-04-28,,,,1.14.29.4.1(Engineering &Supply)
8225,Engineering,ENG,2023-11-16,2023-12-30,,,,1.14.29.4.1.6(STAIRS)
8226,Manufacturing,MFG,2023-12-31,2024-03-29,,,,1.14.29.4.1.6(STAIRS)
8227,Dispatch,DIS,2024-03-30,2024-04-28,,,,1.14.29.4.1.6(STAIRS)
8228,MISC STRUCTURES,SUP,2023-12-16,2024-05-28,,,,1.14.29.4.1(Engineering &Supply)
8229,Engineering,ENG,2023-12-16,2024-01-29,,,,1.14.29.4.1.7(MISC STRUCTURES)
8230,Manufacturing,MFG,2024-01-30,2024-04-28,,,,1.14.29.4.1.7(MISC STRUCTURES)
8231,Dispatch,DIS,2024-04-29,2024-05-28,,,,1.14.29.4.1.7(MISC STRUCTURES)
8232, HYD- LIMESTONE DAY SILO AND ACCESSORIES,SUP,2022-09-27,2024-10-19,,,,1.14.29.4.1(Engineering &Supply)
8233,PROCUREMENT,ORD,2022-09-27,2023-12-25,,,,1.14.29.4.1.8( HYD- LIMESTONE DAY SILO AND ACCESSORIES)
8234,MANUFACTURING,MFG,2023-12-26,2024-06-02,,,,1.14.29.4.1.8( HYD- LIMESTONE DAY SILO AND ACCESSORIES)
8235,ASSEMBLY& TESTING,MFG,2024-06-03,2024-09-19,,,,1.14.29.4.1.8( HYD- LIMESTONE DAY SILO AND ACCESSORIES)
8236,Dispatch OF LIME STONE DAY SILO AND ACCESSORIES AND ALL ASSOCIATED ITEMS,DIS,2024-09-20,2024-10-19,,,,1.14.29.4.1.8( HYD- LIMESTONE DAY SILO AND ACCESSORIES)
8237, Civil Works,OTH,2023-09-02,2024-03-29,,,,1.14.29.4(Day Silo)
8238, RFC Civil foundation,PE - RFC,2023-09-02,2023-10-01,,,,1.14.29.4.2( Civil Works)
8239, RFC Superstructure drawing,PE - RFC,2023-10-02,2023-10-31,,,,1.14.29.4.2( Civil Works)
8240, Excavation,CIV,2023-10-02,2023-11-30,,,,1.14.29.4.2( Civil Works)
8241, RCC,CIV,2023-12-01,2024-03-29,,,,1.14.29.4.2( Civil Works)
8242,Erection,ERC,2024-03-30,2025-05-02,,,,1.14.29.4(Day Silo)
8243,Erection of Structure,ERC,2024-03-30,2024-08-26,,,,1.14.29.4.3(Erection)
8244,Erection of Silos,ERC,2024-10-20,2025-03-18,,,,1.14.29.4.3(Erection)
8245,Erection of Bag Filter,ERC,2025-03-19,2025-05-02,,,,1.14.29.4.3(Erection)
8246,Erection of Air Cannon,ERC,2025-03-19,2025-05-02,,,,1.14.29.4.3(Erection)
8247,Erection of Bucket Elevator,ERC,2024-08-27,2025-03-14,,,,1.14.29.4.3(Erection)
8248,LHS & GHS System,OTH,2022-11-26,2026-05-18,,,,1.14.29(FGD )
8249,Ordering & Engineering of LHS & GHS,ENG,2022-11-26,2023-10-21,,,,1.14.29.5(LHS & GHS System)
8250,Enquiry,ENQ,2022-11-26,2022-12-25,,,,1.14.29.5.1(Ordering & Engineering of LHS & GHS)
8251,Ordering,ORD,2022-12-26,2023-04-24,,,,1.14.29.5.1(Ordering & Engineering of LHS & GHS)
8252,Detailed Engineering,ENG,2023-04-25,2023-10-21,,,,1.14.29.5.1(Ordering & Engineering of LHS & GHS)
8253,Limestone Transfer Point-1,OTH,2023-02-24,2025-09-30,,,,1.14.29.5(LHS & GHS System)
8254,Equipment Dispatch,DIS,2024-04-19,2024-05-18,,,,1.14.29.5.2(Limestone Transfer Point-1)
8255,Dispatch,DIS,2024-04-19,2024-05-18,,,,1.14.29.5.2.1(Equipment Dispatch)
8256,Engineering &Supply of Structure,ENG,2023-02-24,2024-05-18,,,,1.14.29.5.2(Limestone Transfer Point-1)
8257, FOUNDATION MATERIALS LTP1,SUP,2023-10-22,2024-03-04,,,,1.14.29.5.2.2(Engineering &Supply of Structure)
8258,Engineering,ENG,2023-10-22,2023-11-05,,,,1.14.29.5.2.2.1( FOUNDATION MATERIALS LTP1)
8259,Manufacturing,MFG,2023-11-06,2024-02-03,,,,1.14.29.5.2.2.1( FOUNDATION MATERIALS LTP1)
8260,Dispatch,DIS,2024-02-04,2024-03-04,,,,1.14.29.5.2.2.1( FOUNDATION MATERIALS LTP1)
8261,LTP1 COLUMNS,SUP,2023-10-22,2024-05-18,,,,1.14.29.5.2.2(Engineering &Supply of Structure)
8262,Engineering,ENG,2023-10-22,2024-01-19,,,,1.14.29.5.2.2.2(LTP1 COLUMNS)
8263,Manufacturing,MFG,2024-01-20,2024-04-18,,,,1.14.29.5.2.2.2(LTP1 COLUMNS)
8264,Dispatch,DIS,2024-04-19,2024-05-18,,,,1.14.29.5.2.2.2(LTP1 COLUMNS)
8265,LTP1 BEAMS & BRACING,SUP,2023-10-22,2024-05-18,,,,1.14.29.5.2.2(Engineering &Supply of Structure)
8266,Engineering,ENG,2023-10-22,2024-01-19,,,,1.14.29.5.2.2.3(LTP1 BEAMS & BRACING)
8267,Manufacturing,MFG,2024-01-20,2024-04-18,,,,1.14.29.5.2.2.3(LTP1 BEAMS & BRACING)
8268,Dispatch,DIS,2024-04-19,2024-05-18,,,,1.14.29.5.2.2.3(LTP1 BEAMS & BRACING)
8269,LTP1 FLOOR & PLATFORMS,SUP,2023-10-22,2024-05-18,,,,1.14.29.5.2.2(Engineering &Supply of Structure)
8270,Engineering,ENG,2023-10-22,2024-01-19,,,,1.14.29.5.2.2.4(LTP1 FLOOR & PLATFORMS)
8271,Manufacturing,MFG,2024-01-20,2024-04-18,,,,1.14.29.5.2.2.4(LTP1 FLOOR & PLATFORMS)
8272,Dispatch,DIS,2024-04-19,2024-05-18,,,,1.14.29.5.2.2.4(LTP1 FLOOR & PLATFORMS)
8273, LTP1 WALL BEAMS,SUP,2023-10-22,2024-05-18,,,,1.14.29.5.2.2(Engineering &Supply of Structure)
8274,Engineering,ENG,2023-10-22,2024-01-19,,,,1.14.29.5.2.2.5( LTP1 WALL BEAMS)
8275,Manufacturing,MFG,2024-01-20,2024-04-18,,,,1.14.29.5.2.2.5( LTP1 WALL BEAMS)
8276,Dispatch,DIS,2024-04-19,2024-05-18,,,,1.14.29.5.2.2.5( LTP1 WALL BEAMS)
8277, LTP1 FASTENERS,SUP,2023-02-24,2023-12-12,,,,1.14.29.5.2.2(Engineering &Supply of Structure)
8278,Enquiry,ENQ,2023-02-24,2023-03-02,,,,1.14.29.5.2.2.6( LTP1 FASTENERS)
8279,Ordering,ORD,2023-03-03,2023-06-30,,,,1.14.29.5.2.2.6( LTP1 FASTENERS)
8280,Engineering,ENG,2023-07-01,2023-09-28,,,,1.14.29.5.2.2.6( LTP1 FASTENERS)
8281,Dispatch,DIS,2023-11-13,2023-12-12,,,,1.14.29.5.2.2.6( LTP1 FASTENERS)
8282, LTP1 STAIRS & LADDERS,SUP,2023-10-22,2024-05-18,,,,1.14.29.5.2.2(Engineering &Supply of Structure)
8283,Engineering,ENG,2023-10-22,2024-01-19,,,,1.14.29.5.2.2.7( LTP1 STAIRS & LADDERS)
8284,Manufacturing,MFG,2024-01-20,2024-04-18,,,,1.14.29.5.2.2.7( LTP1 STAIRS & LADDERS)
8285,Dispatch,DIS,2024-04-19,2024-05-18,,,,1.14.29.5.2.2.7( LTP1 STAIRS & LADDERS)
8286,LTP1 MISC STRUCTURES,SUP,2023-10-22,2024-05-18,,,,1.14.29.5.2.2(Engineering &Supply of Structure)
8287,Engineering,ENG,2023-10-22,2024-01-19,,,,1.14.29.5.2.2.8(LTP1 MISC STRUCTURES)
8288,Manufacturing,MFG,2024-01-20,2024-04-18,,,,1.14.29.5.2.2.8(LTP1 MISC STRUCTURES)
8289,Dispatch,DIS,2024-04-19,2024-05-18,,,,1.14.29.5.2.2.8(LTP1 MISC STRUCTURES)
8290,Civil Works,CIV,2023-02-24,2024-04-03,,,,1.14.29.5.2(Limestone Transfer Point-1)
8291,Engineering: Superstructure & Foundation,CIV,2023-02-24,2023-07-23,,,,1.14.29.5.2.3(Civil Works)
8292,Excavation,CIV,2023-07-24,2023-09-06,,,,1.14.29.5.2.3(Civil Works)
8293,RCC,CIV,2023-11-06,2024-04-03,,,,1.14.29.5.2.3(Civil Works)
8294,Erection,ERC,2024-05-19,2025-09-30,,,,1.14.29.5.2(Limestone Transfer Point-1)
8295,Erection of Structure,ERC,2024-05-19,2025-05-03,,,,1.14.29.5.2.4(Erection)
8296,Erection of Equipment,ERC,2024-10-16,2025-09-30,,,,1.14.29.5.2.4(Erection)
8297,ISG- Limestone Truck Tippler ,OTH,2023-02-24,2024-11-14,,,,1.14.29.5(LHS & GHS System)
8298,Equipment Dispatch,DIS,2024-07-18,2024-08-16,,,,1.14.29.5.3(ISG- Limestone Truck Tippler )
8299,Dispatch,DIS,2024-07-18,2024-08-16,,,,1.14.29.5.3.1(Equipment Dispatch)
8300,Civil Works,OTH,2023-02-24,2024-06-17,,,,1.14.29.5.3(ISG- Limestone Truck Tippler )
8301,Engineering: Foundation,CIV,2023-02-24,2023-04-24,,,,1.14.29.5.3.2(Civil Works)
8302,Excavation,CIV,2023-04-25,2023-06-23,,,,1.14.29.5.3.2(Civil Works)
8303,RCC,CIV,2023-06-24,2024-06-17,,,,1.14.29.5.3.2(Civil Works)
8304,Erection of Equipment,ERC,2024-08-17,2024-11-14,,,,1.14.29.5.3(ISG- Limestone Truck Tippler )
8305,ISG- Surface Feeder,OTH,2023-02-24,2024-10-25,,,,1.14.29.5(LHS & GHS System)
8306,Equipment Dispatch,DIS,2024-06-28,2024-07-27,,,,1.14.29.5.4(ISG- Surface Feeder)
8307,Dispatch,DIS,2024-06-28,2024-07-27,,,,1.14.29.5.4.1(Equipment Dispatch)
8308,Civil Works,OTH,2023-02-24,2023-10-21,,,,1.14.29.5.4(ISG- Surface Feeder)
8309,Engineering: Foundation,CIV,2023-02-24,2023-04-24,,,,1.14.29.5.4.2(Civil Works)
8310,Excavation,CIV,2023-04-25,2023-06-23,,,,1.14.29.5.4.2(Civil Works)
8311,RCC,CIV,2023-06-24,2023-10-21,,,,1.14.29.5.4.2(Civil Works)
8312,Erection of Equipment,ERC,2024-07-28,2024-10-25,,,,1.14.29.5.4(ISG- Surface Feeder)
8313, Belt Conveyor-1A/B,OTH,2023-06-24,2025-06-07,,,,1.14.29.5(LHS & GHS System)
8314,Equipment Dispatch,DIS,2024-04-19,2024-05-18,,,,1.14.29.5.5( Belt Conveyor-1A/B)
8315,LSBC1-Dispatch,DIS,2024-04-19,2024-05-18,,,,1.14.29.5.5.1(Equipment Dispatch)
8316,Engineering &Supply of Structure,ENG,2023-11-21,2024-08-01,,,,1.14.29.5.5( Belt Conveyor-1A/B)
8317,FOUNDATION MATERIALS CONVEYOR-LC-1A/B,SUP,2023-11-21,2024-04-03,,,,1.14.29.5.5.2(Engineering &Supply of Structure)
8318,Engineering,ENG,2023-11-21,2023-12-05,,,,1.14.29.5.5.2.1(FOUNDATION MATERIALS CONVEYOR-LC-1A/B)
8319,Manufacturing,MFG,2023-12-06,2024-03-04,,,,1.14.29.5.5.2.1(FOUNDATION MATERIALS CONVEYOR-LC-1A/B)
8320,Dispatch,DIS,2024-03-05,2024-04-03,,,,1.14.29.5.5.2.1(FOUNDATION MATERIALS CONVEYOR-LC-1A/B)
8321,CONVEYOR-LC-1A/B COLUMNS - TRESTLES,SUP,2023-12-06,2024-08-01,,,,1.14.29.5.5.2(Engineering &Supply of Structure)
8322,Engineering,ENG,2023-12-06,2024-03-04,,,,1.14.29.5.5.2.2(CONVEYOR-LC-1A/B COLUMNS - TRESTLES)
8323,Manufacturing,MFG,2024-03-05,2024-07-02,,,,1.14.29.5.5.2.2(CONVEYOR-LC-1A/B COLUMNS - TRESTLES)
8324,Dispatch,DIS,2024-07-03,2024-08-01,,,,1.14.29.5.5.2.2(CONVEYOR-LC-1A/B COLUMNS - TRESTLES)
8325, CONVEYOR-LC-1A/B BEAMS & BRACING,SUP,2023-12-11,2024-05-23,,,,1.14.29.5.5.2(Engineering &Supply of Structure)
8326,Engineering,ENG,2023-12-11,2024-01-24,,,,1.14.29.5.5.2.3( CONVEYOR-LC-1A/B BEAMS & BRACING)
8327,Manufacturing,MFG,2024-01-25,2024-04-23,,,,1.14.29.5.5.2.3( CONVEYOR-LC-1A/B BEAMS & BRACING)
8328,Dispatch,DIS,2024-04-24,2024-05-23,,,,1.14.29.5.5.2.3( CONVEYOR-LC-1A/B BEAMS & BRACING)
8329,CONVEYOR-LC-1A/B FLOOR & PLATFORMS,SUP,2023-12-16,2024-06-27,,,,1.14.29.5.5.2(Engineering &Supply of Structure)
8330,Engineering,ENG,2023-12-16,2024-01-29,,,,1.14.29.5.5.2.4(CONVEYOR-LC-1A/B FLOOR & PLATFORMS)
8331,Manufacturing,MFG,2024-01-30,2024-05-28,,,,1.14.29.5.5.2.4(CONVEYOR-LC-1A/B FLOOR & PLATFORMS)
8332,Dispatch,DIS,2024-05-29,2024-06-27,,,,1.14.29.5.5.2.4(CONVEYOR-LC-1A/B FLOOR & PLATFORMS)
8333,CONVEYOR-LC-1A/B STAIRS & LADDERS,SUP,2023-12-16,2024-04-28,,,,1.14.29.5.5.2(Engineering &Supply of Structure)
8334,Engineering,ENG,2023-12-16,2024-01-29,,,,1.14.29.5.5.2.5(CONVEYOR-LC-1A/B STAIRS & LADDERS)
8335,Manufacturing,MFG,2024-01-30,2024-03-29,,,,1.14.29.5.5.2.5(CONVEYOR-LC-1A/B STAIRS & LADDERS)
8336,Dispatch,DIS,2024-03-30,2024-04-28,,,,1.14.29.5.5.2.5(CONVEYOR-LC-1A/B STAIRS & LADDERS)
8337,CONVEYOR-LC-1A/B MISC STRUCTURES,SUP,2023-12-21,2024-04-03,,,,1.14.29.5.5.2(Engineering &Supply of Structure)
8338,Engineering,ENG,2023-12-21,2024-01-19,,,,1.14.29.5.5.2.6(CONVEYOR-LC-1A/B MISC STRUCTURES)
8339,Manufacturing,MFG,2024-01-20,2024-03-04,,,,1.14.29.5.5.2.6(CONVEYOR-LC-1A/B MISC STRUCTURES)
8340,Dispatch,DIS,2024-03-05,2024-04-03,,,,1.14.29.5.5.2.6(CONVEYOR-LC-1A/B MISC STRUCTURES)
8341,Civil Works,CIV,2023-06-24,2024-05-03,,,,1.14.29.5.5( Belt Conveyor-1A/B)
8342,Engineering: Foundation,PE - RFC,2023-06-24,2023-08-22,,,,1.14.29.5.5.3(Civil Works)
8343,Engineering: Superstructure,ENG,2023-07-24,2023-10-21,,,,1.14.29.5.5.3(Civil Works)
8344,Excavation,CIV,2023-08-23,2023-11-20,,,,1.14.29.5.5.3(Civil Works)
8345,RCC,CIV,2024-02-04,2024-05-03,,,,1.14.29.5.5.3(Civil Works)
8346,Erection,ERC,2024-05-04,2025-06-07,,,,1.14.29.5.5( Belt Conveyor-1A/B)
8347,Erection of Structure,ERC,2024-05-04,2024-11-19,,,,1.14.29.5.5.4(Erection)
8348,Erection of Equipment,ERC,2024-11-20,2025-06-07,,,,1.14.29.5.5.4(Erection)
8349,Limestone Crusher House,OTH,2023-06-24,2025-09-10,,,,1.14.29.5(LHS & GHS System)
8350,Equipment Dispatch,DIS,2024-04-19,2024-06-17,,,,1.14.29.5.6(Limestone Crusher House)
8351,Dispatch,DIS,2024-04-19,2024-06-17,,,,1.14.29.5.6.1(Equipment Dispatch)
8352,Engineering &Supply of Structure,ENG,2023-06-24,2023-12-20,,,,1.14.29.5.6(Limestone Crusher House)
8353, FOUNDATION MATERIALS,SUP,2023-06-24,2023-11-05,,,,1.14.29.5.6.2(Engineering &Supply of Structure)
8354,Engineering,ENG,2023-06-24,2023-07-08,,,,1.14.29.5.6.2.1( FOUNDATION MATERIALS)
8355,Manufacturing,MFG,2023-07-09,2023-10-06,,,,1.14.29.5.6.2.1( FOUNDATION MATERIALS)
8356,Dispatch,DIS,2023-10-07,2023-11-05,,,,1.14.29.5.6.2.1( FOUNDATION MATERIALS)
8357,COLUMNS,SUP,2023-06-24,2023-12-20,,,,1.14.29.5.6.2(Engineering &Supply of Structure)
8358,Engineering,ENG,2023-06-24,2023-07-23,,,,1.14.29.5.6.2.2(COLUMNS)
8359,Manufacturing,MFG,2023-07-24,2023-11-20,,,,1.14.29.5.6.2.2(COLUMNS)
8360,Dispatch,DIS,2023-11-21,2023-12-20,,,,1.14.29.5.6.2.2(COLUMNS)
8361,BEAMS & BRACING,SUP,2023-06-24,2023-11-20,,,,1.14.29.5.6.2(Engineering &Supply of Structure)
8362,Engineering,ENG,2023-06-24,2023-07-23,,,,1.14.29.5.6.2.3(BEAMS & BRACING)
8363,Manufacturing,MFG,2023-07-24,2023-10-21,,,,1.14.29.5.6.2.3(BEAMS & BRACING)
8364,Dispatch,DIS,2023-10-22,2023-11-20,,,,1.14.29.5.6.2.3(BEAMS & BRACING)
8365,FLOOR & PLATFORMS,SUP,2023-06-24,2023-11-20,,,,1.14.29.5.6.2(Engineering &Supply of Structure)
8366,Engineering,ENG,2023-06-24,2023-07-23,,,,1.14.29.5.6.2.4(FLOOR & PLATFORMS)
8367,Manufacturing,MFG,2023-07-24,2023-10-21,,,,1.14.29.5.6.2.4(FLOOR & PLATFORMS)
8368,Dispatch,DIS,2023-10-22,2023-11-20,,,,1.14.29.5.6.2.4(FLOOR & PLATFORMS)
8369,WALL BEAMS,SUP,2023-06-24,2023-11-20,,,,1.14.29.5.6.2(Engineering &Supply of Structure)
8370,Engineering,ENG,2023-06-24,2023-07-23,,,,1.14.29.5.6.2.5(WALL BEAMS)
8371,Manufacturing,MFG,2023-07-24,2023-10-21,,,,1.14.29.5.6.2.5(WALL BEAMS)
8372,Dispatch,DIS,2023-10-22,2023-11-20,,,,1.14.29.5.6.2.5(WALL BEAMS)
8373,STAIRS & LADDERS,SUP,2023-06-24,2023-10-21,,,,1.14.29.5.6.2(Engineering &Supply of Structure)
8374,Engineering,ENG,2023-06-24,2023-07-23,,,,1.14.29.5.6.2.6(STAIRS & LADDERS)
8375,Manufacturing,MFG,2023-07-24,2023-09-21,,,,1.14.29.5.6.2.6(STAIRS & LADDERS)
8376,Dispatch,DIS,2023-09-22,2023-10-21,,,,1.14.29.5.6.2.6(STAIRS & LADDERS)
8377,MISC STRUCTURES,SUP,2023-06-24,2023-10-06,,,,1.14.29.5.6.2(Engineering &Supply of Structure)
8378,Engineering,ENG,2023-06-24,2023-07-23,,,,1.14.29.5.6.2.7(MISC STRUCTURES)
8379,Manufacturing,MFG,2023-07-24,2023-09-06,,,,1.14.29.5.6.2.7(MISC STRUCTURES)
8380,Dispatch,DIS,2023-09-07,2023-10-06,,,,1.14.29.5.6.2.7(MISC STRUCTURES)
8381,Civil Works,CIV,2023-06-24,2024-04-18,,,,1.14.29.5.6(Limestone Crusher House)
8382,Engineering: Foundation,CIV,2023-06-24,2023-08-22,,,,1.14.29.5.6.3(Civil Works)
8383,Engineering: Superstructure,ENG,2023-08-23,2023-11-20,,,,1.14.29.5.6.3(Civil Works)
8384,Excavation,CIV,2023-08-23,2023-11-20,,,,1.14.29.5.6.3(Civil Works)
8385,RCC,CIV,2023-09-22,2024-04-18,,,,1.14.29.5.6.3(Civil Works)
8386,Erection of Structure,ERC,2024-04-19,2025-04-13,,,,1.14.29.5.6(Limestone Crusher House)
8387,Erection of Equipment,ERC,2025-04-14,2025-09-10,,,,1.14.29.5.6(Limestone Crusher House)
8388,Limestone Belt Feeder,OTH,2023-02-24,2025-03-04,,,,1.14.29.5(LHS & GHS System)
8389,Equipment Dispatch,DIS,2023-02-24,2024-12-04,,,,1.14.29.5.7(Limestone Belt Feeder)
8390,Ordering & Engineering,ENG,2024-05-09,2024-09-05,,,,1.14.29.5.7.1(Equipment Dispatch)
8391,Manufacturing,MFG,2023-02-24,2023-07-23,,,,1.14.29.5.7.1(Equipment Dispatch)
8392,Dispatch,DIS,2024-09-06,2024-12-04,,,,1.14.29.5.7.1(Equipment Dispatch)
8393,Equipment Dispatch,DIS,2024-12-05,2025-03-04,,,,1.14.29.5.7(Limestone Belt Feeder)
8394,Limestone Bulk Storage Silo and Bucket Elevator,OTH,2023-05-25,2025-11-04,,,,1.14.29.5(LHS & GHS System)
8395,Engineering &Supply,ENG,2023-07-24,2025-05-23,,,,1.14.29.5.8(Limestone Bulk Storage Silo and Bucket Elevator)
8396,FOUNDATION MATERIALS SILO STR,SUP,2023-07-24,2024-07-22,,,,1.14.29.5.8.1(Engineering &Supply)
8397,Engineering,ENG,2023-07-24,2023-11-15,,,,1.14.29.5.8.1.1(FOUNDATION MATERIALS SILO STR)
8398,Manufacturing,MFG,2023-11-16,2024-06-22,,,,1.14.29.5.8.1.1(FOUNDATION MATERIALS SILO STR)
8399,Dispatch,DIS,2024-06-23,2024-07-22,,,,1.14.29.5.8.1.1(FOUNDATION MATERIALS SILO STR)
8400,SILO STR COLUMNS,SUP,2023-07-24,2024-10-25,,,,1.14.29.5.8.1(Engineering &Supply)
8401,Engineering,ENG,2023-07-24,2024-02-18,,,,1.14.29.5.8.1.2(SILO STR COLUMNS)
8402,Manufacturing,MFG,2024-02-19,2024-09-25,,,,1.14.29.5.8.1.2(SILO STR COLUMNS)
8403,Dispatch,DIS,2024-09-26,2024-10-25,,,,1.14.29.5.8.1.2(SILO STR COLUMNS)
8404,SILO STR BEAMS & BRACING,SUP,2024-02-19,2025-05-23,,,,1.14.29.5.8.1(Engineering &Supply)
8405,Engineering,ENG,2024-02-19,2024-09-15,,,,1.14.29.5.8.1.3(SILO STR BEAMS & BRACING)
8406,Manufacturing,MFG,2024-09-16,2025-04-23,,,,1.14.29.5.8.1.3(SILO STR BEAMS & BRACING)
8407,Dispatch,DIS,2025-04-24,2025-05-23,,,,1.14.29.5.8.1.3(SILO STR BEAMS & BRACING)
8408,SILO STR FLOOR & PLATFORMS,SUP,2024-02-19,2025-05-23,,,,1.14.29.5.8.1(Engineering &Supply)
8409,Engineering,ENG,2024-02-19,2024-09-15,,,,1.14.29.5.8.1.4(SILO STR FLOOR & PLATFORMS)
8410,Manufacturing,MFG,2024-09-16,2025-04-23,,,,1.14.29.5.8.1.4(SILO STR FLOOR & PLATFORMS)
8411,Dispatch,DIS,2025-04-24,2025-05-23,,,,1.14.29.5.8.1.4(SILO STR FLOOR & PLATFORMS)
8412,SILO STR WALL BEAMS,SUP,2024-02-19,2025-05-23,,,,1.14.29.5.8.1(Engineering &Supply)
8413,Engineering,ENG,2024-02-19,2024-09-15,,,,1.14.29.5.8.1.5(SILO STR WALL BEAMS)
8414,Manufacturing,MFG,2024-09-16,2025-04-23,,,,1.14.29.5.8.1.5(SILO STR WALL BEAMS)
8415,Dispatch,DIS,2025-04-24,2025-05-23,,,,1.14.29.5.8.1.5(SILO STR WALL BEAMS)
8416,SILO STR STAIRS & LADDERS,SUP,2024-02-19,2025-05-23,,,,1.14.29.5.8.1(Engineering &Supply)
8417,Engineering,ENG,2024-02-19,2024-09-15,,,,1.14.29.5.8.1.6(SILO STR STAIRS & LADDERS)
8418,Manufacturing,MFG,2024-09-16,2025-04-23,,,,1.14.29.5.8.1.6(SILO STR STAIRS & LADDERS)
8419,Dispatch,DIS,2025-04-24,2025-05-23,,,,1.14.29.5.8.1.6(SILO STR STAIRS & LADDERS)
8420,SILO STR MISC STRUCTURES,SUP,2024-02-19,2025-05-23,,,,1.14.29.5.8.1(Engineering &Supply)
8421,Engineering,ENG,2024-02-19,2024-09-15,,,,1.14.29.5.8.1.7(SILO STR MISC STRUCTURES)
8422,Manufacturing,MFG,2024-09-16,2025-04-23,,,,1.14.29.5.8.1.7(SILO STR MISC STRUCTURES)
8423,Dispatch,DIS,2025-04-24,2025-05-23,,,,1.14.29.5.8.1.7(SILO STR MISC STRUCTURES)
8424,SILO SHELL,SUP,2024-02-19,2025-05-23,,,,1.14.29.5.8.1(Engineering &Supply)
8425,Engineering,ENG,2024-02-19,2024-09-15,,,,1.14.29.5.8.1.8(SILO SHELL)
8426,Manufacturing,MFG,2024-09-16,2025-04-23,,,,1.14.29.5.8.1.8(SILO SHELL)
8427,Dispatch,DIS,2025-04-24,2025-05-23,,,,1.14.29.5.8.1.8(SILO SHELL)
8428,Equipments,SUP,2023-07-24,2024-09-05,,,,1.14.29.5.8.1(Engineering &Supply)
8429,Engineering,ENG,2023-07-24,2023-09-21,,,,1.14.29.5.8.1.9(Equipments)
8430,Ordering,OTH,2023-09-22,2024-01-19,,,,1.14.29.5.8.1.9(Equipments)
8431,Manufacturing,MFG,2024-01-20,2024-08-06,,,,1.14.29.5.8.1.9(Equipments)
8432,Dispatch,DIS,2024-08-07,2024-09-05,,,,1.14.29.5.8.1.9(Equipments)
8433,Civil Works,CIV,2023-05-25,2024-08-21,,,,1.14.29.5.8(Limestone Bulk Storage Silo and Bucket Elevator)
8434,Engineering: Foundation,ENG,2023-05-25,2023-07-23,,,,1.14.29.5.8.2(Civil Works)
8435,Engineering: Superstructure,ENG,2023-06-09,2023-07-23,,,,1.14.29.5.8.2(Civil Works)
8436,Excavation,CIV,2023-07-24,2023-10-21,,,,1.14.29.5.8.2(Civil Works)
8437,RCC,CIV,2024-01-25,2024-08-21,,,,1.14.29.5.8.2(Civil Works)
8438,Erection,ERC,2024-11-10,2025-11-04,,,,1.14.29.5.8(Limestone Bulk Storage Silo and Bucket Elevator)
8439,Erection of Structure,ERC,2024-11-10,2025-07-07,,,,1.14.29.5.8.3(Erection)
8440,Erection of Equipment,ERC,2025-07-08,2025-11-04,,,,1.14.29.5.8.3(Erection)
8441,Limestone Bucket Elevator and Reversible Belt Feeder,OTH,2024-05-25,2024-12-30,,,,1.14.29.5(LHS & GHS System)
8442,Equipment Dispatch,DIS,2024-05-25,2024-09-01,,,,1.14.29.5.9(Limestone Bucket Elevator and Reversible Belt Feeder)
8443,Dispatch,DIS,2024-05-25,2024-09-01,,,,1.14.29.5.9.1(Equipment Dispatch)
8444,Erection of Equipment,ERC,2024-09-02,2024-12-30,,,,1.14.29.5.9(Limestone Bucket Elevator and Reversible Belt Feeder)
8445,Gypsum Conveyor-1A/B,OTH,2023-06-24,2025-09-30,,,,1.14.29.5(LHS & GHS System)
8446,Equipment Dispatch,DIS,2024-04-19,2024-06-17,,,,1.14.29.5.10(Gypsum Conveyor-1A/B)
8447,Dispatch,DIS,2024-04-19,2024-06-17,,,,1.14.29.5.10.1(Equipment Dispatch)
8448,Engineering &Supply of Structure,ENG,2023-06-24,2023-12-14,,,,1.14.29.5.10(Gypsum Conveyor-1A/B)
8449,FOUNDATION MATERIALSCONVEYOR-GC-1A/B,SUP,2023-06-24,2023-10-06,,,,1.14.29.5.10.2(Engineering &Supply of Structure)
8450,Engineering,ENG,2023-06-24,2023-07-08,,,,1.14.29.5.10.2.1(FOUNDATION MATERIALSCONVEYOR-GC-1A/B)
8451,Manufacturing,MFG,2023-07-09,2023-09-06,,,,1.14.29.5.10.2.1(FOUNDATION MATERIALSCONVEYOR-GC-1A/B)
8452,Dispatch,DIS,2023-09-07,2023-10-06,,,,1.14.29.5.10.2.1(FOUNDATION MATERIALSCONVEYOR-GC-1A/B)
8453,FX110 - CONVEYOR-GC-1A/B COLUMNS - TRESTLES,SUP,2023-06-24,2023-11-20,,,,1.14.29.5.10.2(Engineering &Supply of Structure)
8454,Engineering,ENG,2023-06-24,2023-07-23,,,,1.14.29.5.10.2.2(FX110 - CONVEYOR-GC-1A/B COLUMNS - TRESTLES)
8455,Manufacturing,MFG,2023-07-24,2023-10-21,,,,1.14.29.5.10.2.2(FX110 - CONVEYOR-GC-1A/B COLUMNS - TRESTLES)
8456,Dispatch,DIS,2023-10-22,2023-11-20,,,,1.14.29.5.10.2.2(FX110 - CONVEYOR-GC-1A/B COLUMNS - TRESTLES)
8457,FX210 - CONVEYOR-GC-1A/B BEAMS & BRACING,SUP,2023-06-24,2023-11-20,,,,1.14.29.5.10.2(Engineering &Supply of Structure)
8458,Engineering,ENG,2023-06-24,2023-07-23,,,,1.14.29.5.10.2.3(FX210 - CONVEYOR-GC-1A/B BEAMS & BRACING)
8459,Manufacturing,MFG,2023-07-24,2023-10-21,,,,1.14.29.5.10.2.3(FX210 - CONVEYOR-GC-1A/B BEAMS & BRACING)
8460,Dispatch,DIS,2023-10-22,2023-11-20,,,,1.14.29.5.10.2.3(FX210 - CONVEYOR-GC-1A/B BEAMS & BRACING)
8461,FX310 - CONVEYOR-GC-1A/B FLOOR & PLATFORMS,SUP,2023-06-24,2023-11-05,,,,1.14.29.5.10.2(Engineering &Supply of Structure)
8462,Engineering,ENG,2023-06-24,2023-07-23,,,,1.14.29.5.10.2.4(FX310 - CONVEYOR-GC-1A/B FLOOR & PLATFORMS)
8463,Manufacturing,MFG,2023-07-24,2023-10-06,,,,1.14.29.5.10.2.4(FX310 - CONVEYOR-GC-1A/B FLOOR & PLATFORMS)
8464,Dispatch,DIS,2023-10-07,2023-11-05,,,,1.14.29.5.10.2.4(FX310 - CONVEYOR-GC-1A/B FLOOR & PLATFORMS)
8465,FX710 - CONVEYOR-GC-1A/B FASTENERS,SUP,2023-07-04,2023-12-14,,,,1.14.29.5.10.2(Engineering &Supply of Structure)
8466,Enquiry,OTH,2023-07-04,2023-07-10,,,,1.14.29.5.10.2.5(FX710 - CONVEYOR-GC-1A/B FASTENERS)
8467,Ordering,OTH,2023-07-11,2023-09-08,,,,1.14.29.5.10.2.5(FX710 - CONVEYOR-GC-1A/B FASTENERS)
8468,Engineering,ENG,2023-09-09,2023-09-15,,,,1.14.29.5.10.2.5(FX710 - CONVEYOR-GC-1A/B FASTENERS)
8469,Dispatch,DIS,2023-11-15,2023-12-14,,,,1.14.29.5.10.2.5(FX710 - CONVEYOR-GC-1A/B FASTENERS)
8470,FX810 - CONVEYOR-GC-1A/B STAIRS & LADDERS,SUP,2023-07-14,2023-10-26,,,,1.14.29.5.10.2(Engineering &Supply of Structure)
8471,Engineering,ENG,2023-07-14,2023-08-12,,,,1.14.29.5.10.2.6(FX810 - CONVEYOR-GC-1A/B STAIRS & LADDERS)
8472,Manufacturing,MFG,2023-08-13,2023-09-26,,,,1.14.29.5.10.2.6(FX810 - CONVEYOR-GC-1A/B STAIRS & LADDERS)
8473,Dispatch,DIS,2023-09-27,2023-10-26,,,,1.14.29.5.10.2.6(FX810 - CONVEYOR-GC-1A/B STAIRS & LADDERS)
8474,FX910 - CONVEYOR-GC-1A/B MISC STRUCTURES,SUP,2023-07-24,2023-10-21,,,,1.14.29.5.10.2(Engineering &Supply of Structure)
8475,Engineering,ENG,2023-07-24,2023-08-07,,,,1.14.29.5.10.2.7(FX910 - CONVEYOR-GC-1A/B MISC STRUCTURES)
8476,Manufacturing,MFG,2023-08-08,2023-09-21,,,,1.14.29.5.10.2.7(FX910 - CONVEYOR-GC-1A/B MISC STRUCTURES)
8477,Dispatch,DIS,2023-09-22,2023-10-21,,,,1.14.29.5.10.2.7(FX910 - CONVEYOR-GC-1A/B MISC STRUCTURES)
8478,Civil Works,CIV,2023-11-21,2025-02-22,,,,1.14.29.5.10(Gypsum Conveyor-1A/B)
8479,Engineering: Foundation,PE - RFC,2023-11-21,2024-01-19,,,,1.14.29.5.10.3(Civil Works)
8480,Engineering: Superstructure,PE - RFC,2024-01-20,2024-04-18,,,,1.14.29.5.10.3(Civil Works)
8481,Excavation,CIV,2024-01-20,2024-03-19,,,,1.14.29.5.10.3(Civil Works)
8482,RCC,CIV,2024-11-15,2025-02-22,,,,1.14.29.5.10.3(Civil Works)
8483,Erection of Structure,ERC,2025-02-23,2025-06-22,,,,1.14.29.5.10(Gypsum Conveyor-1A/B)
8484,Erection of Equipment,ERC,2025-06-23,2025-09-30,,,,1.14.29.5.10(Gypsum Conveyor-1A/B)
8485,Gypsum Travelling Tripper/Gypsum Storage Shed,OTH,2023-05-25,2026-02-17,,,,1.14.29.5(LHS & GHS System)
8486,Equipment Dispatch,DIS,2024-07-14,2024-09-11,,,,1.14.29.5.11(Gypsum Travelling Tripper/Gypsum Storage Shed)
8487,Dispatch,DIS,2024-07-14,2024-09-11,,,,1.14.29.5.11.1(Equipment Dispatch)
8488,Engineering &Supply of Structure,ENG,2023-07-24,2024-12-29,,,,1.14.29.5.11(Gypsum Travelling Tripper/Gypsum Storage Shed)
8489,FX014 - FOUNDATION MATERIALSGYPSUM SHED,SUP,2023-07-24,2023-12-20,,,,1.14.29.5.11.2(Engineering &Supply of Structure)
8490,Engineering,ENG,2023-07-24,2023-08-22,,,,1.14.29.5.11.2.1(FX014 - FOUNDATION MATERIALSGYPSUM SHED)
8491,Manufacturing,MFG,2023-08-23,2023-11-20,,,,1.14.29.5.11.2.1(FX014 - FOUNDATION MATERIALSGYPSUM SHED)
8492,Dispatch,DIS,2023-11-21,2023-12-20,,,,1.14.29.5.11.2.1(FX014 - FOUNDATION MATERIALSGYPSUM SHED)
8493,FX140 - GYPSUM SHED COLUMNS,SUP,2023-07-24,2024-04-03,,,,1.14.29.5.11.2(Engineering &Supply of Structure)
8494,Engineering,ENG,2023-07-24,2023-09-06,,,,1.14.29.5.11.2.2(FX140 - GYPSUM SHED COLUMNS)
8495,Manufacturing,MFG,2023-09-07,2024-01-04,,,,1.14.29.5.11.2.2(FX140 - GYPSUM SHED COLUMNS)
8496,Dispatch,DIS,2024-01-05,2024-04-03,,,,1.14.29.5.11.2.2(FX140 - GYPSUM SHED COLUMNS)
8497,FX240 - GYPSUM SHED BEAMS & BRACING,SUP,2023-08-23,2024-05-03,,,,1.14.29.5.11.2(Engineering &Supply of Structure)
8498,Engineering,ENG,2023-08-23,2023-10-06,,,,1.14.29.5.11.2.3(FX240 - GYPSUM SHED BEAMS & BRACING)
8499,Manufacturing,MFG,2023-10-07,2024-02-03,,,,1.14.29.5.11.2.3(FX240 - GYPSUM SHED BEAMS & BRACING)
8500,Dispatch,DIS,2024-02-04,2024-05-03,,,,1.14.29.5.11.2.3(FX240 - GYPSUM SHED BEAMS & BRACING)
8501,FX340 - GYPSUM SHED FLOOR & PLATFORMS,SUP,2024-02-09,2024-08-21,,,,1.14.29.5.11.2(Engineering &Supply of Structure)
8502,Engineering,ENG,2024-02-09,2024-03-24,,,,1.14.29.5.11.2.4(FX340 - GYPSUM SHED FLOOR & PLATFORMS)
8503,Manufacturing,MFG,2024-03-25,2024-05-23,,,,1.14.29.5.11.2.4(FX340 - GYPSUM SHED FLOOR & PLATFORMS)
8504,Dispatch,DIS,2024-05-24,2024-08-21,,,,1.14.29.5.11.2.4(FX340 - GYPSUM SHED FLOOR & PLATFORMS)
8505,FX640 - GYPSUM SHED WALL BEAMS,SUP,2023-09-02,2024-05-28,,,,1.14.29.5.11.2(Engineering &Supply of Structure)
8506,Engineering,ENG,2023-09-02,2023-10-31,,,,1.14.29.5.11.2.5(FX640 - GYPSUM SHED WALL BEAMS)
8507,Manufacturing,MFG,2023-11-01,2024-02-28,,,,1.14.29.5.11.2.5(FX640 - GYPSUM SHED WALL BEAMS)
8508,Dispatch,DIS,2024-02-29,2024-05-28,,,,1.14.29.5.11.2.5(FX640 - GYPSUM SHED WALL BEAMS)
8509,FX740 - GYPSUM SHED FASTENERS,SUP,2023-09-07,2024-08-16,,,,1.14.29.5.11.2(Engineering &Supply of Structure)
8510,Enquiry,ENQ,2023-09-07,2023-10-21,,,,1.14.29.5.11.2.6(FX740 - GYPSUM SHED FASTENERS)
8511,Ordering,ORD,2023-10-22,2024-02-18,,,,1.14.29.5.11.2.6(FX740 - GYPSUM SHED FASTENERS)
8512,Engineering,ENG,2024-02-19,2024-05-18,,,,1.14.29.5.11.2.6(FX740 - GYPSUM SHED FASTENERS)
8513,Dispatch,DIS,2024-07-18,2024-08-16,,,,1.14.29.5.11.2.6(FX740 - GYPSUM SHED FASTENERS)
8514,FX840 - GYPSUM SHED STAIRS & LADDERS,SUP,2023-11-21,2024-08-16,,,,1.14.29.5.11.2(Engineering &Supply of Structure)
8515,Engineering,ENG,2023-11-21,2024-01-19,,,,1.14.29.5.11.2.7(FX840 - GYPSUM SHED STAIRS & LADDERS)
8516,Manufacturing,MFG,2024-01-20,2024-05-18,,,,1.14.29.5.11.2.7(FX840 - GYPSUM SHED STAIRS & LADDERS)
8517,Dispatch,DIS,2024-05-19,2024-08-16,,,,1.14.29.5.11.2.7(FX840 - GYPSUM SHED STAIRS & LADDERS)
8518,FX940 - GYPSUM SHED MISC STRUCTURES,SUP,2024-01-20,2024-12-29,,,,1.14.29.5.11.2(Engineering &Supply of Structure)
8519,Engineering,ENG,2024-01-20,2024-03-04,,,,1.14.29.5.11.2.8(FX940 - GYPSUM SHED MISC STRUCTURES)
8520,Manufacturing,MFG,2024-03-05,2024-08-31,,,,1.14.29.5.11.2.8(FX940 - GYPSUM SHED MISC STRUCTURES)
8521,Dispatch,DIS,2024-09-01,2024-12-29,,,,1.14.29.5.11.2.8(FX940 - GYPSUM SHED MISC STRUCTURES)
8522,Civil Works,CIV,2023-05-25,2025-02-22,,,,1.14.29.5.11(Gypsum Travelling Tripper/Gypsum Storage Shed)
8523,RFC Civil - Foundation,PE - RFC,2023-05-25,2023-07-23,,,,1.14.29.5.11.3(Civil Works)
8524,RFC Civil - Superstructure,PE - RFC,2023-05-25,2023-07-23,,,,1.14.29.5.11.3(Civil Works)
8525,Excavation,CIV,2023-12-21,2024-04-18,,,,1.14.29.5.11.3(Civil Works)
8526,GYPSUM SHED: RCC,CIV,2024-05-19,2025-02-22,,,,1.14.29.5.11.3(Civil Works)
8527,Erection of Structure,ERC,2025-02-23,2025-09-20,,,,1.14.29.5.11(Gypsum Travelling Tripper/Gypsum Storage Shed)
8528,Erection & Commissioning of Equipments,COM,2025-09-21,2026-02-17,,,,1.14.29.5.11(Gypsum Travelling Tripper/Gypsum Storage Shed)
8529,Pump House for LHP/ GHP,OTH,2024-02-19,2025-07-27,,,,1.14.29.5(LHS & GHS System)
8530,Equipment Dispatch,DIS,2024-04-19,2024-05-18,,,,1.14.29.5.12(Pump House for LHP/ GHP)
8531,Dispatch,DIS,2024-04-19,2024-05-18,,,,1.14.29.5.12.1(Equipment Dispatch)
8532,Civil Works ,CIV,2024-02-19,2025-01-28,,,,1.14.29.5.12(Pump House for LHP/ GHP)
8533,RFC Civil - Superstructure,PE - RFC,2024-02-19,2024-05-18,,,,1.14.29.5.12.2(Civil Works )
8534,RFC Civil - Foundation,PE - RFC,2024-05-19,2024-07-17,,,,1.14.29.5.12.2(Civil Works )
8535,Excavation,CIV,2024-07-18,2024-08-31,,,,1.14.29.5.12.2(Civil Works )
8536,RCC,CIV,2024-09-01,2025-01-28,,,,1.14.29.5.12.2(Civil Works )
8537,Erection of Equipment,ERC,2025-01-29,2025-07-27,,,,1.14.29.5.12(Pump House for LHP/ GHP)
8538,Weigh Bridge,OTH,2024-02-19,2024-10-15,,,,1.14.29.5(LHS & GHS System)
8539,Equipment Dispatch,DIS,2024-04-19,2024-05-18,,,,1.14.29.5.13(Weigh Bridge)
8540,Dispatch,DIS,2024-04-19,2024-05-18,,,,1.14.29.5.13.1(Equipment Dispatch)
8541,Civil Works of Weigh Bridge GHP,OTH,2024-02-19,2024-10-15,,,,1.14.29.5.13(Weigh Bridge)
8542,Weigh Bridge-GHP Foundation ,CIV,2024-02-19,2024-05-18,,,,1.14.29.5.13.2(Civil Works of Weigh Bridge GHP)
8543,Excavation,CIV,2024-05-19,2024-07-17,,,,1.14.29.5.13.2(Civil Works of Weigh Bridge GHP)
8544,RCC,CIV,2024-07-18,2024-10-15,,,,1.14.29.5.13.2(Civil Works of Weigh Bridge GHP)
8545,Civil Works of Weigh Bridge LHP,OTH,2024-02-19,2024-09-30,,,,1.14.29.5.13(Weigh Bridge)
8546,Weigh Bridge-GHP Foundation ,CIV,2024-02-19,2024-05-18,,,,1.14.29.5.13.3(Civil Works of Weigh Bridge LHP)
8547,Excavation,CIV,2024-05-19,2024-07-02,,,,1.14.29.5.13.3(Civil Works of Weigh Bridge LHP)
8548,RCC,CIV,2024-07-03,2024-09-30,,,,1.14.29.5.13.3(Civil Works of Weigh Bridge LHP)
8549,Erection of Equipment,ERC,2024-07-18,2024-10-15,,,,1.14.29.5.13(Weigh Bridge)
8550,Electrical and C&I Items,OTH,2024-04-19,2026-02-02,,,,1.14.29.5(LHS & GHS System)
8551,Equipment Dispatch,DIS,2024-04-19,2024-06-17,,,,1.14.29.5.14(Electrical and C&I Items)
8552,Dispatch,DIS,2024-04-19,2024-06-17,,,,1.14.29.5.14.1(Equipment Dispatch)
8553,Erection of Equipment,ERC,2025-10-06,2026-02-02,,,,1.14.29.5.14(Electrical and C&I Items)
8554,Misc./Auxiliary Systems,OTH,2024-02-19,2024-11-24,,,,1.14.29.5(LHS & GHS System)
8555,Equipment Dispatch,DIS,2024-02-19,2024-06-17,,,,1.14.29.5.15(Misc./Auxiliary Systems)
8556,Dispatch,DIS,2024-02-19,2024-06-17,,,,1.14.29.5.15.1(Equipment Dispatch)
8557,Erection of Equipment,ERC,2024-08-17,2024-11-24,,,,1.14.29.5.15(Misc./Auxiliary Systems)
8558,MCC building,OTH,2023-07-24,2025-03-04,,,,1.14.29.5(LHS & GHS System)
8559,Civil Works,OTH,2023-07-24,2024-08-16,,,,1.14.29.5.16(MCC building)
8560,Engineering: Foundation,CIV,2023-07-24,2023-09-21,,,,1.14.29.5.16.1(Civil Works)
8561,Engineering: Superstructure,ENG,2023-09-22,2023-11-20,,,,1.14.29.5.16.1(Civil Works)
8562,Excavation,CIV,2023-11-21,2023-12-20,,,,1.14.29.5.16.1(Civil Works)
8563,RCC,CIV,2023-12-21,2024-08-16,,,,1.14.29.5.16.1(Civil Works)
8564,Erection of Panels,ERC,2024-10-16,2025-03-04,,,,1.14.29.5.16(MCC building)
8565,Erection of panels,ERC,2024-10-16,2025-03-04,,,,1.14.29.5.16.2(Erection of Panels)
8566,Commissioning of Limestone handling & Crushing System,COM,2025-11-05,2026-02-02,,,,1.14.29.5(LHS & GHS System)
8567,Commissioning of Gypsum Handling System,COM,2026-02-18,2026-05-18,,,,1.14.29.5(LHS & GHS System)
8568,Pumps,OTH,2023-04-05,2024-04-18,,,,1.14.29(FGD )
8569,Engineering &Supply,ENG,2023-04-05,2023-11-18,,,,1.14.29.6(Pumps)
8570,"BOI-FW701  SLURRY PUMPS & ACCESSORIES(A,B,C&D)",SUP,2023-04-05,2023-11-18,,,FW701,1.14.29.6.1(Engineering &Supply)
8571,Ordering,ORD,2023-04-05,2023-06-23,,,FW701,"1.14.29.6.1.1(BOI-FW701  SLURRY PUMPS & ACCESSORIES(A,B,C&D))"
8572,Engineering,ENG,2023-06-24,2023-07-23,,,FW701,"1.14.29.6.1.1(BOI-FW701  SLURRY PUMPS & ACCESSORIES(A,B,C&D))"
8573,Manufacturing,MFG,2023-07-24,2023-10-19,,,FW701,"1.14.29.6.1.1(BOI-FW701  SLURRY PUMPS & ACCESSORIES(A,B,C&D))"
8574,Dispatch,DIS,2023-10-20,2023-11-18,,,FW701,"1.14.29.6.1.1(BOI-FW701  SLURRY PUMPS & ACCESSORIES(A,B,C&D))"
8575,BOI- FW702 -WATER PUMPS & ACCESSORIES,SUP,2023-04-15,2023-11-18,,,FW702,1.14.29.6.1(Engineering &Supply)
8576,Ordering,ORD,2023-04-15,2023-06-23,,,FW702,1.14.29.6.1.2(BOI- FW702 -WATER PUMPS & ACCESSORIES)
8577,Engineering,ENG,2023-06-24,2023-07-23,,,FW702,1.14.29.6.1.2(BOI- FW702 -WATER PUMPS & ACCESSORIES)
8578,Manufacturing,MFG,2023-07-24,2023-10-19,,,FW702,1.14.29.6.1.2(BOI- FW702 -WATER PUMPS & ACCESSORIES)
8579,Dispatch,DIS,2023-10-20,2023-11-18,,,FW702,1.14.29.6.1.2(BOI- FW702 -WATER PUMPS & ACCESSORIES)
8580,Civil Works,OTH,2023-08-23,2024-04-18,,,,1.14.29.6(Pumps)
8581,RFC MISC PUMPS-GA & RC DETAILS OF FOUNDATION,PE - RFC,2023-08-23,2023-10-21,,,,1.14.29.6.2(Civil Works)
8582,Excavation,CIV,2023-10-22,2023-11-20,,,,1.14.29.6.2(Civil Works)
8583,RCC,CIV,2023-11-21,2024-04-18,,,,1.14.29.6.2(Civil Works)
8584,Erection of Equipment,ERC,2023-12-19,2024-01-17,,,,1.14.29.6(Pumps)
8585,FW701 - SLURRY PUMPS & ACCESSORIES,ERC,2023-12-19,2024-01-17,,,FW701,1.14.29.6.3(Erection of Equipment)
8586,FW702 - WATER PUMPS & ACCESSORIES,ERC,2023-12-19,2024-01-17,,,FW702,1.14.29.6.3(Erection of Equipment)
8587,BOI-Tanks-PEM,OTH,2023-02-24,2025-08-11,,,,1.14.29(FGD )
8588,Engineering &Supply,ENG,2023-02-24,2024-12-24,,,,1.14.29.7(BOI-Tanks-PEM)
8589,Ordering,ORD,2023-02-24,2023-10-31,,,,1.14.29.7.1(Engineering &Supply)
8590,Detailed Engineering,ENG,2023-11-01,2024-04-28,,,,1.14.29.7.1(Engineering &Supply)
8591,Fabrication /Manufacturing,MFG,2024-04-29,2024-11-24,,,,1.14.29.7.1(Engineering &Supply)
8592,Dispatch of Primary Hydro Cyclone Feed Tank,DIS,2024-11-25,2024-12-24,,,,1.14.29.7.1(Engineering &Supply)
8593,Dispatch of Secondary Hydro Cyclone Feed Tank,DIS,2024-11-25,2024-12-24,,,,1.14.29.7.1(Engineering &Supply)
8594,Dispatch of AUXILIARY ABSORBENT TANK,DIS,2024-11-25,2024-12-24,,,,1.14.29.7.1(Engineering &Supply)
8595,Dispatch of Limestone Slurry storage Tank,DIS,2024-11-25,2024-12-24,,,,1.14.29.7.1(Engineering &Supply)
8596,Dispatch of FILTRATE WATER TANK,DIS,2024-11-25,2024-12-24,,,,1.14.29.7.1(Engineering &Supply)
8597,Dispatch of PROCES WATER TANK,DIS,2024-11-25,2024-12-24,,,,1.14.29.7.1(Engineering &Supply)
8598,Dispatch of WASTE WATER TANK,DIS,2024-11-25,2024-12-24,,,,1.14.29.7.1(Engineering &Supply)
8599,Dispatch of BELT WASH TANK,DIS,2024-11-25,2024-12-24,,,,1.14.29.7.1(Engineering &Supply)
8600,Dispatch of CAKE WASH TANK,DIS,2024-11-25,2024-12-24,,,,1.14.29.7.1(Engineering &Supply)
8601,Civil,CIV,2024-04-14,2024-06-12,,,,1.14.29.7(BOI-Tanks-PEM)
8602,PCE-51400 RFC PRIMARY Hydro CYCLONE FEED TANK: GA & RCC DETAILS OF FOUNDATION,CIV,2024-04-14,2024-06-12,,,,1.14.29.7.2(Civil)
8603,PCE-51400 RFC SECONDARY Hydro CYCLONE TANK: GA & RCC DETAILS OF FOUNDATION,CIV,2024-04-14,2024-06-12,,,,1.14.29.7.2(Civil)
8604,PCE-51400 RFC LIMESTONE SLURRY TANK: GA & RCC DETAILS OF FOUNDATION,CIV,2024-04-14,2024-06-12,,,,1.14.29.7.2(Civil)
8605,PCE-51400 RFC AUXILIARY ABSORBENT TANK: GA & RCC DETAILS OF FOUNDATION,CIV,2024-04-14,2024-06-12,,,,1.14.29.7.2(Civil)
8606,PCE-51400 RFC FILTRATE WATER TANK: GA & RCC DETAILS OF FOUNDATION,CIV,2024-04-14,2024-06-12,,,,1.14.29.7.2(Civil)
8607,PCE-51400 RFC WASTE WATER TANK: GA & RCC DETAILS OF FOUNDATION,CIV,2024-04-14,2024-06-12,,,,1.14.29.7.2(Civil)
8608,PCE-51400 RFC PROCESS WATER TANK: GA & RCC DETAILS OF FOUNDATION,CIV,2024-04-14,2024-06-12,,,,1.14.29.7.2(Civil)
8609,PCE-51400 RFC BELT FILTER WASHING TANKS: GA & RCC DETAILS OF FOUNDATION,CIV,2024-04-14,2024-06-12,,,,1.14.29.7.2(Civil)
8610,PCE-51400 RFC CLARIFIED WATER TANK: GA & RCC DETAILS OF FOUNDATION,CIV,2024-04-14,2024-06-12,,,,1.14.29.7.2(Civil)
8611,PCE-51400 RFC CAKE WASH TANK:  GA & RC DETAIL OF FOUNDATION,PE - RFC,2024-04-14,2024-06-12,,,,1.14.29.7.2(Civil)
8612,PCE-51400 RFC NEUTRALIZATION TANK:  GA & RC DETAIL OF FOUNDATION,PE - RFC,2024-04-14,2024-06-12,,,,1.14.29.7.2(Civil)
8613,PWI-13640 Data sheet & General Arrangement of Agitators,OTH,2024-04-14,2024-06-12,,,,1.14.29.7.2(Civil)
8614,Erection / Assembly,ERC,2024-12-25,2025-08-11,,,,1.14.29.7(BOI-Tanks-PEM)
8615,Primary Hydro cyclone feed tank,ERC,2025-01-24,2025-08-11,,,,1.14.29.7.3(Erection / Assembly)
8616,Secondary Hydro cyclone feed tank,ERC,2024-12-25,2025-07-12,,,,1.14.29.7.3(Erection / Assembly)
8617,Limestone Slurry Storage tank,ERC,2024-12-25,2025-07-12,,,,1.14.29.7.3(Erection / Assembly)
8618,Auxiliary Absorbent Tank,ERC,2024-12-25,2025-07-12,,,,1.14.29.7.3(Erection / Assembly)
8619,Filtrate Water Tank,ERC,2024-12-25,2025-07-12,,,,1.14.29.7.3(Erection / Assembly)
8620,Waste Water Tank,ERC,2024-12-25,2025-07-12,,,,1.14.29.7.3(Erection / Assembly)
8621,Process Water Tank,ERC,2024-12-25,2025-07-12,,,,1.14.29.7.3(Erection / Assembly)
8622,Belt Filter Wash Tank,ERC,2024-12-25,2025-07-12,,,,1.14.29.7.3(Erection / Assembly)
8623,Cake Wash  tank,ERC,2024-12-25,2025-07-12,,,,1.14.29.7.3(Erection / Assembly)
8624,Electrical Items,OTH,2023-08-23,2026-02-27,,,,1.14.29(FGD )
8625,Engineering &Supply,ENG,2023-08-23,2025-03-04,,,,1.14.29.8(Electrical Items)
8626,FW806 - CONTROL JUNCTION BOX,SUP,2023-09-12,2024-08-13,,,806,1.14.29.8.1(Engineering &Supply)
8627,Enquiry,ENQ,2023-09-12,2023-10-11,,,FW806,1.14.29.8.1.1(FW806 - CONTROL JUNCTION BOX)
8628,Ordering ,ORD,2023-10-12,2023-11-10,,,FW806,1.14.29.8.1.1(FW806 - CONTROL JUNCTION BOX)
8629,Engineering,ENG,2023-11-11,2024-02-06,,,FW806,1.14.29.8.1.1(FW806 - CONTROL JUNCTION BOX)
8630,Dispatch,DIS,2024-07-15,2024-08-13,,,FW806,1.14.29.8.1.1(FW806 - CONTROL JUNCTION BOX)
8631,FW807 - POWER JUNCTION BOX,SUP,2023-09-12,2024-07-14,,,807,1.14.29.8.1(Engineering &Supply)
8632,Enquiry,ENQ,2023-09-12,2023-10-11,,,FW807,1.14.29.8.1.2(FW807 - POWER JUNCTION BOX)
8633,Ordering ,ORD,2023-10-12,2023-11-10,,,FW807,1.14.29.8.1.2(FW807 - POWER JUNCTION BOX)
8634,Engineering,ENG,2023-11-11,2024-02-06,,,FW807,1.14.29.8.1.2(FW807 - POWER JUNCTION BOX)
8635,Dispatch,DIS,2024-06-15,2024-07-14,,,FW807,1.14.29.8.1.2(FW807 - POWER JUNCTION BOX)
8636,FW779 - SUPPORTS FOR CABLE TRAYS/CONTR,SUP,2023-09-12,2024-11-04,,,779,1.14.29.8.1(Engineering &Supply)
8637,Enquiry,ENQ,2023-09-12,2023-09-26,,,FW779,1.14.29.8.1.3(FW779 - SUPPORTS FOR CABLE TRAYS/CONTR)
8638,Ordering ,ORD,2023-09-27,2023-11-25,,,FW779,1.14.29.8.1.3(FW779 - SUPPORTS FOR CABLE TRAYS/CONTR)
8639,Engineering,ENG,2023-11-26,2024-02-08,,,FW779,1.14.29.8.1.3(FW779 - SUPPORTS FOR CABLE TRAYS/CONTR)
8640,Dispatch,DIS,2024-10-06,2024-11-04,,,FW779,1.14.29.8.1.3(FW779 - SUPPORTS FOR CABLE TRAYS/CONTR)
8641,FW841 - CONTROL VALVES,SUP,2023-10-02,2024-12-24,,,841,1.14.29.8.1(Engineering &Supply)
8642,Enquiry,ENQ,2023-10-02,2023-10-31,,,FW841,1.14.29.8.1.4(FW841 - CONTROL VALVES)
8643,Ordering ,ORD,2023-11-01,2023-12-30,,,FW841,1.14.29.8.1.4(FW841 - CONTROL VALVES)
8644,Engineering,ENG,2023-12-31,2024-03-29,,,FW841,1.14.29.8.1.4(FW841 - CONTROL VALVES)
8645,Dispatch,DIS,2024-11-25,2024-12-24,,,FW841,1.14.29.8.1.4(FW841 - CONTROL VALVES)
8646,Electrical - Balance BOIs,SUP,2023-08-23,2025-03-04,,,,1.14.29.8.1(Engineering &Supply)
8647,Enquiry,ENQ,2023-08-23,2023-09-21,,,,1.14.29.8.1.5(Electrical - Balance BOIs)
8648,Ordering ,ORD,2023-09-22,2023-11-20,,,,1.14.29.8.1.5(Electrical - Balance BOIs)
8649,Engineering,ENG,2023-11-21,2024-02-18,,,,1.14.29.8.1.5(Electrical - Balance BOIs)
8650,Dispatch,DIS,2024-12-05,2025-03-04,,,,1.14.29.8.1.5(Electrical - Balance BOIs)
8651," Balance BOIs- HOIST, VALVES, CHAIN PULLEY, COMMISSIONING SPARES etc.",SUP,2023-08-23,2025-03-04,,,,1.14.29.8(Electrical Items)
8652,Enquiry,ENQ,2023-08-23,2023-09-21,,,,"1.14.29.8.2( Balance BOIs- HOIST, VALVES, CHAIN PULLEY, COMMISSIONING SPARES etc.)"
8653,Ordering ,ORD,2023-09-22,2023-11-20,,,,"1.14.29.8.2( Balance BOIs- HOIST, VALVES, CHAIN PULLEY, COMMISSIONING SPARES etc.)"
8654,Engineering,ENG,2023-11-21,2024-02-18,,,,"1.14.29.8.2( Balance BOIs- HOIST, VALVES, CHAIN PULLEY, COMMISSIONING SPARES etc.)"
8655,Dispatch,DIS,2024-12-05,2025-03-04,,,,"1.14.29.8.2( Balance BOIs- HOIST, VALVES, CHAIN PULLEY, COMMISSIONING SPARES etc.)"
8656,"Electrical and C&I Erection works (Cable Tray, Cabling, termination, Earthing etc) & Pre-Commissioning",COM,2025-04-19,2026-02-27,,,,1.14.29.8(Electrical Items)
8657,Absorber,ERC,2025-09-19,2025-12-27,,,,"1.14.29.8.3(Electrical and C&I Erection works (Cable Tray, Cabling, termination, Earthing etc) & Pre-Commissioning)"
8658,Duct & Structure,ERC,2025-08-02,2025-12-29,,,,"1.14.29.8.3(Electrical and C&I Erection works (Cable Tray, Cabling, termination, Earthing etc) & Pre-Commissioning)"
8659,Gates & Dampers,ERC,2025-10-31,2026-02-27,,,,"1.14.29.8.3(Electrical and C&I Erection works (Cable Tray, Cabling, termination, Earthing etc) & Pre-Commissioning)"
8660,RC Pumps,ERC,2025-07-23,2025-09-20,,,,"1.14.29.8.3(Electrical and C&I Erection works (Cable Tray, Cabling, termination, Earthing etc) & Pre-Commissioning)"
8661,Oxidation Blower,ERC,2025-05-18,2025-07-16,,,,"1.14.29.8.3(Electrical and C&I Erection works (Cable Tray, Cabling, termination, Earthing etc) & Pre-Commissioning)"
8662,FGD Control Room,ERC,2025-05-24,2025-09-20,,,,"1.14.29.8.3(Electrical and C&I Erection works (Cable Tray, Cabling, termination, Earthing etc) & Pre-Commissioning)"
8663,Gypsum Dewatering System,ERC,2025-04-19,2025-07-17,,,,"1.14.29.8.3(Electrical and C&I Erection works (Cable Tray, Cabling, termination, Earthing etc) & Pre-Commissioning)"
8664,Agitators,ERC,2025-04-19,2025-06-17,,,,"1.14.29.8.3(Electrical and C&I Erection works (Cable Tray, Cabling, termination, Earthing etc) & Pre-Commissioning)"
8665,ACW System,ERC,2025-10-24,2026-01-21,,,,"1.14.29.8.3(Electrical and C&I Erection works (Cable Tray, Cabling, termination, Earthing etc) & Pre-Commissioning)"
8666,Compressor House,ERC,2025-04-19,2025-07-07,,,,"1.14.29.8.3(Electrical and C&I Erection works (Cable Tray, Cabling, termination, Earthing etc) & Pre-Commissioning)"
8667,Pumps,ERC,2025-04-19,2025-07-02,,,,"1.14.29.8.3(Electrical and C&I Erection works (Cable Tray, Cabling, termination, Earthing etc) & Pre-Commissioning)"
8668,Valves,ERC,2025-04-19,2025-07-02,,,,"1.14.29.8.3(Electrical and C&I Erection works (Cable Tray, Cabling, termination, Earthing etc) & Pre-Commissioning)"
8669, HT Motors,OTH,2023-06-24,2025-05-17,,,,1.14.29(FGD )
8670,Engineering and Supply,ENG,2023-06-24,2024-10-05,,,,1.14.29.9( HT Motors)
8671,RC PUMP MOTOR,OTH,2023-06-24,2024-09-05,,,,1.14.29.9.1(Engineering and Supply)
8672,Engineering,ENG,2023-06-24,2023-08-22,,,,1.14.29.9.1.1(RC PUMP MOTOR)
8673,Manufacturing,MFG,2023-08-23,2024-08-06,,,,1.14.29.9.1.1(RC PUMP MOTOR)
8674,Dispatch,DIS,2024-08-07,2024-09-05,,,,1.14.29.9.1.1(RC PUMP MOTOR)
8675,OXIDATION BLOWER MOTOR,SUP,2023-06-24,2024-10-05,,,,1.14.29.9.1(Engineering and Supply)
8676,Engineering,ENG,2023-06-24,2023-09-21,,,,1.14.29.9.1.2(OXIDATION BLOWER MOTOR)
8677,Manufacturing,MFG,2023-09-22,2024-09-05,,,,1.14.29.9.1.2(OXIDATION BLOWER MOTOR)
8678,Dispatch,DIS,2024-09-06,2024-10-05,,,,1.14.29.9.1.2(OXIDATION BLOWER MOTOR)
8679,Erection,ERC,2025-04-03,2025-05-17,,,,1.14.29.9( HT Motors)
8680,RC PUMP MOTOR,ERC,2025-04-03,2025-05-02,,,,1.14.29.9.2(Erection)
8681,OXIDATION BLOWER MOTOR,ERC,2025-04-18,2025-05-17,,,,1.14.29.9.2(Erection)
8682,Earthing,OTH,2023-03-26,2023-09-26,,,,1.14.29(FGD )
8683,Ordering,OTH,2023-03-26,2023-05-24,,,,1.14.29.10(Earthing)
8684,Engineering,ENG,2023-05-25,2023-07-23,,,,1.14.29.10(Earthing)
8685,Manufacturing,MFG,2023-06-29,2023-08-27,,,,1.14.29.10(Earthing)
8686,Dispatch,DIS,2023-08-28,2023-09-26,,,,1.14.29.10(Earthing)
8687,Sub Systems,OTH,2023-02-24,2025-12-28,,,,1.14.29(FGD )
8688,Absorber,OTH,2023-02-24,2025-12-28,,,,1.14.29.11(Sub Systems)
8689,Engineering and Supplies,ENG,2023-02-24,2025-10-15,,,,1.14.29.11.1(Absorber)
8690,Absorber-Structure,OTH,2023-02-24,2024-07-27,,,,1.14.29.11.1.1(Engineering and Supplies)
8691,FW226 - EQWT,SUP,2023-02-24,2024-01-31,,,FW226,1.14.29.11.1.1.1(Absorber-Structure)
8692,Engineering,ENG,2023-02-24,2023-07-15,,,FW226,1.14.29.11.1.1.1.1(FW226 - EQWT)
8693,Manufacturing,MFG,2023-07-16,2024-01-01,,,FW226,1.14.29.11.1.1.1.1(FW226 - EQWT)
8694,Dispatch,DIS,2023-12-03,2024-01-31,,,FW226,1.14.29.11.1.1.1.1(FW226 - EQWT)
8695,FW281 - FOUNDATION MATL FOR ABSORBER,SUP,2023-02-24,2024-01-01,,,FW281,1.14.29.11.1.1.1(Absorber-Structure)
8696,Engineering,ENG,2023-02-24,2023-07-15,,,FW281,1.14.29.11.1.1.1.2(FW281 - FOUNDATION MATL FOR ABSORBER)
8697,Manufacturing,MFG,2023-07-16,2023-12-02,,,FW281,1.14.29.11.1.1.1.2(FW281 - FOUNDATION MATL FOR ABSORBER)
8698,Dispatch,DIS,2023-11-03,2024-01-01,,,FW281,1.14.29.11.1.1.1.2(FW281 - FOUNDATION MATL FOR ABSORBER)
8699,FW285 - SUPRTING STR FOR EMERGENCY QWT,SUP,2023-02-24,2024-02-28,,,285,1.14.29.11.1.1.1(Absorber-Structure)
8700,Ordering,ORD,2023-02-24,2023-06-23,,,FW285,1.14.29.11.1.1.1.3(FW285 - SUPRTING STR FOR EMERGENCY QWT)
8701,Engineering,ENG,2023-04-25,2023-08-22,,,FW285,1.14.29.11.1.1.1.3(FW285 - SUPRTING STR FOR EMERGENCY QWT)
8702,Manufacturing,MFG,2023-08-23,2024-01-29,,,FW285,1.14.29.11.1.1.1.3(FW285 - SUPRTING STR FOR EMERGENCY QWT)
8703,Dispatch,DIS,2023-12-31,2024-02-28,,,FW285,1.14.29.11.1.1.1.3(FW285 - SUPRTING STR FOR EMERGENCY QWT)
8704,FW300 - ABSORBER COLUMN,SUP,2023-02-24,2024-03-29,,,300,1.14.29.11.1.1.1(Absorber-Structure)
8705,Engineering,ENG,2023-02-24,2023-10-12,,,FW300,1.14.29.11.1.1.1.4(FW300 - ABSORBER COLUMN)
8706,Manufacturing,MFG,2023-10-13,2024-02-28,,,FW300,1.14.29.11.1.1.1.4(FW300 - ABSORBER COLUMN)
8707,Dispatch,DIS,2024-01-30,2024-03-29,,,FW300,1.14.29.11.1.1.1.4(FW300 - ABSORBER COLUMN)
8708,FW301 - ABSORBER BEAM AND BRACINGS,SUP,2023-02-24,2024-03-30,,,301,1.14.29.11.1.1.1(Absorber-Structure)
8709,Engineering,ENG,2023-02-24,2023-09-12,,,FW301,1.14.29.11.1.1.1.5(FW301 - ABSORBER BEAM AND BRACINGS)
8710,Manufacturing,MFG,2023-09-13,2024-02-29,,,FW301,1.14.29.11.1.1.1.5(FW301 - ABSORBER BEAM AND BRACINGS)
8711,Dispatch,DIS,2024-01-31,2024-03-30,,,FW301,1.14.29.11.1.1.1.5(FW301 - ABSORBER BEAM AND BRACINGS)
8712,FW302 - ABSORBER LOWER FLOORS,SUP,2023-02-24,2024-03-30,,,302,1.14.29.11.1.1.1(Absorber-Structure)
8713,Engineering,ENG,2023-02-24,2023-09-12,,,FW302,1.14.29.11.1.1.1.6(FW302 - ABSORBER LOWER FLOORS)
8714,Manufacturing,MFG,2023-09-13,2024-02-29,,,FW302,1.14.29.11.1.1.1.6(FW302 - ABSORBER LOWER FLOORS)
8715,Dispatch,DIS,2024-01-31,2024-03-30,,,FW302,1.14.29.11.1.1.1.6(FW302 - ABSORBER LOWER FLOORS)
8716,FW303 - ABSORBER UPPER FLOORS,SUP,2023-02-24,2024-03-30,,,303,1.14.29.11.1.1.1(Absorber-Structure)
8717,Engineering,ENG,2023-02-24,2023-09-12,,,FW303,1.14.29.11.1.1.1.7(FW303 - ABSORBER UPPER FLOORS)
8718,Manufacturing,MFG,2023-09-13,2024-02-29,,,FW303,1.14.29.11.1.1.1.7(FW303 - ABSORBER UPPER FLOORS)
8719,Dispatch,DIS,2024-01-31,2024-03-30,,,FW303,1.14.29.11.1.1.1.7(FW303 - ABSORBER UPPER FLOORS)
8720,FW304 - ABSORBER FLOOR GRILLS,SUP,2023-02-24,2024-06-18,,,304,1.14.29.11.1.1.1(Absorber-Structure)
8721,Engineering,ENG,2023-02-24,2023-09-12,,,FW304,1.14.29.11.1.1.1.8(FW304 - ABSORBER FLOOR GRILLS)
8722,Manufacturing,MFG,2023-09-13,2024-05-19,,,FW304,1.14.29.11.1.1.1.8(FW304 - ABSORBER FLOOR GRILLS)
8723,Dispatch,DIS,2024-04-20,2024-06-18,,,FW304,1.14.29.11.1.1.1.8(FW304 - ABSORBER FLOOR GRILLS)
8724,FW305 - ABSORBER STAIR & HANDRAILS,SUP,2023-02-24,2024-07-27,,,305,1.14.29.11.1.1.1(Absorber-Structure)
8725,Ordering,ORD,2023-02-24,2023-06-23,,,FW305,1.14.29.11.1.1.1.9(FW305 - ABSORBER STAIR & HANDRAILS)
8726,Engineering,ENG,2023-04-25,2023-10-21,,,FW305,1.14.29.11.1.1.1.9(FW305 - ABSORBER STAIR & HANDRAILS)
8727,Manufacturing,MFG,2023-10-22,2024-06-27,,,FW305,1.14.29.11.1.1.1.9(FW305 - ABSORBER STAIR & HANDRAILS)
8728,Dispatch,DIS,2024-05-29,2024-07-27,,,FW305,1.14.29.11.1.1.1.9(FW305 - ABSORBER STAIR & HANDRAILS)
8729,FW306 - ABSORBER HSFG FASTNERS,SUP,2023-02-24,2024-06-27,,,306,1.14.29.11.1.1.1(Absorber-Structure)
8730,Engineering,ENG,2023-02-24,2023-10-21,,,FW306,1.14.29.11.1.1.1.10(FW306 - ABSORBER HSFG FASTNERS)
8731,Manufacturing,MFG,2023-10-22,2024-05-28,,,FW306,1.14.29.11.1.1.1.10(FW306 - ABSORBER HSFG FASTNERS)
8732,Dispatch,DIS,2024-04-29,2024-06-27,,,FW306,1.14.29.11.1.1.1.10(FW306 - ABSORBER HSFG FASTNERS)
8733,FW307 - ABSORBER MISCELLANEOUS,SUP,2023-02-24,2024-06-27,,,307,1.14.29.11.1.1.1(Absorber-Structure)
8734,Engineering,ENG,2023-02-24,2023-10-21,,,FW307,1.14.29.11.1.1.1.11(FW307 - ABSORBER MISCELLANEOUS)
8735,Manufacturing,MFG,2023-10-22,2024-05-28,,,FW307,1.14.29.11.1.1.1.11(FW307 - ABSORBER MISCELLANEOUS)
8736,Dispatch,DIS,2024-04-29,2024-06-27,,,FW307,1.14.29.11.1.1.1.11(FW307 - ABSORBER MISCELLANEOUS)
8737, Absorber Casing,OTH,2023-02-24,2024-06-27,,,,1.14.29.11.1.1(Engineering and Supplies)
8738,FW201-ABSORBER RC PUMP NOZZLE,SUP,2023-02-24,2024-06-27,,,201,1.14.29.11.1.1.2( Absorber Casing)
8739,Engineering,ENG,2023-02-24,2023-10-21,,,FW201,1.14.29.11.1.1.2.1(FW201-ABSORBER RC PUMP NOZZLE)
8740,Manufacturing,MFG,2023-10-22,2024-05-28,,,FW201,1.14.29.11.1.1.2.1(FW201-ABSORBER RC PUMP NOZZLE)
8741,Dispatch,DIS,2024-04-29,2024-06-27,,,FW201,1.14.29.11.1.1.2.1(FW201-ABSORBER RC PUMP NOZZLE)
8742,FW202-ABS NOZZLE NB300 & ABOVE,SUP,2023-02-24,2024-06-27,,,202,1.14.29.11.1.1.2( Absorber Casing)
8743,Engineering,ENG,2023-02-24,2023-10-21,,,FW202,1.14.29.11.1.1.2.2(FW202-ABS NOZZLE NB300 & ABOVE)
8744,Manufacturing,MFG,2023-10-22,2024-05-28,,,FW202,1.14.29.11.1.1.2.2(FW202-ABS NOZZLE NB300 & ABOVE)
8745,Dispatch,DIS,2024-04-29,2024-06-27,,,FW202,1.14.29.11.1.1.2.2(FW202-ABS NOZZLE NB300 & ABOVE)
8746,FW203-ABS NOZZLE NB 25 TO NB250,SUP,2023-02-24,2024-06-27,,,203,1.14.29.11.1.1.2( Absorber Casing)
8747,Engineering,ENG,2023-02-24,2023-10-21,,,FW203,1.14.29.11.1.1.2.3(FW203-ABS NOZZLE NB 25 TO NB250)
8748,Manufacturing,MFG,2023-10-22,2024-05-28,,,FW203,1.14.29.11.1.1.2.3(FW203-ABS NOZZLE NB 25 TO NB250)
8749,Dispatch,DIS,2024-04-29,2024-06-27,,,FW203,1.14.29.11.1.1.2.3(FW203-ABS NOZZLE NB 25 TO NB250)
8750,FW209-MANHOLE DOOR FOR ABSORBER,SUP,2023-02-24,2024-06-27,,,209,1.14.29.11.1.1.2( Absorber Casing)
8751,Engineering,ENG,2023-02-24,2023-10-21,,,FW209,1.14.29.11.1.1.2.4(FW209-MANHOLE DOOR FOR ABSORBER)
8752,Manufacturing,MFG,2023-10-22,2024-05-28,,,FW209,1.14.29.11.1.1.2.4(FW209-MANHOLE DOOR FOR ABSORBER)
8753,Dispatch,DIS,2024-04-29,2024-06-27,,,FW209,1.14.29.11.1.1.2.4(FW209-MANHOLE DOOR FOR ABSORBER)
8754,FW216-ABSORBER BAFFLE GRATING SUPPORT,SUP,2023-02-24,2024-06-27,,,216,1.14.29.11.1.1.2( Absorber Casing)
8755,Engineering,ENG,2023-02-24,2023-10-21,,,FW216,1.14.29.11.1.1.2.5(FW216-ABSORBER BAFFLE GRATING SUPPORT)
8756,Manufacturing,MFG,2023-10-22,2024-05-28,,,FW216,1.14.29.11.1.1.2.5(FW216-ABSORBER BAFFLE GRATING SUPPORT)
8757,Dispatch,DIS,2024-04-29,2024-06-27,,,FW216,1.14.29.11.1.1.2.5(FW216-ABSORBER BAFFLE GRATING SUPPORT)
8758,FW217-ABSORBER ME SUPPORT,SUP,2023-02-24,2024-06-27,,,217,1.14.29.11.1.1.2( Absorber Casing)
8759,Engineering,ENG,2023-02-24,2023-10-21,,,FW217,1.14.29.11.1.1.2.6(FW217-ABSORBER ME SUPPORT)
8760,Manufacturing,MFG,2023-10-22,2024-05-28,,,FW217,1.14.29.11.1.1.2.6(FW217-ABSORBER ME SUPPORT)
8761,Dispatch,DIS,2024-04-29,2024-06-27,,,FW217,1.14.29.11.1.1.2.6(FW217-ABSORBER ME SUPPORT)
8762,FW218-ABSORBER SPRAY PIPE SUPPORT,SUP,2023-02-24,2024-06-27,,,218,1.14.29.11.1.1.2( Absorber Casing)
8763,Engineering,ENG,2023-02-24,2023-10-21,,,FW218,1.14.29.11.1.1.2.7(FW218-ABSORBER SPRAY PIPE SUPPORT)
8764,Manufacturing,MFG,2023-10-22,2024-05-28,,,FW218,1.14.29.11.1.1.2.7(FW218-ABSORBER SPRAY PIPE SUPPORT)
8765,Dispatch,DIS,2024-04-29,2024-06-27,,,FW218,1.14.29.11.1.1.2.7(FW218-ABSORBER SPRAY PIPE SUPPORT)
8766,FW219-ABSORBER SYSTEM-BASE,SUP,2023-02-24,2024-06-27,,,FW219,1.14.29.11.1.1.2( Absorber Casing)
8767,Engineering,ENG,2023-02-24,2023-10-21,,,FW219,1.14.29.11.1.1.2.8(FW219-ABSORBER SYSTEM-BASE)
8768,Manufacturing,MFG,2023-10-22,2024-05-28,,,FW219,1.14.29.11.1.1.2.8(FW219-ABSORBER SYSTEM-BASE)
8769,Dispatch,DIS,2024-04-29,2024-06-27,,,FW219,1.14.29.11.1.1.2.8(FW219-ABSORBER SYSTEM-BASE)
8770,FW221-ABSORBER SYSTEM-CASING BOTTOM,SUP,2023-02-24,2024-04-28,,,FW221,1.14.29.11.1.1.2( Absorber Casing)
8771,Engineering,ENG,2023-02-24,2023-10-21,,,FW221,1.14.29.11.1.1.2.9(FW221-ABSORBER SYSTEM-CASING BOTTOM)
8772,Manufacturing,MFG,2023-10-22,2024-03-29,,,FW221,1.14.29.11.1.1.2.9(FW221-ABSORBER SYSTEM-CASING BOTTOM)
8773,Dispatch,DIS,2024-02-29,2024-04-28,,,FW221,1.14.29.11.1.1.2.9(FW221-ABSORBER SYSTEM-CASING BOTTOM)
8774,FW222-ABSORBER SYSTEM-CASING TOP,SUP,2023-02-24,2024-04-28,,,FW222,1.14.29.11.1.1.2( Absorber Casing)
8775,Engineering,ENG,2023-02-24,2023-10-21,,,FW222,1.14.29.11.1.1.2.10(FW222-ABSORBER SYSTEM-CASING TOP)
8776,Manufacturing,MFG,2023-10-22,2024-03-29,,,FW222,1.14.29.11.1.1.2.10(FW222-ABSORBER SYSTEM-CASING TOP)
8777,Dispatch,DIS,2024-02-29,2024-04-28,,,FW222,1.14.29.11.1.1.2.10(FW222-ABSORBER SYSTEM-CASING TOP)
8778,FW224-ABSORBER LINING - C276,SUP,2023-02-24,2024-06-27,,,224,1.14.29.11.1.1.2( Absorber Casing)
8779,Engineering,ENG,2023-02-24,2023-10-21,,,FW224,1.14.29.11.1.1.2.11(FW224-ABSORBER LINING - C276)
8780,Manufacturing,MFG,2023-10-22,2024-05-28,,,FW224,1.14.29.11.1.1.2.11(FW224-ABSORBER LINING - C276)
8781,Dispatch,DIS,2024-04-29,2024-06-27,,,FW224,1.14.29.11.1.1.2.11(FW224-ABSORBER LINING - C276)
8782,FW228-ABSORBER-W/D INTERFACE- C276 zone,SUP,2023-02-24,2024-06-27,,,FW228,1.14.29.11.1.1.2( Absorber Casing)
8783,Engineering,ENG,2023-02-24,2023-10-21,,,FW228,1.14.29.11.1.1.2.12(FW228-ABSORBER-W/D INTERFACE- C276 zone)
8784,Manufacturing,MFG,2023-10-22,2024-05-28,,,FW228,1.14.29.11.1.1.2.12(FW228-ABSORBER-W/D INTERFACE- C276 zone)
8785,Dispatch,DIS,2024-04-29,2024-06-27,,,FW228,1.14.29.11.1.1.2.12(FW228-ABSORBER-W/D INTERFACE- C276 zone)
8786,FW328-ABSORBER-W/D INTERFACE- CS zone,SUP,2023-02-24,2024-06-27,,,328,1.14.29.11.1.1.2( Absorber Casing)
8787,Engineering,ENG,2023-02-24,2023-10-21,,,FW328,1.14.29.11.1.1.2.13(FW328-ABSORBER-W/D INTERFACE- CS zone)
8788,Manufacturing,MFG,2023-10-22,2024-05-28,,,FW328,1.14.29.11.1.1.2.13(FW328-ABSORBER-W/D INTERFACE- CS zone)
8789,Dispatch,DIS,2024-04-29,2024-06-27,,,FW328,1.14.29.11.1.1.2.13(FW328-ABSORBER-W/D INTERFACE- CS zone)
8790,FW231-ABSORBER SHEAR PLATE,SUP,2023-02-24,2024-06-27,,,231,1.14.29.11.1.1.2( Absorber Casing)
8791,Engineering,ENG,2023-02-24,2023-10-21,,,FW231,1.14.29.11.1.1.2.14(FW231-ABSORBER SHEAR PLATE)
8792,Manufacturing,MFG,2023-10-22,2024-05-28,,,FW231,1.14.29.11.1.1.2.14(FW231-ABSORBER SHEAR PLATE)
8793,Dispatch,DIS,2024-04-29,2024-06-27,,,FW231,1.14.29.11.1.1.2.14(FW231-ABSORBER SHEAR PLATE)
8794,FW322-ABSORBER SYSTEM-CASING INTERMEDIATE,SUP,2023-02-24,2024-04-28,,,322,1.14.29.11.1.1.2( Absorber Casing)
8795,Engineering,ENG,2023-02-24,2023-10-21,,,FW322,1.14.29.11.1.1.2.15(FW322-ABSORBER SYSTEM-CASING INTERMEDIATE)
8796,Manufacturing,MFG,2023-10-22,2024-03-29,,,FW322,1.14.29.11.1.1.2.15(FW322-ABSORBER SYSTEM-CASING INTERMEDIATE)
8797,Dispatch,DIS,2024-02-29,2024-04-28,,,FW322,1.14.29.11.1.1.2.15(FW322-ABSORBER SYSTEM-CASING INTERMEDIATE)
8798,FW324-HOOD OVER ABSORBER,SUP,2023-02-24,2024-04-28,,,324,1.14.29.11.1.1.2( Absorber Casing)
8799,Engineering,ENG,2023-02-24,2023-10-21,,,FW324,1.14.29.11.1.1.2.16(FW324-HOOD OVER ABSORBER)
8800,Manufacturing,MFG,2023-10-22,2024-03-29,,,FW324,1.14.29.11.1.1.2.16(FW324-HOOD OVER ABSORBER)
8801,Dispatch,DIS,2024-02-29,2024-04-28,,,FW324,1.14.29.11.1.1.2.16(FW324-HOOD OVER ABSORBER)
8802,FW227-EMERGENCY QUENCHING SYSTEM,SUP,2023-02-24,2024-06-27,,,FW227,1.14.29.11.1.1.2( Absorber Casing)
8803,Engineering,ENG,2023-02-24,2023-10-21,,,FW227,1.14.29.11.1.1.2.17(FW227-EMERGENCY QUENCHING SYSTEM)
8804,Manufacturing,MFG,2023-10-22,2024-05-28,,,FW227,1.14.29.11.1.1.2.17(FW227-EMERGENCY QUENCHING SYSTEM)
8805,Dispatch,DIS,2024-04-29,2024-06-27,,,FW227,1.14.29.11.1.1.2.17(FW227-EMERGENCY QUENCHING SYSTEM)
8806,FW229-W/D WASH SYSTEM,SUP,2023-02-24,2024-06-27,,,FW229,1.14.29.11.1.1.2( Absorber Casing)
8807,Engineering,ENG,2023-02-24,2023-10-21,,,FW229,1.14.29.11.1.1.2.18(FW229-W/D WASH SYSTEM)
8808,Manufacturing,MFG,2023-10-22,2024-05-28,,,FW229,1.14.29.11.1.1.2.18(FW229-W/D WASH SYSTEM)
8809,Dispatch,DIS,2024-04-29,2024-06-27,,,FW229,1.14.29.11.1.1.2.18(FW229-W/D WASH SYSTEM)
8810,Absorber Internals,SUP,2023-02-24,2024-08-11,,,,1.14.29.11.1.1(Engineering and Supplies)
8811,FW 215-SUBDELIVERY - MIST ELIMINATOR,SUP,2023-02-24,2024-06-07,,,215,1.14.29.11.1.1.3(Absorber Internals)
8812,Ordering,ORD,2023-02-24,2023-06-23,,,FW215,1.14.29.11.1.1.3.1(FW 215-SUBDELIVERY - MIST ELIMINATOR)
8813,Engineering,ENG,2023-04-25,2023-08-22,,,FW215,1.14.29.11.1.1.3.1(FW 215-SUBDELIVERY - MIST ELIMINATOR)
8814,Manufacturing,MFG,2023-08-23,2024-05-08,,,FW215,1.14.29.11.1.1.3.1(FW 215-SUBDELIVERY - MIST ELIMINATOR)
8815,Dispatch,DIS,2024-04-09,2024-06-07,,,FW215,1.14.29.11.1.1.3.1(FW 215-SUBDELIVERY - MIST ELIMINATOR)
8816, FW213- Absorber system ,SUP,2023-02-24,2024-08-11,,,FW213,1.14.29.11.1.1.3(Absorber Internals)
8817,Ordering,ORD,2023-02-24,2023-06-23,,,FW213,1.14.29.11.1.1.3.2( FW213- Absorber system )
8818,Engineering,ENG,2023-06-24,2023-10-21,,,FW213,1.14.29.11.1.1.3.2( FW213- Absorber system )
8819,Manufacturing,MFG,2023-10-22,2024-07-07,,,FW213,1.14.29.11.1.1.3.2( FW213- Absorber system )
8820,Dispatch,DIS,2024-06-13,2024-08-11,,,FW213,1.14.29.11.1.1.3.2( FW213- Absorber system )
8821,FW720-ABSORBER AGITATOR- BOI,SUP,2023-02-24,2024-05-28,,,FW720,1.14.29.11.1.1.3(Absorber Internals)
8822,Ordering,ORD,2023-02-24,2023-06-23,,,FW720,1.14.29.11.1.1.3.3(FW720-ABSORBER AGITATOR- BOI)
8823,Engineering,ENG,2023-04-25,2023-08-22,,,FW720,1.14.29.11.1.1.3.3(FW720-ABSORBER AGITATOR- BOI)
8824,Manufacturing,MFG,2023-08-23,2024-05-13,,,FW720,1.14.29.11.1.1.3.3(FW720-ABSORBER AGITATOR- BOI)
8825,Dispatch,DIS,2024-03-30,2024-05-28,,,FW720,1.14.29.11.1.1.3.3(FW720-ABSORBER AGITATOR- BOI)
8826,Absorber-Supporting systems,SUP,2023-02-24,2025-04-02,,,,1.14.29.11.1.1(Engineering and Supplies)
8827,RC Pump Shed,OTH,2023-04-10,2024-06-22,,,,1.14.29.11.1.1.4(Absorber-Supporting systems)
8828,Engineering &Supply,SUP,2023-04-10,2024-06-22,,,,1.14.29.11.1.1.4.1(RC Pump Shed)
8829,FW371 - HSFG BOLT-RC SHED-BOI,SUP,2023-09-12,2024-06-22,,,371,1.14.29.11.1.1.4.1.1(Engineering &Supply)
8830,Ordering,ORD,2023-09-12,2024-01-09,,,FW371,1.14.29.11.1.1.4.1.1.1(FW371 - HSFG BOLT-RC SHED-BOI)
8831,Engineering,ENG,2023-11-11,2024-01-24,,,FW371,1.14.29.11.1.1.4.1.1.1(FW371 - HSFG BOLT-RC SHED-BOI)
8832,Manufacturing,MFG,2024-01-25,2024-04-23,,,FW371,1.14.29.11.1.1.4.1.1.1(FW371 - HSFG BOLT-RC SHED-BOI)
8833,Dispatch,DIS,2024-04-24,2024-06-22,,,FW371,1.14.29.11.1.1.4.1.1.1(FW371 - HSFG BOLT-RC SHED-BOI)
8834,FW283 FOUNDATION MATERIAL & FW236 -STRUCTURES ,SUP,2023-07-24,2024-05-18,,,283 FOUNDATION MATERIAL & FW236,1.14.29.11.1.1.4.1.1(Engineering &Supply)
8835,Engineering,ENG,2023-07-24,2023-11-20,,,FW283,1.14.29.11.1.1.4.1.1.2(FW283 FOUNDATION MATERIAL & FW236 -STRUCTURES )
8836,Manufacturing,MFG,2023-11-21,2024-04-18,,,FW283,1.14.29.11.1.1.4.1.1.2(FW283 FOUNDATION MATERIAL & FW236 -STRUCTURES )
8837,Dispatch,DIS,2024-03-20,2024-05-18,,,FW283,1.14.29.11.1.1.4.1.1.2(FW283 FOUNDATION MATERIAL & FW236 -STRUCTURES )
8838,FW208- RC PUMP OXIDATION BLOWER SUPPORT,SUP,2023-05-25,2024-05-08,,,208,1.14.29.11.1.1.4.1.1(Engineering &Supply)
8839,Ordering,ORD,2023-05-25,2023-09-21,,,FW208,1.14.29.11.1.1.4.1.1.3(FW208- RC PUMP OXIDATION BLOWER SUPPORT)
8840,Engineering,ENG,2023-07-24,2023-11-10,,,FW208,1.14.29.11.1.1.4.1.1.3(FW208- RC PUMP OXIDATION BLOWER SUPPORT)
8841,Manufacturing,MFG,2023-11-11,2024-04-08,,,FW208,1.14.29.11.1.1.4.1.1.3(FW208- RC PUMP OXIDATION BLOWER SUPPORT)
8842,Dispatch,DIS,2024-03-10,2024-05-08,,,FW208,1.14.29.11.1.1.4.1.1.3(FW208- RC PUMP OXIDATION BLOWER SUPPORT)
8843,FW236- STRUCTURE FOR RC PUMP HOUSE,SUP,2023-04-10,2024-03-24,,,236,1.14.29.11.1.1.4.1.1(Engineering &Supply)
8844,Ordering,ORD,2023-04-10,2023-08-07,,,FW236,1.14.29.11.1.1.4.1.1.4(FW236- STRUCTURE FOR RC PUMP HOUSE)
8845,Engineering,ENG,2023-06-09,2023-09-26,,,FW236,1.14.29.11.1.1.4.1.1.4(FW236- STRUCTURE FOR RC PUMP HOUSE)
8846,Manufacturing,MFG,2023-09-27,2024-02-23,,,FW236,1.14.29.11.1.1.4.1.1.4(FW236- STRUCTURE FOR RC PUMP HOUSE)
8847,Dispatch,DIS,2024-01-25,2024-03-24,,,FW236,1.14.29.11.1.1.4.1.1.4(FW236- STRUCTURE FOR RC PUMP HOUSE)
8848,"Absorbers Duct, Duct Structure & Duct support",SUP,2023-02-24,2024-04-30,,,,1.14.29.11.1.1.4(Absorber-Supporting systems)
8849,FW207-OUTLET GUIDE VANE,SUP,2023-02-24,2024-03-30,,,207,"1.14.29.11.1.1.4.2(Absorbers Duct, Duct Structure & Duct support)"
8850,Engineering,ENG,2023-02-24,2023-09-12,,,FW207,1.14.29.11.1.1.4.2.1(FW207-OUTLET GUIDE VANE)
8851,Manufacturing,MFG,2023-09-13,2024-02-29,,,FW207,1.14.29.11.1.1.4.2.1(FW207-OUTLET GUIDE VANE)
8852,Dispatch,DIS,2024-01-31,2024-03-30,,,FW207,1.14.29.11.1.1.4.2.1(FW207-OUTLET GUIDE VANE)
8853,FW232-DUCT SUPPORT BTW BYPASS DUCT & BUF/GGH,SUP,2023-02-24,2024-03-30,,,232,"1.14.29.11.1.1.4.2(Absorbers Duct, Duct Structure & Duct support)"
8854,Engineering,ENG,2023-02-24,2023-09-12,,,FW232,1.14.29.11.1.1.4.2.2(FW232-DUCT SUPPORT BTW BYPASS DUCT & BUF/GGH)
8855,Manufacturing,MFG,2023-09-13,2024-02-29,,,FW232,1.14.29.11.1.1.4.2.2(FW232-DUCT SUPPORT BTW BYPASS DUCT & BUF/GGH)
8856,Dispatch,DIS,2024-01-31,2024-03-30,,,FW232,1.14.29.11.1.1.4.2.2(FW232-DUCT SUPPORT BTW BYPASS DUCT & BUF/GGH)
8857,FW234-DUCT SUPPORT B/T ABSORBER & STACK/BYPASS,SUP,2023-02-24,2024-03-30,,,234,"1.14.29.11.1.1.4.2(Absorbers Duct, Duct Structure & Duct support)"
8858,Engineering,ENG,2023-02-24,2023-09-12,,,FW234,1.14.29.11.1.1.4.2.3(FW234-DUCT SUPPORT B/T ABSORBER & STACK/BYPASS)
8859,Manufacturing,MFG,2023-09-13,2024-02-29,,,FW234,1.14.29.11.1.1.4.2.3(FW234-DUCT SUPPORT B/T ABSORBER & STACK/BYPASS)
8860,Dispatch,DIS,2024-01-31,2024-03-30,,,FW234,1.14.29.11.1.1.4.2.3(FW234-DUCT SUPPORT B/T ABSORBER & STACK/BYPASS)
8861,FW251-EXPANSION JOINT - METALLIC,SUP,2023-02-24,2024-03-30,,,FW251,"1.14.29.11.1.1.4.2(Absorbers Duct, Duct Structure & Duct support)"
8862,Engineering,ENG,2023-02-24,2023-09-12,,,FW251,1.14.29.11.1.1.4.2.4(FW251-EXPANSION JOINT - METALLIC)
8863,Manufacturing,MFG,2023-09-13,2024-02-29,,,FW251,1.14.29.11.1.1.4.2.4(FW251-EXPANSION JOINT - METALLIC)
8864,Dispatch,DIS,2024-01-31,2024-03-30,,,FW251,1.14.29.11.1.1.4.2.4(FW251-EXPANSION JOINT - METALLIC)
8865,FW252-EXPANSION JOINT - NON-METALLIC,SUP,2023-02-24,2024-03-30,,,252,"1.14.29.11.1.1.4.2(Absorbers Duct, Duct Structure & Duct support)"
8866,Engineering,ENG,2023-02-24,2023-09-12,,,FW252,1.14.29.11.1.1.4.2.5(FW252-EXPANSION JOINT - NON-METALLIC)
8867,Manufacturing,MFG,2023-09-13,2024-02-29,,,FW252,1.14.29.11.1.1.4.2.5(FW252-EXPANSION JOINT - NON-METALLIC)
8868,Dispatch,DIS,2024-01-31,2024-03-30,,,FW252,1.14.29.11.1.1.4.2.5(FW252-EXPANSION JOINT - NON-METALLIC)
8869,FW255-DUCT BETWEEN BYPASS AND BUF,SUP,2023-02-24,2024-03-30,,,255,"1.14.29.11.1.1.4.2(Absorbers Duct, Duct Structure & Duct support)"
8870,Engineering,ENG,2023-02-24,2023-09-12,,,FW255,1.14.29.11.1.1.4.2.6(FW255-DUCT BETWEEN BYPASS AND BUF)
8871,Manufacturing,MFG,2023-09-13,2024-02-29,,,FW255,1.14.29.11.1.1.4.2.6(FW255-DUCT BETWEEN BYPASS AND BUF)
8872,Dispatch,DIS,2024-01-31,2024-03-30,,,FW255,1.14.29.11.1.1.4.2.6(FW255-DUCT BETWEEN BYPASS AND BUF)
8873,FW257-DUCT BETWEEN ABSORBER AND BYPASS/STACK,SUP,2023-02-24,2024-03-30,,,257,"1.14.29.11.1.1.4.2(Absorbers Duct, Duct Structure & Duct support)"
8874,Engineering,ENG,2023-02-24,2023-09-12,,,FW257,1.14.29.11.1.1.4.2.7(FW257-DUCT BETWEEN ABSORBER AND BYPASS/STACK)
8875,Manufacturing,MFG,2023-09-13,2024-02-29,,,FW257,1.14.29.11.1.1.4.2.7(FW257-DUCT BETWEEN ABSORBER AND BYPASS/STACK)
8876,Dispatch,DIS,2024-01-31,2024-03-30,,,FW257,1.14.29.11.1.1.4.2.7(FW257-DUCT BETWEEN ABSORBER AND BYPASS/STACK)
8877,FW267-INSULATION MATERIALS FOR DUCT,SUP,2023-02-24,2024-03-30,,,FW267,"1.14.29.11.1.1.4.2(Absorbers Duct, Duct Structure & Duct support)"
8878,Engineering,ENG,2023-02-24,2023-09-12,,,FW267,1.14.29.11.1.1.4.2.8(FW267-INSULATION MATERIALS FOR DUCT)
8879,Manufacturing,MFG,2023-09-13,2024-02-29,,,FW267,1.14.29.11.1.1.4.2.8(FW267-INSULATION MATERIALS FOR DUCT)
8880,Dispatch,DIS,2024-01-31,2024-03-30,,,FW267,1.14.29.11.1.1.4.2.8(FW267-INSULATION MATERIALS FOR DUCT)
8881,FW268-FIXING COMPONENTS FOR DUCT,SUP,2023-02-24,2024-03-30,,,FW268,"1.14.29.11.1.1.4.2(Absorbers Duct, Duct Structure & Duct support)"
8882,Engineering,ENG,2023-02-24,2023-09-12,,,FW268,1.14.29.11.1.1.4.2.9(FW268-FIXING COMPONENTS FOR DUCT)
8883,Manufacturing,MFG,2023-09-13,2024-02-29,,,FW268,1.14.29.11.1.1.4.2.9(FW268-FIXING COMPONENTS FOR DUCT)
8884,Dispatch,DIS,2024-01-31,2024-03-30,,,FW268,1.14.29.11.1.1.4.2.9(FW268-FIXING COMPONENTS FOR DUCT)
8885,FW269-CLADDING SHEET FOR DUCT,SUP,2023-02-24,2024-03-30,,,269,"1.14.29.11.1.1.4.2(Absorbers Duct, Duct Structure & Duct support)"
8886,Engineering,ENG,2023-02-24,2023-09-12,,,FW269,1.14.29.11.1.1.4.2.10(FW269-CLADDING SHEET FOR DUCT)
8887,Manufacturing,MFG,2023-09-13,2024-02-29,,,FW269,1.14.29.11.1.1.4.2.10(FW269-CLADDING SHEET FOR DUCT)
8888,Dispatch,DIS,2024-01-31,2024-03-30,,,FW269,1.14.29.11.1.1.4.2.10(FW269-CLADDING SHEET FOR DUCT)
8889,FW260-DUCT STRUCTURE BETWEEN BYPASS AND BUF,SUP,2023-02-24,2024-03-30,,,260,"1.14.29.11.1.1.4.2(Absorbers Duct, Duct Structure & Duct support)"
8890,Engineering,ENG,2023-02-24,2023-09-12,,,FW260,1.14.29.11.1.1.4.2.11(FW260-DUCT STRUCTURE BETWEEN BYPASS AND BUF)
8891,Manufacturing,MFG,2023-09-13,2024-02-29,,,FW260,1.14.29.11.1.1.4.2.11(FW260-DUCT STRUCTURE BETWEEN BYPASS AND BUF)
8892,Dispatch,DIS,2024-01-31,2024-03-30,,,FW260,1.14.29.11.1.1.4.2.11(FW260-DUCT STRUCTURE BETWEEN BYPASS AND BUF)
8893,FW262-DUCT STRUCTURE B/T ABSORBER&STACK,SUP,2023-02-24,2024-03-30,,,262,"1.14.29.11.1.1.4.2(Absorbers Duct, Duct Structure & Duct support)"
8894,Engineering,ENG,2023-02-24,2023-09-12,,,FW262,1.14.29.11.1.1.4.2.12(FW262-DUCT STRUCTURE B/T ABSORBER&STACK)
8895,Manufacturing,MFG,2023-09-13,2024-02-29,,,FW262,1.14.29.11.1.1.4.2.12(FW262-DUCT STRUCTURE B/T ABSORBER&STACK)
8896,Dispatch,DIS,2024-01-31,2024-03-30,,,FW262,1.14.29.11.1.1.4.2.12(FW262-DUCT STRUCTURE B/T ABSORBER&STACK)
8897,FW280-FOUNDATION MATL FOR DUCT STRUCTURE,SUP,2023-02-24,2024-02-29,,,280,"1.14.29.11.1.1.4.2(Absorbers Duct, Duct Structure & Duct support)"
8898,Engineering,ENG,2023-02-24,2023-09-12,,,FW280,1.14.29.11.1.1.4.2.13(FW280-FOUNDATION MATL FOR DUCT STRUCTURE)
8899,Manufacturing,MFG,2023-09-13,2024-01-30,,,FW280,1.14.29.11.1.1.4.2.13(FW280-FOUNDATION MATL FOR DUCT STRUCTURE)
8900,Dispatch,DIS,2024-01-01,2024-02-29,,,FW280,1.14.29.11.1.1.4.2.13(FW280-FOUNDATION MATL FOR DUCT STRUCTURE)
8901,FW297-PLATFORM FOR DUCT,SUP,2023-02-24,2024-04-30,,,297,"1.14.29.11.1.1.4.2(Absorbers Duct, Duct Structure & Duct support)"
8902,Engineering,ENG,2023-02-24,2023-09-12,,,FW297,1.14.29.11.1.1.4.2.14(FW297-PLATFORM FOR DUCT)
8903,Manufacturing,MFG,2023-09-13,2024-03-31,,,FW297,1.14.29.11.1.1.4.2.14(FW297-PLATFORM FOR DUCT)
8904,Dispatch,DIS,2024-03-02,2024-04-30,,,FW297,1.14.29.11.1.1.4.2.14(FW297-PLATFORM FOR DUCT)
8905,FW298-PLATFORM FOR G&D,SUP,2023-02-24,2024-04-30,,,298,"1.14.29.11.1.1.4.2(Absorbers Duct, Duct Structure & Duct support)"
8906,Engineering,ENG,2023-02-24,2023-09-12,,,FW298,1.14.29.11.1.1.4.2.15(FW298-PLATFORM FOR G&D)
8907,Manufacturing,MFG,2023-09-13,2024-03-31,,,FW298,1.14.29.11.1.1.4.2.15(FW298-PLATFORM FOR G&D)
8908,Dispatch,DIS,2024-03-02,2024-04-30,,,FW298,1.14.29.11.1.1.4.2.15(FW298-PLATFORM FOR G&D)
8909,FW612-GALLERIES AND RAILINGS FOR DAMPERS,SUP,2023-02-24,2024-04-30,,,612,"1.14.29.11.1.1.4.2(Absorbers Duct, Duct Structure & Duct support)"
8910,Engineering,ENG,2023-02-24,2023-09-12,,,FW612,1.14.29.11.1.1.4.2.16(FW612-GALLERIES AND RAILINGS FOR DAMPERS)
8911,Manufacturing,MFG,2023-09-13,2024-03-31,,,FW612,1.14.29.11.1.1.4.2.16(FW612-GALLERIES AND RAILINGS FOR DAMPERS)
8912,Dispatch,DIS,2024-03-02,2024-04-30,,,FW612,1.14.29.11.1.1.4.2.16(FW612-GALLERIES AND RAILINGS FOR DAMPERS)
8913,FW 613-GALLERIES AND RAILINGS FOR DUCTS,SUP,2023-02-24,2024-04-30,,,613,"1.14.29.11.1.1.4.2(Absorbers Duct, Duct Structure & Duct support)"
8914,Engineering,ENG,2023-02-24,2023-09-12,,,FW613,1.14.29.11.1.1.4.2.17(FW 613-GALLERIES AND RAILINGS FOR DUCTS)
8915,Manufacturing,MFG,2023-09-13,2024-03-31,,,FW613,1.14.29.11.1.1.4.2.17(FW 613-GALLERIES AND RAILINGS FOR DUCTS)
8916,Dispatch,DIS,2024-03-02,2024-04-30,,,FW613,1.14.29.11.1.1.4.2.17(FW 613-GALLERIES AND RAILINGS FOR DUCTS)
8917,FW373-HSFG Bolt?Duct Struct,SUP,2023-02-24,2024-03-30,,,373,"1.14.29.11.1.1.4.2(Absorbers Duct, Duct Structure & Duct support)"
8918,Engineering,ENG,2023-02-24,2023-09-12,,,FW373,1.14.29.11.1.1.4.2.18(FW373-HSFG Bolt?Duct Struct)
8919,Manufacturing,MFG,2023-09-13,2024-02-29,,,FW373,1.14.29.11.1.1.4.2.18(FW373-HSFG Bolt?Duct Struct)
8920,Dispatch,DIS,2024-01-31,2024-03-30,,,FW373,1.14.29.11.1.1.4.2.18(FW373-HSFG Bolt?Duct Struct)
8921,HYD- ABSORBER SLURRY RECIRCULATION PUMP,SUP,2023-05-10,2025-03-18,,,,1.14.29.11.1.1.4(Absorber-Supporting systems)
8922,RC Pump-4 NOS,OTH,2023-05-10,2025-03-18,,,,1.14.29.11.1.1.4.3(HYD- ABSORBER SLURRY RECIRCULATION PUMP)
8923,ENGINEERING & PROCUREMENT,ORD,2023-05-10,2024-05-23,,,,1.14.29.11.1.1.4.3.1(RC Pump-4 NOS)
8924,MANUFACTURING,MFG,2024-05-24,2024-10-30,,,,1.14.29.11.1.1.4.3.1(RC Pump-4 NOS)
8925,ASSEMBLY& TESTING,MFG,2024-10-31,2025-02-16,,,,1.14.29.11.1.1.4.3.1(RC Pump-4 NOS)
8926,Dispatch OF ABSORBER SLURRY RECIRCULATION PUMP AND ALL ASSOCIATED ITEMS,DIS,2025-02-17,2025-03-18,,,,1.14.29.11.1.1.4.3.1(RC Pump-4 NOS)
8927,HYD-Oxidation blower,OTH,2023-05-25,2025-04-02,,,,1.14.29.11.1.1.4(Absorber-Supporting systems)
8928,"Oxidation Blower-A(100% Capacity, 1 Standby)",OTH,2023-05-25,2025-04-02,,,,1.14.29.11.1.1.4.4(HYD-Oxidation blower)
8929,ENGINEERING & PROCUREMENT,ORD,2023-05-25,2024-06-07,,,,"1.14.29.11.1.1.4.4.1(Oxidation Blower-A(100% Capacity, 1 Standby))"
8930,MANUFACTURING,MFG,2024-06-08,2024-11-14,,,,"1.14.29.11.1.1.4.4.1(Oxidation Blower-A(100% Capacity, 1 Standby))"
8931,ASSEMBLY& TESTING,MFG,2024-11-15,2025-03-03,,,,"1.14.29.11.1.1.4.4.1(Oxidation Blower-A(100% Capacity, 1 Standby))"
8932,Dispatch OF OXIDATION AIR BLOWER AND ALL ASSOCIATED ITEMS,DIS,2025-03-04,2025-04-02,,,,"1.14.29.11.1.1.4.4.1(Oxidation Blower-A(100% Capacity, 1 Standby))"
8933,Absorber Handling System,OTH,2023-02-24,2024-07-27,,,,1.14.29.11.1.1.4(Absorber-Supporting systems)
8934,FH990-ABSORBER ISLAND-HANDLING SYSTEM-BOI,SUP,2023-02-24,2024-07-27,,,,1.14.29.11.1.1.4.5(Absorber Handling System)
8935,Ordering,ORD,2023-02-24,2023-04-14,,,,1.14.29.11.1.1.4.5.1(FH990-ABSORBER ISLAND-HANDLING SYSTEM-BOI)
8936,Engineering,ENG,2023-04-15,2023-09-21,,,,1.14.29.11.1.1.4.5.1(FH990-ABSORBER ISLAND-HANDLING SYSTEM-BOI)
8937,Manufacturing,MFG,2023-09-22,2024-07-12,,,,1.14.29.11.1.1.4.5.1(FH990-ABSORBER ISLAND-HANDLING SYSTEM-BOI)
8938,Dispatch,DIS,2024-05-29,2024-07-27,,,,1.14.29.11.1.1.4.5.1(FH990-ABSORBER ISLAND-HANDLING SYSTEM-BOI)
8939,Absorber Piping &Valves,OTH,2023-02-24,2025-07-07,,,,1.14.29.11.1.1(Engineering and Supplies)
8940,"FW860-FRP PIPING (LS,GS)",SUP,2023-02-24,2024-03-29,,,860,1.14.29.11.1.1.5(Absorber Piping &Valves)
8941,Ordering,ORD,2023-02-24,2023-06-23,,,FW860,"1.14.29.11.1.1.5.1(FW860-FRP PIPING (LS,GS))"
8942,Engineering,ENG,2023-04-25,2023-08-22,,,FW860,"1.14.29.11.1.1.5.1(FW860-FRP PIPING (LS,GS))"
8943,Manufacturing,MFG,2023-08-23,2024-02-28,,,FW860,"1.14.29.11.1.1.5.1(FW860-FRP PIPING (LS,GS))"
8944,Dispatch,DIS,2024-01-30,2024-03-29,,,FW860,"1.14.29.11.1.1.5.1(FW860-FRP PIPING (LS,GS))"
8945,"FW861-CSRL PIPE-1 (GS,LS)",SUP,2023-02-24,2024-03-29,,,861,1.14.29.11.1.1.5(Absorber Piping &Valves)
8946,Ordering,ORD,2023-02-24,2023-06-23,,,FW861,"1.14.29.11.1.1.5.2(FW861-CSRL PIPE-1 (GS,LS))"
8947,Engineering,ENG,2023-04-25,2023-08-22,,,FW861,"1.14.29.11.1.1.5.2(FW861-CSRL PIPE-1 (GS,LS))"
8948,Manufacturing,MFG,2023-08-23,2024-02-28,,,FW861,"1.14.29.11.1.1.5.2(FW861-CSRL PIPE-1 (GS,LS))"
8949,Dispatch,DIS,2024-01-30,2024-03-29,,,FW861,"1.14.29.11.1.1.5.2(FW861-CSRL PIPE-1 (GS,LS))"
8950,"FW862-CSRL PIPE-2 (GS,LS)",SUP,2023-02-24,2024-06-07,,,862,1.14.29.11.1.1.5(Absorber Piping &Valves)
8951,Ordering,ORD,2023-02-24,2023-06-23,,,FW862,"1.14.29.11.1.1.5.3(FW862-CSRL PIPE-2 (GS,LS))"
8952,Engineering,ENG,2023-04-25,2023-08-22,,,FW862,"1.14.29.11.1.1.5.3(FW862-CSRL PIPE-2 (GS,LS))"
8953,Manufacturing,MFG,2023-08-23,2024-05-08,,,FW862,"1.14.29.11.1.1.5.3(FW862-CSRL PIPE-2 (GS,LS))"
8954,Dispatch,DIS,2024-04-09,2024-06-07,,,FW862,"1.14.29.11.1.1.5.3(FW862-CSRL PIPE-2 (GS,LS))"
8955,"FW863-CS PIPING (PW,CW,SW)",SUP,2023-02-24,2024-06-07,,,863,1.14.29.11.1.1.5(Absorber Piping &Valves)
8956,Ordering,ORD,2023-02-24,2023-06-23,,,FW863,"1.14.29.11.1.1.5.4(FW863-CS PIPING (PW,CW,SW))"
8957,Engineering,ENG,2023-04-25,2023-08-22,,,FW863,"1.14.29.11.1.1.5.4(FW863-CS PIPING (PW,CW,SW))"
8958,Manufacturing,MFG,2023-08-23,2024-05-08,,,FW863,"1.14.29.11.1.1.5.4(FW863-CS PIPING (PW,CW,SW))"
8959,Dispatch,DIS,2024-04-09,2024-06-07,,,FW863,"1.14.29.11.1.1.5.4(FW863-CS PIPING (PW,CW,SW))"
8960,FW864-SS PIPING (W/D),SUP,2023-02-24,2024-10-30,,,864,1.14.29.11.1.1.5(Absorber Piping &Valves)
8961,Engineering,ENG,2023-02-24,2023-10-21,,,FW864,1.14.29.11.1.1.5.5(FW864-SS PIPING (W/D))
8962,Manufacturing,MFG,2023-10-22,2024-09-30,,,FW864,1.14.29.11.1.1.5.5(FW864-SS PIPING (W/D))
8963,Dispatch,DIS,2024-09-01,2024-10-30,,,FW864,1.14.29.11.1.1.5.5(FW864-SS PIPING (W/D))
8964,"FW865-GI PIPING (IA, DW)",SUP,2023-02-24,2024-10-30,,,865,1.14.29.11.1.1.5(Absorber Piping &Valves)
8965,Engineering,ENG,2023-02-24,2023-10-21,,,FW865,"1.14.29.11.1.1.5.6(FW865-GI PIPING (IA, DW))"
8966,Manufacturing,MFG,2023-10-22,2024-09-30,,,FW865,"1.14.29.11.1.1.5.6(FW865-GI PIPING (IA, DW))"
8967,Dispatch,DIS,2024-09-01,2024-10-30,,,FW865,"1.14.29.11.1.1.5.6(FW865-GI PIPING (IA, DW))"
8968,FW866-FASTENERS CS & SS,SUP,2023-02-24,2024-10-30,,,866,1.14.29.11.1.1.5(Absorber Piping &Valves)
8969,Engineering,ENG,2023-02-24,2023-10-21,,,FW866,1.14.29.11.1.1.5.7(FW866-FASTENERS CS & SS)
8970,Manufacturing,MFG,2023-10-22,2024-09-30,,,FW866,1.14.29.11.1.1.5.7(FW866-FASTENERS CS & SS)
8971,Dispatch,DIS,2024-09-01,2024-10-30,,,FW866,1.14.29.11.1.1.5.7(FW866-FASTENERS CS & SS)
8972,"FW867-RUBBER GASKET, SHEET",SUP,2023-02-24,2024-10-30,,,867,1.14.29.11.1.1.5(Absorber Piping &Valves)
8973,Engineering,ENG,2023-02-24,2023-10-21,,,FW867,"1.14.29.11.1.1.5.8(FW867-RUBBER GASKET, SHEET)"
8974,Manufacturing,MFG,2023-10-22,2024-09-30,,,FW867,"1.14.29.11.1.1.5.8(FW867-RUBBER GASKET, SHEET)"
8975,Dispatch,DIS,2024-09-01,2024-10-30,,,FW867,"1.14.29.11.1.1.5.8(FW867-RUBBER GASKET, SHEET)"
8976,FW868-U-BOLTS,SUP,2023-02-24,2024-10-30,,,868,1.14.29.11.1.1.5(Absorber Piping &Valves)
8977,Engineering,ENG,2023-02-24,2023-10-21,,,FW868,1.14.29.11.1.1.5.9(FW868-U-BOLTS)
8978,Manufacturing,MFG,2023-10-22,2024-09-30,,,FW868,1.14.29.11.1.1.5.9(FW868-U-BOLTS)
8979,Dispatch,DIS,2024-09-01,2024-10-30,,,FW868,1.14.29.11.1.1.5.9(FW868-U-BOLTS)
8980,FW869-RUBBER EXP. BELLOWS,SUP,2023-02-24,2024-10-30,,,869,1.14.29.11.1.1.5(Absorber Piping &Valves)
8981,Engineering,ENG,2023-02-24,2023-10-21,,,FW869,1.14.29.11.1.1.5.10(FW869-RUBBER EXP. BELLOWS)
8982,Manufacturing,MFG,2023-10-22,2024-09-30,,,FW869,1.14.29.11.1.1.5.10(FW869-RUBBER EXP. BELLOWS)
8983,Dispatch,DIS,2024-09-01,2024-10-30,,,FW869,1.14.29.11.1.1.5.10(FW869-RUBBER EXP. BELLOWS)
8984,FW870-PIPING ACC.,SUP,2023-02-24,2024-10-30,,,870,1.14.29.11.1.1.5(Absorber Piping &Valves)
8985,Engineering,ENG,2023-02-24,2023-10-21,,,FW870,1.14.29.11.1.1.5.11(FW870-PIPING ACC.)
8986,Manufacturing,MFG,2023-10-22,2024-09-30,,,FW870,1.14.29.11.1.1.5.11(FW870-PIPING ACC.)
8987,Dispatch,DIS,2024-09-01,2024-10-30,,,FW870,1.14.29.11.1.1.5.11(FW870-PIPING ACC.)
8988,FW871-PIPING SUPPORT STRUCTURES,SUP,2023-02-24,2024-10-30,,,871,1.14.29.11.1.1.5(Absorber Piping &Valves)
8989,Engineering,ENG,2023-02-24,2023-10-21,,,FW871,1.14.29.11.1.1.5.12(FW871-PIPING SUPPORT STRUCTURES)
8990,Manufacturing,MFG,2023-10-22,2024-09-30,,,FW871,1.14.29.11.1.1.5.12(FW871-PIPING SUPPORT STRUCTURES)
8991,Dispatch,DIS,2024-09-01,2024-10-30,,,FW871,1.14.29.11.1.1.5.12(FW871-PIPING SUPPORT STRUCTURES)
8992,FW875-FRP PIPING (LOT-2),SUP,2023-02-24,2024-10-30,,,875,1.14.29.11.1.1.5(Absorber Piping &Valves)
8993,Engineering,ENG,2023-02-24,2023-10-21,,,FW875,1.14.29.11.1.1.5.13(FW875-FRP PIPING (LOT-2))
8994,Manufacturing,MFG,2023-10-22,2024-09-30,,,FW875,1.14.29.11.1.1.5.13(FW875-FRP PIPING (LOT-2))
8995,Dispatch,DIS,2024-09-01,2024-10-30,,,FW875,1.14.29.11.1.1.5.13(FW875-FRP PIPING (LOT-2))
8996,FW876-CSRL PIPIE-1 (LOT-2),SUP,2023-02-24,2024-10-30,,,876,1.14.29.11.1.1.5(Absorber Piping &Valves)
8997,Engineering,ENG,2023-02-24,2023-10-21,,,FW876,1.14.29.11.1.1.5.14(FW876-CSRL PIPIE-1 (LOT-2))
8998,Manufacturing,MFG,2023-10-22,2024-09-30,,,FW876,1.14.29.11.1.1.5.14(FW876-CSRL PIPIE-1 (LOT-2))
8999,Dispatch,DIS,2024-09-01,2024-10-30,,,FW876,1.14.29.11.1.1.5.14(FW876-CSRL PIPIE-1 (LOT-2))
9000,FW877-CS PIPING (LOT-2),SUP,2023-02-24,2024-10-30,,,877,1.14.29.11.1.1.5(Absorber Piping &Valves)
9001,Engineering,ENG,2023-02-24,2023-10-21,,,FW877,1.14.29.11.1.1.5.15(FW877-CS PIPING (LOT-2))
9002,Manufacturing,MFG,2023-10-22,2024-09-30,,,FW877,1.14.29.11.1.1.5.15(FW877-CS PIPING (LOT-2))
9003,Dispatch,DIS,2024-09-01,2024-10-30,,,FW877,1.14.29.11.1.1.5.15(FW877-CS PIPING (LOT-2))
9004,FW878-SS PIPING (LOT-2),SUP,2023-02-24,2024-10-30,,,878,1.14.29.11.1.1.5(Absorber Piping &Valves)
9005,Engineering,ENG,2023-02-24,2023-10-21,,,FW878,1.14.29.11.1.1.5.16(FW878-SS PIPING (LOT-2))
9006,Manufacturing,MFG,2023-10-22,2024-09-30,,,FW878,1.14.29.11.1.1.5.16(FW878-SS PIPING (LOT-2))
9007,Dispatch,DIS,2024-09-01,2024-10-30,,,FW878,1.14.29.11.1.1.5.16(FW878-SS PIPING (LOT-2))
9008,FW- Balance Valves & Commissioning spares,SUP,2023-11-01,2025-07-07,,,,1.14.29.11.1.1.5(Absorber Piping &Valves)
9009,Engineering,ENG,2023-11-01,2024-06-27,,,,1.14.29.11.1.1.5.17(FW- Balance Valves & Commissioning spares)
9010,Manufacturing,MFG,2024-06-28,2025-06-07,,,,1.14.29.11.1.1.5.17(FW- Balance Valves & Commissioning spares)
9011,Dispatch,DIS,2025-05-09,2025-07-07,,,,1.14.29.11.1.1.5.17(FW- Balance Valves & Commissioning spares)
9012,FW879-GI PIPING (LOT-2),SUP,2023-02-24,2024-10-30,,,879,1.14.29.11.1.1.5(Absorber Piping &Valves)
9013,Engineering,ENG,2023-02-24,2023-10-21,,,FW879,1.14.29.11.1.1.5.18(FW879-GI PIPING (LOT-2))
9014,Manufacturing,MFG,2023-10-22,2024-09-30,,,FW879,1.14.29.11.1.1.5.18(FW879-GI PIPING (LOT-2))
9015,Dispatch,DIS,2024-09-01,2024-10-30,,,FW879,1.14.29.11.1.1.5.18(FW879-GI PIPING (LOT-2))
9016,FW880-PIPING ACC (LOT-2),SUP,2023-02-24,2024-10-30,,,880,1.14.29.11.1.1.5(Absorber Piping &Valves)
9017,Engineering,ENG,2023-02-24,2023-10-21,,,FW880,1.14.29.11.1.1.5.19(FW880-PIPING ACC (LOT-2))
9018,Manufacturing,MFG,2023-10-22,2024-09-30,,,FW880,1.14.29.11.1.1.5.19(FW880-PIPING ACC (LOT-2))
9019,Dispatch,DIS,2024-09-01,2024-10-30,,,FW880,1.14.29.11.1.1.5.19(FW880-PIPING ACC (LOT-2))
9020,Absorber Elevator,SUP,2023-02-24,2025-09-16,,,,1.14.29.11.1.1(Engineering and Supplies)
9021,Ordering,ORD,2023-02-24,2023-04-15,,,,1.14.29.11.1.1.6(Absorber Elevator)
9022,Engineering,ENG,2023-04-16,2023-08-13,,,,1.14.29.11.1.1.6(Absorber Elevator)
9023,Manufacturing,MFG,2023-08-14,2024-05-19,,,,1.14.29.11.1.1.6(Absorber Elevator)
9024,Dispatch,DIS,2024-05-05,2024-11-20,,,,1.14.29.11.1.1.6(Absorber Elevator)
9025,FW282-FOUNDATION MATL FOR ELEVATOR,SUP,2024-05-05,2024-08-12,,,FW282,1.14.29.11.1.1.6.4(Dispatch)
9026,FW372-HSFG Bolt?Elevator Struct,SUP,2024-05-05,2024-11-20,,,372,1.14.29.11.1.1.6.4(Dispatch)
9027,FW380-Elevator Column,SUP,2024-05-05,2024-11-20,,,380,1.14.29.11.1.1.6.4(Dispatch)
9028,FW381-Elevator Beam and Bracing,SUP,2024-05-05,2024-11-20,,,381,1.14.29.11.1.1.6.4(Dispatch)
9029,FW382-Elevator Floors,SUP,2024-05-05,2024-11-20,,,382,1.14.29.11.1.1.6.4(Dispatch)
9030,FW383-Elevator Stair and Hand rail,SUP,2024-05-05,2024-11-20,,,383,1.14.29.11.1.1.6.4(Dispatch)
9031,FW384-Elevator Floor grill,SUP,2024-05-05,2024-11-20,,,384,1.14.29.11.1.1.6.4(Dispatch)
9032,FW385-Elevator M/c room & Guide,SUP,2024-05-05,2024-11-20,,,385,1.14.29.11.1.1.6.4(Dispatch)
9033,FW386-Inter-connecting platform to Abs,SUP,2024-05-05,2024-11-20,,,386,1.14.29.11.1.1.6.4(Dispatch)
9034,FW293- Elevators and Accessories,SUP,2024-05-05,2024-11-20,,,FW293,1.14.29.11.1.1.6.4(Dispatch)
9035,Erection and commissioning,ERC,2024-11-21,2025-09-16,,,,1.14.29.11.1.1.6(Absorber Elevator)
9036,"Absorber Consumables, Linings & Insulation, Casing etc.",SUP,2023-02-24,2025-10-15,,,,1.14.29.11.1.1(Engineering and Supplies)
9037,FL210-FIXING COMPONENTS FOR FGD SYSTEM,SUP,2023-11-01,2025-05-03,,,,"1.14.29.11.1.1.7(Absorber Consumables, Linings & Insulation, Casing etc.)"
9038,Engineering,ENG,2023-11-01,2024-06-27,,,,1.14.29.11.1.1.7.1(FL210-FIXING COMPONENTS FOR FGD SYSTEM)
9039,Manufacturing,MFG,2024-06-28,2025-04-03,,,,1.14.29.11.1.1.7.1(FL210-FIXING COMPONENTS FOR FGD SYSTEM)
9040,Dispatch,DIS,2025-03-05,2025-05-03,,,,1.14.29.11.1.1.7.1(FL210-FIXING COMPONENTS FOR FGD SYSTEM)
9041,FL221-MINERAL WOOL FOR FGD SYSTEM-BOI,SUP,2024-05-29,2025-09-29,,,,"1.14.29.11.1.1.7(Absorber Consumables, Linings & Insulation, Casing etc.)"
9042,Ordering,ORD,2024-05-29,2024-09-25,,,,1.14.29.11.1.1.7.2(FL221-MINERAL WOOL FOR FGD SYSTEM-BOI)
9043,Engineering,ENG,2024-07-28,2024-11-23,,,,1.14.29.11.1.1.7.2(FL221-MINERAL WOOL FOR FGD SYSTEM-BOI)
9044,Manufacturing,MFG,2024-11-24,2025-08-30,,,,1.14.29.11.1.1.7.2(FL221-MINERAL WOOL FOR FGD SYSTEM-BOI)
9045,Dispatch,DIS,2025-08-01,2025-09-29,,,,1.14.29.11.1.1.7.2(FL221-MINERAL WOOL FOR FGD SYSTEM-BOI)
9046,FL700-BULKED DD COMPONENTS FOR FGD SYSTEM,SUP,2024-04-14,2025-08-16,,,,"1.14.29.11.1.1.7(Absorber Consumables, Linings & Insulation, Casing etc.)"
9047,Ordering & Engineering,ORD,2024-04-14,2024-09-10,,,,1.14.29.11.1.1.7.3(FL700-BULKED DD COMPONENTS FOR FGD SYSTEM)
9048,Manufacturing,MFG,2024-09-11,2025-07-17,,,,1.14.29.11.1.1.7.3(FL700-BULKED DD COMPONENTS FOR FGD SYSTEM)
9049,Dispatch,DIS,2025-06-18,2025-08-16,,,,1.14.29.11.1.1.7.3(FL700-BULKED DD COMPONENTS FOR FGD SYSTEM)
9050,FL701-BPS FASTENERS FOR FGD SYSTEM,SUP,2024-04-14,2025-10-15,,,,"1.14.29.11.1.1.7(Absorber Consumables, Linings & Insulation, Casing etc.)"
9051,Engineering,ENG,2024-04-14,2024-12-09,,,,1.14.29.11.1.1.7.4(FL701-BPS FASTENERS FOR FGD SYSTEM)
9052,Manufacturing,MFG,2024-12-10,2025-09-15,,,,1.14.29.11.1.1.7.4(FL701-BPS FASTENERS FOR FGD SYSTEM)
9053,Dispatch,DIS,2025-08-17,2025-10-15,,,,1.14.29.11.1.1.7.4(FL701-BPS FASTENERS FOR FGD SYSTEM)
9054,FL810-OUTER CASING FOR FGD SYSTEM-BOI,SUP,2023-02-24,2024-07-27,,,,"1.14.29.11.1.1.7(Absorber Consumables, Linings & Insulation, Casing etc.)"
9055,Ordering,ORD,2023-02-24,2023-06-23,,,,1.14.29.11.1.1.7.5(FL810-OUTER CASING FOR FGD SYSTEM-BOI)
9056,Engineering,ENG,2023-04-25,2023-08-22,,,,1.14.29.11.1.1.7.5(FL810-OUTER CASING FOR FGD SYSTEM-BOI)
9057,Manufacturing,MFG,2023-08-23,2024-06-27,,,,1.14.29.11.1.1.7.5(FL810-OUTER CASING FOR FGD SYSTEM-BOI)
9058,Dispatch,DIS,2024-05-29,2024-07-27,,,,1.14.29.11.1.1.7.5(FL810-OUTER CASING FOR FGD SYSTEM-BOI)
9059,FZ990-SPECIAL WELDING ELECTRODE,SUP,2023-02-24,2024-04-03,,,,"1.14.29.11.1.1.7(Absorber Consumables, Linings & Insulation, Casing etc.)"
9060,Engineering,ENG,2023-02-24,2023-10-21,,,,1.14.29.11.1.1.7.6(FZ990-SPECIAL WELDING ELECTRODE)
9061,Manufacturing,MFG,2023-10-22,2024-03-04,,,,1.14.29.11.1.1.7.6(FZ990-SPECIAL WELDING ELECTRODE)
9062,Dispatch,DIS,2024-02-04,2024-04-03,,,,1.14.29.11.1.1.7.6(FZ990-SPECIAL WELDING ELECTRODE)
9063,Civil Works,OTH,2023-08-23,2024-12-11,,,,1.14.29.11.1(Absorber)
9064,Absorber-Main structure,OTH,2024-01-02,2024-10-22,,,,1.14.29.11.1.2(Civil Works)
9065,RFC Civil,PE - RFC,2024-01-02,2024-02-05,,,,1.14.29.11.1.2.1(Absorber-Main structure)
9066,Excavation,CIV,2024-02-06,2024-04-25,,,,1.14.29.11.1.2.1(Absorber-Main structure)
9067,RCC,CIV,2024-04-26,2024-10-22,,,,1.14.29.11.1.2.1(Absorber-Main structure)
9068,Absorber-Supporting systems,OTH,2024-02-21,2024-12-11,,,,1.14.29.11.1.2(Civil Works)
9069,RFC of RC Pump foundation drawing,PE - RFC,2024-02-21,2024-03-21,,,,1.14.29.11.1.2.2(Absorber-Supporting systems)
9070,RCC,CIV,2024-06-15,2024-07-14,,,,1.14.29.11.1.2.2(Absorber-Supporting systems)
9071,RFC of Oxidation Blower foundation drawing,PE - RFC,2024-02-26,2024-03-26,,,,1.14.29.11.1.2.2(Absorber-Supporting systems)
9072,RCC,CIV,2024-06-15,2024-12-11,,,,1.14.29.11.1.2.2(Absorber-Supporting systems)
9073,RC PUMP Shed,CIV,2023-08-23,2024-09-07,,,,1.14.29.11.1.2(Civil Works)
9074,RFC Civil OB & RC Pump Shed Foundation drawing,PE - RFC,2023-08-23,2023-10-21,,,,1.14.29.11.1.2.3(RC PUMP Shed)
9075,RFC Civil OB & RC Pump Shed Super structure,PE - RFC,2023-10-22,2023-12-20,,,,1.14.29.11.1.2.3(RC PUMP Shed)
9076,Excavation,CIV,2024-04-11,2024-06-09,,,,1.14.29.11.1.2.3(RC PUMP Shed)
9077,RCC,CIV,2024-06-10,2024-09-07,,,,1.14.29.11.1.2.3(RC PUMP Shed)
9078,Erection,ERC,2024-09-08,2025-12-28,,,,1.14.29.11.1(Absorber)
9079,Absorber-Main structure,ERC,2024-10-23,2025-08-06,,,,1.14.29.11.1.3(Erection)
9080,Absorber Internals,ERC,2025-05-22,2025-09-18,,,,1.14.29.11.1.3(Erection)
9081,Absorber-Supporting systems,ERC,2024-09-08,2025-08-08,,,,1.14.29.11.1.3(Erection)
9082,RC Pump Shed,ERC,2024-09-08,2025-02-04,,,,1.14.29.11.1.3.3(Absorber-Supporting systems)
9083,HSFG BOLT-RC SHED-BOI,OTH,2024-09-08,2024-10-22,,,,1.14.29.11.1.3.3.1(RC Pump Shed)
9084,STRUCTURES - RC PUMP HOUSE,OTH,2024-09-08,2024-12-06,,,,1.14.29.11.1.3.3.1(RC Pump Shed)
9085,RC PUMP HOUSE CLADDING SHEETS-BOI,OTH,2024-12-07,2025-02-04,,,,1.14.29.11.1.3.3.1(RC Pump Shed)
9086,Absorbers Inter connecting Platforms,OTH,2025-07-10,2025-08-08,,,,1.14.29.11.1.3.3(Absorber-Supporting systems)
9087,FZ340-INTER-CONNECTING PLTF TO ABS,OTH,2025-07-10,2025-08-08,,,,1.14.29.11.1.3.3.2(Absorbers Inter connecting Platforms)
9088,RC Pump,OTH,2025-04-18,2025-06-16,,,,1.14.29.11.1.3.3(Absorber-Supporting systems)
9089,Oxidation blower,OTH,2025-04-18,2025-06-21,,,,1.14.29.11.1.3.3(Absorber-Supporting systems)
9090,Absorber Quenching Water Tank,OTH,2025-05-21,2025-06-09,,,,1.14.29.11.1.3.3(Absorber-Supporting systems)
9091,Absorber Piping & Valves,ERC,2025-08-07,2025-12-04,,,,1.14.29.11.1.3(Erection)
9092,"Absorber Consumables, Linings & Insulation, Casing etc.",ERC,2025-09-30,2025-12-28,,,,1.14.29.11.1.3(Erection)
9093,Balance BOIs of Absorber,SUP,2023-02-24,2025-04-28,,,,1.14.29.11(Sub Systems)
9094,FW390-C276- Special welding electrode - part1,SUP,2023-02-24,2024-10-30,,,390,1.14.29.11.2(Balance BOIs of Absorber)
9095,Engineering,ENG,2023-02-24,2023-10-21,,,FW390,1.14.29.11.2.1(FW390-C276- Special welding electrode - part1)
9096,Procurement,OTH,2023-10-22,2024-08-31,,,FW390,1.14.29.11.2.1(FW390-C276- Special welding electrode - part1)
9097,Dispatch,DIS,2024-08-02,2024-10-30,,,FW390,1.14.29.11.2.1(FW390-C276- Special welding electrode - part1)
9098,FW391-C276- Special welding electrode - part2,SUP,2023-02-24,2024-10-30,,,391,1.14.29.11.2(Balance BOIs of Absorber)
9099,Engineering,ENG,2023-02-24,2023-10-21,,,FW391,1.14.29.11.2.2(FW391-C276- Special welding electrode - part2)
9100,Manufacturing,MFG,2023-10-22,2024-08-31,,,FW391,1.14.29.11.2.2(FW391-C276- Special welding electrode - part2)
9101,Dispatch,DIS,2024-08-02,2024-10-30,,,FW391,1.14.29.11.2.2(FW391-C276- Special welding electrode - part2)
9102,FW392-Ti - Special welding electrode - part1,SUP,2023-02-24,2024-10-30,,,392,1.14.29.11.2(Balance BOIs of Absorber)
9103,Engineering,ENG,2023-02-24,2023-10-21,,,FW392,1.14.29.11.2.3(FW392-Ti - Special welding electrode - part1)
9104,Manufacturing,MFG,2023-10-22,2024-08-31,,,FW392,1.14.29.11.2.3(FW392-Ti - Special welding electrode - part1)
9105,Dispatch,DIS,2024-08-02,2024-10-30,,,FW392,1.14.29.11.2.3(FW392-Ti - Special welding electrode - part1)
9106,FW393-Ti - Special welding electrode - part2,SUP,2023-02-24,2024-10-30,,,393,1.14.29.11.2(Balance BOIs of Absorber)
9107,Engineering,ENG,2023-02-24,2023-10-21,,,FW393,1.14.29.11.2.4(FW393-Ti - Special welding electrode - part2)
9108,Manufacturing,MFG,2023-10-22,2024-08-31,,,FW393,1.14.29.11.2.4(FW393-Ti - Special welding electrode - part2)
9109,Dispatch,DIS,2024-08-02,2024-10-30,,,FW393,1.14.29.11.2.4(FW393-Ti - Special welding electrode - part2)
9110,FW725-Nozzle and Flanges,SUP,2023-02-24,2024-10-30,,,725,1.14.29.11.2(Balance BOIs of Absorber)
9111,Engineering,ENG,2023-02-24,2023-10-21,,,FW725,1.14.29.11.2.5(FW725-Nozzle and Flanges)
9112,Manufacturing,MFG,2023-10-22,2024-08-31,,,FW725,1.14.29.11.2.5(FW725-Nozzle and Flanges)
9113,Dispatch,DIS,2024-08-02,2024-10-30,,,FW725,1.14.29.11.2.5(FW725-Nozzle and Flanges)
9114,FW710-MONORAIL FOR HOIST & CRANES,SUP,2023-08-23,2025-04-28,,,FW710,1.14.29.11.2(Balance BOIs of Absorber)
9115,Engineering,ENG,2023-08-23,2024-04-18,,,FW710,1.14.29.11.2.6(FW710-MONORAIL FOR HOIST & CRANES)
9116,Manufacturing,MFG,2024-04-19,2025-02-27,,,FW710,1.14.29.11.2.6(FW710-MONORAIL FOR HOIST & CRANES)
9117,Dispatch,DIS,2025-01-29,2025-04-28,,,FW710,1.14.29.11.2.6(FW710-MONORAIL FOR HOIST & CRANES)
9118,FW717-MAN HOLE DOOR,SUP,2023-02-24,2024-10-30,,,717,1.14.29.11.2(Balance BOIs of Absorber)
9119,Engineering,ENG,2023-02-24,2023-10-21,,,FW717,1.14.29.11.2.7(FW717-MAN HOLE DOOR)
9120,Manufacturing,MFG,2023-10-22,2024-08-31,,,FW717,1.14.29.11.2.7(FW717-MAN HOLE DOOR)
9121,Dispatch,DIS,2024-08-02,2024-10-30,,,FW717,1.14.29.11.2.7(FW717-MAN HOLE DOOR)
9122,FW718 -ROOFING SHEET,SUP,2023-02-24,2024-10-30,,,718,1.14.29.11.2(Balance BOIs of Absorber)
9123,Engineering,ENG,2023-02-24,2023-10-21,,,FW718,1.14.29.11.2.8(FW718 -ROOFING SHEET)
9124,Manufacturing,MFG,2023-10-22,2024-08-31,,,FW718,1.14.29.11.2.8(FW718 -ROOFING SHEET)
9125,Dispatch,DIS,2024-08-02,2024-10-30,,,FW718,1.14.29.11.2.8(FW718 -ROOFING SHEET)
9126,FW992-Test Piece - C276,SUP,2023-02-24,2024-10-30,,,992,1.14.29.11.2(Balance BOIs of Absorber)
9127,Engineering,ENG,2023-02-24,2023-10-21,,,FW992,1.14.29.11.2.9(FW992-Test Piece - C276)
9128,Manufacturing,MFG,2023-10-22,2024-08-31,,,FW992,1.14.29.11.2.9(FW992-Test Piece - C276)
9129,Dispatch,DIS,2024-08-02,2024-10-30,,,FW992,1.14.29.11.2.9(FW992-Test Piece - C276)
9130,FW993-Test Piece - Ti,SUP,2023-02-24,2024-10-30,,,993,1.14.29.11.2(Balance BOIs of Absorber)
9131,Engineering,ENG,2023-02-24,2023-10-21,,,FW993,1.14.29.11.2.10(FW993-Test Piece - Ti)
9132,Manufacturing,MFG,2023-10-22,2024-08-31,,,FW993,1.14.29.11.2.10(FW993-Test Piece - Ti)
9133,Dispatch,DIS,2024-08-02,2024-10-30,,,FW993,1.14.29.11.2.10(FW993-Test Piece - Ti)
9134,BOI-FW223-ABSORBER SYSTEM ACCESSORIES,SUP,2023-02-24,2024-10-30,,,FW223,1.14.29.11.2(Balance BOIs of Absorber)
9135,Engineering,ENG,2023-02-24,2023-10-21,,,FW223,1.14.29.11.2.11(BOI-FW223-ABSORBER SYSTEM ACCESSORIES)
9136,Manufacturing,MFG,2023-10-22,2024-08-31,,,FW223,1.14.29.11.2.11(BOI-FW223-ABSORBER SYSTEM ACCESSORIES)
9137,Dispatch,DIS,2024-08-02,2024-10-30,,,FW223,1.14.29.11.2.11(BOI-FW223-ABSORBER SYSTEM ACCESSORIES)
9138,BOI-FW227-EMERGENCY QUENCH SYSTEM,SUP,2023-02-24,2024-10-30,,,FW227,1.14.29.11.2(Balance BOIs of Absorber)
9139,Engineering,ENG,2023-02-24,2023-10-21,,,FW227,1.14.29.11.2.12(BOI-FW227-EMERGENCY QUENCH SYSTEM)
9140,Manufacturing,MFG,2023-10-22,2024-08-31,,,FW227,1.14.29.11.2.12(BOI-FW227-EMERGENCY QUENCH SYSTEM)
9141,Dispatch,DIS,2024-08-02,2024-10-30,,,FW227,1.14.29.11.2.12(BOI-FW227-EMERGENCY QUENCH SYSTEM)
9142,BOI-FW228-ABSORBER-W/D INTERFACE,SUP,2023-02-24,2024-10-30,,,FW228,1.14.29.11.2(Balance BOIs of Absorber)
9143,Engineering,ENG,2023-02-24,2023-10-21,,,FW228,1.14.29.11.2.13(BOI-FW228-ABSORBER-W/D INTERFACE)
9144,Manufacturing,MFG,2023-10-22,2024-08-31,,,FW228,1.14.29.11.2.13(BOI-FW228-ABSORBER-W/D INTERFACE)
9145,Dispatch,DIS,2024-08-02,2024-10-30,,,FW228,1.14.29.11.2.13(BOI-FW228-ABSORBER-W/D INTERFACE)
9146,BOI-FW229-W/D WASH SYSTEM,SUP,2023-02-24,2024-10-30,,,FW229,1.14.29.11.2(Balance BOIs of Absorber)
9147,Engineering,ENG,2023-02-24,2023-10-21,,,FW229,1.14.29.11.2.14(BOI-FW229-W/D WASH SYSTEM)
9148,Manufacturing,MFG,2023-10-22,2024-08-31,,,FW229,1.14.29.11.2.14(BOI-FW229-W/D WASH SYSTEM)
9149,Dispatch,DIS,2024-08-02,2024-10-30,,,FW229,1.14.29.11.2.14(BOI-FW229-W/D WASH SYSTEM)
9150,BOI-FW235-SPECIAL FASTENERS,SUP,2023-02-24,2024-10-30,,,235,1.14.29.11.2(Balance BOIs of Absorber)
9151,Engineering,ENG,2023-02-24,2023-10-21,,,FW235,1.14.29.11.2.15(BOI-FW235-SPECIAL FASTENERS)
9152,Manufacturing,MFG,2023-10-22,2024-08-31,,,FW235,1.14.29.11.2.15(BOI-FW235-SPECIAL FASTENERS)
9153,Dispatch,DIS,2024-08-02,2024-10-30,,,FW235,1.14.29.11.2.15(BOI-FW235-SPECIAL FASTENERS)
9154,BOI-FW239-VIEWING PORTS,SUP,2023-02-24,2024-10-30,,,239,1.14.29.11.2(Balance BOIs of Absorber)
9155,Engineering,ENG,2023-02-24,2023-10-21,,,FW239,1.14.29.11.2.16(BOI-FW239-VIEWING PORTS)
9156,Manufacturing,MFG,2023-10-22,2024-08-31,,,FW239,1.14.29.11.2.16(BOI-FW239-VIEWING PORTS)
9157,Dispatch,DIS,2024-08-02,2024-10-30,,,FW239,1.14.29.11.2.16(BOI-FW239-VIEWING PORTS)
9158,BOI-FW243-SLURRY DISTRIBUTION SYSTEM- RC PUMP & ABSORBER,SUP,2023-02-24,2024-10-30,,,243,1.14.29.11.2(Balance BOIs of Absorber)
9159,Engineering,ENG,2023-02-24,2023-10-21,,,FW243,1.14.29.11.2.17(BOI-FW243-SLURRY DISTRIBUTION SYSTEM- RC PUMP & ABSORBER)
9160,Manufacturing,MFG,2023-10-22,2024-08-31,,,FW243,1.14.29.11.2.17(BOI-FW243-SLURRY DISTRIBUTION SYSTEM- RC PUMP & ABSORBER)
9161,Dispatch,DIS,2024-08-02,2024-10-30,,,FW243,1.14.29.11.2.17(BOI-FW243-SLURRY DISTRIBUTION SYSTEM- RC PUMP & ABSORBER)
9162,BOI-FW244-OXIDATION AIR DISTRIBUTION SYS,SUP,2023-02-24,2024-10-30,,,FW244,1.14.29.11.2(Balance BOIs of Absorber)
9163,Engineering,ENG,2023-02-24,2023-10-21,,,FW244,1.14.29.11.2.18(BOI-FW244-OXIDATION AIR DISTRIBUTION SYS)
9164,Manufacturing,MFG,2023-10-22,2024-08-31,,,FW244,1.14.29.11.2.18(BOI-FW244-OXIDATION AIR DISTRIBUTION SYS)
9165,Dispatch,DIS,2024-08-02,2024-10-30,,,FW244,1.14.29.11.2.18(BOI-FW244-OXIDATION AIR DISTRIBUTION SYS)
9166,BOI-FW249-HANDLING EQUIPMENT - RC PUMP,SUP,2023-02-24,2024-10-30,,,249,1.14.29.11.2(Balance BOIs of Absorber)
9167,Engineering,ENG,2023-02-24,2023-10-21,,,FW249,1.14.29.11.2.19(BOI-FW249-HANDLING EQUIPMENT - RC PUMP)
9168,Manufacturing,MFG,2023-10-22,2024-08-31,,,FW249,1.14.29.11.2.19(BOI-FW249-HANDLING EQUIPMENT - RC PUMP)
9169,Dispatch,DIS,2024-08-02,2024-10-30,,,FW249,1.14.29.11.2.19(BOI-FW249-HANDLING EQUIPMENT - RC PUMP)
9170,BOI-FW252-EXPANSION JOINT- NON METALLIC,SUP,2023-02-24,2024-10-30,,,252,1.14.29.11.2(Balance BOIs of Absorber)
9171,Engineering,ENG,2023-02-24,2023-10-21,,,FW252,1.14.29.11.2.20(BOI-FW252-EXPANSION JOINT- NON METALLIC)
9172,Manufacturing,MFG,2023-10-22,2024-08-31,,,FW252,1.14.29.11.2.20(BOI-FW252-EXPANSION JOINT- NON METALLIC)
9173,Dispatch,DIS,2024-08-02,2024-10-30,,,FW252,1.14.29.11.2.20(BOI-FW252-EXPANSION JOINT- NON METALLIC)
9174,BOI-FW267-INSULATION MATERIALS FOR DUCT,SUP,2023-02-24,2024-10-30,,,FW267,1.14.29.11.2(Balance BOIs of Absorber)
9175,Engineering,ENG,2023-02-24,2023-10-21,,,FW267,1.14.29.11.2.21(BOI-FW267-INSULATION MATERIALS FOR DUCT)
9176,Manufacturing,MFG,2023-10-22,2024-08-31,,,FW267,1.14.29.11.2.21(BOI-FW267-INSULATION MATERIALS FOR DUCT)
9177,Dispatch,DIS,2024-08-02,2024-10-30,,,FW267,1.14.29.11.2.21(BOI-FW267-INSULATION MATERIALS FOR DUCT)
9178,BOI-FW268-FIXING COMPONENTS FOR DUCT,SUP,2023-02-24,2024-10-30,,,FW268,1.14.29.11.2(Balance BOIs of Absorber)
9179,Engineering,ENG,2023-02-24,2023-10-21,,,FW268,1.14.29.11.2.22(BOI-FW268-FIXING COMPONENTS FOR DUCT)
9180,Manufacturing,MFG,2023-10-22,2024-08-31,,,FW268,1.14.29.11.2.22(BOI-FW268-FIXING COMPONENTS FOR DUCT)
9181,Dispatch,DIS,2024-08-02,2024-10-30,,,FW268,1.14.29.11.2.22(BOI-FW268-FIXING COMPONENTS FOR DUCT)
9182,BOI-FW269-CLADDING SHEET FOR DUCT,SUP,2023-02-24,2024-10-30,,,269,1.14.29.11.2(Balance BOIs of Absorber)
9183,Engineering,ENG,2023-02-24,2023-10-21,,,FW269,1.14.29.11.2.23(BOI-FW269-CLADDING SHEET FOR DUCT)
9184,Manufacturing,MFG,2023-10-22,2024-08-31,,,FW269,1.14.29.11.2.23(BOI-FW269-CLADDING SHEET FOR DUCT)
9185,Dispatch,DIS,2024-08-02,2024-10-30,,,FW269,1.14.29.11.2.23(BOI-FW269-CLADDING SHEET FOR DUCT)
9186,"JHS - 10 MVA, 11/3.45 KV FGD AUX Transformers",SUP,2023-06-04,2025-11-01,,,,1.14.29(FGD )
9187,Engineering,ENG,2023-06-04,2023-12-30,,,,"1.14.29.12(JHS - 10 MVA, 11/3.45 KV FGD AUX Transformers)"
9188,Manufacturing & testing,MFG,2023-10-02,2025-01-15,,,,"1.14.29.12(JHS - 10 MVA, 11/3.45 KV FGD AUX Transformers)"
9189," Packing, Dispatch",DIS,2024-09-18,2025-02-14,,,,"1.14.29.12(JHS - 10 MVA, 11/3.45 KV FGD AUX Transformers)"
9190,Erection of Aux Transformer,ERC,2025-03-17,2025-08-03,,,,"1.14.29.12(JHS - 10 MVA, 11/3.45 KV FGD AUX Transformers)"
9191,Commissioning of Aux Transformer,COM,2025-08-04,2025-11-01,,,,"1.14.29.12(JHS - 10 MVA, 11/3.45 KV FGD AUX Transformers)"
9192,Testing and Commissioning,COM,2025-12-30,2026-02-27,,,,1.14.29(FGD )
9193,PEM- Sewage Treatment Plant,OTH,2023-12-01,2026-06-14,,,,1.14(BOP Systems)
9194,STP Execution Agency,PRC,2023-12-01,2024-05-29,,,,1.14.30(PEM- Sewage Treatment Plant)
9195,Enquiry,ENQ,2023-12-01,2023-12-01,,,,1.14.30.1(STP Execution Agency)
9196,PO Placement,ORD,2023-12-02,2024-03-30,,,,1.14.30.1(STP Execution Agency)
9197,Engineering Design/Drgs,ENG,2024-03-31,2024-05-29,,,,1.14.30.1(STP Execution Agency)
9198,Supply,SUP,2025-05-15,2025-05-15,,,,1.14.30(PEM- Sewage Treatment Plant)
9199,STP: Dispatch COMPLETION of Materials,SUP,2025-05-15,2025-05-15,,,,1.14.30.2(Supply)
9200,Civil,CIV,2024-06-15,2025-12-01,,,,1.14.30(PEM- Sewage Treatment Plant)
9201,EXCAVATION,CIV,2024-06-15,2024-07-29,,,,1.14.30.3(Civil)
9202,RCC in substructure including PCC,CIV,2024-07-30,2024-12-26,,,,1.14.30.3(Civil)
9203,RCC in superstructure including equipment foundation,CIV,2024-12-27,2025-09-02,,,,1.14.30.3(Civil)
9204,Backfilling,CIV,2025-09-03,2025-10-17,,,,1.14.30.3(Civil)
9205,Finishing works,CIV,2025-10-18,2025-12-01,,,,1.14.30.3(Civil)
9206,Execution,ERC,2026-01-01,2026-06-14,,,,1.14.30(PEM- Sewage Treatment Plant)
9207, STP:E&C of STP,COM,2026-01-01,2026-06-14,,,,1.14.30.4(Execution)
