Sn,Task Name,Activity Type,Planned Start,Planned Finish
2,Milestones/ as per Work Schedule,MIL,2022-10-27,2026-09-25
3,Milestones: Basic Engineering,MIL,2022-10-27,2023-02-23
4,Milestones: Detailed Engineering,MIL,2022-12-26,2024-02-18
5,Milestone: Commencement of Manufacturing,MIL,2023-03-25,2023-03-25
6,Ordering of Major BOIs,MIL,2023-03-26,2023-09-21
7,Milestone: COMPLETION of Ordering of Balance BOIs,MIL,2025-01-21,2025-01-21
8,Milestone: Establishment of Storage & pre-assembly yard,MIL,2023-01-30,2023-05-29
9,Milestones: Supply of foundation materials for Boiler and Bunker Structures ,MIL,2023-03-29,2023-03-29
10,Milestones: Commencement of supplies of Structures & Main Equipment,MIL,2023-06-28,2023-06-28
11,Milestones: Boiler Erection Start,MIL,2023-09-26,2023-09-26
12,Milestones: Ceiling Girder Lifting,MIL,2024-07-25,2024-07-25
13,Milestones: Drainable Hydro Test ,MIL,2025-07-26,2025-07-26
14,Milestones: Non Drainable Hydro test Readiness,MIL,2025-11-29,2025-11-29
15,Milestones: Supply of Critical piping,MIL,2025-05-30,2025-05-30
16,Milestones: Pre-Assembly/Erection of Critical piping,MIL,2024-03-25,2025-09-15
17,Milestones: C&I  readiness for Boiler Light up,MIL,2026-01-19,2026-01-19
18,Milestones: Boiler Light up & Chemical Cleaning,MIL,2026-01-24,2026-01-24
19,Milestones: Supply of Coal Mills ,MIL,2023-10-27,2024-10-20
20,Milestones: Steam Blowing start with Coal,MIL,2026-02-27,2026-02-27
21,Milestones: Steam Blowing COMPLETION with Coal,MIL,2026-03-26,2026-03-26
22,Milestones: Condenser Erection start,MIL,2024-07-31,2024-07-31
23,Milestones: Turbine Erection start,MIL,2024-08-07,2024-08-07
24,Milestones: Generator Stator lifting,MIL,2025-04-07,2025-04-07
25,Milestone: Supply of CW Puddle flange,MIL,2024-03-19,2024-03-19
26,Milestone: Supply of TG Embedment,MIL,2023-12-25,2023-12-25
27,Milestone: Supply of EOT Crane,MIL,2024-02-11,2024-02-11
28,Milestones: Turbine Box up,MIL,2025-09-25,2025-09-25
29,Milestone: Turbine Oil flushing COMPLETION,MIL,2025-11-25,2025-11-25
30,Milestones: Turbine on Barring gear,MIL,2026-01-26,2026-01-26
31,Milestones: Synchronization on Coal,MIL,2026-05-26,2026-05-26
32,Milestones: Full Load operation,MIL,2026-06-25,2026-06-25
33,Milestones: COMPLETION of Trial Operation & PG test,MIL,2026-06-25,2026-07-24
34,Milestones: COMPLETION of Major supplies,MIL,2026-01-11,2026-01-11
35,Milestones: COMPLETION of all Supplies,MIL,2026-02-09,2026-02-09
36,Milestones: COMPLETION of site delivery of all mandatory spares,MIL,2025-12-09,2025-12-09
37,Milestones: COMPLETION of Facilities,MIL,2026-09-25,2026-09-25
38,Readiness of Major Civil Foundation,CIV,2023-06-27,2025-07-27
39,Readiness of Major Civil Foundation: Boiler Foundation,CIV,2023-09-25,2023-09-25
40,Readiness of Major Civil Foundation: ESP Foundation,CIV,2023-12-22,2023-12-22
41,Readiness of Major Civil Foundation: Commencement of Excavation for TG Building,CIV,2023-06-27,2023-06-27
42,Readiness of Major Civil Foundation: Casting of TG Raft,CIV,2023-08-31,2023-08-31
43,Readiness of Major Civil Foundation: Casting of TG Deck,CIV,2024-04-07,2024-04-07
44,Readiness of Major Civil Foundation: Readiness of TG Deck with EOT crane and approach,CIV,2024-08-06,2024-08-06
45,Readiness of Major Civil Foundation: Condenser Foundation,CIV,2024-02-23,2024-02-23
46,Readiness of Major Civil Foundation: ID Fan Foundation,CIV,2024-06-27,2024-06-27
47,Readiness of Major Civil Foundation: FD Fan Foundation,CIV,2025-07-09,2025-07-09
48,Readiness of Major Civil Foundation: PA Fan Foundation,CIV,2025-07-27,2025-07-27
49,Readiness of Major Civil Foundation: SA Fan Foundation,CIV,2025-07-09,2025-07-09
50,Readiness of Major Civil Foundation: Mill Foundation,CIV,2024-09-15,2024-09-15
51,Readiness of Major Civil Foundation: Bunker Bay Foundation,CIV,2023-09-27,2025-01-04
52,Readiness of Major Civil Foundation: MDBFP Foundation,CIV,2025-01-07,2025-01-07
53,Readiness of Major Civil Foundation: TDBFP Foundation,CIV,2025-02-07,2025-02-07
54,Readiness of Major Civil Foundation: CEP Foundation,CIV,2024-08-05,2024-08-05
55,Readiness of Major Civil Foundation: BOF-ESP Duct Foundation,CIV,2025-04-20,2025-04-20
56,Readiness of Major Civil Foundation: ESP-ID Duct Foundation,CIV,2024-09-26,2024-09-26
57,Readiness of Major Civil Foundation: ID-Chimney Duct Foundation,CIV,2024-11-27,2024-11-27
58,Readiness of Major Civil Foundation: GT Foundation,CIV,2024-09-09,2024-09-09
59,Readiness of Major Civil Foundation: ST Foundation,CIV,2025-02-20,2025-02-20
60,Readiness of Major Civil Foundation: UAT Foundation,CIV,2025-01-01,2025-01-01
61,Readiness of Major Civil Foundation: SAT Foundation,CIV,2025-01-03,2025-01-03
62,Readiness of Major Civil Foundation: SPBD Foundation,CIV,2025-04-22,2025-04-22
63,Readiness of Major Civil Foundation: IPBD Foundation,CIV,2025-02-22,2025-02-22
64,Readiness of Major Equipment and system,OTH,2025-02-20,2026-06-20
65,Readiness of Major Equipment and system: DMCW System,OTH,2025-08-19,2025-08-19
66,Readiness of Major Equipment and system: First ID Fan,OTH,2025-12-31,2025-12-31
67,Readiness of Major Equipment and system: Second ID Fan,OTH,2026-03-31,2026-03-31
68,Readiness of Major Equipment and system: First FD Fan,OTH,2025-12-09,2025-12-09
69,Readiness of Major Equipment and system: Second FD Fan,OTH,2026-02-03,2026-02-03
70,Readiness of Major Equipment and system: First APH,OTH,2025-11-29,2025-11-29
71,Readiness of Major Equipment and system: Second APH,OTH,2026-02-01,2026-02-01
72,Readiness of Major Equipment and system: Second PA Fan,OTH,2026-03-06,2026-03-06
73,Readiness of Major Equipment and system: First PA Fan,OTH,2026-02-19,2026-02-19
74,Readiness of Major Equipment and system: SA Fan,OTH,2026-05-01,2026-05-01
75,Readiness of Major Equipment and system: MDBFP,OTH,2025-09-17,2025-09-17
76,Readiness of Major Equipment and system: CEP,OTH,2025-11-18,2025-11-18
77,Readiness of Major Equipment and system: TDBFP,OTH,2026-04-18,2026-04-18
78,Readiness of Major Equipment and system: Service transformer  Aux transformer Charging,OTH,2025-05-24,2025-05-24
79,Readiness of Major Equipment and system: DCS Panel Charging,OTH,2025-10-27,2025-10-27
80,Readiness of Major Equipment and system: C&I for BLU (Gun Trial of AB Elevation),OTH,2025-12-19,2025-12-19
81,Readiness of Major Equipment and system: C&I for Chemical Cleaning (Gun Trial CD elevation),OTH,2025-11-25,2025-11-25
82,Readiness of Major Equipment and system: C&I for SB,OTH,2025-12-25,2025-12-25
83,Readiness of Major Equipment and system: C&I for Sync,OTH,2026-04-27,2026-04-27
84,Readiness of Major Equipment and system: C&I for Full Loading,OTH,2025-06-03,2025-06-03
85,Readiness of Major Equipment and system: Mills,OTH,2025-11-15,2025-11-15
86,Readiness of Major Equipment and system: Feeders ,OTH,2025-11-20,2025-11-20
87,Readiness of Major Equipment and system: Scanner FAN,OTH,2025-11-02,2025-11-02
88,Readiness of Major Equipment and system: Soot Blowing System,OTH,2025-08-18,2025-08-18
89,Readiness of Major Equipment and system: ESP Charging,OTH,2025-12-20,2025-12-20
90,Readiness of Major Equipment and system: COMPLETION of Main Boiler Structure work,OTH,2025-02-20,2025-02-20
91,Readiness of Major Equipment and system: DM Plant for HT,OTH,2025-02-20,2025-02-20
92,Readiness of Major Equipment and system: Complete DM Plant,OTH,2025-07-20,2025-07-20
93,Readiness of Major Equipment and system: Compressed air system,OTH,2025-10-24,2025-10-24
94,Readiness of Major Equipment and system: Air conditioning system,OTH,2026-01-19,2026-01-19
95,Readiness of Major Equipment and system: Cooling Tower,OTH,2025-11-25,2025-11-25
96,Readiness of Major Equipment and system: Chimney for BLU,OTH,2025-09-01,2025-09-01
97,Readiness of Major Equipment and system: Complete Chimney,OTH,2025-11-30,2025-11-30
98,Readiness of Major Equipment and system: Ventilation system,OTH,2026-03-26,2026-03-26
99,Readiness of Major Equipment and system: FPS for BLU,OTH,2026-01-05,2026-01-05
100,Readiness of Major Equipment and system: Completed FPS,OTH,2026-04-15,2026-04-15
101,Readiness of Major Equipment and system: DG set,OTH,2025-08-27,2025-08-27
102,Readiness of Major Equipment and system: CPU,OTH,2026-02-24,2026-02-24
103,Readiness of Major Equipment and system: ACW,OTH,2025-11-04,2025-11-04
104,Readiness of Major Equipment and system: CW,OTH,2025-07-13,2025-07-13
105,Readiness of Major Equipment and system: Fuel Oil system,OTH,2025-11-17,2025-11-17
106,Readiness of Major Equipment and system: Bunker,OTH,2025-06-23,2025-06-23
107,Readiness of Major Equipment and system: WTP,OTH,2025-02-20,2025-02-20
108,Readiness of Major Equipment and system: STP,OTH,2026-06-14,2026-06-14
109,Readiness of Major Equipment and system: MRS,OTH,2026-06-20,2026-06-20
110,Readiness of Major Equipment and system: CHP,OTH,2026-01-26,2026-01-26
111,Readiness of Major Equipment and system: AHP,OTH,2025-02-20,2025-02-20
112,Readiness of Major Equipment and system: FGD,OTH,2026-05-18,2026-05-18
113,CUSTOMER Inputs,CUST,2022-09-27,2025-11-25
114,CUSTOMER INPUTS: LAND (FREE FROM ALL ENCUMBRANCES),CUST,2022-09-27,2022-11-25
115,APPROACH ROAD UPTO THE MAIN PLANT,CUST,2022-09-27,2022-09-27
116,CUSTOMER INPUTS: CONSTRUCTION WATER ,CUST,2022-10-11,2022-10-11
117,CUSTOMER INPUTS: CONSTRUCTION POWER SOURCE,CUST,2022-10-11,2022-10-11
118,CUSTOMER INPUTS:  AVAILABILITY OF START-UP POWER ,CUST,2025-01-25,2025-01-25
119,CUSTOMER INPUTS: RAW WATER AVAILABILITY UPTO THE TERMINAL POINT OF PLANT ,CUST,2024-12-26,2024-12-26
120,CUSTOMER INPUTS: FUEL OIL AVAILABILITY ,CUST,2025-08-27,2025-08-27
121,CUSTOMER INPUTS: LIMESTONE AVAILABILITY ,CUST,2025-09-27,2025-09-27
122,CUSTOMER INPUTS: COAL AVAILABILITY ,CUST,2025-11-25,2025-11-25
123,CUSTOMER INPUTS: AVAILABILITY OF POWER EVACUATION ,CUST,2025-08-17,2025-08-17
124,Award of Sub-Contracts by PS-Region,PRC,2022-09-27,2024-11-15
125,Construction power package including construction lighting in plant  construction water  steel yard,PRC,2022-09-27,2022-11-10
126,NIT,ENQ,2022-09-27,2022-09-27
127,LOI,ORD,2022-09-27,2022-10-26
128,MOBILIZATION BY AGENCY AT SITE,ORD,2022-10-27,2022-11-10
129,Enabling work,PRC,2022-11-25,2023-02-08
130,NIT,ENQ,2022-11-25,2022-11-25
131,LOI,ORD,2022-11-26,2023-01-24
132,MOBILIZATION BY AGENCY AT SITE,ORD,2023-01-25,2023-02-08
133,Civil,PRC,2022-10-06,2023-09-06
134,Dismantling work of above ground facility,PRC,2022-10-06,2022-12-20
135,NIT,ENQ,2022-10-06,2022-10-06
136,LOI,ORD,2022-10-07,2022-12-05
137,MOBILIZATION BY AGENCY AT SITE,ORD,2022-12-06,2022-12-20
138,Civil- SG-1+ ESP-1+FGD-1 (Absorber+Fan+ Duct up to Chimney etc)+ BAH-1+ SCR-1 + Levelling & Grading+ Below ground dismantling work and excluding Paving work of this package,PRC,2022-10-26,2023-01-14
139,NIT,ENQ,2022-10-26,2022-10-26
140,LOI,ORD,2022-10-27,2022-12-25
141,MOBILIZATION BY AGENCY AT SITE,ORD,2022-12-26,2023-01-14
142,Civil -PH-1+X-mer Yard-1+ESP/FGD Control Room+ DG building  + Levelling & Grading+ Below ground dismantling work,PRC,2022-10-26,2023-02-28
143,NIT,ENQ,2022-10-26,2022-10-26
144,LOI,ORD,2022-10-27,2022-12-25
145,MOBILIZATION BY AGENCY AT SITE,ORD,2023-02-09,2023-02-28
146,Switch Yard+ 33 Kv SWGR + Levelling & Grading+ Below ground dismantling work,OTH,2022-11-25,2023-03-30
147,NIT,ENQ,2022-11-25,2022-11-25
148,LOI,ORD,2022-11-26,2023-01-24
149,MOBILIZATION BY AGENCY AT SITE,ORD,2023-03-11,2023-03-30
150,Civil for Coal Handling Plant (CHP),OTH,2022-11-25,2023-03-30
151,NIT,ENQ,2022-11-25,2022-11-25
152,LOI,ORD,2022-11-26,2023-01-24
153,MOBILIZATION BY AGENCY AT SITE,ORD,2023-03-11,2023-03-30
154,Civil for Ash Handling Plant (AHP),PRC,2023-04-24,2023-08-27
155,NIT,ENQ,2023-04-24,2023-04-24
156,LOI,ORD,2023-04-25,2023-06-23
157,MOBILIZATION BY AGENCY AT SITE,ORD,2023-08-08,2023-08-27
158,NDCT cooling Tower,PRC,2022-11-25,2023-03-30
159,NIT,ENQ,2022-11-25,2022-11-25
160,LOI,ORD,2022-11-26,2023-01-24
161,MOBILIZATION BY AGENCY AT SITE,ORD,2023-03-11,2023-03-30
162,Balance BOPs civil,PRC,2023-04-24,2023-07-13
163,NIT,ENQ,2023-04-24,2023-04-24
164,LOI,ORD,2023-04-25,2023-06-23
165,MOBILIZATION BY AGENCY AT SITE,ORD,2023-06-24,2023-07-13
166,Civil agency for Chimney,PRC,2022-11-25,2023-04-09
167,NIT,ENQ,2022-11-25,2022-11-25
168,LOI,ORD,2022-11-26,2023-02-03
169,MOBILIZATION BY AGENCY AT SITE,ORD,2023-03-21,2023-04-09
170,Civil- FGD buildings (LHP+GHP etc) + Levelling & Grading+ Below ground dismantling work,PRC,2023-04-24,2023-09-06
171,NIT,ENQ,2023-04-24,2023-04-24
172,LOI,ORD,2023-04-25,2023-07-03
173,MOBILIZATION BY AGENCY AT SITE,ORD,2023-08-18,2023-09-06
174,Mechanical,PRC,2023-03-25,2024-07-27
175,Mechanical ? Boiler  Aux Boiler & Bunker,PRC,2023-06-03,2023-09-21
176,NIT,ENQ,2023-06-03,2023-06-03
177,LOI,ORD,2023-06-04,2023-09-01
178,MOBILIZATION BY AGENCY AT SITE,ORD,2023-09-02,2023-09-21
179,Mechanical ? ESP & FGD,PRC,2023-07-08,2023-10-26
180,NIT,ENQ,2023-07-08,2023-07-08
181,LOI,ORD,2023-07-09,2023-10-06
182,MOBILIZATION BY AGENCY AT SITE,ORD,2023-10-07,2023-10-26
183, Power Cycle Piping ,PRC,2024-02-08,2024-07-27
184,NIT,ENQ,2024-02-08,2024-02-08
185,LOI,ORD,2024-02-09,2024-07-07
186,MOBILIZATION BY AGENCY AT SITE,ORD,2024-07-08,2024-07-27
187,Steam Turbine & Generator,PRC,2024-02-09,2024-05-29
188,NIT,ENQ,2024-02-09,2024-02-09
189,LOI,ORD,2024-02-10,2024-05-09
190,MOBILIZATION BY AGENCY AT SITE,ORD,2024-05-10,2024-05-29
191,Structure:- Power House,PRC,2023-03-25,2023-06-13
192,NIT,ENQ,2023-03-25,2023-03-25
193,LOI,ORD,2023-03-26,2023-05-24
194,MOBILIZATION BY AGENCY AT SITE,ORD,2023-05-25,2023-06-13
195,Structure:- CHP,PRC,2023-08-22,2023-11-10
196,NIT,ENQ,2023-08-22,2023-08-22
197,LOI,ORD,2023-08-23,2023-10-21
198,MOBILIZATION BY AGENCY AT SITE,ORD,2023-10-22,2023-11-10
199,Structure:- FGD+AHP+Pipe Rack,PRC,2023-11-30,2024-02-18
200,NIT,ENQ,2023-11-30,2023-11-30
201,LOI,ORD,2023-12-01,2024-01-29
202,MOBILIZATION BY AGENCY AT SITE,ORD,2024-01-30,2024-02-18
203,Electrical & Cabling Pkg ,PRC,2024-06-28,2024-10-16
204,NIT,ENQ,2024-06-28,2024-06-28
205,LOI,ORD,2024-06-29,2024-09-26
206,MOBILIZATION BY AGENCY AT SITE,ORD,2024-09-27,2024-10-16
207,C&I Pkg ,PRC,2024-07-28,2024-11-15
208,NIT,ENQ,2024-07-28,2024-07-28
209,LOI,ORD,2024-07-29,2024-10-26
210,MOBILIZATION BY AGENCY AT SITE,ORD,2024-10-27,2024-11-15
211,Topographical Survey and Soil Investigation,ENG,2022-09-27,2022-10-26
212,Topographical Survey and Soil Investigation: Work COMPLETION and Report Submission,ENG,2022-09-27,2022-10-26
213,Development of Site Infrastructure,OTH,2022-09-27,2024-05-18
214,Mobilization of site levelling agency at site and commencement of site levelling works including dismantling activities ,,2023-01-25,2023-03-25
215,Completion of Site Levelling,CIV,2023-04-25,2023-07-23
216,Readiness of Priority Roads  including Drains ,CIV,2023-05-25,2024-01-19
217,Readiness of External Drain for evacuation of plant area drainage ,CIV,2023-03-26,2023-11-20
218,Readiness of area lighting in Plant ,OTH,2023-03-26,2023-09-21
219,Readiness of Temporary office of BHEL,CIV,2022-09-27,2022-11-25
220,Readiness of BHEL office ,CIV,2022-09-27,2023-05-24
221,Readiness of Safety Control Room & Site office of NTPC,CIV,2023-06-23,2023-06-23
222,Readiness of Storage and Preassembly yard with Hard crusting  Roads & Drains etc. as per priority requirement of project ,CIV,2023-03-26,2023-12-20
223,Establishment of workers habitat in phased manner ,CIV,2022-12-26,2024-05-18
224,Dismantling,CIV,2022-12-21,2024-01-30
225,Dismantling of existing raw material reservoirs,CIV,2023-07-15,2024-01-30
226,Dismantling of super structure ,CIV,2022-12-21,2023-07-08
227,Boiler & Auxiliaries,OTH,2022-09-27,2026-05-28
228,Boiler Structure,OTH,2022-09-27,2026-04-30
229,Basic engineering,ENG,2022-10-27,2023-02-23
230,Supply (BHEL TRY),SUP,2022-09-27,2025-11-10
231,Main Boiler supporting structure (PG-35),OTH,2022-09-27,2024-03-11
232,FOUNDATION MATERIALS- (PGMA-35011),SUP,2022-10-27,2023-05-27
233,Engineering,ENG,2022-10-27,2023-01-19
234,Manufacturing,MFG,2023-01-20,2023-04-27
235,Dispatch,DIS,2023-03-29,2023-05-27
236,MAIN COLUMNS LEFT 1ST PASS (PGMA-35111),SUP,2022-10-27,2023-09-10
237,Engineering,ENG,2022-10-27,2023-05-08
238,Manufacturing,MFG,2023-02-18,2023-06-27
239,Dispatch,DIS,2023-06-28,2023-09-10
240,MAIN COLUMNS LEFT 2ND PASS (PGMA-35112),SUP,2022-10-27,2023-09-10
241,Engineering,ENG,2022-10-27,2023-05-08
242,Manufacturing,MFG,2023-02-18,2023-06-27
243,Dispatch,DIS,2023-06-28,2023-09-10
244,MAIN COLUMNS RIGHT 1ST PASS (PGMA-35121),SUP,2022-10-27,2023-09-25
245,Engineering,ENG,2022-10-27,2023-05-08
246,Manufacturing,MFG,2023-02-18,2023-06-27
247,Dispatch,DIS,2023-06-28,2023-09-25
248,MAIN COLUMNS RIGHT 2ND PASS (PGMA-35122),SUP,2022-10-27,2023-09-25
249,Engineering,ENG,2022-10-27,2023-05-08
250,Manufacturing,MFG,2023-02-18,2023-06-27
251,Dispatch,DIS,2023-06-28,2023-09-25
252,MAIN COLUMNS MIDDLE (PGMA-35130),SUP,2022-10-27,2023-09-25
253,Engineering,ENG,2022-10-27,2023-05-08
254,Manufacturing,MFG,2023-02-18,2023-06-27
255,Dispatch,DIS,2023-06-28,2023-09-25
256,AUXILIARY COLUMNS-LEFT SIDE (PGMA-35140),SUP,2022-10-27,2023-09-25
257,Engineering,ENG,2022-10-27,2023-05-08
258,Manufacturing,MFG,2023-02-18,2023-06-27
259,Dispatch,DIS,2023-06-28,2023-09-25
260,AUXILIARY COLUMNS-RIGHT SIDE (PGMA-35150),SUP,2022-10-27,2023-09-25
261,Engineering,ENG,2022-10-27,2023-05-08
262,Manufacturing,MFG,2023-02-18,2023-06-27
263,Dispatch,DIS,2023-06-28,2023-09-25
264,GIRDER PIN CONNECTIONS (PGMA-35190),SUP,2022-10-27,2023-10-26
265,Engineering,ENG,2022-10-27,2023-05-23
266,Manufacturing,MFG,2023-03-05,2023-08-27
267,Dispatch,DIS,2023-08-28,2023-10-26
268,CEILING STRUCTURE-MAIN GIRDERS 1ST PASS (PGMA-35211),SUP,2022-10-27,2023-12-19
269,Engineering,ENG,2022-10-27,2023-05-23
270,Manufacturing,MFG,2023-03-05,2023-09-20
271,Dispatch,DIS,2023-09-21,2023-12-19
272,CEILING STRUCTURE-MAIN GIRDERS 2ND PASS (PGMA-35212),SUP,2022-10-27,2023-12-19
273,Engineering,ENG,2022-10-27,2023-05-23
274,Manufacturing,MFG,2023-03-05,2023-09-20
275,Dispatch,DIS,2023-09-21,2023-12-19
276,CEIL STRUCT-CROSS WELDED BEAMS 1ST PASS (PGMA-35213),SUP,2022-10-27,2023-12-21
277,Engineering,ENG,2022-10-27,2023-05-23
278,Manufacturing,MFG,2023-03-07,2023-09-22
279,Dispatch,DIS,2023-09-23,2023-12-21
280,CEIL STRUCT-CROSS WELDED BEAMS 2ND PASS (PGMA-35214),SUP,2022-10-27,2023-12-21
281,Engineering,ENG,2022-10-27,2023-05-23
282,Manufacturing,MFG,2023-03-07,2023-09-22
283,Dispatch,DIS,2023-09-23,2023-12-21
284,CEILING STRUCTURE ROLLED BEAM 1ST PASS (PGMA-35221),SUP,2022-09-27,2024-01-03
285,Engineering,ENG,2022-09-27,2023-06-05
286,Manufacturing,MFG,2023-03-20,2023-10-05
287,Dispatch,DIS,2023-10-06,2024-01-03
288,CEILING STRUCTURE ROLLED BEAM 2ND PASS (PGMA-35222),SUP,2022-09-27,2024-01-03
289,Engineering,ENG,2022-09-27,2023-06-05
290,Manufacturing,MFG,2023-03-20,2023-10-05
291,Dispatch,DIS,2023-10-06,2024-01-03
292,CEILING STRUCTURE HORBRACING 1ST PASS (PGMA-35231),SUP,2022-10-27,2024-02-02
293,Engineering,ENG,2022-10-27,2023-07-05
294,Manufacturing,MFG,2023-04-19,2023-11-04
295,Dispatch,DIS,2023-11-05,2024-02-02
296,CEILING STRUCTURE HORBRACING 2ND PASS (PGMA-35232),SUP,2022-10-27,2024-02-02
297,Engineering,ENG,2022-10-27,2023-07-05
298,Manufacturing,MFG,2023-04-19,2023-11-04
299,Dispatch,DIS,2023-11-05,2024-02-02
300,HORIZONTAL BRACING I PASS IMBL (PGMA-35311),SUP,2022-10-27,2024-01-31
301,Engineering,ENG,2022-10-27,2023-07-05
302,Manufacturing,MFG,2023-04-17,2023-11-02
303,Dispatch,DIS,2023-11-03,2024-01-31
304,HORIZ BRACING II PASS I MBL (PGMA-35312),SUP,2022-10-27,2024-01-31
305,Engineering,ENG,2022-10-27,2023-07-05
306,Manufacturing,MFG,2023-04-17,2023-11-02
307,Dispatch,DIS,2023-11-03,2024-01-31
308,HORIZ BRACING I PASS II MBL (PGMA-35321),SUP,2022-10-27,2024-01-31
309,Engineering,ENG,2022-10-27,2023-07-05
310,Manufacturing,MFG,2023-04-17,2023-11-02
311,Dispatch,DIS,2023-11-03,2024-01-31
312,HORIZ BRACING II PASS II MBL (PGMA-35322),SUP,2022-10-27,2024-01-31
313,Engineering,ENG,2022-10-27,2023-07-05
314,Manufacturing,MFG,2023-04-17,2023-11-02
315,Dispatch,DIS,2023-11-03,2024-01-31
316,HORIZ BRACING I PASS III MBL (PGMA-35331),SUP,2022-10-27,2024-01-31
317,Engineering,ENG,2022-10-27,2023-07-05
318,Manufacturing,MFG,2023-04-17,2023-11-02
319,Dispatch,DIS,2023-11-03,2024-01-31
320,HORIZ BRACING II PASS III MBL (PGMA-35332),SUP,2022-10-27,2024-01-31
321,Engineering,ENG,2022-10-27,2023-07-05
322,Manufacturing,MFG,2023-04-17,2023-11-02
323,Dispatch,DIS,2023-11-03,2024-01-31
324,HORIZ BRACING I PASS IV MBL (PGMA-35341),SUP,2022-10-27,2024-01-31
325,Engineering,ENG,2022-10-27,2023-07-05
326,Manufacturing,MFG,2023-04-17,2023-11-02
327,Dispatch,DIS,2023-11-03,2024-01-31
328,HORIZ BRACING II PASS IV MBL (PGMA-35342),SUP,2022-10-27,2024-01-31
329,Engineering,ENG,2022-10-27,2023-07-05
330,Manufacturing,MFG,2023-04-17,2023-11-02
331,Dispatch,DIS,2023-11-03,2024-01-31
332,HORIZ BRACING I PASS V MBL (PGMA-35351),SUP,2022-10-27,2024-02-02
333,Engineering,ENG,2022-10-27,2023-07-05
334,Manufacturing,MFG,2023-04-19,2023-11-04
335,Dispatch,DIS,2023-11-05,2024-02-02
336,HORIZ BRACING II PASS V MBL (PGMA-35352),SUP,2022-10-27,2024-02-02
337,Engineering,ENG,2022-10-27,2023-07-05
338,Manufacturing,MFG,2023-04-19,2023-11-04
339,Dispatch,DIS,2023-11-05,2024-02-02
340,HORIZ BRACING I PASS VI MBL (PGMA-35361),SUP,2022-10-27,2024-02-02
341,Engineering,ENG,2022-10-27,2023-07-05
342,Manufacturing,MFG,2023-04-19,2023-11-04
343,Dispatch,DIS,2023-11-05,2024-02-02
344,HORIZ BRACING II PASS VI MBL (PGMA-35362),SUP,2022-10-27,2024-02-02
345,Engineering,ENG,2022-10-27,2023-07-05
346,Manufacturing,MFG,2023-04-19,2023-11-04
347,Dispatch,DIS,2023-11-05,2024-02-02
348,LAND & CONN PLAT TIER-1 (PGMA-35381),SUP,2022-10-27,2024-01-31
349,Engineering,ENG,2022-10-27,2023-07-05
350,Manufacturing,MFG,2023-04-17,2023-11-02
351,Dispatch,DIS,2023-11-03,2024-01-31
352,LAND & CONN PLAT TIER-2 (PGMA-35382),SUP,2022-10-27,2024-01-31
353,Engineering,ENG,2022-10-27,2023-07-05
354,Manufacturing,MFG,2023-04-17,2023-11-02
355,Dispatch,DIS,2023-11-03,2024-01-31
356,LAND & CONN PLAT TIER-3 (PGMA-35383),SUP,2022-10-27,2024-01-31
357,Engineering,ENG,2022-10-27,2023-07-05
358,Manufacturing,MFG,2023-04-17,2023-11-02
359,Dispatch,DIS,2023-11-03,2024-01-31
360,HORIL BEAMS FIRST PASS-TIER-1 (PGMA-35441),SUP,2022-10-27,2024-01-31
361,Engineering,ENG,2022-10-27,2023-07-05
362,Manufacturing,MFG,2023-04-17,2023-11-02
363,Dispatch,DIS,2023-11-03,2024-01-31
364,HORIL BEAMS FIRST PASS-TIER-2 (PGMA-35442),SUP,2022-10-27,2024-01-31
365,Engineering,ENG,2022-10-27,2023-07-05
366,Manufacturing,MFG,2023-04-17,2023-11-02
367,Dispatch,DIS,2023-11-03,2024-01-31
368,HORIL BEAMS FIRST PASS-TIER-3 (PGMA-35443),SUP,2022-10-27,2024-01-31
369,Engineering,ENG,2022-10-27,2023-07-05
370,Manufacturing,MFG,2023-04-17,2023-11-02
371,Dispatch,DIS,2023-11-03,2024-01-31
372,HOR BEAM-SECOND PASS- TIER-1 (PGMA-35451),SUP,2022-10-27,2024-01-31
373,Engineering,ENG,2022-10-27,2023-07-05
374,Manufacturing,MFG,2023-04-17,2023-11-02
375,Dispatch,DIS,2023-11-03,2024-01-31
376,HOR BEAM-SECOND PASS- TIER-2 (PGMA-35452),SUP,2022-10-27,2024-01-31
377,Engineering,ENG,2022-10-27,2023-07-05
378,Manufacturing,MFG,2023-04-17,2023-11-02
379,Dispatch,DIS,2023-11-03,2024-01-31
380,HOR BEAM-SECOND PASS- TIER-3 (PGMA-35453),SUP,2022-10-27,2024-01-31
381,Engineering,ENG,2022-10-27,2023-07-05
382,Manufacturing,MFG,2023-04-17,2023-11-02
383,Dispatch,DIS,2023-11-03,2024-01-31
384,FRONT BRACING-TIER-1 (PGMA-35511),SUP,2022-10-27,2024-01-31
385,Engineering,ENG,2022-10-27,2023-07-05
386,Manufacturing,MFG,2023-04-17,2023-11-02
387,Dispatch,DIS,2023-11-03,2024-01-31
388,FRONT BRACING-TIER-2 (PGMA-35512),SUP,2022-10-27,2024-01-31
389,Engineering,ENG,2022-10-27,2023-07-05
390,Manufacturing,MFG,2023-04-17,2023-11-02
391,Dispatch,DIS,2023-11-03,2024-01-31
392,FRONT BRACING-TIER-3 (PGMA-35513),SUP,2022-10-27,2024-01-31
393,Engineering,ENG,2022-10-27,2023-07-05
394,Manufacturing,MFG,2023-04-17,2023-11-02
395,Dispatch,DIS,2023-11-03,2024-01-31
396,SIDE BRACING-TIER-1 (PGMA-35521),SUP,2022-10-27,2024-01-31
397,Engineering,ENG,2022-10-27,2023-07-05
398,Manufacturing,MFG,2023-04-17,2023-11-02
399,Dispatch,DIS,2023-11-03,2024-01-31
400,SIDE BRACING-TIER-2 (PGMA-35522),SUP,2022-10-27,2024-01-31
401,Engineering,ENG,2022-10-27,2023-07-05
402,Manufacturing,MFG,2023-04-17,2023-11-02
403,Dispatch,DIS,2023-11-03,2024-01-31
404,SIDE BRACING-TIER-3 (PGMA-35523),SUP,2022-10-27,2024-01-31
405,Engineering,ENG,2022-10-27,2023-07-05
406,Manufacturing,MFG,2023-04-17,2023-11-02
407,Dispatch,DIS,2023-11-03,2024-01-31
408,REAR BRACING-TIER-1 (PGMA-35531),SUP,2022-10-27,2024-01-31
409,Engineering,ENG,2022-10-27,2023-07-05
410,Manufacturing,MFG,2023-04-17,2023-11-02
411,Dispatch,DIS,2023-11-03,2024-01-31
412,REAR BRACING-TIER-2 (PGMA-35532),SUP,2022-10-27,2024-01-31
413,Engineering,ENG,2022-10-27,2023-07-05
414,Manufacturing,MFG,2023-04-17,2023-11-02
415,Dispatch,DIS,2023-11-03,2024-01-31
416,REAR BRACING-TIER-3 (PGMA-35533),SUP,2022-10-27,2024-01-31
417,Engineering,ENG,2022-10-27,2023-07-05
418,Manufacturing,MFG,2023-04-17,2023-11-02
419,Dispatch,DIS,2023-11-03,2024-01-31
420,HSFG FASTENERS FOR PG 35 (PGMA-35700),SUP,2022-10-27,2024-01-31
421,Engineering,ENG,2022-10-27,2023-07-05
422,Manufacturing,MFG,2023-04-17,2023-11-02
423,Dispatch,DIS,2023-11-03,2024-01-31
424,FLOOR GRILLS AND GUARD PLATE (PGMA-35811),SUP,2022-10-27,2024-01-31
425,Engineering,ENG,2022-10-27,2023-07-05
426,Manufacturing,MFG,2023-04-17,2023-11-02
427,Dispatch,DIS,2023-11-03,2024-01-31
428,STAIRS-LOWER (PGMA-35821),SUP,2022-10-27,2024-01-31
429,Engineering,ENG,2022-10-27,2023-07-05
430,Manufacturing,MFG,2023-04-17,2023-11-02
431,Dispatch,DIS,2023-11-03,2024-01-31
432,STAIRS-MIDDLE (PGMA-35822),SUP,2022-10-27,2024-01-31
433,Engineering,ENG,2022-10-27,2023-07-05
434,Manufacturing,MFG,2023-04-17,2023-11-02
435,Dispatch,DIS,2023-11-03,2024-01-31
436,STAIRS-UPPER (PGMA-35823),SUP,2022-10-27,2024-03-09
437,Engineering,ENG,2022-10-27,2023-07-03
438,Manufacturing,MFG,2023-04-15,2024-02-08
439,Dispatch,DIS,2024-02-09,2024-03-09
440,HAND RAILS & POSTS (PGMA-35851),SUP,2022-10-27,2024-03-11
441,Engineering,ENG,2022-10-27,2023-07-03
442,Manufacturing,MFG,2023-04-17,2024-02-10
443,Dispatch,DIS,2024-02-11,2024-03-11
444,CONSUMABLES &Erection MATERIALS (PGMA-35993),SUP,2022-10-27,2023-07-27
445,Engineering,ENG,2022-10-27,2023-05-08
446,Manufacturing,MFG,2023-02-18,2023-06-27
447,Dispatch,DIS,2023-06-28,2023-07-27
448,CHUTE PIPE AND LADDERS (PGMA-35995),SUP,2022-10-27,2023-07-27
449,Engineering,ENG,2022-10-27,2023-05-08
450,Manufacturing,MFG,2023-02-18,2023-06-27
451,Dispatch,DIS,2023-06-28,2023-07-27
452,Galleries & Stairways (PG-36),SUP,2022-12-26,2025-03-04
453,COLUMNS NEAR AIR PRE HEATERS (PGMA-36110),SUP,2022-12-26,2023-11-27
454,Engineering,ENG,2022-12-26,2023-05-26
455,Manufacturing,MFG,2023-04-27,2023-10-28
456,Dispatch,DIS,2023-10-29,2023-11-27
457,MIDDLE COLUMNS IN BOILER (PGMA-36130),SUP,2022-12-26,2023-11-27
458,Engineering,ENG,2022-12-26,2023-05-26
459,Manufacturing,MFG,2023-04-27,2023-10-28
460,Dispatch,DIS,2023-10-29,2023-11-27
461,BEAMS & BRACINGS NEAR AIR PRE HEATER (PGMA-36150),SUP,2022-12-26,2023-11-27
462,Engineering,ENG,2022-12-26,2023-05-26
463,Manufacturing,MFG,2023-04-27,2023-10-28
464,Dispatch,DIS,2023-10-29,2023-11-27
465,MAIN FLOOR I MBL 1ST PASS (PGMA-36311),SUP,2023-01-25,2024-03-29
466,Engineering,ENG,2023-01-25,2023-09-05
467,Manufacturing,MFG,2023-08-07,2024-02-28
468,Dispatch,DIS,2024-02-29,2024-03-29
469,MAIN FLOOR I MBL 2ND PASS (PGMA-36312),SUP,2023-01-25,2024-03-29
470,Engineering,ENG,2023-01-25,2023-09-05
471,Manufacturing,MFG,2023-08-07,2024-02-28
472,Dispatch,DIS,2024-02-29,2024-03-29
473,NON-MBL FLOOR BETWEEN MBL I&II (PGMA-36313),SUP,2023-01-25,2024-03-29
474,Engineering,ENG,2023-01-25,2023-09-05
475,Manufacturing,MFG,2023-08-07,2024-02-28
476,Dispatch,DIS,2024-02-29,2024-03-29
477,NON-MBL FLOOR BETWEEN MBL I&II (PGMA-36314),SUP,2023-01-25,2024-03-29
478,Engineering,ENG,2023-01-25,2023-09-05
479,Manufacturing,MFG,2023-08-07,2024-02-28
480,Dispatch,DIS,2024-02-29,2024-03-29
481,NON-MBL FLOOR BETWEEN MBL I&II (PGMA-36315),SUP,2023-01-25,2024-03-29
482,Engineering,ENG,2023-01-25,2023-09-05
483,Manufacturing,MFG,2023-08-07,2024-02-28
484,Dispatch,DIS,2024-02-29,2024-03-29
485,NON-MBL FLOOR BETWEEN MBL I&II (PGMA-36316),SUP,2023-01-25,2024-03-29
486,Engineering,ENG,2023-01-25,2023-09-05
487,Manufacturing,MFG,2023-08-07,2024-02-28
488,Dispatch,DIS,2024-02-29,2024-03-29
489,MAIN FLOOR II MBL IST PASS (PGMA-36321),SUP,2023-01-25,2024-03-29
490,Engineering,ENG,2023-01-25,2023-09-05
491,Manufacturing,MFG,2023-08-07,2024-02-28
492,Dispatch,DIS,2024-02-29,2024-03-29
493,MAIN FLOOR II MBL 2ND PASS (PGMA-36322),SUP,2022-12-26,2024-02-28
494,Engineering,ENG,2022-12-26,2023-08-06
495,Manufacturing,MFG,2023-07-08,2024-01-29
496,Dispatch,DIS,2024-01-30,2024-02-28
497,NON-MBL FLOOR BETWEEN MBL II&III (PGMA-36323),SUP,2023-01-25,2024-09-15
498,Engineering,ENG,2023-01-25,2023-11-20
499,Manufacturing,MFG,2023-10-22,2024-08-16
500,Dispatch,DIS,2024-08-17,2024-09-15
501,NON-MBL FLOOR BETWEEN MBL II&III (PGMA-36324),SUP,2023-01-25,2024-02-27
502,Engineering,ENG,2023-01-25,2023-08-14
503,Manufacturing,MFG,2023-07-16,2024-01-28
504,Dispatch,DIS,2024-01-29,2024-02-27
505,NON-MBL FLOOR BETWEEN MBL II&III (PGMA-36325),SUP,2023-01-25,2024-02-27
506,Engineering,ENG,2023-01-25,2023-08-14
507,Manufacturing,MFG,2023-07-16,2024-01-28
508,Dispatch,DIS,2024-01-29,2024-02-27
509,NON-MBL FLOOR BETWEEN MBL II&III (PGMA-36326),SUP,2023-01-25,2024-02-27
510,Engineering,ENG,2023-01-25,2023-08-14
511,Manufacturing,MFG,2023-07-16,2024-01-28
512,Dispatch,DIS,2024-01-29,2024-02-27
513,NON-MBL FLOOR BETWEEN MBL II&III (PGMA-36327),SUP,2023-01-25,2024-02-27
514,Engineering,ENG,2023-01-25,2023-08-14
515,Manufacturing,MFG,2023-07-16,2024-01-28
516,Dispatch,DIS,2024-01-29,2024-02-27
517,MAIN FLOOR III MBL 1ST PASS (PGMA-36331),SUP,2023-01-25,2024-02-27
518,Engineering,ENG,2023-01-25,2023-08-14
519,Manufacturing,MFG,2023-07-16,2024-01-28
520,Dispatch,DIS,2024-01-29,2024-02-27
521,MAIN FLOOR III MBL 2ND PASS (PGMA-36332),SUP,2023-01-25,2024-02-27
522,Engineering,ENG,2023-01-25,2023-08-14
523,Manufacturing,MFG,2023-07-16,2024-01-28
524,Dispatch,DIS,2024-01-29,2024-02-27
525,NON-MBL FLOOR BETWEEN MBL III & IV (PGMA-36333),SUP,2023-01-25,2024-02-27
526,Engineering,ENG,2023-01-25,2023-08-14
527,Manufacturing,MFG,2023-07-16,2024-01-28
528,Dispatch,DIS,2024-01-29,2024-02-27
529,NON-MBL FLOOR BETWEEN MBL III & IV (PGMA-36334),SUP,2023-01-25,2024-02-27
530,Engineering,ENG,2023-01-25,2023-08-14
531,Manufacturing,MFG,2023-07-16,2024-01-28
532,Dispatch,DIS,2024-01-29,2024-02-27
533,NON-MBL FLOOR BETWEEN MBL III & IV (PGMA-36335),SUP,2023-01-25,2024-02-27
534,Engineering,ENG,2023-01-25,2023-08-14
535,Manufacturing,MFG,2023-07-16,2024-01-28
536,Dispatch,DIS,2024-01-29,2024-02-27
537,FLOOR IN II PASS (PGMA-36336),SUP,2023-01-25,2024-02-27
538,Engineering,ENG,2023-01-25,2023-08-14
539,Manufacturing,MFG,2023-07-16,2024-01-28
540,Dispatch,DIS,2024-01-29,2024-02-27
541,FLOOR IN I PASS (PGMA-36337),SUP,2023-01-25,2024-02-27
542,Engineering,ENG,2023-01-25,2023-08-14
543,Manufacturing,MFG,2023-07-16,2024-01-28
544,Dispatch,DIS,2024-01-29,2024-02-27
545,FLOOR IN II PASS (PGMA-36338),SUP,2023-01-25,2024-02-27
546,Engineering,ENG,2023-01-25,2023-08-14
547,Manufacturing,MFG,2023-07-16,2024-01-28
548,Dispatch,DIS,2024-01-29,2024-02-27
549,MAIN FLOOR IV MBL 1ST PASS (PGMA-36341),SUP,2023-01-25,2024-01-27
550,Engineering,ENG,2023-01-25,2023-08-04
551,Manufacturing,MFG,2023-07-06,2023-12-28
552,Dispatch,DIS,2023-12-29,2024-01-27
553,MAIN FLOOR IV MBL 2ND PASS (PGMA-36342),SUP,2023-01-25,2024-01-27
554,Engineering,ENG,2023-01-25,2023-08-04
555,Manufacturing,MFG,2023-07-06,2023-12-28
556,Dispatch,DIS,2023-12-29,2024-01-27
557,NON-MBL FLOOR BETWEEN MBL IV &V (PGMA-36343),SUP,2023-01-25,2024-01-27
558,Engineering,ENG,2023-01-25,2023-08-04
559,Manufacturing,MFG,2023-07-06,2023-12-28
560,Dispatch,DIS,2023-12-29,2024-01-27
561,NON-MBL FLOOR BETWEEN MBL IV &V (PGMA-36344),SUP,2023-01-25,2024-01-27
562,Engineering,ENG,2023-01-25,2023-08-04
563,Manufacturing,MFG,2023-07-06,2023-12-28
564,Dispatch,DIS,2023-12-29,2024-01-27
565,NON-MBL FLOOR BETWEEN MBL IV &V (PGMA-36345),SUP,2023-01-25,2024-01-27
566,Engineering,ENG,2023-01-25,2023-08-04
567,Manufacturing,MFG,2023-07-06,2023-12-28
568,Dispatch,DIS,2023-12-29,2024-01-27
569,MAIN FLOOR V MBL I ST PASS (PGMA-36351),SUP,2022-12-26,2023-12-28
570,Engineering,ENG,2022-12-26,2023-07-05
571,Manufacturing,MFG,2023-06-06,2023-11-28
572,Dispatch,DIS,2023-11-29,2023-12-28
573,MAIN FLOOR V MBL II ND PASS (PGMA-36352),SUP,2022-12-26,2023-12-28
574,Engineering,ENG,2022-12-26,2023-07-05
575,Manufacturing,MFG,2023-06-06,2023-11-28
576,Dispatch,DIS,2023-11-29,2023-12-28
577,NON-MBL FLOOR BETWEEN MBL V &VI (PGMA-36353),SUP,2022-12-26,2025-03-04
578,Engineering,ENG,2022-12-26,2024-01-29
579,Manufacturing,MFG,2023-12-31,2025-02-02
580,Dispatch,DIS,2025-02-03,2025-03-04
581,NON-MBL FLOOR BETWEEN MBL V &VI (PGMA-36354),SUP,2022-12-26,2025-03-04
582,Engineering,ENG,2022-12-26,2024-01-29
583,Manufacturing,MFG,2023-12-31,2025-02-02
584,Dispatch,DIS,2025-02-03,2025-03-04
585,NON-MBL FLOOR BETWEEN MBL V &VI (PGMA-36355),SUP,2022-12-26,2025-03-04
586,Engineering,ENG,2022-12-26,2024-01-29
587,Manufacturing,MFG,2023-12-31,2025-02-02
588,Dispatch,DIS,2025-02-03,2025-03-04
589,MAIN FLOOR VI MBL 1ST PASS (PGMA-36361),SUP,2022-12-26,2025-03-04
590,Engineering,ENG,2022-12-26,2024-01-29
591,Manufacturing,MFG,2023-12-31,2025-02-02
592,Dispatch,DIS,2025-02-03,2025-03-04
593,MAIN FLOOR VI MBL 2ND PASS (PGMA-36362),SUP,2022-12-26,2025-03-04
594,Engineering,ENG,2022-12-26,2024-01-29
595,Manufacturing,MFG,2023-12-31,2025-02-02
596,Dispatch,DIS,2025-02-03,2025-03-04
597,NON-MBL FLOOR ABOVE MBL VI (PGMA-36363),SUP,2022-12-26,2025-03-04
598,Engineering,ENG,2022-12-26,2024-01-29
599,Manufacturing,MFG,2023-12-31,2025-02-02
600,Dispatch,DIS,2025-02-03,2025-03-04
601,MISCELLANEOUS PLATFORMS-PART I (PGMA-36391),SUP,2023-01-25,2024-03-29
602,Engineering,ENG,2023-01-25,2023-08-17
603,Manufacturing,MFG,2023-07-19,2024-02-28
604,Dispatch,DIS,2024-02-29,2024-03-29
605,MISCELLANEOUS PLATFORMS-PART II (PGMA-36392),SUP,2023-01-25,2024-03-29
606,Engineering,ENG,2023-01-25,2023-08-17
607,Manufacturing,MFG,2023-07-19,2024-02-28
608,Dispatch,DIS,2024-02-29,2024-03-29
609,MISCELLANEOUS PLATFORMS-PART III (PGMA-36393),SUP,2023-01-25,2024-03-29
610,Engineering,ENG,2023-01-25,2023-08-17
611,Manufacturing,MFG,2023-07-19,2024-02-28
612,Dispatch,DIS,2024-02-29,2024-03-29
613,MISCELLANEOUS PLATFORMS-PART IV (PGMA-36394),SUP,2023-01-25,2024-03-29
614,Engineering,ENG,2023-01-25,2023-08-17
615,Manufacturing,MFG,2023-07-19,2024-02-28
616,Dispatch,DIS,2024-02-29,2024-03-29
617,MISCELLANEOUS PLATFORMS-PART V (PGMA-36395),SUP,2023-01-25,2024-03-29
618,Engineering,ENG,2023-01-25,2023-08-17
619,Manufacturing,MFG,2023-07-19,2024-02-28
620,Dispatch,DIS,2024-02-29,2024-03-29
621,BOILER ROOF STRUCTURE (PGMA-36610),SUP,2022-12-26,2023-12-28
622,Engineering,ENG,2022-12-26,2023-07-05
623,Manufacturing,MFG,2023-06-06,2023-11-28
624,Dispatch,DIS,2023-11-29,2023-12-28
625,BOILER ROOF SHEETING (PGMA-36611),SUP,2022-12-26,2023-12-28
626,Engineering,ENG,2022-12-26,2023-07-05
627,Manufacturing,MFG,2023-06-06,2023-11-28
628,Dispatch,DIS,2023-11-29,2023-12-28
629,RAIN WATER PIPES & GUTTER (PGMA-36613),SUP,2023-01-25,2024-02-27
630,Engineering,ENG,2023-01-25,2023-08-14
631,Manufacturing,MFG,2023-07-16,2024-01-28
632,Dispatch,DIS,2024-01-29,2024-02-27
633,BOILER SIDE CLADDING STRUCTURE (PGMA-36620),SUP,2023-01-25,2024-03-29
634,Engineering,ENG,2023-01-25,2023-08-17
635,Manufacturing,MFG,2023-07-19,2024-02-28
636,Dispatch,DIS,2024-02-29,2024-03-29
637,BOILER SIDE CLADDING STRUCTURE (PGMA-36621),SUP,2023-01-25,2024-03-29
638,Engineering,ENG,2023-01-25,2023-08-17
639,Manufacturing,MFG,2023-07-19,2024-02-28
640,Dispatch,DIS,2024-02-29,2024-03-29
641,POSTS AND HANGERS (PGMA-36740),SUP,2023-01-25,2024-04-28
642,Engineering,ENG,2023-01-25,2023-09-05
643,Manufacturing,MFG,2023-09-06,2024-03-29
644,Dispatch,DIS,2024-03-30,2024-04-28
645,FLOOR GRILLS AND GUARD PLATES-LOWER (PGMA-36811),SUP,2023-01-25,2024-04-28
646,Engineering,ENG,2023-01-25,2023-09-05
647,Manufacturing,MFG,2023-09-06,2024-03-29
648,Dispatch,DIS,2024-03-30,2024-04-28
649,FLOOR GRILLS&GUARD PLATE MIDDLE (PGMA-36812),SUP,2023-07-24,2024-09-25
650,Engineering,ENG,2023-07-24,2024-02-10
651,Manufacturing,MFG,2024-02-11,2024-08-26
652,Dispatch,DIS,2024-08-27,2024-09-25
653,FLOOR GRILLS&GUARD PLATES- UPPER (PGMA-36813),SUP,2023-01-25,2024-02-26
654,Engineering,ENG,2023-01-25,2023-08-04
655,Manufacturing,MFG,2023-08-05,2024-01-27
656,Dispatch,DIS,2024-01-28,2024-02-26
657,FLOOR GRILLS&GUARD PLATE MISCELLANEOUS (PGMA-36814),SUP,2022-12-26,2023-12-27
658,Engineering,ENG,2022-12-26,2023-05-26
659,Manufacturing,MFG,2023-05-27,2023-11-27
660,Dispatch,DIS,2023-11-28,2023-12-27
661,STAIRS AND LADDERS (PGMA-36820),SUP,2022-12-26,2023-12-27
662,Engineering,ENG,2022-12-26,2023-05-26
663,Manufacturing,MFG,2023-05-27,2023-11-27
664,Dispatch,DIS,2023-11-28,2023-12-27
665,HAND RAILS &POSTS LOWER (PGMA-36851),SUP,2023-01-25,2024-04-28
666,Engineering,ENG,2023-01-25,2023-09-05
667,Manufacturing,MFG,2023-09-06,2024-03-29
668,Dispatch,DIS,2024-03-30,2024-04-28
669,HANDRAILS & POSTS MIDDLE (PGMA-36852),SUP,2023-01-25,2024-02-26
670,Engineering,ENG,2023-01-25,2023-08-04
671,Manufacturing,MFG,2023-08-05,2024-01-27
672,Dispatch,DIS,2024-01-28,2024-02-26
673,HANDRAILS & POSTS UPPER (PGMA-36853),SUP,2022-12-26,2023-12-27
674,Engineering,ENG,2022-12-26,2023-05-26
675,Manufacturing,MFG,2023-05-27,2023-11-27
676,Dispatch,DIS,2023-11-28,2023-12-27
677,CONSUMABLES &Erection MATERIALS (PGMA-36993),SUP,2022-12-26,2023-12-27
678,Engineering,ENG,2022-12-26,2023-05-26
679,Manufacturing,MFG,2023-05-27,2023-11-27
680,Dispatch,DIS,2023-11-28,2023-12-27
681,Inter - Connecting Walkways (PG-38),SUP,2022-09-27,2025-05-30
682,LIFT COLUMNS (PGMA-38110),SUP,2022-09-27,2023-06-29
683,Engineering,ENG,2022-09-27,2023-04-08
684,Manufacturing,MFG,2023-01-21,2023-05-30
685,Dispatch,DIS,2023-05-31,2023-06-29
686,INTER CONN PLATFORMSBETN BOILER/ELEVAT (PGMA-38210),SUP,2023-06-12,2024-12-28
687,Engineering,ENG,2023-06-12,2024-02-28
688,Manufacturing,MFG,2024-02-29,2024-11-28
689,Dispatch,DIS,2024-11-29,2024-12-28
690,MILL HANDLING MONORAILS (PGMA-38299),SUP,2023-06-12,2025-01-17
691,Engineering,ENG,2023-06-12,2024-03-07
692,Manufacturing,MFG,2024-03-08,2024-12-18
693,Dispatch,DIS,2024-12-19,2025-01-17
694,CONN PLATFORMS TO MILL/DEAERATOR BAY (PGMA-38310),SUP,2023-06-12,2024-12-28
695,Engineering,ENG,2023-06-12,2024-02-28
696,Manufacturing,MFG,2024-02-29,2024-11-28
697,Dispatch,DIS,2024-11-29,2024-12-28
698,ECO HANDLING STRUCTURE (PGMA-38381),SUP,2023-03-23,2024-10-28
699,Engineering,ENG,2023-03-23,2023-12-17
700,Manufacturing,MFG,2023-12-18,2024-09-28
701,Dispatch,DIS,2024-09-29,2024-10-28
702,MILL MAINTANANCE PLATFORMS (PGMA-38410),SUP,2023-05-18,2024-11-27
703,Engineering,ENG,2023-05-18,2024-02-03
704,Manufacturing,MFG,2024-02-04,2024-10-28
705,Dispatch,DIS,2024-10-29,2024-11-27
706,LIFT BEAMS & BRACINGS (PGMA-38510),SUP,2023-05-18,2024-10-28
707,Engineering,ENG,2023-05-18,2024-01-17
708,Manufacturing,MFG,2024-01-18,2024-09-28
709,Dispatch,DIS,2024-09-29,2024-10-28
710,PASSENGER ELEVATOR BRACINGS-MIDDLE (PGMA-38512),SUP,2023-05-18,2024-10-28
711,Engineering,ENG,2023-05-18,2024-01-17
712,Manufacturing,MFG,2024-01-18,2024-09-28
713,Dispatch,DIS,2024-09-29,2024-10-28
714,ELEVATOR CLADDING STRUCTURE (PGMA-38610),SUP,2023-07-02,2025-01-27
715,Engineering,ENG,2023-07-02,2024-03-22
716,Manufacturing,MFG,2024-03-23,2024-12-28
717,Dispatch,DIS,2024-12-29,2025-01-27
718,ELEVATOR CLADDING (PGMA-38611),SUP,2023-07-02,2025-01-27
719,Engineering,ENG,2023-07-02,2024-03-22
720,Manufacturing,MFG,2024-03-23,2024-12-28
721,Dispatch,DIS,2024-12-29,2025-01-27
722,CONN PLATFORM ROOF STRUCTURE (PGMA-38612),SUP,2023-07-02,2025-01-27
723,Engineering,ENG,2023-07-02,2024-03-22
724,Manufacturing,MFG,2024-03-23,2024-12-28
725,Dispatch,DIS,2024-12-29,2025-01-27
726,LIFT MACHINE ROOM DETAILS &MISC STRUCT (PGMA-38710),SUP,2023-05-18,2024-11-27
727,Engineering,ENG,2023-05-18,2024-02-03
728,Manufacturing,MFG,2024-02-04,2024-10-28
729,Dispatch,DIS,2024-10-29,2024-11-27
730,ELEVATOR CLADDING STRUCTURES (PGMA-38712),SUP,2023-05-18,2024-11-27
731,Engineering,ENG,2023-05-18,2024-02-03
732,Manufacturing,MFG,2024-02-04,2024-10-28
733,Dispatch,DIS,2024-10-29,2024-11-27
734,FLOORGRILLS AND GUARD PLATE (PGMA-38810),SUP,2023-05-18,2024-11-27
735,Engineering,ENG,2023-05-18,2024-02-03
736,Manufacturing,MFG,2024-02-04,2024-10-28
737,Dispatch,DIS,2024-10-29,2024-11-27
738,STAIRS AND LADDERS (PGMA-38820),SUP,2023-05-18,2025-02-14
739,Engineering,ENG,2023-05-18,2024-03-14
740,Manufacturing,MFG,2024-03-15,2025-01-15
741,Dispatch,DIS,2025-01-16,2025-02-14
742,HAND RAILS AND HAND RAIL POSTS (PGMA-38850),SUP,2023-05-18,2024-11-27
743,Engineering,ENG,2023-05-18,2024-02-03
744,Manufacturing,MFG,2024-02-04,2024-10-28
745,Dispatch,DIS,2024-10-29,2024-11-27
746,CONSUMABLES &Erection MATERIALS (PGMA-38993),SUP,2023-08-31,2025-05-30
747,Engineering,ENG,2023-08-31,2024-06-27
748,Manufacturing,MFG,2024-06-28,2025-04-30
749,Dispatch,DIS,2025-05-01,2025-05-30
750,Coal bunker Bay Structures (PG-34),SUP,2022-10-27,2024-01-25
751,FOUN.MATLS FOR BUNKER COLOMNS (PGMA-34010),SUP,2022-10-27,2023-05-28
752,Engineering,ENG,2022-10-27,2023-01-19
753,Manufacturing,MFG,2022-12-21,2023-03-28
754,Dispatch,DIS,2023-03-29,2023-05-28
755,BUNKER COLUMNS (PGMA-34100),SUP,2022-10-27,2023-09-10
756,Engineering,ENG,2022-10-27,2023-05-08
757,Manufacturing,MFG,2023-02-18,2023-06-27
758,Dispatch,DIS,2023-06-28,2023-09-10
759,BUNKER SUPPORT FRAMES (PGMA-34200),SUP,2022-10-27,2023-09-27
760,Engineering,ENG,2022-10-27,2023-03-27
761,Manufacturing,MFG,2023-02-26,2023-08-28
762,Dispatch,DIS,2023-08-29,2023-09-27
763,PLATFORMS (PGMA-34300),SUP,2023-02-24,2024-01-25
764,Engineering,ENG,2023-02-24,2023-07-25
765,Manufacturing,MFG,2023-06-26,2023-12-26
766,Dispatch,DIS,2023-12-27,2024-01-25
767,BUNKER BAY FLOOR BEAMS (PGMA-34390),SUP,2023-02-24,2024-01-25
768,Engineering,ENG,2023-02-24,2023-07-25
769,Manufacturing,MFG,2023-06-26,2023-12-26
770,Dispatch,DIS,2023-12-27,2024-01-25
771,HORIZONTAL BEAMS BETWEEN COLUMNS (PGMA-34400),SUP,2022-12-26,2023-11-26
772,Engineering,ENG,2022-12-26,2023-05-26
773,Manufacturing,MFG,2023-04-27,2023-10-27
774,Dispatch,DIS,2023-10-28,2023-11-26
775,VERTICAL BRACINGS (PGMA-34500),SUP,2022-12-26,2023-11-26
776,Engineering,ENG,2022-12-26,2023-05-26
777,Manufacturing,MFG,2023-04-27,2023-10-27
778,Dispatch,DIS,2023-10-28,2023-11-26
779,FLOORGRILLS AND GUARD PLATES (PGMA-34810),SUP,2023-02-24,2024-01-25
780,Engineering,ENG,2023-02-24,2023-07-25
781,Manufacturing,MFG,2023-06-26,2023-12-26
782,Dispatch,DIS,2023-12-27,2024-01-25
783,STAIRS AND LADDERS (PGMA-34820),SUP,2023-02-24,2024-01-25
784,Engineering,ENG,2023-02-24,2023-07-25
785,Manufacturing,MFG,2023-06-26,2023-12-26
786,Dispatch,DIS,2023-12-27,2024-01-25
787,HANDRAILS & HANDRAIL POSTS (PGMA-34850),SUP,2023-02-24,2024-01-25
788,Engineering,ENG,2023-02-24,2023-07-25
789,Manufacturing,MFG,2023-06-26,2023-12-26
790,Dispatch,DIS,2023-12-27,2024-01-25
791,Manholes and Furnace Openings (PG-28),SUP,2023-01-25,2024-11-27
792,DOORS (PGMA-28220),SUP,2023-01-25,2024-11-27
793,Engineering,ENG,2023-01-25,2023-12-20
794,Manufacturing,MFG,2023-12-21,2024-10-28
795,Dispatch,DIS,2024-10-29,2024-11-27
796,BPS FASTENERS (PGMA-28700),SUP,2023-01-25,2024-11-27
797,Engineering,ENG,2023-01-25,2023-12-20
798,Manufacturing,MFG,2023-12-21,2024-10-28
799,Dispatch,DIS,2024-10-29,2024-11-27
800, BOI- HT- Boiler Elevator,SUP,2023-04-15,2024-04-29
801,NIT,ENQ,2023-04-15,2023-04-15
802,Ordering,ORD,2023-04-16,2023-09-12
803,Manufacturing,MFG,2023-09-13,2024-03-30
804,Dispatch,DIS,2024-03-31,2024-04-29
805, BOI- FL- Quick erect scaffold,SUP,2023-10-12,2025-11-10
806,NIT,ENQ,2023-10-12,2023-10-12
807,Ordering,ORD,2023-10-13,2024-07-18
808,Manufacturing,MFG,2024-07-19,2025-05-14
809,Dispatch,DIS,2025-05-15,2025-11-10
810,Civil,CIV,2023-02-23,2024-12-15
811, REL OF DWG FOR SG Foundation,PE - RFC,2023-02-23,2023-02-23
812,Boiler Foundation,CIV,2023-02-24,2023-09-25
813, Excavation,CIV,2023-02-24,2023-04-09
814, RCC Raft,CIV,2023-04-10,2023-07-03
815, RCC Pedestal,CIV,2023-07-04,2023-09-10
816, Backfilling,CIV,2023-09-11,2023-09-25
817,Coal Bunker Bay Foundation and structure,CIV,2023-02-23,2024-12-15
818, REL OF DWG FOR BUNKER Foundation,PE - RFC,2023-02-23,2023-02-23
819,Coal BUNKER BAY FOUNDATIONS,CIV,2023-02-24,2023-09-26
820, Excavation & PCC,CIV,2023-02-24,2023-04-19
821, RCC foundation,CIV,2023-04-20,2023-07-13
822, RCC Pedestal ( Upto Bolt Lift),CIV,2023-07-14,2023-09-06
823, Backfilling,CIV,2023-09-07,2023-09-18
824, Finishing Work,CIV,2023-09-19,2023-09-26
825,Coal Bunker Bay Floors and Roof,CIV,2024-05-20,2024-12-15
826, RCC Feeder Floor Slab,CIV,2024-05-20,2024-07-08
827, RCC Tripper Floor Slab,CIV,2024-07-04,2024-09-21
828, RCC Roof Slab,CIV,2024-09-27,2024-12-15
829,Erection,ERC,2023-09-26,2026-04-30
830,Main Boiler supporting structure (PG-35),ERC,2023-09-26,2026-04-30
831,Erection: Main Columns ,ERC,2023-09-26,2024-06-21
832,Erection: Auxiliary Columns,ERC,2023-09-30,2024-03-27
833,Erection: Horizontal Bracing including Chute Pipe And Ladder,ERC,2024-02-01,2024-06-14
834,Erection: Horizontal Beams,ERC,2024-02-01,2024-07-09
835,Erection: Land Platform,ERC,2024-02-01,2024-06-09
836,Erection: Front Bracing,ERC,2024-02-01,2024-06-09
837,Erection: Side Bracing,ERC,2024-02-01,2024-06-09
838,Erection: Rear Bracing,ERC,2024-02-01,2024-06-09
839,Erection: Floor Grills And Guard,ERC,2024-02-03,2025-05-27
840,Erection: Stairs ,ERC,2024-02-03,2024-06-21
841,Erection: Hand Rails And Posts,ERC,2024-03-12,2026-04-30
842,Erection: Ceiling Girder Main Structure,ERC,2024-06-22,2024-07-25
843,Erection: CEIL STRUCT-CROSS WELDED BEAMS,ERC,2024-04-23,2024-07-25
844,Erection: Ceiling Structure Rolled beam,ERC,2024-06-22,2024-07-25
845,Erection: Ceiling Structure Horizontal beam,ERC,2024-04-23,2024-07-25
846,Erection: Ceiling Girder Lifting Complete,ERC,2024-07-25,2024-07-25
847,Galleries & Stairways (PG-36),ERC,2024-03-30,2025-12-27
848,Erection: COLUMNS NEAR AIR PRE HEATERS,ERC,2024-07-26,2024-11-22
849,Erection: MIDDLE COLUMNS IN BOILER,ERC,2024-05-27,2024-09-23
850,Erection: BEAMS & BRACINGS NEAR AIR PRE HEATER,ERC,2024-07-26,2025-01-21
851,Erection: Main Floor MBL- 1st and 2nd Pass,ERC,2024-04-27,2025-12-27
852,Erection: NON MBL Floor - 1st and 2nd Pass,ERC,2024-03-30,2025-11-29
853,Erection: Miscellaneous Platform,ERC,2024-06-26,2025-11-17
854,Erection: Boiler Roof Structure,ERC,2024-06-26,2024-08-24
855,Erection: Boiler Roof Sheeting,ERC,2024-06-26,2024-08-24
856,Erection: Rain Water Pipes And Gutter,ERC,2024-07-26,2024-08-24
857,Erection: Boiler Side Cladding Structure,ERC,2024-07-26,2024-09-23
858,Erection: Floor grills and guard plate,ERC,2024-09-26,2025-12-19
859,Erection: Stairs And Ladders,ERC,2024-11-23,2025-04-21
860,Erection: Handrails And Posts,ERC,2024-06-26,2025-09-18
861,Erection: Silencer and supports,ERC,2024-07-26,2024-08-24
862,Inter - Connecting Walkways (PG-38),ERC,2024-10-29,2026-01-05
863,Erection: LIFT COLUMNS  Beams & Bracing,ERC,2024-10-29,2025-02-25
864,Erection: INTER CONN PLATFORMSBETN BOILER/ELEVATOR,ERC,2025-06-20,2025-08-18
865,Erection: MILL HANDLING MONORAILS,ERC,2025-01-18,2025-03-18
866,Erection: CONN PLATFORMS TO MILL/DEAERATOR BAY,ERC,2025-11-07,2026-01-05
867,Erection: ECO HANDLING STRUCTURE,ERC,2025-09-18,2025-11-06
868,Erection: MILL MAINTANANCE PLATFORMS,ERC,2024-11-28,2025-01-11
869,Erection: ELEVATOR CLADDING STRUCTURE,ERC,2025-02-26,2025-07-25
870,Erection: ELEVATOR CLADDING,ERC,2025-07-26,2025-09-23
871,Erection: CONN PLATFORM ROOF STRUCTURE,ERC,2025-08-19,2025-09-17
872,Erection: LIFT MACHINE ROOM DETAILS &MISC STRUCT,ERC,2025-02-26,2025-07-25
873,Erection: FLOORGRILLS AND GUARD PLATE,ERC,2025-07-26,2025-08-24
874,Erection: STAIRS AND LADDERS,ERC,2025-08-25,2025-09-23
875,Erection: HAND RAILS AND HAND RAIL POSTS,ERC,2025-09-24,2025-10-23
876,Coal bunker Bay Structures (PG-34),ERC,2024-01-26,2024-11-05
877,Erection: BUNKER COLUMNS  SUPPORT FRAME PLATFORM  BEAMS & BRACINGS Upto Feeder Floor,ERC,2024-01-26,2024-03-05
878,Erection: BUNKER COLUMNS  SUPPORT FRAME PLATFORM  BEAMS & BRACINGS Upto Tripper Floor,ERC,2024-03-06,2024-04-19
879,Erection: BUNKER COLUMNS  SUPPORT FRAME PLATFORM  BEAMS & BRACINGS Upto Roof,ERC,2024-04-20,2024-06-08
880,Erection: Cladding,ERC,2024-06-09,2024-08-07
881,Erection: FLOORGRILLS AND GUARD PLATES,ERC,2024-06-09,2024-09-06
882,Erection: STAIRS AND LADDERS,ERC,2024-07-09,2024-10-06
883,Erection: HANDRAILS & HANDRAIL POSTS,ERC,2024-08-08,2024-11-05
884,Manholes and Furnace Openings (PG-28),ERC,2025-04-05,2025-06-03
885,Erection: DOORS,ERC,2025-04-05,2025-06-03
886,Water Circulation System  Super Heaters and Re-Heaters ,ERC,2022-09-27,2026-02-27
887,Supply (BHEL TRY),SUP,2022-09-27,2025-11-11
888,Water Circulation System,SUP,2022-09-27,2025-11-11
889,Separator  Storage Tanks and Supports (PG-04),SUP,2022-09-27,2024-03-27
890,SUPPORTS FOR COLLECTOR & SEPERATOR VESSEL (PGMA-4147),SUP,2022-09-27,2024-01-26
891,Engineering,ENG,2022-09-27,2023-08-04
892,Manufacturing,MFG,2023-05-05,2023-12-12
893,Dispatch,DIS,2023-12-13,2024-01-26
894,Separator Vessels with Internals & Attach (PGMA-4321),SUP,2023-01-25,2024-03-27
895,Engineering,ENG,2023-01-25,2023-08-14
896,Manufacturing,MFG,2023-08-15,2024-02-26
897,Dispatch,DIS,2024-02-27,2024-03-27
898,SUPP FOR COLLECTING & SEPERATOR VESSEL(DD) (PGMA-4347),SUP,2023-01-25,2024-02-26
899,Engineering,ENG,2023-01-25,2023-08-04
900,Manufacturing,MFG,2023-08-05,2024-01-27
901,Dispatch,DIS,2024-01-28,2024-02-26
902,SUPP FOR COLLECTING & SEPERATOR VESSEL (PGMA-4547),SUP,2023-01-25,2024-02-26
903,Engineering,ENG,2023-01-25,2023-08-04
904,Manufacturing,MFG,2023-08-05,2024-01-27
905,Dispatch,DIS,2024-01-28,2024-02-26
906,Waterwall Headers (PG-05),SUP,2023-01-25,2024-11-27
907,INLET FRONT LOWER WW HEADER (PGMA-5137),SUP,2023-01-25,2024-11-27
908,Engineering,ENG,2023-01-25,2023-12-20
909,Manufacturing,MFG,2023-12-21,2024-10-28
910,Dispatch,DIS,2024-10-29,2024-11-27
911,INLET REAR LOWER WW HEADER (PGMA-5147),SUP,2023-01-25,2024-11-27
912,Engineering,ENG,2023-01-25,2023-12-20
913,Manufacturing,MFG,2023-12-21,2024-10-28
914,Dispatch,DIS,2024-10-29,2024-11-27
915,INLET SIDE LOWER WW HEADER (PGMA-5155),SUP,2023-01-25,2024-11-27
916,Engineering,ENG,2023-01-25,2023-12-20
917,Manufacturing,MFG,2023-12-21,2024-10-28
918,Dispatch,DIS,2024-10-29,2024-11-27
919,WATERWALL REAR HANGER OUTLET HDR (PGMA-5227),SUP,2023-01-25,2024-02-26
920,Engineering,ENG,2023-01-25,2023-08-04
921,Manufacturing,MFG,2023-08-05,2024-01-27
922,Dispatch,DIS,2024-01-28,2024-02-26
923,OUTLET FRONT UPPER WW HEADER (PGMA-5231),SUP,2023-01-25,2024-02-26
924,Engineering,ENG,2023-01-25,2023-08-04
925,Manufacturing,MFG,2023-08-05,2024-01-27
926,Dispatch,DIS,2024-01-28,2024-02-26
927,OUTLET SIDE UPPER WW HEADER (PGMA-5251),SUP,2023-01-25,2024-02-26
928,Engineering,ENG,2023-01-25,2023-08-04
929,Manufacturing,MFG,2023-08-05,2024-01-27
930,Dispatch,DIS,2024-01-28,2024-02-26
931,Furnace Rear wall Intermediate header (PGMA-5327),SUP,2023-01-25,2024-04-28
932,Engineering,ENG,2023-01-25,2023-09-05
933,Manufacturing,MFG,2023-09-06,2024-03-29
934,Dispatch,DIS,2024-03-30,2024-04-28
935,FRONT INTERMEDIATE HEADER (PGMA-5330),SUP,2023-01-25,2024-04-28
936,Engineering,ENG,2023-01-25,2023-09-05
937,Manufacturing,MFG,2023-09-06,2024-03-29
938,Dispatch,DIS,2024-03-30,2024-04-28
939,SIDE INTERMEDIATE HEADER (PGMA-5350),SUP,2023-01-25,2024-04-28
940,Engineering,ENG,2023-01-25,2023-09-05
941,Manufacturing,MFG,2023-09-06,2024-03-29
942,Dispatch,DIS,2024-03-30,2024-04-28
943,Waterwall Panels (PG-06),SUP,2023-01-25,2024-08-29
944,UNCLASSIFIED BURNER PANEL (PGMA-6400),SUP,2023-01-25,2024-07-29
945,Engineering,ENG,2023-01-25,2023-10-26
946,Manufacturing,MFG,2023-10-27,2024-06-29
947,Dispatch,DIS,2024-06-30,2024-07-29
948,BURNER PNL- OS (PGMA-6401),SUP,2023-01-25,2024-07-29
949,Engineering,ENG,2023-01-25,2023-10-26
950,Manufacturing,MFG,2023-10-27,2024-06-29
951,Dispatch,DIS,2024-06-30,2024-07-29
952,FRONT INTERMEDIATE WW PNL -OS (PGMA-6434),SUP,2023-01-25,2024-05-29
953,Engineering,ENG,2023-01-25,2023-09-26
954,Manufacturing,MFG,2023-09-27,2024-04-29
955,Dispatch,DIS,2024-04-30,2024-05-29
956,FRONT WW LOWER PANEL-OS (PGMA-6437),SUP,2023-01-25,2024-08-29
957,Engineering,ENG,2023-01-25,2023-11-05
958,Manufacturing,MFG,2023-11-06,2024-07-30
959,Dispatch,DIS,2024-07-31,2024-08-29
960,REAR INTERMEDIATE WW PNL -OS (PGMA-6444),SUP,2023-01-25,2024-08-29
961,Engineering,ENG,2023-01-25,2023-11-05
962,Manufacturing,MFG,2023-11-06,2024-07-30
963,Dispatch,DIS,2024-07-31,2024-08-29
964,SIDE UPPER WW PNL -OS (PGMA-6451),SUP,2023-01-25,2024-03-29
965,Engineering,ENG,2023-01-25,2023-08-14
966,Manufacturing,MFG,2023-08-15,2024-02-28
967,Dispatch,DIS,2024-02-29,2024-03-29
968,SIDE INTERMEDIATE WW PNL -OS (PGMA-6453),SUP,2023-01-25,2024-03-29
969,Engineering,ENG,2023-01-25,2023-08-14
970,Manufacturing,MFG,2023-08-15,2024-02-28
971,Dispatch,DIS,2024-02-29,2024-03-29
972,SIDE LOWER WW PNL -OS (PGMA-6455),SUP,2023-01-25,2024-08-29
973,Engineering,ENG,2023-01-25,2023-11-05
974,Manufacturing,MFG,2023-11-06,2024-07-30
975,Dispatch,DIS,2024-07-31,2024-08-29
976,BURNER PANELS WITH ATTACHMENT (PGMA-6500),SUP,2023-01-25,2024-07-29
977,Engineering,ENG,2023-01-25,2023-10-26
978,Manufacturing,MFG,2023-10-27,2024-06-29
979,Dispatch,DIS,2024-06-30,2024-07-29
980,SOFA PANELS -OS (PGMA-6501),SUP,2023-01-25,2024-07-29
981,Engineering,ENG,2023-01-25,2023-10-26
982,Manufacturing,MFG,2023-10-27,2024-06-29
983,Dispatch,DIS,2024-06-30,2024-07-29
984,FRONT UPPER WW PNL + ATCH (PGMA-6731),SUP,2023-01-25,2024-03-29
985,Engineering,ENG,2023-01-25,2023-08-14
986,Manufacturing,MFG,2023-08-15,2024-02-28
987,Dispatch,DIS,2024-02-29,2024-03-29
988,Front Upper Corners Ww Panel + attachment (PGMA-6732),SUP,2023-01-25,2024-03-29
989,Engineering,ENG,2023-01-25,2023-08-14
990,Manufacturing,MFG,2023-08-15,2024-02-28
991,Dispatch,DIS,2024-02-29,2024-03-29
992,FRONT INTERMEDIATE WW PNL + ATCH (PGMA-6734),SUP,2023-01-25,2024-05-29
993,Engineering,ENG,2023-01-25,2023-09-26
994,Manufacturing,MFG,2023-09-27,2024-04-29
995,Dispatch,DIS,2024-04-30,2024-05-29
996,FUR LWR FRNT SPIRAL PANELS WITH I/L TERM TUBES (PGMA-6737),SUP,2023-01-25,2024-08-29
997,Engineering,ENG,2023-01-25,2023-11-05
998,Manufacturing,MFG,2023-11-06,2024-07-30
999,Dispatch,DIS,2024-07-31,2024-08-29
1000,REAR UPPER WW PNL + ATCH (PGMA-6741),SUP,2023-01-25,2024-04-28
1001,Engineering,ENG,2023-01-25,2023-09-05
1002,Manufacturing,MFG,2023-09-06,2024-03-29
1003,Dispatch,DIS,2024-03-30,2024-04-28
1004,FUR UPPER REAR SPIRAL PANEL (PGMA-6744),SUP,2023-01-25,2024-07-29
1005,Engineering,ENG,2023-01-25,2023-10-26
1006,Manufacturing,MFG,2023-10-27,2024-06-29
1007,Dispatch,DIS,2024-06-30,2024-07-29
1008,FUR LWR REAR SPIRAL PANELS WITH I/T TERM TUBES (PGMA-6747),SUP,2023-01-25,2024-08-29
1009,Engineering,ENG,2023-01-25,2023-11-05
1010,Manufacturing,MFG,2023-11-06,2024-07-30
1011,Dispatch,DIS,2024-07-31,2024-08-29
1012,SIDE UPPER WW PNL + ATCH (PGMA-6751),SUP,2023-01-25,2024-03-29
1013,Engineering,ENG,2023-01-25,2023-08-14
1014,Manufacturing,MFG,2023-08-15,2024-02-28
1015,Dispatch,DIS,2024-02-29,2024-03-29
1016,Furnace vertical wall panels sides L&R (PGMA-6752),SUP,2023-01-25,2024-04-28
1017,Engineering,ENG,2023-01-25,2023-09-05
1018,Manufacturing,MFG,2023-09-06,2024-03-29
1019,Dispatch,DIS,2024-03-30,2024-04-28
1020,FUR UPPER SIDE SPIRAL PANELS (PGMA-6753),SUP,2023-01-25,2024-05-29
1021,Engineering,ENG,2023-01-25,2023-09-26
1022,Manufacturing,MFG,2023-09-27,2024-04-29
1023,Dispatch,DIS,2024-04-30,2024-05-29
1024,SIDE LOWER WW PNL + ATCH (PGMA-6755),SUP,2023-01-25,2024-08-29
1025,Engineering,ENG,2023-01-25,2023-11-05
1026,Manufacturing,MFG,2023-11-06,2024-07-30
1027,Dispatch,DIS,2024-07-31,2024-08-29
1028,Circulation System Components (PG-07),SUP,2022-12-26,2024-09-27
1029,Separator-Collecting Vessel Connecting Link (PGMA-7110),SUP,2023-01-25,2024-02-26
1030,Engineering,ENG,2023-01-25,2023-08-04
1031,Manufacturing,MFG,2023-08-05,2024-01-27
1032,Dispatch,DIS,2024-01-28,2024-02-26
1033,Mixing Sphere (PGMA-7125),SUP,2023-01-25,2024-04-28
1034,Engineering,ENG,2023-01-25,2023-09-05
1035,Manufacturing,MFG,2023-09-06,2024-03-29
1036,Dispatch,DIS,2024-03-30,2024-04-28
1037,FURNACE SCREEN TUBES (PGMA-7223),SUP,2023-01-25,2024-05-29
1038,Engineering,ENG,2023-01-25,2023-09-26
1039,Manufacturing,MFG,2023-09-27,2024-04-29
1040,Dispatch,DIS,2024-04-30,2024-05-29
1041,LOWER CORNER TRANSITION TUBES (PGMA-7231),SUP,2023-01-25,2024-09-27
1042,Engineering,ENG,2023-01-25,2023-11-20
1043,Manufacturing,MFG,2023-11-21,2024-08-28
1044,Dispatch,DIS,2024-08-29,2024-09-27
1045,UPPER CORNER TRANSITION TUBES (PGMA-7232),SUP,2023-01-25,2024-03-29
1046,Engineering,ENG,2023-01-25,2023-08-14
1047,Manufacturing,MFG,2023-08-15,2024-02-28
1048,Dispatch,DIS,2024-02-29,2024-03-29
1049,WW FRONT HEADER SUSPENSION-DD (PGMA-7302),SUP,2022-12-26,2024-01-27
1050,Engineering,ENG,2022-12-26,2023-07-05
1051,Manufacturing,MFG,2023-07-06,2023-12-28
1052,Dispatch,DIS,2023-12-29,2024-01-27
1053,WW SIDE HEADER SUSPENSION-DD (PGMA-7303),SUP,2022-12-26,2024-01-27
1054,Engineering,ENG,2022-12-26,2023-07-05
1055,Manufacturing,MFG,2023-07-06,2023-12-28
1056,Dispatch,DIS,2023-12-29,2024-01-27
1057,FURNACE WALL SUPPORTS FRONT-DD (PGMA-7309),SUP,2023-01-25,2024-03-29
1058,Engineering,ENG,2023-01-25,2023-08-14
1059,Manufacturing,MFG,2023-08-15,2024-02-28
1060,Dispatch,DIS,2024-02-29,2024-03-29
1061,FUR SIDE RISERS (PGMA-7315),SUP,2023-01-25,2024-03-29
1062,Engineering,ENG,2023-01-25,2023-08-14
1063,Manufacturing,MFG,2023-08-15,2024-02-28
1064,Dispatch,DIS,2024-02-29,2024-03-29
1065,FUR REAR RISERS (PGMA-7316),SUP,2023-01-25,2024-03-29
1066,Engineering,ENG,2023-01-25,2023-08-14
1067,Manufacturing,MFG,2023-08-15,2024-02-28
1068,Dispatch,DIS,2024-02-29,2024-03-29
1069,FUR FRNT RISERS (PGMA-7318),SUP,2023-01-25,2024-03-29
1070,Engineering,ENG,2023-01-25,2023-08-14
1071,Manufacturing,MFG,2023-08-15,2024-02-28
1072,Dispatch,DIS,2024-02-29,2024-03-29
1073,RISER TUBE SUPPORT-DD (PGMA-7331),SUP,2023-01-25,2024-02-26
1074,Engineering,ENG,2023-01-25,2023-08-04
1075,Manufacturing,MFG,2023-08-05,2024-01-27
1076,Dispatch,DIS,2024-01-28,2024-02-26
1077,FURNACE SPIRAL WALL SUPPORTS-DD (PGMA-7360),SUP,2023-01-25,2024-08-29
1078,Engineering,ENG,2023-01-25,2023-11-05
1079,Manufacturing,MFG,2023-11-06,2024-07-30
1080,Dispatch,DIS,2024-07-31,2024-08-29
1081,FURNACE WALL SUPP REAR-DD (PGMA-7361),SUP,2023-01-25,2024-03-29
1082,Engineering,ENG,2023-01-25,2023-08-14
1083,Manufacturing,MFG,2023-08-15,2024-02-28
1084,Dispatch,DIS,2024-02-29,2024-03-29
1085,FURNACE WALL SUPPORTS SIDES L & R-DD (PGMA-7362),SUP,2023-01-25,2024-03-29
1086,Engineering,ENG,2023-01-25,2023-08-14
1087,Manufacturing,MFG,2023-08-15,2024-02-28
1088,Dispatch,DIS,2024-02-29,2024-03-29
1089,CONSUMABLES &Erection MATERIALS-DD (PGMA-7393),SUP,2022-12-26,2023-12-27
1090,Engineering,ENG,2022-12-26,2023-05-26
1091,Manufacturing,MFG,2023-05-27,2023-11-27
1092,Dispatch,DIS,2023-11-28,2023-12-27
1093,COMBUSTOR OUTLET HEADER SUPPORTS (PGMA-7402),SUP,2022-12-26,2024-01-27
1094,Engineering,ENG,2022-12-26,2023-07-05
1095,Manufacturing,MFG,2023-07-06,2023-12-28
1096,Dispatch,DIS,2023-12-29,2024-01-27
1097,WW SIDE HEADER SUSPENSION (PGMA-7403),SUP,2022-12-26,2024-01-27
1098,Engineering,ENG,2022-12-26,2023-07-05
1099,Manufacturing,MFG,2023-07-06,2023-12-28
1100,Dispatch,DIS,2023-12-29,2024-01-27
1101,WW SCREEN HEADER SUSPENSION (PGMA-7405),SUP,2022-12-26,2024-01-27
1102,Engineering,ENG,2022-12-26,2023-07-05
1103,Manufacturing,MFG,2023-07-06,2023-12-28
1104,Dispatch,DIS,2023-12-29,2024-01-27
1105,Furnace wall Supports front (PGMA-7409),SUP,2023-01-25,2024-03-29
1106,Engineering,ENG,2023-01-25,2023-08-14
1107,Manufacturing,MFG,2023-08-15,2024-02-28
1108,Dispatch,DIS,2024-02-29,2024-03-29
1109,FURNACE SCREEN TUBES-OS (PGMA-7423),SUP,2023-01-25,2024-05-29
1110,Engineering,ENG,2023-01-25,2023-09-26
1111,Manufacturing,MFG,2023-09-27,2024-04-29
1112,Dispatch,DIS,2024-04-30,2024-05-29
1113,RISER TUBE SUPPORT (PGMA-7431),SUP,2023-01-25,2024-02-26
1114,Engineering,ENG,2023-01-25,2023-08-04
1115,Manufacturing,MFG,2023-08-05,2024-01-27
1116,Dispatch,DIS,2024-01-28,2024-02-26
1117,Furnace Spiral Wall supports Misc. items (PGMA-7460),SUP,2023-01-25,2024-08-29
1118,Engineering,ENG,2023-01-25,2023-11-05
1119,Manufacturing,MFG,2023-11-06,2024-07-30
1120,Dispatch,DIS,2024-07-31,2024-08-29
1121,Furnace wall Supports rear (PGMA-7461),SUP,2023-01-25,2024-03-29
1122,Engineering,ENG,2023-01-25,2023-08-14
1123,Manufacturing,MFG,2023-08-15,2024-02-28
1124,Dispatch,DIS,2024-02-29,2024-03-29
1125,Furnace wall Supports Sides L & R (PGMA-7462),SUP,2023-01-25,2024-03-29
1126,Engineering,ENG,2023-01-25,2023-08-14
1127,Manufacturing,MFG,2023-08-15,2024-02-28
1128,Dispatch,DIS,2024-02-29,2024-03-29
1129,EVAPORATOR COILS (PGMA-7502),SUP,2022-12-26,2024-01-27
1130,Engineering,ENG,2022-12-26,2023-07-05
1131,Manufacturing,MFG,2023-07-06,2023-12-28
1132,Dispatch,DIS,2023-12-29,2024-01-27
1133,EVAPORATOR COILS (PGMA-7503),SUP,2022-12-26,2024-01-27
1134,Engineering,ENG,2022-12-26,2023-07-05
1135,Manufacturing,MFG,2023-07-06,2023-12-28
1136,Dispatch,DIS,2023-12-29,2024-01-27
1137,MODULE SUPPORT - IP (PGMA-7505),SUP,2022-12-26,2024-01-27
1138,Engineering,ENG,2022-12-26,2023-07-05
1139,Manufacturing,MFG,2023-07-06,2023-12-28
1140,Dispatch,DIS,2023-12-29,2024-01-27
1141,RISER TUBE SUPPORT-SHOP (PGMA-7531),SUP,2023-01-25,2024-02-26
1142,Engineering,ENG,2023-01-25,2023-08-04
1143,Manufacturing,MFG,2023-08-05,2024-01-27
1144,Dispatch,DIS,2024-01-28,2024-02-26
1145,FURNACE SPIRAL WALL MISC ITEMS-SHOP (PGMA-7560),SUP,2023-01-25,2024-08-29
1146,Engineering,ENG,2023-01-25,2023-11-05
1147,Manufacturing,MFG,2023-11-06,2024-07-30
1148,Dispatch,DIS,2024-07-31,2024-08-29
1149,INDEGENOUS ELECTRODE (PGMA-7991),SUP,2022-12-26,2023-12-27
1150,Engineering,ENG,2022-12-26,2023-05-26
1151,Manufacturing,MFG,2023-05-27,2023-11-27
1152,Dispatch,DIS,2023-11-28,2023-12-27
1153,IMPORTED ELECTRODES (PGMA-7992),SUP,2023-01-25,2024-03-29
1154,Engineering,ENG,2023-01-25,2023-08-14
1155,Manufacturing,MFG,2023-08-15,2024-02-28
1156,Dispatch,DIS,2024-02-29,2024-03-29
1157,CONSUMABLES &Erection MATERIALS (PGMA-7993),SUP,2022-12-26,2023-12-27
1158,Engineering,ENG,2022-12-26,2023-05-26
1159,Manufacturing,MFG,2023-05-27,2023-11-27
1160,Dispatch,DIS,2023-11-28,2023-12-27
1161,Buckstays and Framing (PG-08),SUP,2023-01-25,2024-10-27
1162,FURNACE UPPER BUCKSTAYS- FRONT & REAR (PGMA-8001),SUP,2023-01-25,2024-03-29
1163,Engineering,ENG,2023-01-25,2023-08-14
1164,Manufacturing,MFG,2023-08-15,2024-02-28
1165,Dispatch,DIS,2024-02-29,2024-03-29
1166,FURNACE UPPER BUCKSTAYS - SIDE (PGMA-8003),SUP,2023-01-25,2024-03-29
1167,Engineering,ENG,2023-01-25,2023-08-14
1168,Manufacturing,MFG,2023-08-15,2024-02-28
1169,Dispatch,DIS,2024-02-29,2024-03-29
1170,FURNACE INTER BUCKSTAYS (PGMA-8006),SUP,2023-01-25,2024-09-27
1171,Engineering,ENG,2023-01-25,2023-11-20
1172,Manufacturing,MFG,2023-11-21,2024-08-28
1173,Dispatch,DIS,2024-08-29,2024-09-27
1174,FURNACE LOWER BUCKSTAYS (PGMA-8007),SUP,2023-01-25,2024-10-27
1175,Engineering,ENG,2023-01-25,2023-12-05
1176,Manufacturing,MFG,2023-12-06,2024-09-27
1177,Dispatch,DIS,2024-09-28,2024-10-27
1178,FURNACE REAR ARCH BUCKSTAYS (PGMA-8111),SUP,2023-01-25,2024-08-29
1179,Engineering,ENG,2023-01-25,2023-11-05
1180,Manufacturing,MFG,2023-11-06,2024-07-30
1181,Dispatch,DIS,2024-07-31,2024-08-29
1182,UPPER BACK PASS BUCKSTAY (PGMA-8501),SUP,2023-01-25,2024-03-29
1183,Engineering,ENG,2023-01-25,2023-08-14
1184,Manufacturing,MFG,2023-08-15,2024-02-28
1185,Dispatch,DIS,2024-02-29,2024-03-29
1186,FURNACE BACK PASS BUCKSTAYS -SIDE (PGMA-8503),SUP,2023-01-25,2024-03-29
1187,Engineering,ENG,2023-01-25,2023-08-14
1188,Manufacturing,MFG,2023-08-15,2024-02-28
1189,Dispatch,DIS,2024-02-29,2024-03-29
1190,FURNACE KEY BUCKSTAYS - UPPER (PGMA-8901),SUP,2023-01-25,2024-03-29
1191,Engineering,ENG,2023-01-25,2023-08-14
1192,Manufacturing,MFG,2023-08-15,2024-02-28
1193,Dispatch,DIS,2024-02-29,2024-03-29
1194,EXPN. MOVEMENT MEASUREMENT COMPONENTS (PGMA-8910),SUP,2023-01-25,2024-05-16
1195,Engineering,ENG,2023-01-25,2023-08-27
1196,Manufacturing,MFG,2023-08-28,2024-04-16
1197,Dispatch,DIS,2024-04-17,2024-05-16
1198,BULKED B.P.S ITEMS FOR UPPER BUCKSTAYS (PGMA-8911),SUP,2023-01-25,2024-03-29
1199,Engineering,ENG,2023-01-25,2023-08-14
1200,Manufacturing,MFG,2023-08-15,2024-02-28
1201,Dispatch,DIS,2024-02-29,2024-03-29
1202,BULKED B.P.S ITEMS FOR INTERMEDIATE BUCKSTAYS (PGMA-8912),SUP,2023-01-25,2024-09-27
1203,Engineering,ENG,2023-01-25,2023-11-20
1204,Manufacturing,MFG,2023-11-21,2024-08-28
1205,Dispatch,DIS,2024-08-29,2024-09-27
1206,BULKED B.P.S ITEMS FOR LOWER BUCKSTAYS (PGMA-8913),SUP,2023-01-25,2024-10-27
1207,Engineering,ENG,2023-01-25,2023-12-05
1208,Manufacturing,MFG,2023-12-06,2024-09-27
1209,Dispatch,DIS,2024-09-28,2024-10-27
1210,Economiser Headers  Coils and Components (PG-19),SUP,2023-01-25,2024-11-27
1211,Economiser Supports above Roof- DD (PGMA-19304),SUP,2023-01-25,2024-03-29
1212,Engineering,ENG,2023-01-25,2023-08-14
1213,Manufacturing,MFG,2023-08-15,2024-02-28
1214,Dispatch,DIS,2024-02-29,2024-03-29
1215,ECO. LINES & LINKS SUPPORTS-DD (PGMA-19306),SUP,2023-01-25,2024-03-29
1216,Engineering,ENG,2023-01-25,2023-08-14
1217,Manufacturing,MFG,2023-08-15,2024-02-28
1218,Dispatch,DIS,2024-02-29,2024-03-29
1219,ECO FEED PIPE SUPPORT-DD (PGMA-19307),SUP,2023-01-25,2024-03-29
1220,Engineering,ENG,2023-01-25,2023-08-14
1221,Manufacturing,MFG,2023-08-15,2024-02-28
1222,Dispatch,DIS,2024-02-29,2024-03-29
1223,ECO HANGER TUBE ATTACHMENT (PGMA-19402),SUP,2023-01-25,2024-03-29
1224,Engineering,ENG,2023-01-25,2023-08-14
1225,Manufacturing,MFG,2023-08-15,2024-02-28
1226,Dispatch,DIS,2024-02-29,2024-03-29
1227,ECO. LINES & LINKS SUPPORTS-SHOP (PGMA-19506),SUP,2023-01-25,2024-03-29
1228,Engineering,ENG,2023-01-25,2023-08-14
1229,Manufacturing,MFG,2023-08-15,2024-02-28
1230,Dispatch,DIS,2024-02-29,2024-03-29
1231,ECO FEED PIPE SUPPORT-SHOP (PGMA-19507),SUP,2023-01-25,2024-03-29
1232,Engineering,ENG,2023-01-25,2023-08-14
1233,Manufacturing,MFG,2023-08-15,2024-02-28
1234,Dispatch,DIS,2024-02-29,2024-03-29
1235,ECONOMISER INLET HEADERS (PGMA-19701),SUP,2023-01-25,2024-09-27
1236,Engineering,ENG,2023-01-25,2023-11-20
1237,Manufacturing,MFG,2023-11-21,2024-08-28
1238,Dispatch,DIS,2024-08-29,2024-09-27
1239,ECONOMISER OUTLET HEADERS (PGMA-19702),SUP,2023-01-25,2024-03-29
1240,Engineering,ENG,2023-01-25,2023-08-14
1241,Manufacturing,MFG,2023-08-15,2024-02-28
1242,Dispatch,DIS,2024-02-29,2024-03-29
1243,ECONOMISER INTERMEDIATE HEADER - REAR (PGMA-19753),SUP,2023-01-25,2024-08-29
1244,Engineering,ENG,2023-01-25,2023-11-05
1245,Manufacturing,MFG,2023-11-06,2024-07-30
1246,Dispatch,DIS,2024-07-31,2024-08-29
1247,ECONOMISER INTERMEDIATE HEADER - FRONT (PGMA-19763),SUP,2023-01-25,2024-08-29
1248,Engineering,ENG,2023-01-25,2023-11-05
1249,Manufacturing,MFG,2023-11-06,2024-07-30
1250,Dispatch,DIS,2024-07-31,2024-08-29
1251,ECONOMISER INTERMEDIATE HEADER - INTER (PGMA-19783),SUP,2023-01-25,2024-08-29
1252,Engineering,ENG,2023-01-25,2023-11-05
1253,Manufacturing,MFG,2023-11-06,2024-07-30
1254,Dispatch,DIS,2024-07-31,2024-08-29
1255,HEADERS OF CENTER INTER (PGMA-19793),SUP,2023-01-25,2024-08-29
1256,Engineering,ENG,2023-01-25,2023-11-05
1257,Manufacturing,MFG,2023-11-06,2024-07-30
1258,Dispatch,DIS,2024-07-31,2024-08-29
1259,ECONOMISER HANGER TUBES (PGMA-19802),SUP,2023-01-25,2024-03-29
1260,Engineering,ENG,2023-01-25,2023-08-14
1261,Manufacturing,MFG,2023-08-15,2024-02-28
1262,Dispatch,DIS,2024-02-29,2024-03-29
1263,PLAIN TUBE ECONO. UPPER COIL ASSY(LEFT) (PGMA-19814),SUP,2023-01-25,2024-07-29
1264,Engineering,ENG,2023-01-25,2023-10-26
1265,Manufacturing,MFG,2023-10-27,2024-06-29
1266,Dispatch,DIS,2024-06-30,2024-07-29
1267,ECO LOWER ASSY -LEFT (PGMA-19824),SUP,2023-01-25,2024-09-27
1268,Engineering,ENG,2023-01-25,2023-11-20
1269,Manufacturing,MFG,2023-11-21,2024-08-28
1270,Dispatch,DIS,2024-08-29,2024-09-27
1271,ECONOMISER FEED PIPE (PGMA-19850),SUP,2023-01-25,2024-03-29
1272,Engineering,ENG,2023-01-25,2023-08-14
1273,Manufacturing,MFG,2023-08-15,2024-02-28
1274,Dispatch,DIS,2024-02-29,2024-03-29
1275,LINK FROM ECO OUTLET HEADER TO ECO MIX LINE(PGMA-19851),SUP,2023-01-25,2024-03-29
1276,Engineering,ENG,2023-01-25,2023-08-14
1277,Manufacturing,MFG,2023-08-15,2024-02-28
1278,Dispatch,DIS,2024-02-29,2024-03-29
1279,ECONOMISER-I TO ECONOMISER-II LINK (PGMA-19852),SUP,2023-01-25,2024-03-29
1280,Engineering,ENG,2023-01-25,2023-08-14
1281,Manufacturing,MFG,2023-08-15,2024-02-28
1282,Dispatch,DIS,2024-02-29,2024-03-29
1283,ECONOMISER FEED PIPE (PGMA-19853),SUP,2023-01-25,2024-03-29
1284,Engineering,ENG,2023-01-25,2023-08-14
1285,Manufacturing,MFG,2023-08-15,2024-02-28
1286,Dispatch,DIS,2024-02-29,2024-03-29
1287,ECO INTER ASSY - LEFT (PGMA-19884),SUP,2023-01-25,2024-08-29
1288,Engineering,ENG,2023-01-25,2023-11-05
1289,Manufacturing,MFG,2023-11-06,2024-07-30
1290,Dispatch,DIS,2024-07-31,2024-08-29
1291,ECONOMISER MISCELLANEOUS COMPONENTS (PGMA-19903),SUP,2023-01-25,2024-10-27
1292,Engineering,ENG,2023-01-25,2023-12-05
1293,Manufacturing,MFG,2023-12-06,2024-09-27
1294,Dispatch,DIS,2024-09-28,2024-10-27
1295,IP ECONOMISER SUPPORTS & SUSPENSIONS (PGMA-19904),SUP,2023-01-25,2024-03-29
1296,Engineering,ENG,2023-01-25,2023-08-14
1297,Manufacturing,MFG,2023-08-15,2024-02-28
1298,Dispatch,DIS,2024-02-29,2024-03-29
1299,ECONOMISER COIL SUPPORTS (PGMA-19905),SUP,2023-01-25,2024-03-29
1300,Engineering,ENG,2023-01-25,2023-08-14
1301,Manufacturing,MFG,2023-08-15,2024-02-28
1302,Dispatch,DIS,2024-02-29,2024-03-29
1303,HP ECO 4 FRONT MODULE COMPONENTS(LEFT) (PGMA-19906),SUP,2023-01-25,2024-03-29
1304,Engineering,ENG,2023-01-25,2023-08-14
1305,Manufacturing,MFG,2023-08-15,2024-02-28
1306,Dispatch,DIS,2024-02-29,2024-03-29
1307,LP ECONOMISER SUPPORTS & SUSPENSIONS (PGMA-19907),SUP,2023-01-25,2024-03-29
1308,Engineering,ENG,2023-01-25,2023-08-14
1309,Manufacturing,MFG,2023-08-15,2024-02-28
1310,Dispatch,DIS,2024-02-29,2024-03-29
1311,HP ECONOMISER-II MODULE SUPPORTS (PGMA-19914),SUP,2023-01-25,2024-07-29
1312,Engineering,ENG,2023-01-25,2023-10-26
1313,Manufacturing,MFG,2023-10-27,2024-06-29
1314,Dispatch,DIS,2024-06-30,2024-07-29
1315,PLAIN TUBE ECO. LOWER ASSY (RIGHT) (PGMA-19924),SUP,2023-01-25,2024-09-27
1316,Engineering,ENG,2023-01-25,2023-11-20
1317,Manufacturing,MFG,2023-11-21,2024-08-28
1318,Dispatch,DIS,2024-08-29,2024-09-27
1319,ECO INTER ASSY - RIGHT (PGMA-19984),SUP,2023-01-25,2024-08-29
1320,Engineering,ENG,2023-01-25,2023-11-05
1321,Manufacturing,MFG,2023-11-06,2024-07-30
1322,Dispatch,DIS,2024-07-31,2024-08-29
1323,ECONOMISER IMPORTED ELECTRODES (PGMA-19991),SUP,2023-01-25,2024-03-29
1324,Engineering,ENG,2023-01-25,2023-08-14
1325,Manufacturing,MFG,2023-08-15,2024-02-28
1326,Dispatch,DIS,2024-02-29,2024-03-29
1327,IMPORTED ELECTRODES (PGMA-19992),SUP,2023-01-25,2024-11-27
1328,Engineering,ENG,2023-01-25,2023-12-20
1329,Manufacturing,MFG,2023-12-21,2024-10-28
1330,Dispatch,DIS,2024-10-29,2024-11-27
1331,Boiler Integral Piping and Fittings (PG-24),SUP,2022-09-27,2025-11-11
1332,BOILER FILLING PIPING (PGMA-24350),SUP,2023-01-25,2024-10-27
1333,Engineering,ENG,2023-01-25,2023-12-05
1334,Manufacturing,MFG,2023-12-06,2024-09-27
1335,Dispatch,DIS,2024-09-28,2024-10-27
1336,HANGERS+SUPPORTS FOR BLR FILLING PIPING (PGMA-24351),SUP,2023-01-25,2024-10-27
1337,Engineering,ENG,2023-01-25,2023-12-05
1338,Manufacturing,MFG,2023-12-06,2024-09-27
1339,Dispatch,DIS,2024-09-28,2024-10-27
1340,BOILER FILL PIPING - DD (PGMA-24352),SUP,2023-01-25,2024-10-27
1341,Engineering,ENG,2023-01-25,2023-12-05
1342,Manufacturing,MFG,2023-12-06,2024-09-27
1343,Dispatch,DIS,2024-09-28,2024-10-27
1344,HANGERS & SUPPORTS FOR BOILER FILL PIPING - OS (PGMA-24353),SUP,2023-01-25,2024-10-27
1345,Engineering,ENG,2023-01-25,2023-12-05
1346,Manufacturing,MFG,2023-12-06,2024-09-27
1347,Dispatch,DIS,2024-09-28,2024-10-27
1348,BOI items for Boiler fill piping (PGMA-24354),SUP,2023-01-25,2024-10-27
1349,Engineering,ENG,2023-01-25,2023-12-05
1350,Manufacturing,MFG,2023-12-06,2024-09-27
1351,Dispatch,DIS,2024-09-28,2024-10-27
1352,BULKED BPS COMPONENTS FOR TRIM PIPES (PGMA-24700),SUP,2023-05-18,2024-11-27
1353,Engineering,ENG,2023-05-18,2024-02-03
1354,Manufacturing,MFG,2024-02-04,2024-10-28
1355,Dispatch,DIS,2024-10-29,2024-11-27
1356,BOILER TRIM PIPING (PGMA-24800),SUP,2023-01-25,2024-10-27
1357,Engineering,ENG,2023-01-25,2023-12-05
1358,Manufacturing,MFG,2023-12-06,2024-09-27
1359,Dispatch,DIS,2024-09-28,2024-10-27
1360,Boiler Trim Piping - Dd Items (PGMA-24803),SUP,2023-01-25,2024-10-27
1361,Engineering,ENG,2023-01-25,2023-12-05
1362,Manufacturing,MFG,2023-12-06,2024-09-27
1363,Dispatch,DIS,2024-09-28,2024-10-27
1364,Supports - Boiler Trim Piping - Os (PGMA-24804),SUP,2023-01-25,2024-10-27
1365,Engineering,ENG,2023-01-25,2023-12-05
1366,Manufacturing,MFG,2023-12-06,2024-09-27
1367,Dispatch,DIS,2024-09-28,2024-10-27
1368,LINK TO BOILER RECIRCULATION SYSTEM (PGMA-24805),SUP,2023-01-25,2024-11-27
1369,Engineering,ENG,2023-01-25,2023-12-20
1370,Manufacturing,MFG,2023-12-21,2024-10-28
1371,Dispatch,DIS,2024-10-29,2024-11-27
1372,MIXING VESSEL (PGMA-24806),SUP,2023-01-25,2024-11-27
1373,Engineering,ENG,2023-01-25,2023-12-20
1374,Manufacturing,MFG,2023-12-21,2024-10-28
1375,Dispatch,DIS,2024-10-29,2024-11-27
1376,RECIRCULATION PUMP SECTION LINE (PGMA-24807),SUP,2023-01-25,2024-11-27
1377,Engineering,ENG,2023-01-25,2023-12-20
1378,Manufacturing,MFG,2023-12-21,2024-10-28
1379,Dispatch,DIS,2024-10-29,2024-11-27
1380,RECIRCULATION PUMP DISCHARGE LINE (PGMA-24808),SUP,2023-01-25,2024-11-27
1381,Engineering,ENG,2023-01-25,2023-12-20
1382,Manufacturing,MFG,2023-12-21,2024-10-28
1383,Dispatch,DIS,2024-10-29,2024-11-27
1384,BOILER RECIRCULATION LINK FROM BF LINE (PGMA-24809),SUP,2023-01-25,2024-11-27
1385,Engineering,ENG,2023-01-25,2023-12-20
1386,Manufacturing,MFG,2023-12-21,2024-10-28
1387,Dispatch,DIS,2024-10-29,2024-11-27
1388,HANGERS + SUPPORTS FOR STARTUP SYSTEM (PGMA-24810),SUP,2023-01-25,2024-11-27
1389,Engineering,ENG,2023-01-25,2023-12-20
1390,Manufacturing,MFG,2023-12-21,2024-10-28
1391,Dispatch,DIS,2024-10-29,2024-11-27
1392,FURNACE LINK TO FLASH TAND/HWL1 TO HWL2 (PGMA-24811),SUP,2023-01-25,2024-11-27
1393,Engineering,ENG,2023-01-25,2023-12-20
1394,Manufacturing,MFG,2023-12-21,2024-10-28
1395,Dispatch,DIS,2024-10-29,2024-11-27
1396,Boiler Trim Piping - Non Ht Items (PGMA-24814),SUP,2023-01-25,2024-10-27
1397,Engineering,ENG,2023-01-25,2023-12-05
1398,Manufacturing,MFG,2023-12-06,2024-09-27
1399,Dispatch,DIS,2024-09-28,2024-10-27
1400,DESUPERHEATER PIPES (PGMA-24815),SUP,2023-01-25,2024-03-29
1401,Engineering,ENG,2023-01-25,2023-08-14
1402,Manufacturing,MFG,2023-08-15,2024-02-28
1403,Dispatch,DIS,2024-02-29,2024-03-29
1404,H&S For Start-Up System - Os Items (PGMA-24817),SUP,2023-01-25,2024-11-27
1405,Engineering,ENG,2023-01-25,2023-12-20
1406,Manufacturing,MFG,2023-12-21,2024-10-28
1407,Dispatch,DIS,2024-10-29,2024-11-27
1408,H&S For Start-Up System - Dd Items (PGMA-24818),SUP,2023-01-25,2024-11-27
1409,Engineering,ENG,2023-01-25,2023-12-20
1410,Manufacturing,MFG,2023-12-21,2024-10-28
1411,Dispatch,DIS,2024-10-29,2024-11-27
1412,EXHAUST PIPE FOR SAFETY VALVES (PGMA-24820),SUP,2023-05-18,2024-11-27
1413,Engineering,ENG,2023-05-18,2024-02-03
1414,Manufacturing,MFG,2024-02-04,2024-10-28
1415,Dispatch,DIS,2024-10-29,2024-11-27
1416,De-Superheater Pipes - Os Items (PGMA-24822),SUP,2023-04-26,2024-06-28
1417,Engineering,ENG,2023-04-26,2023-11-13
1418,Manufacturing,MFG,2023-11-14,2024-05-29
1419,Dispatch,DIS,2024-05-30,2024-06-28
1420,De-Superheater Pipes - Dd Items (PGMA-24823),SUP,2023-04-26,2024-06-28
1421,Engineering,ENG,2023-04-26,2023-11-13
1422,Manufacturing,MFG,2023-11-14,2024-05-29
1423,Dispatch,DIS,2024-05-30,2024-06-28
1424,Exhaust Pipe For Safety Valve - Os Items (PGMA-24824),SUP,2023-05-18,2024-11-27
1425,Engineering,ENG,2023-05-18,2024-02-03
1426,Manufacturing,MFG,2024-02-04,2024-10-28
1427,Dispatch,DIS,2024-10-29,2024-11-27
1428,SILENCER SUPPORTS (PGMA-24825),SUP,2022-09-27,2024-03-14
1429,Engineering,ENG,2022-09-27,2023-07-25
1430,Manufacturing,MFG,2023-07-26,2024-02-13
1431,Dispatch,DIS,2024-02-14,2024-03-14
1432,Silencer Support - Os Items (PGMA-24826),SUP,2022-09-27,2024-03-14
1433,Engineering,ENG,2022-09-27,2023-07-25
1434,Manufacturing,MFG,2023-07-26,2024-02-13
1435,Dispatch,DIS,2024-02-14,2024-03-14
1436,Exhaust Pipe For Safety Valve - Dd Items (PGMA-24827),SUP,2023-05-18,2024-11-27
1437,Engineering,ENG,2023-05-18,2024-02-03
1438,Manufacturing,MFG,2024-02-04,2024-10-28
1439,Dispatch,DIS,2024-10-29,2024-11-27
1440,Exhaust Pipe For Safety Valve - BOI Item (PGMA-24828),SUP,2023-05-18,2024-11-27
1441,Engineering,ENG,2023-05-18,2024-02-03
1442,Manufacturing,MFG,2024-02-04,2024-10-28
1443,Dispatch,DIS,2024-10-29,2024-11-27
1444,STARTUP VENT DIFFUSER AND SILENCER SUPPPORTS (PGMA-24835),SUP,2022-09-27,2023-12-27
1445,Engineering,ENG,2022-09-27,2023-07-25
1446,Manufacturing,MFG,2023-05-09,2023-11-27
1447,Dispatch,DIS,2023-11-28,2023-12-27
1448,Start-Up Vent  Diffuser  Silencer Support-Os Item (PGMA-24836),SUP,2022-09-27,2023-12-27
1449,Engineering,ENG,2022-09-27,2023-07-25
1450,Manufacturing,MFG,2023-05-09,2023-11-27
1451,Dispatch,DIS,2023-11-28,2023-12-27
1452,Start-Up Vent  Diffuser  Silencer Support-Dd Item (PGMA-24837),SUP,2022-09-27,2023-12-27
1453,Engineering,ENG,2022-09-27,2023-07-25
1454,Manufacturing,MFG,2023-05-09,2023-11-27
1455,Dispatch,DIS,2023-11-28,2023-12-27
1456,SAMPLE COOLER AND SUPPORTS (PGMA-24840),SUP,2023-05-18,2024-11-27
1457,Engineering,ENG,2023-05-18,2024-02-03
1458,Manufacturing,MFG,2024-02-04,2024-10-28
1459,Dispatch,DIS,2024-10-29,2024-11-27
1460,Sample Cooler & Supports - Os Items (PGMA-24841),SUP,2023-05-18,2024-11-27
1461,Engineering,ENG,2023-05-18,2024-02-03
1462,Manufacturing,MFG,2024-02-04,2024-10-28
1463,Dispatch,DIS,2024-10-29,2024-11-27
1464,DD items for Sample Cooler and Supports (PGMA-24842),SUP,2023-05-18,2024-11-27
1465,Engineering,ENG,2023-05-18,2024-02-03
1466,Manufacturing,MFG,2024-02-04,2024-10-28
1467,Dispatch,DIS,2024-10-29,2024-11-27
1468, BOI- HT- RE-CIRCULATING PUMP COMPONENTS-SD (PGMA-24855),SUP,2023-08-23,2024-12-28
1469,NIT,ENQ,2023-08-23,2023-08-23
1470,Ordering,ORD,2023-08-24,2024-01-20
1471,Manufacturing,MFG,2024-01-21,2024-11-28
1472,Dispatch,DIS,2024-11-29,2024-12-28
1473,VALVES (PGMA-24860),SUP,2024-01-12,2025-11-11
1474,Engineering,ENG,2024-01-12,2024-07-09
1475,Manufacturing,MFG,2024-07-10,2025-10-12
1476,Dispatch,DIS,2025-10-13,2025-11-11
1477,BOI-LU-VALVES SUBDELIVERY (PGMA-24865),SUP,2023-08-03,2025-01-14
1478,NIT,ENQ,2023-08-03,2023-08-03
1479,Ordering,ORD,2023-08-04,2024-01-30
1480,Manufacturing,MFG,2024-01-31,2024-12-15
1481,Dispatch,DIS,2024-12-16,2025-01-14
1482,BOI-LU-VALVES FOR STARTUP RECIRCULATION SYSTEM-SD (PGMA-24867),SUP,2023-10-22,2025-01-12
1483,NIT,ENQ,2023-10-22,2023-10-22
1484,Ordering,ORD,2023-10-23,2024-03-20
1485,Manufacturing,MFG,2024-03-21,2024-12-13
1486,Dispatch,DIS,2024-12-14,2025-01-12
1487,SAFETY VALVES (PGMA-24880),SUP,2022-12-26,2024-01-27
1488,Engineering,ENG,2022-12-26,2023-07-05
1489,Manufacturing,MFG,2023-07-06,2023-12-28
1490,Dispatch,DIS,2023-12-29,2024-01-27
1491,SAFETY VALVES AND ERV-SD (PGMA-24881),SUP,2022-12-26,2024-01-27
1492,Engineering,ENG,2022-12-26,2023-07-05
1493,Manufacturing,MFG,2023-07-06,2023-12-28
1494,Dispatch,DIS,2023-12-29,2024-01-27
1495,Safety Valves (BHEL) - Non Ht (PGMA-24883),SUP,2022-12-26,2024-01-27
1496,Engineering,ENG,2022-12-26,2023-07-05
1497,Manufacturing,MFG,2023-07-06,2023-12-28
1498,Dispatch,DIS,2023-12-29,2024-01-27
1499,SILENCERS (PGMA-24885),SUP,2022-09-27,2023-12-27
1500,Engineering,ENG,2022-09-27,2023-07-25
1501,Manufacturing,MFG,2023-05-09,2023-11-27
1502,Dispatch,DIS,2023-11-28,2023-12-27
1503,SPECIAL TOOLS (PGMA-24950),SUP,2023-11-06,2025-06-29
1504,Engineering,ENG,2023-11-06,2024-08-13
1505,Manufacturing,MFG,2024-08-14,2025-05-30
1506,Dispatch,DIS,2025-05-31,2025-06-29
1507,LAPPING TOOLS FOR SV&ERV (PGMA-24955),SUP,2023-11-06,2025-06-29
1508,Engineering,ENG,2023-11-06,2024-08-13
1509,Manufacturing,MFG,2024-08-14,2025-05-30
1510,Dispatch,DIS,2025-05-31,2025-06-29
1511,LAPPING TOOLS FOR CONVENTIONAL VALVES( (PGMA-24960),SUP,2023-11-06,2025-06-29
1512,Engineering,ENG,2023-11-06,2024-08-13
1513,Manufacturing,MFG,2024-08-14,2025-05-30
1514,Dispatch,DIS,2025-05-31,2025-06-29
1515,COMMG SPARES FOR SAFETY VALVES/ERV (PGMA-24987),SUP,2023-11-21,2025-07-29
1516,Engineering,ENG,2023-11-21,2024-09-10
1517,Manufacturing,MFG,2024-09-11,2025-06-29
1518,Dispatch,DIS,2025-06-30,2025-07-29
1519,COMMG SPARES FOR IMPORTED SUB-DELY (PGMA-24988),SUP,2023-11-21,2025-07-29
1520,Engineering,ENG,2023-11-21,2024-09-10
1521,Manufacturing,MFG,2024-09-11,2025-06-29
1522,Dispatch,DIS,2025-06-30,2025-07-29
1523,COMMG SPARES FOR CONVENTIONAL VALVES (PGMA-24989),SUP,2023-11-21,2025-07-29
1524,Engineering,ENG,2023-11-21,2024-09-10
1525,Manufacturing,MFG,2024-09-11,2025-06-29
1526,Dispatch,DIS,2025-06-30,2025-07-29
1527,IMPORTED ELECTRODES (PGMA-24992),SUP,2023-01-25,2024-10-27
1528,Engineering,ENG,2023-01-25,2023-12-05
1529,Manufacturing,MFG,2023-12-06,2024-09-27
1530,Dispatch,DIS,2024-09-28,2024-10-27
1531,CONSUMABLES &Erection MATERIALS (PGMA-24993),SUP,2023-01-25,2024-10-27
1532,Engineering,ENG,2023-01-25,2023-12-05
1533,Manufacturing,MFG,2023-12-06,2024-09-27
1534,Dispatch,DIS,2024-09-28,2024-10-27
1535,NAME PLATES (PGMA-24994),SUP,2023-11-06,2025-06-29
1536,Engineering,ENG,2023-11-06,2024-08-13
1537,Manufacturing,MFG,2024-08-14,2025-05-30
1538,Dispatch,DIS,2025-05-31,2025-06-29
1539,Super Heaters and Re-Heaters ,SUP,2022-12-26,2024-09-27
1540,Superheater Headers (PG-10),SUP,2023-01-25,2024-08-29
1541,SH VERTICAL SPACED INLET HEADER (PGMA-10174),SUP,2023-01-25,2024-04-28
1542,Engineering,ENG,2023-01-25,2023-09-05
1543,Manufacturing,MFG,2023-09-06,2024-03-29
1544,Dispatch,DIS,2024-03-30,2024-04-28
1545,SH.VERTICAL PLATEN SH 1NLET HEADER (PGMA-10178),SUP,2023-01-25,2024-03-29
1546,Engineering,ENG,2023-01-25,2023-08-14
1547,Manufacturing,MFG,2023-08-15,2024-02-28
1548,Dispatch,DIS,2024-02-29,2024-03-29
1549,REAR WALL SUPER HEATER INLET HEADER (PGMA-10182),SUP,2023-01-25,2024-08-29
1550,Engineering,ENG,2023-01-25,2023-11-05
1551,Manufacturing,MFG,2023-11-06,2024-07-30
1552,Dispatch,DIS,2024-07-31,2024-08-29
1553,FRONT WALL SUPER HEATER INLET HEADER (PGMA-10183),SUP,2023-01-25,2024-03-29
1554,Engineering,ENG,2023-01-25,2023-08-14
1555,Manufacturing,MFG,2023-08-15,2024-02-28
1556,Dispatch,DIS,2024-02-29,2024-03-29
1557,SIDE WALL SUPER HEATER INLET HEADER (PGMA-10184),SUP,2023-01-25,2024-05-29
1558,Engineering,ENG,2023-01-25,2023-09-26
1559,Manufacturing,MFG,2023-09-27,2024-04-29
1560,Dispatch,DIS,2024-04-30,2024-05-29
1561,BP BOTTOM RING HDRS (PGMA-10185),SUP,2023-01-25,2024-03-29
1562,Engineering,ENG,2023-01-25,2023-08-14
1563,Manufacturing,MFG,2023-08-15,2024-02-28
1564,Dispatch,DIS,2024-02-29,2024-03-29
1565,BACK PASS RING HEADER (PGMA-10191),SUP,2023-01-25,2024-02-26
1566,Engineering,ENG,2023-01-25,2023-08-04
1567,Manufacturing,MFG,2023-08-05,2024-01-27
1568,Dispatch,DIS,2024-01-28,2024-02-26
1569,SH. VERTICAL SPACED OUTLET HEADER (PGMA-10274),SUP,2023-01-25,2024-04-28
1570,Engineering,ENG,2023-01-25,2023-09-05
1571,Manufacturing,MFG,2023-09-06,2024-03-29
1572,Dispatch,DIS,2024-03-30,2024-04-28
1573,SH.VERTICAL PLATEN OUTLET HEADER (PGMA-10278),SUP,2023-01-25,2024-03-29
1574,Engineering,ENG,2023-01-25,2023-08-14
1575,Manufacturing,MFG,2023-08-15,2024-02-28
1576,Dispatch,DIS,2024-02-29,2024-03-29
1577,SH. BACKPASS SIDE WALL FRONT OUTLET HDR. (PGMA-10283),SUP,2023-01-25,2024-03-29
1578,Engineering,ENG,2023-01-25,2023-08-14
1579,Manufacturing,MFG,2023-08-15,2024-02-28
1580,Dispatch,DIS,2024-02-29,2024-03-29
1581,SIDE WALL SUPER HEATER OUTLET HEADER (PGMA-10284),SUP,2023-01-25,2024-06-28
1582,Engineering,ENG,2023-01-25,2023-10-06
1583,Manufacturing,MFG,2023-10-07,2024-05-29
1584,Dispatch,DIS,2024-05-30,2024-06-28
1585,SH front wall outlet header (PGMA-10285),SUP,2023-01-25,2024-04-28
1586,Engineering,ENG,2023-01-25,2023-09-05
1587,Manufacturing,MFG,2023-09-06,2024-03-29
1588,Dispatch,DIS,2024-03-30,2024-04-28
1589,SH RADIANT ROOF OUTLET HDR (PGMA-10291),SUP,2023-01-25,2024-04-28
1590,Engineering,ENG,2023-01-25,2023-09-05
1591,Manufacturing,MFG,2023-09-06,2024-03-29
1592,Dispatch,DIS,2024-03-30,2024-04-28
1593,Superheater Coils and Walls (PG-11),SUP,2023-01-25,2024-08-29
1594,FINISH SH FRNT ASSY WITH I/T TER & CROSSOVERTUBES (PGMA-11074),SUP,2023-01-25,2024-04-28
1595,Engineering,ENG,2023-01-25,2023-09-05
1596,Manufacturing,MFG,2023-09-06,2024-03-29
1597,Dispatch,DIS,2024-03-30,2024-04-28
1598,SH PLATEN ASSY WITH TERM TUBES - LEFT (PGMA-11078),SUP,2023-01-25,2024-04-28
1599,Engineering,ENG,2023-01-25,2023-09-05
1600,Manufacturing,MFG,2023-09-06,2024-03-29
1601,Dispatch,DIS,2024-03-30,2024-04-28
1602,FINISH SH REAR ASSY WITH O/T TER & CROSSOVERTUBES (PGMA-11374),SUP,2023-01-25,2024-04-28
1603,Engineering,ENG,2023-01-25,2023-09-05
1604,Manufacturing,MFG,2023-09-06,2024-03-29
1605,Dispatch,DIS,2024-03-30,2024-04-28
1606,SH PLATEN ASSY WITH TERM TUBES - RIGHT (PGMA-11378),SUP,2023-01-25,2024-04-28
1607,Engineering,ENG,2023-01-25,2023-09-05
1608,Manufacturing,MFG,2023-09-06,2024-03-29
1609,Dispatch,DIS,2024-03-30,2024-04-28
1610,SH. FRONT WALL PANELS UPPER- OS (PGMA-11406),SUP,2023-01-25,2024-04-28
1611,Engineering,ENG,2023-01-25,2023-09-05
1612,Manufacturing,MFG,2023-09-06,2024-03-29
1613,Dispatch,DIS,2024-03-30,2024-04-28
1614,SH LOWER PNL ATTACHMENT (PGMA-11408),SUP,2023-01-25,2024-07-29
1615,Engineering,ENG,2023-01-25,2023-10-26
1616,Manufacturing,MFG,2023-10-27,2024-06-29
1617,Dispatch,DIS,2024-06-30,2024-07-29
1618,SH REAR WALL PANELS UPPER (LEFT)-OS (PGMA-11416),SUP,2023-01-25,2024-07-29
1619,Engineering,ENG,2023-01-25,2023-10-26
1620,Manufacturing,MFG,2023-10-27,2024-06-29
1621,Dispatch,DIS,2024-06-30,2024-07-29
1622,SH SW PANELS UPPER REAR (L&R)-OS (PGMA-11467),SUP,2023-01-25,2024-03-29
1623,Engineering,ENG,2023-01-25,2023-08-14
1624,Manufacturing,MFG,2023-08-15,2024-02-28
1625,Dispatch,DIS,2024-02-29,2024-03-29
1626,SH REAR ROOF PANELS (RIGHT)-OS (PGMA-11487),SUP,2023-01-25,2024-03-29
1627,Engineering,ENG,2023-01-25,2023-08-14
1628,Manufacturing,MFG,2023-08-15,2024-02-28
1629,Dispatch,DIS,2024-02-29,2024-03-29
1630,SH. RADIENT ROOF TUBES -OS (PGMA-11491),SUP,2023-01-25,2024-02-26
1631,Engineering,ENG,2023-01-25,2023-08-04
1632,Manufacturing,MFG,2023-08-05,2024-01-27
1633,Dispatch,DIS,2024-01-28,2024-02-26
1634,SH. FRONT WALL PANELS UPPER (PGMA-11606),SUP,2023-01-25,2024-04-28
1635,Engineering,ENG,2023-01-25,2023-09-05
1636,Manufacturing,MFG,2023-09-06,2024-03-29
1637,Dispatch,DIS,2024-03-30,2024-04-28
1638,SH.FRONT WALL PANELS LOWER (PGMA-11608),SUP,2023-01-25,2024-07-29
1639,Engineering,ENG,2023-01-25,2023-10-26
1640,Manufacturing,MFG,2023-10-27,2024-06-29
1641,Dispatch,DIS,2024-06-30,2024-07-29
1642,SH EXTENDED SIDE WALL PANELS (PGMA-11684),SUP,2023-01-25,2024-05-29
1643,Engineering,ENG,2023-01-25,2023-09-26
1644,Manufacturing,MFG,2023-09-27,2024-04-29
1645,Dispatch,DIS,2024-04-30,2024-05-29
1646,SH.EXTENDED BOTTOM PANELS (PGMA-11694),SUP,2023-01-25,2024-05-29
1647,Engineering,ENG,2023-01-25,2023-09-26
1648,Manufacturing,MFG,2023-09-27,2024-04-29
1649,Dispatch,DIS,2024-04-30,2024-05-29
1650,SH REAR WALL PANELS UPPER (LEFT) (PGMA-11716),SUP,2023-01-25,2024-07-29
1651,Engineering,ENG,2023-01-25,2023-10-26
1652,Manufacturing,MFG,2023-10-27,2024-06-29
1653,Dispatch,DIS,2024-06-30,2024-07-29
1654,SH. REAR WALL PANELS LOWER (LEFT) (PGMA-11718),SUP,2023-01-25,2024-07-29
1655,Engineering,ENG,2023-01-25,2023-10-26
1656,Manufacturing,MFG,2023-10-27,2024-06-29
1657,Dispatch,DIS,2024-06-30,2024-07-29
1658,SH SIDE WALL PANELS UPPER FRONT (L&R) (PGMA-11767),SUP,2023-01-25,2024-03-29
1659,Engineering,ENG,2023-01-25,2023-08-14
1660,Manufacturing,MFG,2023-08-15,2024-02-28
1661,Dispatch,DIS,2024-02-29,2024-03-29
1662,SH. SIDE WALL PANELS LOWER FRONT (L&R) (PGMA-11769),SUP,2023-01-25,2024-08-29
1663,Engineering,ENG,2023-01-25,2023-11-05
1664,Manufacturing,MFG,2023-11-06,2024-07-30
1665,Dispatch,DIS,2024-07-31,2024-08-29
1666,SH REAR ROOF PANELS (LEFT) (PGMA-11787),SUP,2023-01-25,2024-08-29
1667,Engineering,ENG,2023-01-25,2023-11-05
1668,Manufacturing,MFG,2023-11-06,2024-07-30
1669,Dispatch,DIS,2024-07-31,2024-08-29
1670,SH. RADIENT ROOF TUBES (LEFT) (PGMA-11791),SUP,2023-01-25,2024-02-26
1671,Engineering,ENG,2023-01-25,2023-08-04
1672,Manufacturing,MFG,2023-08-05,2024-01-27
1673,Dispatch,DIS,2024-01-28,2024-02-26
1674,SH. REAR WALL PANEL UPPER (RIGHT) (PGMA-11916),SUP,2023-01-25,2024-07-29
1675,Engineering,ENG,2023-01-25,2023-10-26
1676,Manufacturing,MFG,2023-10-27,2024-06-29
1677,Dispatch,DIS,2024-06-30,2024-07-29
1678,SH. REAR WALL PANELS LOWER (RIGHT) (PGMA-11918),SUP,2023-01-25,2024-08-29
1679,Engineering,ENG,2023-01-25,2023-11-05
1680,Manufacturing,MFG,2023-11-06,2024-07-30
1681,Dispatch,DIS,2024-07-31,2024-08-29
1682,SH. SIDE WALL PANELS UPPER REAR (L&R) (PGMA-11967),SUP,2023-01-25,2024-03-29
1683,Engineering,ENG,2023-01-25,2023-08-14
1684,Manufacturing,MFG,2023-08-15,2024-02-28
1685,Dispatch,DIS,2024-02-29,2024-03-29
1686,SH. SIDE WALL PANELS LOWER REAR ( L&R) (PGMA-11969),SUP,2023-01-25,2024-08-29
1687,Engineering,ENG,2023-01-25,2023-11-05
1688,Manufacturing,MFG,2023-11-06,2024-07-30
1689,Dispatch,DIS,2024-07-31,2024-08-29
1690,SH REAR ROOF PANELS (RIGHT) (PGMA-11987),SUP,2023-01-25,2024-03-29
1691,Engineering,ENG,2023-01-25,2023-08-14
1692,Manufacturing,MFG,2023-08-15,2024-02-28
1693,Dispatch,DIS,2024-02-29,2024-03-29
1694,SH. RADIENT ROOF TUBES (RIGHT) (PGMA-11991),SUP,2023-01-25,2024-05-29
1695,Engineering,ENG,2023-01-25,2023-09-26
1696,Manufacturing,MFG,2023-09-27,2024-04-29
1697,Dispatch,DIS,2024-04-30,2024-05-29
1698,Superheater Components (PG-12),SUP,2022-12-26,2024-06-28
1699,LP SH CROSSOVERS(RIGHT) (PGMA-12178),SUP,2023-01-25,2024-04-28
1700,Engineering,ENG,2023-01-25,2023-09-05
1701,Manufacturing,MFG,2023-09-06,2024-03-29
1702,Dispatch,DIS,2024-03-30,2024-04-28
1703,SH.EXTD. SIDE WALL INLET PIPE (PGMA-12184),SUP,2023-01-25,2024-03-29
1704,Engineering,ENG,2023-01-25,2023-08-14
1705,Manufacturing,MFG,2023-08-15,2024-02-28
1706,Dispatch,DIS,2024-02-29,2024-03-29
1707,SH. EXTD.SIDE WALL OUTLET PIPE (PGMA-12187),SUP,2023-01-25,2024-04-28
1708,Engineering,ENG,2023-01-25,2023-09-05
1709,Manufacturing,MFG,2023-09-06,2024-03-29
1710,Dispatch,DIS,2024-03-30,2024-04-28
1711,SH SUPPORT FOR LINES AND LINKS DD ITEM (PGMA-12306),SUP,2023-01-25,2024-03-29
1712,Engineering,ENG,2023-01-25,2023-08-14
1713,Manufacturing,MFG,2023-08-15,2024-02-28
1714,Dispatch,DIS,2024-02-29,2024-03-29
1715,SUSPN OF SH RAD ROOF HDRS-DD (PGMA-12314),SUP,2022-12-26,2024-01-27
1716,Engineering,ENG,2022-12-26,2023-07-05
1717,Manufacturing,MFG,2023-07-06,2023-12-28
1718,Dispatch,DIS,2023-12-29,2024-01-27
1719,SUSPN OF RADIANT ROOF-DD (PGMA-12317),SUP,2023-01-25,2024-02-26
1720,Engineering,ENG,2023-01-25,2023-08-04
1721,Manufacturing,MFG,2023-08-05,2024-01-27
1722,Dispatch,DIS,2024-01-28,2024-02-26
1723,SUSPN OF BP TOP HEADERS-DD (PGMA-12324),SUP,2022-12-26,2024-01-27
1724,Engineering,ENG,2022-12-26,2023-07-05
1725,Manufacturing,MFG,2023-07-06,2023-12-28
1726,Dispatch,DIS,2023-12-29,2024-01-27
1727,SUSPN OF REAR ROOF-DD (PGMA-12327),SUP,2023-01-25,2024-02-26
1728,Engineering,ENG,2023-01-25,2023-08-04
1729,Manufacturing,MFG,2023-08-05,2024-01-27
1730,Dispatch,DIS,2024-01-28,2024-02-26
1731,SUSPN SH H.TUBES FT&REAR WL-DD (PGMA-12328),SUP,2023-01-25,2024-03-29
1732,Engineering,ENG,2023-01-25,2023-08-14
1733,Manufacturing,MFG,2023-08-15,2024-02-28
1734,Dispatch,DIS,2024-02-29,2024-03-29
1735,SUSPN OF SH PLA&SH DIVI PANTE HDR-DD (PGMA-12344),SUP,2022-12-26,2024-01-27
1736,Engineering,ENG,2022-12-26,2023-07-05
1737,Manufacturing,MFG,2023-07-06,2023-12-28
1738,Dispatch,DIS,2023-12-29,2024-01-27
1739,SUSPN OF SHFL.SHSPD.CL.ASY&SH TT.SPD-DD (PGMA-12348),SUP,2023-01-25,2024-02-26
1740,Engineering,ENG,2023-01-25,2023-08-04
1741,Manufacturing,MFG,2023-08-05,2024-01-27
1742,Dispatch,DIS,2024-01-28,2024-02-26
1743,SUSPN OF SH PLN &FINAL SPD. HDR-DD (PGMA-12354),SUP,2022-12-26,2024-01-27
1744,Engineering,ENG,2022-12-26,2023-07-05
1745,Manufacturing,MFG,2023-07-06,2023-12-28
1746,Dispatch,DIS,2023-12-29,2024-01-27
1747,SUSPN OF SH PLATEN COIL ASSY-DD (PGMA-12368),SUP,2023-01-25,2024-02-26
1748,Engineering,ENG,2023-01-25,2023-08-04
1749,Manufacturing,MFG,2023-08-05,2024-01-27
1750,Dispatch,DIS,2024-01-28,2024-02-26
1751,ERECTION MATERIALS & CONSLE-DD (PGMA-12393),SUP,2022-12-26,2023-12-27
1752,Engineering,ENG,2022-12-26,2023-05-26
1753,Manufacturing,MFG,2023-05-27,2023-11-27
1754,Dispatch,DIS,2023-11-28,2023-12-27
1755,SH. HANGER TUBES-OS (PGMA-12405),SUP,2023-01-25,2024-03-29
1756,Engineering,ENG,2023-01-25,2023-08-14
1757,Manufacturing,MFG,2023-08-15,2024-02-28
1758,Dispatch,DIS,2024-02-29,2024-03-29
1759,SH SUPPORT FOR LINES AND LINKS SHOP ITEM (PGMA-12506),SUP,2023-01-25,2024-03-29
1760,Engineering,ENG,2023-01-25,2023-08-14
1761,Manufacturing,MFG,2023-08-15,2024-02-28
1762,Dispatch,DIS,2024-02-29,2024-03-29
1763,SUSPEN OF SH RAD ROOF HDRS-SHOP (PGMA-12514),SUP,2022-12-26,2024-01-27
1764,Engineering,ENG,2022-12-26,2023-07-05
1765,Manufacturing,MFG,2023-07-06,2023-12-28
1766,Dispatch,DIS,2023-12-29,2024-01-27
1767,BP STEAM COOLED HANGER TUBES (PGMA-12515),SUP,2023-01-25,2024-03-29
1768,Engineering,ENG,2023-01-25,2023-08-14
1769,Manufacturing,MFG,2023-08-15,2024-02-28
1770,Dispatch,DIS,2024-02-29,2024-03-29
1771,Suspension Of Sh Back Pass Headers-SH (PGMA-12524),SUP,2022-12-26,2024-01-27
1772,Engineering,ENG,2022-12-26,2023-07-05
1773,Manufacturing,MFG,2023-07-06,2023-12-28
1774,Dispatch,DIS,2023-12-29,2024-01-27
1775,SUSPN OF SH PLA&SH DIVI PANTE HDR-SHOP (PGMA-12544),SUP,2022-12-26,2024-01-27
1776,Engineering,ENG,2022-12-26,2023-07-05
1777,Manufacturing,MFG,2023-07-06,2023-12-28
1778,Dispatch,DIS,2023-12-29,2024-01-27
1779,SUSPN OF SH PLN &FINAL SPD. HDR-SHOP (PGMA-12554),SUP,2022-12-26,2024-01-27
1780,Engineering,ENG,2022-12-26,2023-07-05
1781,Manufacturing,MFG,2023-07-06,2023-12-28
1782,Dispatch,DIS,2023-12-29,2024-01-27
1783,SH STEAM COOLED SPACER TUBES (PGMA-12803),SUP,2023-01-25,2024-05-29
1784,Engineering,ENG,2023-01-25,2023-09-26
1785,Manufacturing,MFG,2023-09-27,2024-04-29
1786,Dispatch,DIS,2024-04-30,2024-05-29
1787,SH. HANGER TUBES (PGMA-12805),SUP,2023-01-25,2024-03-29
1788,Engineering,ENG,2023-01-25,2023-08-14
1789,Manufacturing,MFG,2023-08-15,2024-02-28
1790,Dispatch,DIS,2024-02-29,2024-03-29
1791,SATURATED STEAM CONNECTING PIPE (PGMA-12850),SUP,2023-01-25,2024-03-29
1792,Engineering,ENG,2023-01-25,2023-08-14
1793,Manufacturing,MFG,2023-08-15,2024-02-28
1794,Dispatch,DIS,2024-02-29,2024-03-29
1795,SUPER HEATER DESH LINKS (PGMA-12852),SUP,2023-01-25,2024-03-29
1796,Engineering,ENG,2023-01-25,2023-08-14
1797,Manufacturing,MFG,2023-08-15,2024-02-28
1798,Dispatch,DIS,2024-02-29,2024-03-29
1799,SUPER HEATER DESH (PGMA-12900),SUP,2023-01-25,2024-04-28
1800,Engineering,ENG,2023-01-25,2023-09-05
1801,Manufacturing,MFG,2023-09-06,2024-03-29
1802,Dispatch,DIS,2024-03-30,2024-04-28
1803,SUPER HEATER MISCELLANEOUS COMPONENTS (PGMA-12903),SUP,2023-01-25,2024-06-28
1804,Engineering,ENG,2023-01-25,2023-10-06
1805,Manufacturing,MFG,2023-10-07,2024-05-29
1806,Dispatch,DIS,2024-05-30,2024-06-28
1807,SUPER HEATER LINK SUPPORTS (PGMA-12906),SUP,2023-01-25,2024-03-29
1808,Engineering,ENG,2023-01-25,2023-08-14
1809,Manufacturing,MFG,2023-08-15,2024-02-28
1810,Dispatch,DIS,2024-02-29,2024-03-29
1811,BACKPASS ROOF SUPPORTS (PGMA-12907),SUP,2022-12-26,2024-01-27
1812,Engineering,ENG,2022-12-26,2023-07-05
1813,Manufacturing,MFG,2023-07-06,2023-12-28
1814,Dispatch,DIS,2023-12-29,2024-01-27
1815,SUSPENSION OF SH RADIANT ROOF HEADERS (PGMA-12914),SUP,2022-12-26,2024-01-27
1816,Engineering,ENG,2022-12-26,2023-07-05
1817,Manufacturing,MFG,2023-07-06,2023-12-28
1818,Dispatch,DIS,2023-12-29,2024-01-27
1819,SUSPENSION OF RADIANT ROOF (PGMA-12917),SUP,2023-01-25,2024-02-26
1820,Engineering,ENG,2023-01-25,2023-08-04
1821,Manufacturing,MFG,2023-08-05,2024-01-27
1822,Dispatch,DIS,2024-01-28,2024-02-26
1823,SUPER HEATER BACK PASS HEADER SUSPENSION (PGMA-12924),SUP,2022-12-26,2024-01-27
1824,Engineering,ENG,2022-12-26,2023-07-05
1825,Manufacturing,MFG,2023-07-06,2023-12-28
1826,Dispatch,DIS,2023-12-29,2024-01-27
1827,SUSPENSION OF REAR ROOF (PGMA-12927),SUP,2023-01-25,2024-02-26
1828,Engineering,ENG,2023-01-25,2023-08-04
1829,Manufacturing,MFG,2023-08-05,2024-01-27
1830,Dispatch,DIS,2024-01-28,2024-02-26
1831,SUSPENSIONOFSH HAN.TUBES FT.WL.&REAR WL. (PGMA-12928),SUP,2023-01-25,2024-03-29
1832,Engineering,ENG,2023-01-25,2023-08-14
1833,Manufacturing,MFG,2023-08-15,2024-02-28
1834,Dispatch,DIS,2024-02-29,2024-03-29
1835,SUSPENSION OF SH PLA.&SH DIVI.PANTE. HDR (PGMA-12944),SUP,2022-12-26,2024-01-27
1836,Engineering,ENG,2022-12-26,2023-07-05
1837,Manufacturing,MFG,2023-07-06,2023-12-28
1838,Dispatch,DIS,2023-12-29,2024-01-27
1839,SUSPN.OFSHFL.SHSPD.CL.ASY&LTSHTER.TE.SPD (PGMA-12948),SUP,2023-01-25,2024-02-26
1840,Engineering,ENG,2023-01-25,2023-08-04
1841,Manufacturing,MFG,2023-08-05,2024-01-27
1842,Dispatch,DIS,2024-01-28,2024-02-26
1843,SUSPENSION OF SH PLN HDR&FINAL SPD. HDR (PGMA-12954),SUP,2022-12-26,2024-01-27
1844,Engineering,ENG,2022-12-26,2023-07-05
1845,Manufacturing,MFG,2023-07-06,2023-12-28
1846,Dispatch,DIS,2023-12-29,2024-01-27
1847,SUSPENSION OF SH PLATEN COIL ASSY (PGMA-12968),SUP,2023-01-25,2024-02-26
1848,Engineering,ENG,2023-01-25,2023-08-04
1849,Manufacturing,MFG,2023-08-05,2024-01-27
1850,Dispatch,DIS,2024-01-28,2024-02-26
1851,SH. IMPORTED ELECTRODES (PGMA-12991),SUP,2022-12-26,2023-12-27
1852,Engineering,ENG,2022-12-26,2023-05-26
1853,Manufacturing,MFG,2023-05-27,2023-11-27
1854,Dispatch,DIS,2023-11-28,2023-12-27
1855,IMPORTED ELECTRODES (PGMA-12992),SUP,2023-01-25,2024-03-29
1856,Engineering,ENG,2023-01-25,2023-08-14
1857,Manufacturing,MFG,2023-08-15,2024-02-28
1858,Dispatch,DIS,2024-02-29,2024-03-29
1859,ERECTION MATERIALS (PGMA-12993),SUP,2022-12-26,2023-12-27
1860,Engineering,ENG,2022-12-26,2023-05-26
1861,Manufacturing,MFG,2023-05-27,2023-11-27
1862,Dispatch,DIS,2023-11-28,2023-12-27
1863,Reheater Headers (PG-15),SUP,2023-01-25,2024-07-29
1864,REHEATER-I INLET HEADER (PGMA-15136),SUP,2023-01-25,2024-07-29
1865,Engineering,ENG,2023-01-25,2023-10-26
1866,Manufacturing,MFG,2023-10-27,2024-06-29
1867,Dispatch,DIS,2024-06-30,2024-07-29
1868,FINISH RH I/L HDR (PGMA-15178),SUP,2023-01-25,2024-03-29
1869,Engineering,ENG,2023-01-25,2023-08-14
1870,Manufacturing,MFG,2023-08-15,2024-02-28
1871,Dispatch,DIS,2024-02-29,2024-03-29
1872,REHEATER-I OUTLET HEADER (PGMA-15236),SUP,2023-01-25,2024-03-29
1873,Engineering,ENG,2023-01-25,2023-08-14
1874,Manufacturing,MFG,2023-08-15,2024-02-28
1875,Dispatch,DIS,2024-02-29,2024-03-29
1876,REHEATER VERT PLATEN OUTLET HEADER RHH (PGMA-15278),SUP,2023-01-25,2024-03-29
1877,Engineering,ENG,2023-01-25,2023-08-14
1878,Manufacturing,MFG,2023-08-15,2024-02-28
1879,Dispatch,DIS,2024-02-29,2024-03-29
1880,Reheater Coils and Walls (PG-16),SUP,2023-01-25,2024-06-28
1881,RH VER PLATEN FRONT COIL ASY LEFT (PGMA-16079),SUP,2023-01-25,2024-03-29
1882,Engineering,ENG,2023-01-25,2023-08-14
1883,Manufacturing,MFG,2023-08-15,2024-02-28
1884,Dispatch,DIS,2024-02-29,2024-03-29
1885,LTRH UPPER ASSY (PGMA-16201),SUP,2023-01-25,2024-04-28
1886,Engineering,ENG,2023-01-25,2023-09-05
1887,Manufacturing,MFG,2023-09-06,2024-03-29
1888,Dispatch,DIS,2024-03-30,2024-04-28
1889,LTRH INTERMEDIATE ASSY (PGMA-16202),SUP,2023-01-25,2024-04-28
1890,Engineering,ENG,2023-01-25,2023-09-05
1891,Manufacturing,MFG,2023-09-06,2024-03-29
1892,Dispatch,DIS,2024-03-30,2024-04-28
1893,LTRH coils lower (PGMA-16203),SUP,2023-01-25,2024-06-28
1894,Engineering,ENG,2023-01-25,2023-10-06
1895,Manufacturing,MFG,2023-10-07,2024-05-29
1896,Dispatch,DIS,2024-05-30,2024-06-28
1897,LTRH PENDANT ASSY WITH OUTLET TERM TUBES (PGMA-16270),SUP,2023-01-25,2024-06-28
1898,Engineering,ENG,2023-01-25,2023-10-06
1899,Manufacturing,MFG,2023-10-07,2024-05-29
1900,Dispatch,DIS,2024-05-30,2024-06-28
1901,RHVERTICAL PLATEN FRONT COIL ASSY. (RIT) (PGMA-16379),SUP,2023-01-25,2024-03-29
1902,Engineering,ENG,2023-01-25,2023-08-14
1903,Manufacturing,MFG,2023-08-15,2024-02-28
1904,Dispatch,DIS,2024-02-29,2024-03-29
1905,Reheater Components (PG-17),SUP,2023-01-25,2024-09-27
1906,LINK TO RH DESUPERHEATER (PGMA-17174),SUP,2023-01-25,2024-03-29
1907,Engineering,ENG,2023-01-25,2023-08-14
1908,Manufacturing,MFG,2023-08-15,2024-02-28
1909,Dispatch,DIS,2024-02-29,2024-03-29
1910,Rh Hdr Supports & Suspensions Above Roof-DD (PGMA-17304),SUP,2023-01-25,2024-02-26
1911,Engineering,ENG,2023-01-25,2023-08-04
1912,Manufacturing,MFG,2023-08-05,2024-01-27
1913,Dispatch,DIS,2024-01-28,2024-02-26
1914,RH LINKS SUPPORTS-DD (PGMA-17306),SUP,2023-01-25,2024-03-29
1915,Engineering,ENG,2023-01-25,2023-08-14
1916,Manufacturing,MFG,2023-08-15,2024-02-28
1917,Dispatch,DIS,2024-02-29,2024-03-29
1918,RH FRONT COIL SUSPENSION-DD (PGMA-17319),SUP,2023-01-25,2024-02-26
1919,Engineering,ENG,2023-01-25,2023-08-04
1920,Manufacturing,MFG,2023-08-05,2024-01-27
1921,Dispatch,DIS,2024-01-28,2024-02-26
1922,SC SPACER TUBES FOR RH. COIL-OS (PGMA-17407),SUP,2023-01-25,2024-03-29
1923,Engineering,ENG,2023-01-25,2023-08-14
1924,Manufacturing,MFG,2023-08-15,2024-02-28
1925,Dispatch,DIS,2024-02-29,2024-03-29
1926,RH HEADER SUPPORTS-SHOP (PGMA-17504),SUP,2023-01-25,2024-02-26
1927,Engineering,ENG,2023-01-25,2023-08-04
1928,Manufacturing,MFG,2023-08-05,2024-01-27
1929,Dispatch,DIS,2024-01-28,2024-02-26
1930,RH LINKS SUPPORTS-SHOP (PGMA-17506),SUP,2023-01-25,2024-03-29
1931,Engineering,ENG,2023-01-25,2023-08-14
1932,Manufacturing,MFG,2023-08-15,2024-02-28
1933,Dispatch,DIS,2024-02-29,2024-03-29
1934,STEAM COOLED SPACER TUBES FOR RH. COIL (PGMA-17807),SUP,2023-01-25,2024-08-29
1935,Engineering,ENG,2023-01-25,2023-11-05
1936,Manufacturing,MFG,2023-11-06,2024-07-30
1937,Dispatch,DIS,2024-07-31,2024-08-29
1938,REHEATER DE-SUPER HEATER (PGMA-17900),SUP,2023-01-25,2024-03-29
1939,Engineering,ENG,2023-01-25,2023-08-14
1940,Manufacturing,MFG,2023-08-15,2024-02-28
1941,Dispatch,DIS,2024-02-29,2024-03-29
1942,RH HEADER SUPPORTS (PGMA-17904),SUP,2023-01-25,2024-02-26
1943,Engineering,ENG,2023-01-25,2023-08-04
1944,Manufacturing,MFG,2023-08-05,2024-01-27
1945,Dispatch,DIS,2024-01-28,2024-02-26
1946,RH LINKS SUPPORTS (PGMA-17906),SUP,2023-01-25,2024-03-29
1947,Engineering,ENG,2023-01-25,2023-08-14
1948,Manufacturing,MFG,2023-08-15,2024-02-28
1949,Dispatch,DIS,2024-02-29,2024-03-29
1950,RH FRONT COIL SUSPENSION (PGMA-17919),SUP,2023-01-25,2024-02-26
1951,Engineering,ENG,2023-01-25,2023-08-04
1952,Manufacturing,MFG,2023-08-05,2024-01-27
1953,Dispatch,DIS,2024-01-28,2024-02-26
1954,RH IMPORTED ELECTRODES (PGMA-17991),SUP,2023-01-25,2024-03-29
1955,Engineering,ENG,2023-01-25,2023-08-14
1956,Manufacturing,MFG,2023-08-15,2024-02-28
1957,Dispatch,DIS,2024-02-29,2024-03-29
1958,RH SITE ELECTRODES IMPORTED (PGMA-17992),SUP,2023-01-25,2024-09-27
1959,Engineering,ENG,2023-01-25,2023-11-20
1960,Manufacturing,MFG,2023-11-21,2024-08-28
1961,Dispatch,DIS,2024-08-29,2024-09-27
1962,Erection,ERC,2024-07-26,2026-02-27
1963,Erection: Separator  Storage Tanks including Supports,ERC,2024-07-26,2024-09-23
1964,Erection & commissioning of Boiler Re-circulation pump,ERC,2025-01-28,2025-07-21
1965,Erection: PP complete,ERC,2025-06-10,2025-06-10
1966,Water Circulation system  Super Heaters and Re-Heaters ,ERC,2024-08-30,2025-11-29
1967,BACKPASS,ERC,2024-08-30,2025-06-10
1968, BACKPASS: Erection of Pressure Part Support Steel and Hanger Rods,ERC,2024-08-30,2024-10-08
1969, BACKPASS: Erection of Headers  Links and Connecting Tubes above the Roof Line.,ERC,2024-09-29,2024-11-12
1970, BACKPASS: Erection of BP Front Outlet Header and BP Front Screen Tubes,ERC,2024-11-10,2024-11-24
1971, BACKPASS: Erection of Backpass Front Fin Weld Panel,ERC,2024-11-22,2024-12-03
1972, Back pass of LTRH Outlet Header and Terminal Tubes,ERC,2024-12-04,2024-12-21
1973, Back pass of Backpass SC Support Outlet Header and Hanger Tubes,ERC,2024-12-22,2025-01-08
1974, Back pass of Finish SH Inlet Header  SH Outlet Header and Terminal Tubes,ERC,2025-01-06,2025-01-14
1975, Back pass of BP Upper Side Fin Weld Panels,ERC,2025-01-12,2025-01-20
1976, Back pass of BP Roof Panels and BP Hanger tubes,ERC,2025-01-21,2025-02-07
1977, Back pass of LTRH Pendant Assembly,ERC,2025-02-08,2025-02-19
1978, Back pass of BP Rear FW Panels and BP Lower Side FW Panels,ERC,2025-02-20,2025-03-03
1979, Back pass of LTRH Upper and Upper Intermediate Horizontal Assemblies,ERC,2025-03-04,2025-03-15
1980, Back pass of LTRH Lower and Lower Intermediate Horizontal Assemblies,ERC,2025-03-16,2025-03-27
1981, Back pass of LTRH Inlet Header Assembly,ERC,2025-03-28,2025-04-06
1982, Back pass of Economizer Outlet Header Assembly,ERC,2025-04-07,2025-04-15
1983, Back pass of Economizer Assemblies,ERC,2025-04-11,2025-04-24
1984, Back pass of Economizer Outlet Link,ERC,2025-04-25,2025-04-30
1985, Back pass of BP Lower Headers,ERC,2025-05-01,2025-05-12
1986, Back pass of Economizer Inlet Header,ERC,2025-05-13,2025-05-21
1987, BACKPASS: Final weld out of BP,ERC,2025-05-22,2025-06-10
1988, FURNACE PASS AND BP EXTENDED,ERC,2024-11-03,2025-06-05
1989, FURNACE PASS AND BP EXTENDED: Erection of Superheater Connecting Pipe,ERC,2024-11-03,2024-11-16
1990, FURNACE PASS AND BP EXTENDED: Erection of BP Extended Side Inlet Headers,ERC,2024-11-14,2024-11-22
1991, FURNACE PASS AND BP EXTENDED: Erection of BP Extended Side Panels,ERC,2024-11-18,2024-12-01
1992, FURNACE PASS AND BP EXTENDED: Erection of Furnace Roof Panels,ERC,2024-11-30,2024-12-09
1993, FURNACE PASS AND BP Back pass of Furnace Upper Sidewall Panels,ERC,2024-12-10,2024-12-19
1994, FURNACE PASS AND BP Back pass of Finishing Superheater Rear Assembly,ERC,2024-12-17,2024-12-28
1995, FURNACE PASS AND BP Back pass of Finishing Superheater Front Assembly,ERC,2024-12-26,2025-01-06
1996, FURNACE PASS AND BP Back pass of Furnace Rear Screen Tubes and Furnace Rear Hanger tubes,ERC,2025-01-04,2025-01-15
1997, FURNACE PASS AND BP Back pass of Finish Reheater Inlet Header and Finish Reheater Outlet Header Assemblies,ERC,2025-01-13,2025-01-24
1998, FURNACE PASS AND BP Back pass of SH Platen Inlet Header and SH Platen Outlet Assemblies,ERC,2025-01-20,2025-02-02
1999, FURNACE PASS AND BP Back pass of Finishing Reheater Assembly,ERC,2025-01-29,2025-02-11
2000, FURNACE PASS AND BP Back pass of SH Platen Assembly,ERC,2025-02-09,2025-02-20
2001, FURNACE PASS AND BP Back pass of Furnace Upper Front Panels,ERC,2025-02-18,2025-03-01
2002, FURNACE PASS AND BP Back pass of Backpass Extended Side Floor Assembly,ERC,2025-02-25,2025-03-10
2003, FURNACE PASS AND BP Back pass of Furnace Rear Arch,ERC,2025-03-06,2025-03-17
2004, FURNACE PASS AND BP Back pass of Buckstays and levellers,ERC,2025-03-15,2025-03-24
2005, FURNACE PASS AND BP levellers of SOFA panel,ERC,2025-03-22,2025-04-04
2006, FURNACE PASS AND BP levellers of Transition Headers,ERC,2025-03-31,2025-04-15
2007, FURNACE PASS AND BP levellers of windbox and burner panel,ERC,2025-03-27,2025-04-20
2008, FURNACE PASS AND BP winebox of Upper Spiral Wall Panels,ERC,2025-04-16,2025-04-25
2009, FURNACE PASS AND BP winebox of Lower Spiral Walls and Ring Header,ERC,2025-04-14,2025-05-03
2010, FURNACE PASS AND BP winebox of Hopper panel,ERC,2025-04-22,2025-05-11
2011, FURNACE PASS AND BP EXTENDED: Final welding of the furnace,ERC,2025-05-12,2025-06-05
2012,Erection of Boiler Fill Piping and Trim Piping,ERC,2025-04-05,2025-06-03
2013,Erection of Startup system and Safety Valve (Required for Drainable HT),ERC,2025-04-05,2025-06-03
2014,Erection: Balance welding of PP for Non Drainable HT,ERC,2025-06-14,2025-11-29
2015,DRAINABLE Hydro TEST,ERC,2025-06-11,2025-06-19
2016,DRAINABLE Hydro TEST: Air fill test,ERC,2025-06-11,2025-06-13
2017,DRAINABLE Hydro TEST: Readiness of Boiler for HT,ERC,2025-06-14,2025-06-19
2018,Non Drainable HT,ERC,2025-11-29,2025-11-29
2019,FOR CHEMICAL CLEANING AND EDTA,ERC,2026-01-05,2026-01-24
2020, FOR CHEMICAL CLEANING AND EDTA: Placememnt of temporary tanks,ERC,2026-01-05,2026-01-09
2021, FOR CHEMICAL CLEANING AND EDTA: Erection of temporary piping for bulk chemicals,ERC,2026-01-10,2026-01-24
2022,FOR STEAM BLOWING,ERC,2026-02-08,2026-02-27
2023, FOR STEAM BLOWING: Erection of temporary piping,ERC,2026-02-08,2026-02-27
2024,Soot Blower,OTH,2023-08-22,2026-01-25
2025,Supply (BHEL TRY),SUP,2023-08-22,2025-09-27
2026,Soot Blowers (PG-20),SUP,2023-08-22,2025-07-29
2027,LONG RETRACTABLE SOO (PGMA-20051),SUP,2023-11-06,2025-06-29
2028,Engineering,ENG,2023-11-06,2024-08-13
2029,Manufacturing,MFG,2024-08-14,2025-05-30
2030,Dispatch,DIS,2025-05-31,2025-06-29
2031,WALL BOX NON PRESSUR (PGMA-20054),SUP,2023-09-27,2025-04-29
2032,Engineering,ENG,2023-09-27,2024-06-21
2033,Manufacturing,MFG,2024-06-22,2025-03-30
2034,Dispatch,DIS,2025-03-31,2025-04-29
2035,WALL DESLAGGER RW5E (PGMA-20201),SUP,2023-11-06,2025-06-29
2036,Engineering,ENG,2023-11-06,2024-08-13
2037,Manufacturing,MFG,2024-08-14,2025-05-30
2038,Dispatch,DIS,2025-05-31,2025-06-29
2039,WALL BOX NON PRESSUR (PGMA-20204),SUP,2023-09-12,2025-03-30
2040,Engineering,ENG,2023-09-12,2024-05-30
2041,Manufacturing,MFG,2024-05-31,2025-02-28
2042,Dispatch,DIS,2025-03-01,2025-03-30
2043,DA HEAD VALVE ASSY (PGMA-20511),SUP,2023-11-06,2025-06-29
2044,Engineering,ENG,2023-11-06,2024-08-13
2045,Manufacturing,MFG,2024-08-14,2025-05-30
2046,Dispatch,DIS,2025-05-31,2025-06-29
2047,WALL BOX NON PRESSUR (PGMA-20794),SUP,2023-09-27,2025-04-29
2048,Engineering,ENG,2023-09-27,2024-06-21
2049,Manufacturing,MFG,2024-06-22,2025-03-30
2050,Dispatch,DIS,2025-03-31,2025-04-29
2051,TEMP PROBE DUPLEX WI (PGMA-20962),SUP,2023-08-22,2025-04-29
2052,Engineering,ENG,2023-08-22,2024-06-11
2053,Manufacturing,MFG,2024-06-12,2025-03-30
2054,Dispatch,DIS,2025-03-31,2025-04-29
2055,SOOT BLOWER COMMISSIONING SPARES (PGMA-20988),SUP,2023-11-21,2025-07-29
2056,Engineering,ENG,2023-11-21,2024-09-10
2057,Manufacturing,MFG,2024-09-11,2025-06-29
2058,Dispatch,DIS,2025-06-30,2025-07-29
2059,SPECIAL TOOLS FOR SO (PGMA-20998),SUP,2023-09-12,2025-03-30
2060,Engineering,ENG,2023-09-12,2024-05-30
2061,Manufacturing,MFG,2024-05-31,2025-02-28
2062,Dispatch,DIS,2025-03-01,2025-03-30
2063,Soot Blowing system (PG-21),SUP,2023-09-12,2025-09-27
2064,SOOT BLOWER PIPING AND FITTINGS (PGMA-21600),SUP,2023-09-12,2025-03-30
2065,Engineering,ENG,2023-09-12,2024-05-30
2066,Manufacturing,MFG,2024-05-31,2025-02-28
2067,Dispatch,DIS,2025-03-01,2025-03-30
2068,SOOTBLOWER PIPING SUPPORTS (PGMA-21601),SUP,2023-09-12,2025-03-30
2069,Engineering,ENG,2023-09-12,2024-05-30
2070,Manufacturing,MFG,2024-05-31,2025-02-28
2071,Dispatch,DIS,2025-03-01,2025-03-30
2072,SOOT BLOWER PIPING & FITTINGS - DD (PGMA-21602),SUP,2023-09-12,2025-03-30
2073,Engineering,ENG,2023-09-12,2024-05-30
2074,Manufacturing,MFG,2024-05-31,2025-02-28
2075,Dispatch,DIS,2025-03-01,2025-03-30
2076,SOOT BLOWER PIPING & FITTINGS - BOI (PGMA-21603),SUP,2023-09-12,2025-03-30
2077,Engineering,ENG,2023-09-12,2024-05-30
2078,Manufacturing,MFG,2024-05-31,2025-02-28
2079,Dispatch,DIS,2025-03-01,2025-03-30
2080,SOOT BLOWER PIPING SUPPORTS - OS (PGMA-21604),SUP,2023-09-12,2025-03-30
2081,Engineering,ENG,2023-09-12,2024-05-30
2082,Manufacturing,MFG,2024-05-31,2025-02-28
2083,Dispatch,DIS,2025-03-01,2025-03-30
2084,Soot Blower Piping Supports - Dd (PGMA-21605),SUP,2023-09-12,2025-03-30
2085,Engineering,ENG,2023-09-12,2024-05-30
2086,Manufacturing,MFG,2024-05-31,2025-02-28
2087,Dispatch,DIS,2025-03-01,2025-03-30
2088,Soot Blower Piping Supports - BOI (PGMA-21606),SUP,2023-09-12,2025-03-30
2089,Engineering,ENG,2023-09-12,2024-05-30
2090,Manufacturing,MFG,2024-05-31,2025-02-28
2091,Dispatch,DIS,2025-03-01,2025-03-30
2092,BULKED BPS COMPONENTS FOR SB PIPING (PGMA-21700),SUP,2023-09-27,2025-04-29
2093,Engineering,ENG,2023-09-27,2024-06-21
2094,Manufacturing,MFG,2024-06-22,2025-03-30
2095,Dispatch,DIS,2025-03-31,2025-04-29
2096,SB VALVES (BHEL) (PGMA-21800),SUP,2023-09-27,2025-04-29
2097,Engineering,ENG,2023-09-27,2024-06-21
2098,Manufacturing,MFG,2024-06-22,2025-03-30
2099,Dispatch,DIS,2025-03-31,2025-04-29
2100,SB VALVES (SUB DELIVERY) (PGMA-21825),SUP,2023-10-17,2025-05-30
2101,Ordering & Engineering,ENG,2023-10-17,2024-07-22
2102,Manufacturing,MFG,2024-07-23,2025-04-30
2103,Dispatch,DIS,2025-05-01,2025-05-30
2104,SOOT BLOWER SAFETY VALVE (BHEL) (PGMA-21850),SUP,2023-10-17,2025-05-30
2105,Engineering,ENG,2023-10-17,2024-07-22
2106,Manufacturing,MFG,2024-07-23,2025-04-30
2107,Dispatch,DIS,2025-05-01,2025-05-30
2108,COMMG SPARES FOR SB SAFETY VALVE (PGMA-21987),SUP,2023-12-09,2025-09-27
2109,Engineering,ENG,2023-12-09,2024-10-23
2110,Manufacturing,MFG,2024-10-24,2025-08-28
2111,Dispatch,DIS,2025-08-29,2025-09-27
2112,COMMG SPARES FOR SUB DELIVERIES (PGMA-21988),SUP,2023-12-09,2025-09-27
2113,Engineering,ENG,2023-12-09,2024-10-23
2114,Manufacturing,MFG,2024-10-24,2025-08-28
2115,Dispatch,DIS,2025-08-29,2025-09-27
2116,IMPORTED ELECTRODES (PGMA-21992),SUP,2023-09-12,2025-03-30
2117,Engineering,ENG,2023-09-12,2024-05-30
2118,Manufacturing,MFG,2024-05-31,2025-02-28
2119,Dispatch,DIS,2025-03-01,2025-03-30
2120,Erection,ERC,2025-06-30,2026-01-25
2121,Erection of wall blowers  soot blowers & piping,ERC,2025-06-30,2025-12-26
2122,Mineral wool for soot blowing piping,ERC,2025-12-27,2026-01-25
2123,Lining and Insulation System,ERC,2023-01-25,2026-01-15
2124,Supply (BHEL TRY),SUP,2023-01-25,2025-04-27
2125,Seal Boxes (PG-09),SUP,2023-06-04,2024-09-26
2126,MATERIAL FOR INSTRUMENT INSERTS (PGMA-9003),SUP,2023-06-04,2024-09-26
2127,Engineering,ENG,2023-06-04,2024-02-23
2128,Manufacturing,MFG,2024-02-24,2024-08-27
2129,Dispatch,DIS,2024-08-28,2024-09-26
2130,Seal boxes for Furnace Openings (PGMA-9004),SUP,2023-06-12,2024-09-26
2131,Engineering,ENG,2023-06-12,2024-02-28
2132,Manufacturing,MFG,2024-02-29,2024-08-27
2133,Dispatch,DIS,2024-08-28,2024-09-26
2134,Seal boxes for Instrument Tappings (PGMA-9005),SUP,2023-06-04,2024-09-26
2135,Engineering,ENG,2023-06-04,2024-02-28
2136,Manufacturing,MFG,2024-02-29,2024-08-27
2137,Dispatch,DIS,2024-08-28,2024-09-26
2138,Material For Instrument Inserts-DD (PGMA-9303),SUP,2023-06-04,2024-09-26
2139,Engineering,ENG,2023-06-04,2024-02-23
2140,Manufacturing,MFG,2024-02-24,2024-08-27
2141,Dispatch,DIS,2024-08-28,2024-09-26
2142,SEAL BOXES FOR FURNACE OPENINGS-DD (PGMA-9304),SUP,2023-06-12,2024-09-26
2143,Engineering,ENG,2023-06-12,2024-02-28
2144,Manufacturing,MFG,2024-02-29,2024-08-27
2145,Dispatch,DIS,2024-08-28,2024-09-26
2146,Material For Instrument Inserts-SH (PGMA-9503),SUP,2023-06-04,2024-09-26
2147,Engineering,ENG,2023-06-04,2024-02-23
2148,Manufacturing,MFG,2024-02-24,2024-08-27
2149,Dispatch,DIS,2024-08-28,2024-09-26
2150,Roof Skin Casing (PG-18),SUP,2023-01-25,2024-08-28
2151,ROOF SKIN CASING (PGMA-18001),SUP,2023-06-12,2024-08-28
2152,Engineering,ENG,2023-06-12,2023-12-28
2153,Manufacturing,MFG,2023-12-29,2024-07-29
2154,Dispatch,DIS,2024-07-30,2024-08-28
2155,PR PTS ATTACHMNTS IN FURN ROOF SKN CAS (PGMA-18010),SUP,2023-01-25,2024-08-28
2156,Engineering,ENG,2023-01-25,2023-12-05
2157,Manufacturing,MFG,2023-12-06,2024-07-29
2158,Dispatch,DIS,2024-07-30,2024-08-28
2159,FURN ROO SKIN CASING - BOI (PGMA-18701),SUP,2023-06-12,2024-08-28
2160,Engineering,ENG,2023-06-12,2023-12-28
2161,Manufacturing,MFG,2023-12-29,2024-07-29
2162,Dispatch,DIS,2024-07-30,2024-08-28
2163,Fixing Components for Main Boiler Lining and Insulation (PG-30),SUP,2023-01-25,2025-01-25
2164,SEAL PLATE ASSY (PGMA-30103),SUP,2023-07-02,2025-01-25
2165,Engineering,ENG,2023-07-02,2024-03-22
2166,Manufacturing,MFG,2024-03-23,2024-12-26
2167,Dispatch,DIS,2024-12-27,2025-01-25
2168,MAIN BOILER INSULATION (PGMA-30215),SUP,2023-07-02,2025-01-25
2169,Engineering,ENG,2023-07-02,2024-03-22
2170,Manufacturing,MFG,2024-03-23,2024-12-26
2171,Dispatch,DIS,2024-12-27,2025-01-25
2172,VERTICAL ROOF ENCLOSURE FRAMING (PGMA-30219),SUP,2023-06-12,2024-12-26
2173,Engineering,ENG,2023-06-12,2024-02-28
2174,Manufacturing,MFG,2024-02-29,2024-11-26
2175,Dispatch,DIS,2024-11-27,2024-12-26
2176,GAS DISTRIBUTION BAFFLES (PGMA-30223),SUP,2023-05-18,2024-11-25
2177,Engineering,ENG,2023-05-18,2024-02-03
2178,Manufacturing,MFG,2024-02-04,2024-10-26
2179,Dispatch,DIS,2024-10-27,2024-11-25
2180,Antivibration Baffles (PGMA-30224),SUP,2023-01-25,2024-08-27
2181,Engineering,ENG,2023-01-25,2023-11-05
2182,Manufacturing,MFG,2023-11-06,2024-07-28
2183,Dispatch,DIS,2024-07-29,2024-08-27
2184,FIRST PASS DECK SPRT AND SEAL (PGMA-30233),SUP,2023-07-02,2025-01-25
2185,Engineering,ENG,2023-07-02,2024-03-22
2186,Manufacturing,MFG,2024-03-23,2024-12-26
2187,Dispatch,DIS,2024-12-27,2025-01-25
2188,SECOND PASS DECK SPRT AND SEAL (PGMA-30234),SUP,2023-07-02,2025-01-25
2189,Engineering,ENG,2023-07-02,2024-03-22
2190,Manufacturing,MFG,2024-03-23,2024-12-26
2191,Dispatch,DIS,2024-12-27,2025-01-25
2192,ENCLOSURE SUPPORT STEEL (PGMA-30235),SUP,2023-06-12,2024-12-26
2193,Engineering,ENG,2023-06-12,2024-02-28
2194,Manufacturing,MFG,2024-02-29,2024-11-26
2195,Dispatch,DIS,2024-11-27,2024-12-26
2196,Boiler Skin Casing (PG-31),SUP,2023-01-25,2024-12-26
2197,SKIN CASING COMPS WELDED TO PR. PARTS (PGMA-31010),SUP,2023-01-25,2024-11-25
2198,Engineering,ENG,2023-01-25,2023-12-20
2199,Manufacturing,MFG,2023-12-21,2024-10-26
2200,Dispatch,DIS,2024-10-27,2024-11-25
2201,FURNACE REAR ARCH SKIN CASING (PGMA-31104),SUP,2023-06-12,2024-12-26
2202,Engineering,ENG,2023-06-12,2024-02-28
2203,Manufacturing,MFG,2024-02-29,2024-11-26
2204,Dispatch,DIS,2024-11-27,2024-12-26
2205,Fixing Components for Boiler Auxiliaries Insulation (PG-32),SUP,2023-07-02,2025-01-27
2206,FIXING COMPONENTS FOR BLR PR PARTS INSUL (PGMA-32010),SUP,2023-07-02,2025-01-25
2207,Engineering,ENG,2023-07-02,2024-03-22
2208,Manufacturing,MFG,2024-03-23,2024-12-26
2209,Dispatch,DIS,2024-12-27,2025-01-25
2210,FIXING COMPONENTS FOR DUCT INSUL (PGMA-32210),SUP,2023-07-02,2025-01-25
2211,Engineering,ENG,2023-07-02,2024-03-22
2212,Manufacturing,MFG,2024-03-23,2024-12-26
2213,Dispatch,DIS,2024-12-27,2025-01-25
2214,BULKED BPS COMPONENT (PGMA-32700),SUP,2023-07-02,2025-01-25
2215,Engineering,ENG,2023-07-02,2024-03-22
2216,Manufacturing,MFG,2024-03-23,2024-12-26
2217,Dispatch,DIS,2024-12-27,2025-01-25
2218,FIXING COMPONENT FOR OUTLET DUCT (PGMA-32810),SUP,2023-07-02,2025-01-27
2219,Engineering,ENG,2023-07-02,2024-03-22
2220,Manufacturing,MFG,2024-03-23,2024-12-28
2221,Dispatch,DIS,2024-12-29,2025-01-27
2222,Lining and Insulation Materials (PG-33),SUP,2023-06-12,2025-04-27
2223,BLR PR PARTS MINERAL WOOL (PGMA-33021),SUP,2023-07-02,2025-01-25
2224,Engineering,ENG,2023-07-02,2024-03-22
2225,Manufacturing,MFG,2024-03-23,2024-12-26
2226,Dispatch,DIS,2024-12-27,2025-01-25
2227,MAIN BLR CASTABLE REFRACTORY GR A (PGMA-33210),SUP,2023-06-12,2024-12-26
2228,Engineering,ENG,2023-06-12,2024-02-28
2229,Manufacturing,MFG,2024-02-29,2024-11-26
2230,Dispatch,DIS,2024-11-27,2024-12-26
2231,DUCT MINERAL WOOL (PGMA-33221),SUP,2023-08-07,2025-03-27
2232,Engineering,ENG,2023-08-07,2024-05-14
2233,Manufacturing,MFG,2024-05-15,2025-02-25
2234,Dispatch,DIS,2025-02-26,2025-03-27
2235,MAIN BLR POURABLE INSULATION (PGMA-33230),SUP,2023-06-12,2024-12-26
2236,Engineering,ENG,2023-06-12,2024-02-28
2237,Manufacturing,MFG,2024-02-29,2024-11-26
2238,Dispatch,DIS,2024-11-27,2024-12-26
2239,MISC EQPTS SEAL MATERIALS (PGMA-33924),SUP,2023-08-22,2025-04-27
2240,Engineering,ENG,2023-08-22,2024-06-11
2241,Manufacturing,MFG,2024-06-12,2025-03-28
2242,Dispatch,DIS,2025-03-29,2025-04-27
2243,MISC EQPTS EXPANDED METAL (PGMA-33970),SUP,2023-07-02,2025-01-25
2244,Engineering,ENG,2023-07-02,2024-03-22
2245,Manufacturing,MFG,2024-03-23,2024-12-26
2246,Dispatch,DIS,2024-12-27,2025-01-25
2247,MISC EQPTS WOVEN WIRE CLOTH (PGMA-33971),SUP,2023-06-12,2024-12-26
2248,Engineering,ENG,2023-06-12,2024-02-28
2249,Manufacturing,MFG,2024-02-29,2024-11-26
2250,Dispatch,DIS,2024-11-27,2024-12-26
2251,MISC EQPTS SEALING COMPOUND (PGMA-33975),SUP,2023-08-22,2025-04-27
2252,Engineering,ENG,2023-08-22,2024-06-11
2253,Manufacturing,MFG,2024-06-12,2025-03-28
2254,Dispatch,DIS,2025-03-29,2025-04-27
2255,Boiler Outer Casing (PG-37),SUP,2023-06-12,2024-08-28
2256,BLR OUTER CASING COMPONENTS (PGMA-37010),SUP,2023-06-12,2024-08-28
2257,Engineering,ENG,2023-06-12,2023-12-28
2258,Manufacturing,MFG,2023-12-29,2024-07-29
2259,Dispatch,DIS,2024-07-30,2024-08-28
2260,BLR OUTER CASING (PGMA-37810),SUP,2023-06-12,2024-08-28
2261,Engineering,ENG,2023-06-12,2023-12-28
2262,Manufacturing,MFG,2023-12-29,2024-07-29
2263,Dispatch,DIS,2024-07-30,2024-08-28
2264,Erection,ERC,2025-04-01,2026-01-15
2265,Seal Boxes (PG-09),ERC,2025-04-01,2025-05-30
2266,Erection: Seal Boxes for Furnace Opening,ERC,2025-04-21,2025-05-30
2267,Erection: Seal Boxes for Instrument tapping,ERC,2025-04-01,2025-05-19
2268,Roof Skin Casing (PG-18),ERC,2025-06-30,2025-11-16
2269,Erection: Roof Skin Casing and PP attachment,ERC,2025-06-30,2025-11-16
2270,Fixing Components for Main Boiler Lining and Insulation (PG-30),ERC,2025-08-19,2025-11-16
2271,Erection: SEAL PLATE ASSY,ERC,2025-10-18,2025-11-16
2272,Erection: MAIN BOILER INSULATION,ERC,2025-08-19,2025-11-16
2273,Erection: VERTICAL ROOF ENCLOSURE FRAMING,ERC,2025-08-19,2025-11-16
2274,Erection: GAS DISTRIBUTION BAFFLES,ERC,2025-08-19,2025-09-17
2275,Erection: Antivibration Baffles,ERC,2025-08-19,2025-09-17
2276,Erection: FIRST PASS DECK SPRT AND SEAL,ERC,2025-08-19,2025-11-16
2277,Erection: SECOND PASS DECK SPRT AND SEAL,ERC,2025-08-19,2025-11-16
2278,Erection: ENCLOSURE SUPPORT STEEL,ERC,2025-08-19,2025-11-16
2279,Boiler Skin Casing (PG-31),ERC,2025-07-05,2025-08-03
2280,Erection: SKIN CASING COMPS WELDED TO PR. PARTS,ERC,2025-07-05,2025-08-03
2281,Erection: FURNACE REAR ARCH SKIN CASING,ERC,2025-07-05,2025-08-03
2282,Fixing Components for Boiler Auxiliaries Insulation (PG-32),ERC,2025-07-20,2025-11-16
2283,Erection: FIXING COMPONENTS FOR BLR PR PARTS INSUL,ERC,2025-07-20,2025-11-16
2284,Lining and Insulation Materials (PG-33),ERC,2025-08-09,2026-01-15
2285,Erection: BLR PR PARTS MINERAL WOOL,ERC,2025-08-19,2025-12-16
2286,Erection: MAIN BLR CASTABLE REFRACTORY GR A,ERC,2025-08-09,2025-12-06
2287,Erection: MAIN BLR POURABLE INSULATION,ERC,2025-08-09,2026-01-15
2288,Boiler Outer Casing (PG-37),ERC,2025-07-20,2025-12-06
2289,Erection: BLR OUTER CASING COMPONENTS,ERC,2025-07-20,2025-12-06
2290,Erection: BLR OUTER CASING ,ERC,2025-07-20,2025-12-06
2291,Ignition and Burning System,ERC,2023-01-25,2025-12-09
2292,Supply (BHEL TRY),SUP,2023-01-25,2025-04-29
2293,Oil & Gas Burners and Ignitors & Scanners (PG-41),SUP,2023-06-12,2025-01-27
2294,AIR COOLED OIL GUN ASSY  (PGMA-41350),SUP,2023-06-12,2024-12-26
2295,Engineering,ENG,2023-06-12,2024-02-28
2296,Manufacturing,MFG,2024-02-29,2024-11-26
2297,Dispatch,DIS,2024-11-27,2024-12-26
2298,OIL GUN VICE ASSEMBLY AND RACK (PGMA-41390),SUP,2023-06-12,2024-12-26
2299,Engineering,ENG,2023-06-12,2024-02-28
2300,Manufacturing,MFG,2024-02-29,2024-11-26
2301,Dispatch,DIS,2024-11-27,2024-12-26
2302,HIGH ENERGY ARC IGNITOR (PGMA-41500),SUP,2023-06-12,2024-12-28
2303,Engineering,ENG,2023-06-12,2024-02-28
2304,Manufacturing,MFG,2024-02-29,2024-11-28
2305,Dispatch,DIS,2024-11-29,2024-12-28
2306,Oil Gun Assembly - DD items (PGMA-41710),SUP,2023-06-12,2024-12-28
2307,Engineering,ENG,2023-06-12,2024-02-28
2308,Manufacturing,MFG,2024-02-29,2024-11-28
2309,Dispatch,DIS,2024-11-29,2024-12-28
2310,OIL&GAS BURNER COMMISSIONING SPARE (PGMA-41988),SUP,2023-07-02,2025-01-27
2311,Engineering,ENG,2023-07-02,2024-03-22
2312,Manufacturing,MFG,2024-03-23,2024-12-28
2313,Dispatch,DIS,2024-12-29,2025-01-27
2314,OIL/GAS BURNER MANDATORY SPARES (PGMA-41997),SUP,2023-07-02,2025-01-27
2315,Engineering,ENG,2023-07-02,2024-03-22
2316,Manufacturing,MFG,2024-03-23,2024-12-28
2317,Dispatch,DIS,2024-12-29,2025-01-27
2318,Oil & Gas Systems (PG-42),OTH,2023-06-12,2025-04-29
2319,PNEUMATIC FITTINGS (PGMA-42001),SUP,2023-08-07,2025-03-30
2320,Engineering,ENG,2023-08-07,2024-05-14
2321,Manufacturing,MFG,2024-05-15,2025-02-28
2322,Dispatch,DIS,2025-03-01,2025-03-30
2323,STEAM BLOW MATERIALS (PGMA-42002),SUP,2023-07-23,2025-02-27
2324,Engineering,ENG,2023-07-23,2024-04-17
2325,Manufacturing,MFG,2024-04-18,2025-01-28
2326,Dispatch,DIS,2025-01-29,2025-02-27
2327,INSTRUMENT FITTINGS (PGMA-42005),SUP,2023-08-07,2025-03-30
2328,Engineering,ENG,2023-08-07,2024-05-14
2329,Manufacturing,MFG,2024-05-15,2025-02-28
2330,Dispatch,DIS,2025-03-01,2025-03-30
2331,BOI-LU-LIGHT FUEL OIL PUMP SET (PGMA-42010),SUP,2023-12-01,2025-02-04
2332,NIT,ENQ,2023-12-01,2023-12-01
2333,Ordering,ORD,2023-12-02,2024-03-30
2334,Manufacturing,MFG,2024-03-31,2025-01-05
2335,Dispatch,DIS,2025-01-06,2025-02-04
2336,BOI-LU-DRAIN OIL PUMP-MOTOR ASSY (PGMA-42046),SUP,2023-08-03,2025-02-07
2337,NIT,ENQ,2023-08-03,2023-08-03
2338,Ordering,ORD,2023-08-04,2023-12-31
2339,Manufacturing,MFG,2024-04-10,2025-01-08
2340,Dispatch,DIS,2025-01-09,2025-02-07
2341,DRAIN OIL TANK (PGMA-42065),SUP,2023-06-12,2024-12-28
2342,Engineering,ENG,2023-06-12,2024-02-28
2343,Manufacturing,MFG,2024-02-29,2024-11-28
2344,Dispatch,DIS,2024-11-29,2024-12-28
2345,BURNER STATION SKID ASSY (PGMA-42070),SUP,2023-08-07,2025-03-30
2346,Engineering,ENG,2023-08-07,2024-05-14
2347,Manufacturing,MFG,2024-05-15,2025-02-28
2348,Dispatch,DIS,2025-03-01,2025-03-30
2349,PIPING  PUMP HOUSE-FUEL OIL (PGMA-42120),SUP,2023-07-23,2025-02-27
2350,Engineering,ENG,2023-07-23,2024-04-17
2351,Manufacturing,MFG,2024-04-18,2025-01-28
2352,Dispatch,DIS,2025-01-29,2025-02-27
2353,PIPING PUMP HOUSE STEAM - IBR (PGMA-42128),SUP,2023-07-23,2025-02-27
2354,Engineering,ENG,2023-07-23,2024-04-17
2355,Manufacturing,MFG,2024-04-18,2025-01-28
2356,Dispatch,DIS,2025-01-29,2025-02-27
2357,PIPING OPERATING FLOOR LIGHT FUEL OIL (PGMA-42152),SUP,2023-08-07,2025-03-30
2358,Engineering,ENG,2023-08-07,2024-05-14
2359,Manufacturing,MFG,2024-05-15,2025-02-28
2360,Dispatch,DIS,2025-03-01,2025-03-30
2361,PIPING OPRG FLOOR DRAIN OIL (PGMA-42154),SUP,2023-08-07,2025-03-30
2362,Engineering,ENG,2023-08-07,2024-05-14
2363,Manufacturing,MFG,2024-05-15,2025-02-28
2364,Dispatch,DIS,2025-03-01,2025-03-30
2365,PIPING OPERATING FLOOR ATOMIZING AIR (PGMA-42157),SUP,2023-06-12,2024-12-28
2366,Engineering,ENG,2023-06-12,2024-02-28
2367,Manufacturing,MFG,2024-02-29,2024-11-28
2368,Dispatch,DIS,2024-11-29,2024-12-28
2369,PIPING OPERATING FLOOR STEAM-IBR (PGMA-42158),SUP,2023-08-07,2025-03-30
2370,Engineering,ENG,2023-08-07,2024-05-14
2371,Manufacturing,MFG,2024-05-15,2025-02-28
2372,Dispatch,DIS,2025-03-01,2025-03-30
2373,BOI-LU-SUBDELIVERY FUEL OIL SYSTEM (PGMA-42200),SUP,2023-11-01,2025-02-04
2374,NIT,ENQ,2023-11-01,2023-11-01
2375,Ordering,ORD,2023-11-02,2024-03-30
2376,Manufacturing,MFG,2024-03-31,2025-01-05
2377,Dispatch,DIS,2025-01-06,2025-02-04
2378,BHEL VALVE F.O. SYSTEM (PGMA-42300),SUP,2023-07-02,2025-01-27
2379,Engineering,ENG,2023-07-02,2024-03-22
2380,Manufacturing,MFG,2024-03-23,2024-12-28
2381,Dispatch,DIS,2024-12-29,2025-01-27
2382,BHEL VALVE OPERATING FLOOR STM-IBR (PGMA-42358),SUP,2023-07-02,2025-01-27
2383,Engineering,ENG,2023-07-02,2024-03-22
2384,Manufacturing,MFG,2024-03-23,2024-12-28
2385,Dispatch,DIS,2024-12-29,2025-01-27
2386,BULKED BPS COMPONENTS (PGMA-42700),SUP,2023-07-23,2025-02-27
2387,Engineering,ENG,2023-07-23,2024-04-17
2388,Manufacturing,MFG,2024-04-18,2025-01-28
2389,Dispatch,DIS,2025-01-29,2025-02-27
2390,Fuel Oil System - DD Items (PGMA-42710),SUP,2023-07-23,2025-02-27
2391,Engineering,ENG,2023-07-23,2024-04-17
2392,Manufacturing,MFG,2024-04-18,2025-01-28
2393,Dispatch,DIS,2025-01-29,2025-02-27
2394,Fuel Oil System - Shop items (PGMA-42858),SUP,2023-08-07,2025-03-30
2395,Engineering,ENG,2023-08-07,2024-05-14
2396,Manufacturing,MFG,2024-05-15,2025-02-28
2397,Dispatch,DIS,2025-03-01,2025-03-30
2398,OIL&GAS SYSTEM COMMISSIONING SPARE (PGMA-42988),SUP,2023-08-22,2025-04-29
2399,Engineering,ENG,2023-08-22,2024-06-11
2400,Manufacturing,MFG,2024-06-12,2025-03-30
2401,Dispatch,DIS,2025-03-31,2025-04-29
2402,IMPORTED ELECTRODES (PGMA-42992),SUP,2023-07-23,2025-02-27
2403,Engineering,ENG,2023-07-23,2024-04-17
2404,Manufacturing,MFG,2024-04-18,2025-01-28
2405,Dispatch,DIS,2025-01-29,2025-02-27
2406,OIL SYSTEM-MANDATORY SPARES (PGMA-42997),SUP,2023-08-22,2025-04-29
2407,Engineering,ENG,2023-08-22,2024-06-11
2408,Manufacturing,MFG,2024-06-12,2025-03-30
2409,Dispatch,DIS,2025-03-31,2025-04-29
2410,Ignitor and Scanner Air System (PG-43),OTH,2023-08-07,2025-04-29
2411,ASSY COMP SCANNER & GUN AIR SYSTEM (PGMA-43004),SUP,2023-08-07,2025-03-30
2412,Engineering,ENG,2023-08-07,2024-05-14
2413,Manufacturing,MFG,2024-05-15,2025-02-28
2414,Dispatch,DIS,2025-03-01,2025-03-30
2415,ASSY COMP MILL SEAL AIR SYSTEM (PGMA-43005),SUP,2023-08-22,2025-04-29
2416,Engineering,ENG,2023-08-22,2024-06-11
2417,Manufacturing,MFG,2024-06-12,2025-03-30
2418,Dispatch,DIS,2025-03-31,2025-04-29
2419,M/C COMP SCANNER & GUN AIR SYSTEM (PGMA-43104),SUP,2023-08-07,2025-03-30
2420,Engineering,ENG,2023-08-07,2024-05-14
2421,Manufacturing,MFG,2024-05-15,2025-02-28
2422,Dispatch,DIS,2025-03-01,2025-03-30
2423,M/C COMP MILL SEAL AIR SYSTEM (PGMA-43105),SUP,2023-08-22,2025-04-29
2424,Engineering,ENG,2023-08-22,2024-06-11
2425,Manufacturing,MFG,2024-06-12,2025-03-30
2426,Dispatch,DIS,2025-03-31,2025-04-29
2427,BOI-LU-SUBDEL  AIR SYSTEM (PGMA-43200),SUP,2023-09-22,2025-03-15
2428,NIT,ENQ,2023-09-22,2023-09-22
2429,Ordering,ORD,2023-09-23,2024-04-09
2430,Manufacturing,MFG,2024-04-10,2025-02-13
2431,Dispatch,DIS,2025-02-14,2025-03-15
2432,Seal Air & Scanner Air System - DD items (PGMA-43710),SUP,2023-08-07,2025-03-30
2433,Engineering,ENG,2023-08-07,2024-05-14
2434,Manufacturing,MFG,2024-05-15,2025-02-28
2435,Dispatch,DIS,2025-03-01,2025-03-30
2436,Coal Burner System (PG-45),OTH,2023-01-25,2025-04-29
2437,SA DAMPER & BURNER TILT ACTUATORS (PGMA-45200),SUP,2023-04-09,2024-08-29
2438,Engineering,ENG,2023-04-09,2023-11-29
2439,Manufacturing,MFG,2023-11-30,2024-07-30
2440,Dispatch,DIS,2024-07-31,2024-08-29
2441,Wind Box & SOFA Assembly - DD items (PGMA-45710),SUP,2023-01-25,2024-08-29
2442,Engineering,ENG,2023-01-25,2023-11-05
2443,Manufacturing,MFG,2023-11-06,2024-07-30
2444,Dispatch,DIS,2024-07-31,2024-08-29
2445,Windbox assembly and SOFA tube attachment (PGMA-45801),SUP,2023-01-25,2024-07-29
2446,Engineering,ENG,2023-01-25,2023-10-26
2447,Manufacturing,MFG,2023-10-27,2024-06-29
2448,Dispatch,DIS,2024-06-30,2024-07-29
2449,"Windbox assembly - 32"" width (PGMA-45802)",SUP,2023-01-25,2024-07-29
2450,Engineering,ENG,2023-01-25,2023-10-26
2451,Manufacturing,MFG,2023-10-27,2024-06-29
2452,Dispatch,DIS,2024-06-30,2024-07-29
2453,Windbox assembly - SOFA (PGMA-45804),SUP,2023-01-25,2024-07-29
2454,Engineering,ENG,2023-01-25,2023-10-26
2455,Manufacturing,MFG,2023-10-27,2024-06-29
2456,Dispatch,DIS,2024-06-30,2024-07-29
2457,Windbox support and air cylinder mounting (PGMA-45805),SUP,2023-01-25,2024-07-29
2458,Engineering,ENG,2023-01-25,2023-10-26
2459,Manufacturing,MFG,2023-10-27,2024-06-29
2460,Dispatch,DIS,2024-06-30,2024-07-29
2461,Wind Box & SOFA Assy - Shop items (PGMA-45858),SUP,2023-01-25,2024-07-29
2462,Engineering,ENG,2023-01-25,2023-10-26
2463,Manufacturing,MFG,2023-10-27,2024-06-29
2464,Dispatch,DIS,2024-06-30,2024-07-29
2465,COAL BURNER-MANDATORY SPARES (PGMA-45997),SUP,2023-08-22,2025-04-29
2466,Engineering,ENG,2023-08-22,2024-06-11
2467,Manufacturing,MFG,2024-06-12,2025-03-30
2468,Dispatch,DIS,2025-03-31,2025-04-29
2469,Erection,ERC,2024-08-30,2025-12-09
2470,Oil & Gas Burners and Ignitors & Scanners (PG-41),ERC,2025-12-02,2025-12-09
2471,Erection: AIR COOLED OIL GUN ASSY,ERC,2025-12-02,2025-12-09
2472,Erection: OIL GUN VICE ASSEMBLY AND RACK,ERC,2025-12-02,2025-12-09
2473,Erection: HIGH ENERGY ARC IGNITOR,ERC,2025-12-02,2025-12-09
2474,Oil & Gas Systems (PG-42),ERC,2025-09-01,2025-10-30
2475,Erection: PNEUMATIC FITTINGS,ERC,2025-10-01,2025-10-08
2476,Erection: STEAM BLOW MATERIALS,ERC,2025-10-01,2025-10-08
2477,Erection: INSTRUMENT FITTINGS,ERC,2025-10-01,2025-10-08
2478,Erection: BURNER STATION SKID ASSY,ERC,2025-09-01,2025-09-30
2479,Erection: PIPING & Valves  OPERATING FLOOR  & TRACER,ERC,2025-10-01,2025-10-30
2480,Erection: PIPING & Valves  OPERATING FLOOR LIGHT FUEL OIL,ERC,2025-10-01,2025-10-30
2481,Erection: PIPING & Valves OPRG FLOOR DRAIN OIL,ERC,2025-10-01,2025-10-30
2482,Erection: PIPING & Valves  OPERATING FLOOR ATOMIZING AIR,ERC,2025-10-01,2025-10-30
2483,Erection: PIPING & Valves  OPERATING FLOOR STEAM-IBR,ERC,2025-10-01,2025-10-30
2484,Ignitor and Scanner Air System (PG-43),ERC,2025-04-30,2025-10-15
2485,Erection: ASSY COMP SCANNER & GUN AIR SYSTEM,ERC,2025-10-01,2025-10-15
2486,Erection: ASSY COMP MILL SEAL AIR SYSTEM,ERC,2025-04-30,2025-05-14
2487,Erection: M/C COMP SCANNER & GUN AIR SYSTEM,ERC,2025-10-01,2025-10-15
2488,Erection: M/C COMP MILL SEAL AIR SYSTEM,ERC,2025-05-15,2025-05-29
2489,Erection: Seal Air & Scanner Air System,ERC,2025-09-01,2025-09-30
2490,Coal Burner System (PG-45),ERC,2024-08-30,2024-09-13
2491,Erection: SA DAMPER & BURNER TILT ACTUATORS,ERC,2024-08-30,2024-09-13
2492,Air & Flue Gas System,OTH,2022-09-27,2026-05-28
2493, Rel of DWG for Duct Boiler to ESP,PE - RFC,2023-11-03,2023-11-03
2494, Rel of DWG for Duct ESP to Chimney,PE - RFC,2023-12-29,2023-12-29
2495,Civil Work,CIV,2023-11-04,2025-04-20
2496, BOF to ESP Duct Foundation,CIV,2023-11-04,2025-04-20
2497,Priority (First) Pass,CIV,2023-11-04,2025-04-20
2498,BOF to ESP Duct Foundation (PP):- Excavation,CIV,2023-11-04,2023-12-03
2499,BOF to ESP Duct Foundation (PP):- RCC in substructure including PCC,CIV,2023-12-04,2024-02-01
2500,BOF to ESP Duct Foundation (PP):- RCC in superstructure,CIV,2024-12-02,2025-03-31
2501,BOF to ESP Duct Foundation (PP):- Backfilling,CIV,2025-04-01,2025-04-10
2502,BOF to ESP Duct Foundation (PP):- Finishing works,CIV,2025-04-11,2025-04-20
2503,Second Pass,CIV,2023-11-04,2025-04-20
2504,BOF to ESP Duct Foundation (SP):- Excavation,CIV,2023-11-04,2023-12-03
2505,BOF to ESP Duct Foundation (SP):- RCC in substructure including PCC,CIV,2023-12-04,2024-02-01
2506,BOF to ESP Duct Foundation (SP):- RCC in superstructure,CIV,2024-12-02,2025-03-31
2507,BOF to ESP Duct Foundation (SP):-  Backfilling,CIV,2025-04-01,2025-04-10
2508,BOF to ESP Duct Foundation (SP):- Finishing works,CIV,2025-04-11,2025-04-20
2509, ESP Outlet to ID Fan Inlet Duct Foundation,CIV,2024-02-13,2024-09-26
2510,Priority (First) Pass,CIV,2024-02-13,2024-08-26
2511,ESP Outlet to ID Fan Inlet Duct Foundation (PP) :- EXCAVATION,CIV,2024-02-13,2024-04-07
2512,ESP Outlet to ID Fan Inlet Duct Foundation (PP) :- RCC in substructure including PCC,CIV,2024-02-28,2024-05-22
2513,ESP Outlet to ID Fan Inlet Duct Foundation (PP) :- RCC in superstructure,CIV,2024-04-13,2024-08-10
2514,ESP Outlet to ID Fan Inlet Duct Foundation (PP) :- Backfilling,CIV,2024-08-11,2024-08-22
2515,ESP Outlet to ID Fan Inlet Duct Foundation (PP) :- Finishing works,CIV,2024-08-23,2024-08-26
2516,Second Pass,CIV,2024-03-14,2024-09-26
2517,ESP Outlet to ID Fan Inlet Duct Foundation (SP) :- Excavation,CIV,2024-03-14,2024-05-07
2518,ESP Outlet to ID Fan Inlet Duct Foundation (SP) :- RCC in substructure including PCC,CIV,2024-03-29,2024-06-21
2519,ESP Outlet to ID Fan Inlet Duct Foundation (SP) :- RCC in superstructure,CIV,2024-05-13,2024-09-09
2520,ESP Outlet to ID Fan Inlet Duct Foundation (SP) :- Backfilling,CIV,2024-09-10,2024-09-21
2521,ESP Outlet to ID Fan Inlet Duct Foundation (SP) :- Finishing works,CIV,2024-09-22,2024-09-26
2522, ID Fan Outlet to Chimney Duct Foundation,CIV,2024-05-08,2024-11-27
2523,Priority (First) Pass,CIV,2024-05-08,2024-10-27
2524,ID Fan Outlet to Chimney Duct Foundation (PP):- EXCAVATION,CIV,2024-05-08,2024-06-21
2525,ID Fan Outlet to Chimney Duct Foundation (PP):- RCC in substructure including PCC,CIV,2024-05-24,2024-08-06
2526,ID Fan Outlet to Chimney Duct Foundation (PP):- RCC in superstructure,CIV,2024-07-08,2024-10-10
2527,ID Fan Outlet to Chimney Duct Foundation (PP):- Backfilling,CIV,2024-10-11,2024-10-22
2528,ID Fan Outlet to Chimney Duct Foundation (PP):- Finishing works,CIV,2024-10-23,2024-10-27
2529,Second Pass,CIV,2024-06-08,2024-11-27
2530,ID Fan Outlet to Chimney Duct Foundation (SP):- Excavation,CIV,2024-06-08,2024-07-22
2531,ID Fan Outlet to Chimney Duct Foundation (SP):- RCC in substructure including PCC,CIV,2024-06-24,2024-09-06
2532,ID Fan Outlet to Chimney Duct Foundation (SP):- RCC in superstructure,CIV,2024-08-08,2024-11-10
2533,ID Fan Outlet to Chimney Duct Foundation (SP):- Backfilling,CIV,2024-11-11,2024-11-22
2534,ID Fan Outlet to Chimney Duct Foundation (SP):- Finishing works,CIV,2024-11-23,2024-11-27
2535,Supply ,SUP,2022-09-27,2025-04-29
2536,BHEL TRY,SUP,2022-09-27,2025-04-29
2537,External Structures ( Supporting Structures for Duct  PG-39 ),OTH,2022-09-27,2025-01-27
2538,FOUNDATION MATERIALS (PGMA-39010),SUP,2022-09-27,2023-05-28
2539,Engineering,ENG,2022-09-27,2022-12-20
2540,Manufacturing,MFG,2022-12-21,2023-03-28
2541,Dispatch,DIS,2023-03-29,2023-05-28
2542,FOUNDATION MATERIALS I.D.DUCT SUPPORTS (PGMA-39012),SUP,2022-09-27,2023-05-28
2543,Engineering,ENG,2022-09-27,2022-12-20
2544,Manufacturing,MFG,2022-12-21,2023-03-28
2545,Dispatch,DIS,2023-03-29,2023-05-28
2546,COLUMNS/FRAMES BEFORE ESP- LEFT (PGMA-39101),SUP,2023-05-18,2024-10-28
2547,Engineering,ENG,2023-05-18,2024-01-17
2548,Manufacturing,MFG,2024-01-18,2024-09-28
2549,Dispatch,DIS,2024-09-29,2024-10-28
2550,COLUMNS/FRAMES BEFORE ESP- RIGHT (PGMA-39102),SUP,2023-05-18,2024-10-28
2551,Engineering,ENG,2023-05-18,2024-01-17
2552,Manufacturing,MFG,2024-01-18,2024-09-28
2553,Dispatch,DIS,2024-09-29,2024-10-28
2554,COLS/FRAMES NEAR I.D.FAN -LEFT (PGMA-39141),SUP,2023-01-09,2024-04-28
2555,Engineering,ENG,2023-01-09,2023-07-27
2556,Manufacturing,MFG,2023-07-28,2024-03-29
2557,Dispatch,DIS,2024-03-30,2024-04-28
2558,COLS/FRAMES NEAR ID FAN-RIGHT (PGMA-39142),SUP,2023-01-09,2024-04-28
2559,Engineering,ENG,2023-01-09,2023-07-27
2560,Manufacturing,MFG,2023-07-28,2024-03-29
2561,Dispatch,DIS,2024-03-30,2024-04-28
2562,COL/FRAMES BETN I.D.FAN AND Chimney (PGMA-39150),SUP,2023-01-09,2024-04-28
2563,Engineering,ENG,2023-01-09,2023-07-27
2564,Manufacturing,MFG,2023-07-28,2024-03-29
2565,Dispatch,DIS,2024-03-30,2024-04-28
2566,PLATFORMS EXTL STRUC BOF TO ESP (PGMA-39299),SUP,2023-05-18,2024-11-27
2567,Engineering,ENG,2023-05-18,2024-02-03
2568,Manufacturing,MFG,2024-02-04,2024-10-28
2569,Dispatch,DIS,2024-10-29,2024-11-27
2570,PLATFORMS -EXTERNAL STRUCTURE (PGMA-39300),SUP,2023-05-18,2024-11-27
2571,Engineering,ENG,2023-05-18,2024-02-03
2572,Manufacturing,MFG,2024-02-04,2024-10-28
2573,Dispatch,DIS,2024-10-29,2024-11-27
2574,STRUC AND PLATFORM/FOR FANS (PGMA-39301),SUP,2023-07-02,2024-11-27
2575,Engineering,ENG,2023-07-02,2024-03-22
2576,Manufacturing,MFG,2024-03-23,2024-10-28
2577,Dispatch,DIS,2024-10-29,2024-11-27
2578,STRUC FOR MOTOR HOOD/COVERING (PGMA-39302),SUP,2023-07-02,2025-01-27
2579,Engineering,ENG,2023-07-02,2024-03-22
2580,Manufacturing,MFG,2024-03-23,2024-12-28
2581,Dispatch,DIS,2024-12-29,2025-01-27
2582,FAN HANDLING STRUCTURE FOR FD FAN (PGMA-39304),SUP,2023-06-12,2024-12-28
2583,Engineering,ENG,2023-06-12,2024-02-28
2584,Manufacturing,MFG,2024-02-29,2024-11-28
2585,Dispatch,DIS,2024-11-29,2024-12-28
2586,FAN HANDLING STRUCTURE FOR PA FAN (PGMA-39305),SUP,2023-06-12,2024-12-28
2587,Engineering,ENG,2023-06-12,2024-02-28
2588,Manufacturing,MFG,2024-02-29,2024-11-28
2589,Dispatch,DIS,2024-11-29,2024-12-28
2590,FAN HANDLING STRUCTURE FOR ID FAN (PGMA-39306),SUP,2023-06-12,2024-12-28
2591,Engineering,ENG,2023-06-12,2024-02-28
2592,Manufacturing,MFG,2024-02-29,2024-11-28
2593,Dispatch,DIS,2024-11-29,2024-12-28
2594,HSFG FASTENERS FOR PG 39 (PGMA-39700),SUP,2023-02-08,2024-05-29
2595,Engineering,ENG,2023-02-08,2023-09-10
2596,Manufacturing,MFG,2023-09-11,2024-04-29
2597,Dispatch,DIS,2024-04-30,2024-05-29
2598,FLOOR GRILL (PGMA-39810),SUP,2023-05-18,2024-11-27
2599,Engineering,ENG,2023-05-18,2024-02-03
2600,Manufacturing,MFG,2024-02-04,2024-10-28
2601,Dispatch,DIS,2024-10-29,2024-11-27
2602,STAIRS (PGMA-39820),SUP,2023-05-18,2024-11-27
2603,Engineering,ENG,2023-05-18,2024-02-03
2604,Manufacturing,MFG,2024-02-04,2024-10-28
2605,Dispatch,DIS,2024-10-29,2024-11-27
2606,HAND RAIL AND HAND RAIL POSTS (PGMA-39850),SUP,2023-05-18,2024-11-27
2607,Engineering,ENG,2023-05-18,2024-02-03
2608,Manufacturing,MFG,2024-02-04,2024-10-28
2609,Dispatch,DIS,2024-10-29,2024-11-27
2610,CONSUMABLES &Erection MATERIALS (PGMA-39993),SUP,2023-01-09,2024-04-28
2611,Engineering,ENG,2023-01-09,2023-07-27
2612,Manufacturing,MFG,2023-07-28,2024-03-29
2613,Dispatch,DIS,2024-03-30,2024-04-28
2614,Duct.  Dampers and Expn. Joints (PG-48),SUP,2022-09-27,2025-04-29
2615,RECT DUCT BET F.D FAN AND AIRHEATER (PGMA-48012),SUP,2023-05-18,2024-10-28
2616,Engineering,ENG,2023-05-18,2024-01-17
2617,Manufacturing,MFG,2024-01-18,2024-09-28
2618,Dispatch,DIS,2024-09-29,2024-10-28
2619,EXPN PIECESBET F.D FAN AND AIRHEATER (PGMA-48014),SUP,2023-05-18,2024-10-28
2620,Engineering,ENG,2023-05-18,2024-01-17
2621,Manufacturing,MFG,2024-01-18,2024-09-28
2622,Dispatch,DIS,2024-09-29,2024-10-28
2623,SUPPORTSETCBET F.D FAN AND AIRHEATER (PGMA-48015),SUP,2023-05-18,2024-10-28
2624,Engineering,ENG,2023-05-18,2024-01-17
2625,Manufacturing,MFG,2024-01-18,2024-09-28
2626,Dispatch,DIS,2024-09-29,2024-10-28
2627,DUCTS - SCAPH TO SAH (PGMA-48018),SUP,2023-01-09,2024-04-28
2628,Engineering,ENG,2023-01-09,2023-07-27
2629,Manufacturing,MFG,2023-07-28,2024-03-29
2630,Dispatch,DIS,2024-03-30,2024-04-28
2631,FOUNDATION MATERIALS (PGMA-48019),SUP,2022-09-27,2023-10-27
2632,Engineering,ENG,2022-09-27,2023-03-26
2633,Manufacturing,MFG,2023-03-27,2023-09-27
2634,Dispatch,DIS,2023-09-28,2023-10-27
2635,RECT DUCTS PRI FAN TO AIRHEATER PRISID (PGMA-48112),SUP,2023-08-17,2025-01-27
2636,Engineering,ENG,2023-08-17,2024-04-17
2637,Manufacturing,MFG,2024-04-18,2024-12-28
2638,Dispatch,DIS,2024-12-29,2025-01-27
2639,EXPN PIECESPRI FAN TO AIRHEATER PRISID (PGMA-48114),SUP,2023-08-17,2025-01-27
2640,Engineering,ENG,2023-08-17,2024-04-17
2641,Manufacturing,MFG,2024-04-18,2024-12-28
2642,Dispatch,DIS,2024-12-29,2025-01-27
2643,SUPPORTSETCPRI FAN TO AIRHEATER PRISID (PGMA-48115),SUP,2023-08-17,2025-01-27
2644,Engineering,ENG,2023-08-17,2024-04-17
2645,Manufacturing,MFG,2024-04-18,2024-12-28
2646,Dispatch,DIS,2024-12-29,2025-01-27
2647,SEAL AIR HAG AND ID FAN OUTGATE (PGMA-48141),SUP,2023-08-17,2025-01-27
2648,Engineering,ENG,2023-08-17,2024-04-17
2649,Manufacturing,MFG,2024-04-18,2024-12-28
2650,Dispatch,DIS,2024-12-29,2025-01-27
2651,RECT DUCT COLDAIRBUS(TEMP AIR TO MILL (PGMA-48142),SUP,2023-08-17,2025-01-27
2652,Engineering,ENG,2023-08-17,2024-04-17
2653,Manufacturing,MFG,2024-04-18,2024-12-28
2654,Dispatch,DIS,2024-12-29,2025-01-27
2655,EXPN PIECESCOLDAIRBUS(TEMP AIR TO MILL (PGMA-48144),SUP,2023-08-17,2025-01-27
2656,Engineering,ENG,2023-08-17,2024-04-17
2657,Manufacturing,MFG,2024-04-18,2024-12-28
2658,Dispatch,DIS,2024-12-29,2025-01-27
2659,SUPPORTSETCCOLDAIRBUS(TEMP AIR TO MILL (PGMA-48145),SUP,2023-08-17,2025-01-27
2660,Engineering,ENG,2023-08-17,2024-04-17
2661,Manufacturing,MFG,2024-04-18,2024-12-28
2662,Dispatch,DIS,2024-12-29,2025-01-27
2663,INSTRUMENT TAPPINGS ON DUCTING (PGMA-48200),SUP,2023-08-22,2025-04-29
2664,Engineering,ENG,2023-08-22,2024-06-11
2665,Manufacturing,MFG,2024-06-12,2025-03-30
2666,Dispatch,DIS,2025-03-31,2025-04-29
2667,RECT DUCTSAIRHEATER TO WINDBOXDUCT (PGMA-48202),SUP,2023-08-22,2024-09-20
2668,Engineering,ENG,2023-08-22,2024-02-18
2669,Manufacturing,MFG,2024-02-19,2024-08-21
2670,Dispatch,DIS,2024-08-22,2024-09-20
2671,EXPN PIECESAIRHEATER TO WINDBOXDUCT (PGMA-48204),SUP,2023-08-22,2024-09-20
2672,Engineering,ENG,2023-08-22,2024-02-18
2673,Manufacturing,MFG,2024-02-19,2024-08-21
2674,Dispatch,DIS,2024-08-22,2024-09-20
2675,SUPPORTSETCAIRHEATER TO WINDBOXDUCT (PGMA-48205),SUP,2023-08-22,2024-10-21
2676,Engineering,ENG,2023-08-22,2024-02-25
2677,Manufacturing,MFG,2024-02-26,2024-09-21
2678,Dispatch,DIS,2024-09-22,2024-10-21
2679,CLH/VLH -HOT AIR (PGMA-48206),SUP,2023-08-22,2024-10-21
2680,Engineering,ENG,2023-08-22,2024-02-25
2681,Manufacturing,MFG,2024-02-26,2024-09-21
2682,Dispatch,DIS,2024-09-22,2024-10-21
2683,FLOWMETERS FOR SECONDARY AIR FLOW (PGMA-48207),SUP,2023-08-22,2024-09-20
2684,Engineering,ENG,2023-08-22,2024-02-18
2685,Manufacturing,MFG,2024-02-19,2024-08-21
2686,Dispatch,DIS,2024-08-22,2024-09-20
2687,DUCT-SEC.AIR TO WB (PGMA-48208),SUP,2023-08-22,2024-09-20
2688,Engineering,ENG,2023-08-22,2024-02-18
2689,Manufacturing,MFG,2024-02-19,2024-08-21
2690,Dispatch,DIS,2024-08-22,2024-09-20
2691,WIND BOX CONNECTING DUCTS - RECTANGULA (PGMA-48212),SUP,2023-08-22,2024-11-21
2692,Engineering,ENG,2023-08-22,2024-02-25
2693,Manufacturing,MFG,2024-02-26,2024-10-22
2694,Dispatch,DIS,2024-10-23,2024-11-21
2695,EXPN PIECESWINDBOX CONNECTING DUCT (PGMA-48214),SUP,2023-08-22,2024-11-21
2696,Engineering,ENG,2023-08-22,2024-02-25
2697,Manufacturing,MFG,2024-02-26,2024-10-22
2698,Dispatch,DIS,2024-10-23,2024-11-21
2699,RECT DUCT-AIRHEATER PRISIDETOHOTAIR B (PGMA-48222),SUP,2023-05-18,2024-10-28
2700,Engineering,ENG,2023-05-18,2024-01-17
2701,Manufacturing,MFG,2024-01-18,2024-09-28
2702,Dispatch,DIS,2024-09-29,2024-10-28
2703,EXPN PIECES AIRHEATER PREECEDE TO HOTAIR B (PGMA-48224),SUP,2023-05-18,2024-10-28
2704,Engineering,ENG,2023-05-18,2024-01-17
2705,Manufacturing,MFG,2024-01-18,2024-09-28
2706,Dispatch,DIS,2024-09-29,2024-10-28
2707,SUPPORTS FOR HOT P.A (AH TO HOT BUS) (PGMA-48225),SUP,2023-05-18,2024-10-28
2708,Engineering,ENG,2023-05-18,2024-01-17
2709,Manufacturing,MFG,2024-01-18,2024-09-28
2710,Dispatch,DIS,2024-09-29,2024-10-28
2711,RECT DUCTS HOT AIR BUSDUCT(HOTAIRTOMIL (PGMA-48232),SUP,2023-08-17,2025-01-27
2712,Engineering,ENG,2023-08-17,2024-04-17
2713,Manufacturing,MFG,2024-04-18,2024-12-28
2714,Dispatch,DIS,2024-12-29,2025-01-27
2715,EXPN PIECESHOT AIR BUSDUCT(HOTAIRTOMIL (PGMA-48234),SUP,2023-08-17,2025-01-27
2716,Engineering,ENG,2023-08-17,2024-04-17
2717,Manufacturing,MFG,2024-04-18,2024-12-28
2718,Dispatch,DIS,2024-12-29,2025-01-27
2719,SUPPORT HOT AIR BUS (PGMA-48235),SUP,2023-08-17,2025-01-27
2720,Engineering,ENG,2023-08-17,2024-04-17
2721,Manufacturing,MFG,2024-04-18,2024-12-28
2722,Dispatch,DIS,2024-12-29,2025-01-27
2723,RECT DUCT AIRHTR TOPRINOZZLE AND SECA (PGMA-48262),SUP,2023-05-18,2024-10-28
2724,Engineering,ENG,2023-05-18,2024-01-17
2725,Manufacturing,MFG,2024-01-18,2024-09-28
2726,Dispatch,DIS,2024-09-29,2024-10-28
2727,EXPN PIECESAIRHTR TOPRINOZZLE AND SECA (PGMA-48264),SUP,2023-05-18,2024-10-28
2728,Engineering,ENG,2023-05-18,2024-01-17
2729,Manufacturing,MFG,2024-01-18,2024-09-28
2730,Dispatch,DIS,2024-09-29,2024-10-28
2731,SUPPORTSETCAIRHTR TOPRINOZZLE AND SECA (PGMA-48265),SUP,2023-05-18,2024-10-28
2732,Engineering,ENG,2023-05-18,2024-01-17
2733,Manufacturing,MFG,2024-01-18,2024-09-28
2734,Dispatch,DIS,2024-09-29,2024-10-28
2735,FLOW METER (PGMA-48267),SUP,2023-05-18,2024-10-28
2736,Engineering,ENG,2023-05-18,2024-01-17
2737,Manufacturing,MFG,2024-01-18,2024-09-28
2738,Dispatch,DIS,2024-09-29,2024-10-28
2739,RECT DUCT CASCADE EVAPORATOR TO EP (PGMA-48372),SUP,2023-05-18,2024-10-28
2740,Engineering,ENG,2023-05-18,2024-01-17
2741,Manufacturing,MFG,2024-01-18,2024-09-28
2742,Dispatch,DIS,2024-09-29,2024-10-28
2743,RECT DUCT ECONOMISER TO AIRHEATER2NOP (PGMA-48382),SUP,2023-05-18,2024-10-28
2744,Engineering,ENG,2023-05-18,2024-01-17
2745,Manufacturing,MFG,2024-01-18,2024-09-28
2746,Dispatch,DIS,2024-09-29,2024-10-28
2747,EXPN PIECESECONOMISER TO AIRHEATER2NOP (PGMA-48384),SUP,2023-05-18,2024-10-28
2748,Engineering,ENG,2023-05-18,2024-01-17
2749,Manufacturing,MFG,2024-01-18,2024-09-28
2750,Dispatch,DIS,2024-09-29,2024-10-28
2751,SUPPORTSETCECONOMISER TO AIRHEATER2NOP (PGMA-48385),SUP,2023-05-18,2024-10-28
2752,Engineering,ENG,2023-05-18,2024-01-17
2753,Manufacturing,MFG,2024-01-18,2024-09-28
2754,Dispatch,DIS,2024-09-29,2024-10-28
2755,DUCT BELOW DIVERTOR & SCR SYSTEM(PGMA-48386),SUP,2023-05-18,2024-10-28
2756,Engineering,ENG,2023-05-18,2024-01-17
2757,Manufacturing,MFG,2024-01-18,2024-09-28
2758,Dispatch,DIS,2024-09-29,2024-10-28
2759,CLH/VLH-FLUE GAS (PGMA-48395),SUP,2023-05-18,2024-10-28
2760,Engineering,ENG,2023-05-18,2024-01-17
2761,Manufacturing,MFG,2024-01-18,2024-09-28
2762,Dispatch,DIS,2024-09-29,2024-10-28
2763,RECT DUCT AIRHEATER BOILER OUTLET-GAS (PGMA-48432),SUP,2023-06-12,2024-12-28
2764,Engineering,ENG,2023-06-12,2024-02-28
2765,Manufacturing,MFG,2024-02-29,2024-11-28
2766,Dispatch,DIS,2024-11-29,2024-12-28
2767,EXPN PIECESAIRHEATER BOILER OUTLET-GAS (PGMA-48434),SUP,2023-06-12,2024-12-28
2768,Engineering,ENG,2023-06-12,2024-02-28
2769,Manufacturing,MFG,2024-02-29,2024-11-28
2770,Dispatch,DIS,2024-11-29,2024-12-28
2771,SUPPORTSETCAIRHEATER BOILER OUTLET-GAS (PGMA-48435),SUP,2023-06-12,2024-12-28
2772,Engineering,ENG,2023-06-12,2024-02-28
2773,Manufacturing,MFG,2024-02-29,2024-11-28
2774,Dispatch,DIS,2024-11-29,2024-12-28
2775,RECT DUCT BOILER OUTLET TO ELEC PRECP (PGMA-48462),SUP,2023-06-12,2024-12-28
2776,Engineering,ENG,2023-06-12,2024-02-28
2777,Manufacturing,MFG,2024-02-29,2024-11-28
2778,Dispatch,DIS,2024-11-29,2024-12-28
2779,EXPN PIECESBOILER OUTLET TO ELEC PRECP (PGMA-48464),SUP,2023-06-12,2024-12-28
2780,Engineering,ENG,2023-06-12,2024-02-28
2781,Manufacturing,MFG,2024-02-29,2024-11-28
2782,Dispatch,DIS,2024-11-29,2024-12-28
2783,BOF TO EP DUCTING SUPPORTS (PGMA-48465),SUP,2023-06-12,2024-10-28
2784,Engineering,ENG,2023-06-12,2024-02-28
2785,Manufacturing,MFG,2024-02-29,2024-09-28
2786,Dispatch,DIS,2024-09-29,2024-10-28
2787,RECT DUCTS-ELEC PRPTR/M.S TO INDDRAFTF (PGMA-48482),SUP,2023-01-09,2024-04-28
2788,Engineering,ENG,2023-01-09,2023-07-27
2789,Manufacturing,MFG,2023-07-28,2024-03-29
2790,Dispatch,DIS,2024-03-30,2024-04-28
2791,EXPN PIECESELEC PRPTR/M.S TO INDDRAFTF (PGMA-48484),SUP,2023-01-09,2024-04-28
2792,Engineering,ENG,2023-01-09,2023-07-27
2793,Manufacturing,MFG,2023-07-28,2024-03-29
2794,Dispatch,DIS,2024-03-30,2024-04-28
2795,SUPPORTSETCELEC PRPTR/M.S TO INDDRAFTF (PGMA-48485),SUP,2023-01-09,2024-04-28
2796,Engineering,ENG,2023-01-09,2023-07-27
2797,Manufacturing,MFG,2023-07-28,2024-03-29
2798,Dispatch,DIS,2024-03-30,2024-04-28
2799,RECT DUCT IND DRAFT FAN TO Chimney (PGMA-48492),SUP,2023-01-09,2024-04-28
2800,Engineering,ENG,2023-01-09,2023-07-27
2801,Manufacturing,MFG,2023-07-28,2024-03-29
2802,Dispatch,DIS,2024-03-30,2024-04-28
2803,EXPN PIECESIND DRAFT FAN TO Chimney (PGMA-48494),SUP,2023-01-09,2024-04-28
2804,Engineering,ENG,2023-01-09,2023-07-27
2805,Manufacturing,MFG,2023-07-28,2024-03-29
2806,Dispatch,DIS,2024-03-30,2024-04-28
2807,I.D.SYSTEM DUCT SUPPORTS (PGMA-48495),SUP,2023-01-09,2024-04-28
2808,Engineering,ENG,2023-01-09,2023-07-27
2809,Manufacturing,MFG,2023-07-28,2024-03-29
2810,Dispatch,DIS,2024-03-30,2024-04-28
2811,RECT DUCT HOT AIR BUS TO MILLS (PGMA-48662),SUP,2023-05-18,2024-11-27
2812,Engineering,ENG,2023-05-18,2024-02-03
2813,Manufacturing,MFG,2024-02-04,2024-10-28
2814,Dispatch,DIS,2024-10-29,2024-11-27
2815,EXPN PIECESHOT AIR BUS TO MILLS (PGMA-48664),SUP,2023-05-18,2024-11-27
2816,Engineering,ENG,2023-05-18,2024-02-03
2817,Manufacturing,MFG,2024-02-04,2024-10-28
2818,Dispatch,DIS,2024-10-29,2024-11-27
2819,SUPPORTS FOR HOT PA TO MILLS (PGMA-48665),SUP,2023-05-18,2024-11-27
2820,Engineering,ENG,2023-05-18,2024-02-03
2821,Manufacturing,MFG,2024-02-04,2024-10-28
2822,Dispatch,DIS,2024-10-29,2024-11-27
2823,VENTURI-PRIMARY AIR FLOW (PGMA-48667),SUP,2023-05-18,2024-11-27
2824,Engineering,ENG,2023-05-18,2024-02-03
2825,Manufacturing,MFG,2024-02-04,2024-10-28
2826,Dispatch,DIS,2024-10-29,2024-11-27
2827,BULKED BPS COMPONENTS (PGMA-48700),SUP,2022-09-27,2023-10-27
2828,Engineering,ENG,2022-09-27,2023-03-26
2829,Manufacturing,MFG,2023-03-27,2023-09-27
2830,Dispatch,DIS,2023-09-28,2023-10-27
2831,SLIDE BRG PLATE & PACIFIC BELLOW-BOILER (PGMA-48911),SUP,2023-01-09,2024-04-28
2832,Engineering,ENG,2023-01-09,2023-07-27
2833,Manufacturing,MFG,2023-07-28,2024-03-29
2834,Dispatch,DIS,2024-03-30,2024-04-28
2835,SLIDE BRG PLATE-ID SYSTEM (PGMA-48912),SUP,2023-01-09,2024-04-28
2836,Engineering,ENG,2023-01-09,2023-07-27
2837,Manufacturing,MFG,2023-07-28,2024-03-29
2838,Dispatch,DIS,2024-03-30,2024-04-28
2839,MAN HOLE DOORS (450x450) (PGMA-48915),SUP,2023-05-18,2024-10-28
2840,Engineering,ENG,2023-05-18,2024-01-17
2841,Manufacturing,MFG,2024-01-18,2024-09-28
2842,Dispatch,DIS,2024-09-29,2024-10-28
2843,ERECTION MATERIALS (PGMA-48993),SUP,2023-01-09,2024-04-28
2844,Engineering,ENG,2023-01-09,2023-07-27
2845,Manufacturing,MFG,2023-07-28,2024-03-29
2846,Dispatch,DIS,2024-03-30,2024-04-28
2847,BHEL BAP,SUP,2023-03-16,2024-11-04
2848, GATES AND DAMPERS,SUP,2023-03-16,2024-11-04
2849,BAP - GATE-ESP OUTLET(PGMA 57470),SUP,2023-03-16,2023-12-10
2850,Engineering,ENG,2023-03-16,2023-04-14
2851,Manufacturing ,MFG,2023-04-15,2023-07-23
2852,Dispatch,DIS,2023-07-24,2023-12-10
2853,BAP - GATE-ID FAN OUTLET(PGMA 57490),SUP,2023-03-16,2023-12-10
2854,Engineering,ENG,2023-03-16,2023-04-14
2855,Manufacturing ,MFG,2023-04-15,2023-07-23
2856,Dispatch,DIS,2023-07-24,2023-12-10
2857,BAP - GATE-ID FAN INLET(PGMA 57480),SUP,2023-03-16,2023-12-10
2858,Engineering,ENG,2023-03-16,2023-04-14
2859,Manufacturing ,MFG,2023-04-15,2023-07-23
2860,Dispatch,DIS,2023-07-24,2023-12-10
2861,BAP - DAMPER-SCR BYPASS(PGMA 57620),SUP,2023-06-04,2024-02-08
2862,Engineering,ENG,2023-06-04,2023-07-03
2863,Manufacturing ,MFG,2023-07-04,2023-10-11
2864,Dispatch,DIS,2023-10-12,2024-02-08
2865,BAP - PLATFORMS AND LADDERS? SCR GD(PGMA 57666),SUP,2023-06-04,2024-02-08
2866,Engineering,ENG,2023-06-04,2023-07-03
2867,Manufacturing ,MFG,2023-07-04,2023-10-11
2868,Dispatch,DIS,2023-10-12,2024-02-08
2869,BAP - SPL MTL ELECTRODES(PGMA 57992),SUP,2023-06-04,2024-02-08
2870,Engineering,ENG,2023-06-04,2023-07-03
2871,Manufacturing ,MFG,2023-07-04,2023-10-11
2872,Dispatch,DIS,2023-10-12,2024-02-08
2873,BAP - GATE-FD FAN OUTLET(PGMA 57010),SUP,2023-06-04,2024-02-08
2874,Engineering,ENG,2023-06-04,2023-07-03
2875,Manufacturing ,MFG,2023-07-04,2023-10-11
2876,Dispatch,DIS,2023-10-12,2024-02-08
2877,BAP - FLUE GAS AH OUT GATE(PGMA 57430),SUP,2023-08-13,2024-04-08
2878,Engineering,ENG,2023-08-13,2023-09-11
2879,Manufacturing ,MFG,2023-09-12,2023-12-20
2880,Dispatch,DIS,2023-12-21,2024-04-08
2881,BAP - GATE-ESP INLET(PGMA 57460),SUP,2023-08-13,2024-04-08
2882,Engineering,ENG,2023-08-13,2023-09-11
2883,Manufacturing ,MFG,2023-09-12,2023-12-20
2884,Dispatch,DIS,2023-12-21,2024-04-08
2885,BAP - DAMPER-SA SCAPH INLET(PGMA 57033),SUP,2024-01-10,2024-09-05
2886,Engineering,ENG,2024-01-10,2024-02-08
2887,Manufacturing ,MFG,2024-02-09,2024-05-18
2888,Dispatch,DIS,2024-05-19,2024-09-05
2889,BAP - DAMPER-SA SCAPH OUTLET(PGMA 57063),SUP,2024-01-10,2024-09-05
2890,Engineering,ENG,2024-01-10,2024-02-08
2891,Manufacturing ,MFG,2024-02-09,2024-05-18
2892,Dispatch,DIS,2024-05-19,2024-09-05
2893,BAP - DAMPER-SA APH OUTLET(PGMA 57203),SUP,2024-02-29,2024-10-05
2894,Engineering,ENG,2024-02-29,2024-03-29
2895,Manufacturing ,MFG,2024-03-30,2024-07-07
2896,Dispatch,DIS,2024-07-08,2024-10-05
2897,BAP - MTG BKT FOR CL DAMPER AIR CYL(PGMA 57209),SUP,2024-02-29,2024-10-05
2898,Engineering,ENG,2024-02-29,2024-03-29
2899,Manufacturing ,MFG,2024-03-30,2024-07-07
2900,Dispatch,DIS,2024-07-08,2024-10-05
2901,BAP - PLATFORMS AND LADDERS(PGMA 57466),SUP,2024-02-29,2024-10-05
2902,Engineering,ENG,2024-02-29,2024-03-29
2903,Manufacturing ,MFG,2024-03-30,2024-07-07
2904,Dispatch,DIS,2024-07-08,2024-10-05
2905,BAP - ACTUATORS FOR G&D(PGMA 57577),SUP,2023-07-24,2024-08-06
2906,Engineering,ENG,2023-07-24,2023-12-20
2907,Manufacturing ,MFG,2023-12-21,2024-06-17
2908,Dispatch,DIS,2024-06-18,2024-08-06
2909,BAP - GATE ?FGD INLET(PGMA 57560),SUP,2023-07-24,2024-08-06
2910,Engineering,ENG,2023-07-24,2023-12-20
2911,Manufacturing ,MFG,2023-12-21,2024-06-17
2912,Dispatch,DIS,2024-06-18,2024-08-06
2913,BAP - GATE ?FGD OUTLET(PGMA 57C70),SUP,2023-07-24,2024-08-06
2914,Engineering,ENG,2023-07-24,2023-12-20
2915,Manufacturing ,MFG,2023-12-21,2024-06-17
2916,Dispatch,DIS,2024-06-18,2024-08-06
2917,BAP - DAMPER ?FGD BYPASS(PGMA 57C83),SUP,2023-07-24,2024-08-06
2918,Engineering,ENG,2023-07-24,2023-12-20
2919,Manufacturing ,MFG,2023-12-21,2024-06-17
2920,Dispatch,DIS,2024-06-18,2024-08-06
2921,BAP - PLAT FORM AND LADDER ?FGD GD(PGMA 57566),SUP,2023-07-24,2024-08-06
2922,Engineering,ENG,2023-07-24,2023-12-20
2923,Manufacturing ,MFG,2023-12-21,2024-06-17
2924,Dispatch,DIS,2024-06-18,2024-08-06
2925,BAP - GATE WITH CLADDING FOR CO2 TO METHANOL SYSTEM (PGMA 57CX0),SUP,2023-07-24,2024-08-06
2926,Engineering,ENG,2023-07-24,2023-12-20
2927,Manufacturing ,MFG,2023-12-21,2024-06-17
2928,Dispatch,DIS,2024-06-18,2024-08-06
2929,BAP - PLATFORMS AND LADDERS-SCR GD (PGMA 57CX0),SUP,2023-07-24,2024-08-06
2930,Engineering,ENG,2023-07-24,2023-12-20
2931,Manufacturing ,MFG,2023-12-21,2024-06-17
2932,Dispatch,DIS,2024-06-18,2024-08-06
2933,BAP - DAMPER-PA APH INLET(PGMA 57173),SUP,2024-01-10,2024-10-05
2934,Engineering,ENG,2024-01-10,2024-02-08
2935,Manufacturing ,MFG,2024-02-09,2024-05-18
2936,Dispatch,DIS,2024-05-19,2024-10-05
2937,BAP - DAMPER-PA APH OUTLET(PGMA 57223),SUP,2024-01-10,2024-10-05
2938,Engineering,ENG,2024-01-10,2024-02-08
2939,Manufacturing ,MFG,2024-02-09,2024-05-18
2940,Dispatch,DIS,2024-05-19,2024-10-05
2941,BAP - DAMPER-COLD AIR TO MIL(PGMA 57143),SUP,2024-01-10,2024-10-05
2942,Engineering,ENG,2024-01-10,2024-02-08
2943,Manufacturing ,MFG,2024-02-09,2024-05-18
2944,Dispatch,DIS,2024-05-19,2024-10-05
2945,BAP - ELECTRICAL ITEMS FOR GATE DAMP(PGMA 57578),SUP,2024-01-10,2024-10-05
2946,Engineering,ENG,2024-01-10,2024-02-08
2947,Manufacturing ,MFG,2024-02-09,2024-05-18
2948,Dispatch,DIS,2024-05-19,2024-10-05
2949,BAP - SEAL AIR HAG AND ID FA(PGMA 57141),SUP,2024-01-10,2024-10-05
2950,Engineering,ENG,2024-01-10,2024-02-08
2951,Manufacturing ,MFG,2024-02-09,2024-05-18
2952,Dispatch,DIS,2024-05-19,2024-10-05
2953,BAP - DAMPER-PA FAN OUTLET(PGMA 57113),SUP,2023-12-21,2024-09-05
2954,Engineering,ENG,2023-12-21,2024-01-19
2955,Manufacturing ,MFG,2024-01-20,2024-04-28
2956,Dispatch,DIS,2024-04-29,2024-09-05
2957,BAP - GATE-PA FAN OUTLET(PGMA 57110),SUP,2023-12-21,2024-09-05
2958,Engineering,ENG,2023-12-21,2024-01-19
2959,Manufacturing ,MFG,2024-01-20,2024-04-28
2960,Dispatch,DIS,2024-04-29,2024-09-05
2961,BAP - BLOWER WITH MOTOR(PGMA 57491),SUP,2024-02-29,2024-11-04
2962,Engineering,ENG,2024-02-29,2024-03-29
2963,Manufacturing ,MFG,2024-03-30,2024-07-07
2964,Dispatch,DIS,2024-07-08,2024-11-04
2965,BAP - GATE-COLD AIR TO MILLS(PGMA 57160),SUP,2024-02-29,2024-11-04
2966,Engineering,ENG,2024-02-29,2024-03-29
2967,Manufacturing ,MFG,2024-03-30,2024-07-07
2968,Dispatch,DIS,2024-07-08,2024-11-04
2969,BAP - KNIFE GATE VALVE(PGMA 57497),SUP,2024-02-29,2024-11-04
2970,Engineering,ENG,2024-02-29,2024-03-29
2971,Manufacturing ,MFG,2024-03-30,2024-07-07
2972,Dispatch,DIS,2024-07-08,2024-11-04
2973,BAP - GATE-HOT AIR TO MILLS(PGMA 57270),SUP,2024-02-29,2024-11-04
2974,Engineering,ENG,2024-02-29,2024-03-29
2975,Manufacturing ,MFG,2024-03-30,2024-07-07
2976,Dispatch,DIS,2024-07-08,2024-11-04
2977,BAP - DAMPER-HOT AIR TO MILL(PGMA 57273),SUP,2024-02-29,2024-11-04
2978,Engineering,ENG,2024-02-29,2024-03-29
2979,Manufacturing ,MFG,2024-03-30,2024-07-07
2980,Dispatch,DIS,2024-07-08,2024-11-04
2981,BAP - DAMPER-SA SCAPH BYPASS(PGMA 57083),SUP,2024-02-29,2024-11-04
2982,Engineering,ENG,2024-02-29,2024-03-29
2983,Manufacturing ,MFG,2024-03-30,2024-07-07
2984,Dispatch,DIS,2024-07-08,2024-11-04
2985,BAP - DUCTS COMMISSIONING SPARES(PGMA 57988),SUP,2024-02-29,2024-11-04
2986,Engineering,ENG,2024-02-29,2024-03-29
2987,Manufacturing ,MFG,2024-03-30,2024-07-07
2988,Dispatch,DIS,2024-07-08,2024-11-04
2989,Erection,ERC,2024-08-07,2026-05-28
2990,External Structures ( Supporting Structures for Duct  PG-39 ),ERC,2024-08-27,2026-03-16
2991,Erection:- Columns/Frames Before ESP (PP),ERC,2025-04-21,2025-10-17
2992,Erection:- Columns/Frames Before ESP (SP),ERC,2025-04-21,2025-12-16
2993,Erection:- Columns/Frames Near I.D. Fan  (PP),ERC,2024-08-27,2025-02-22
2994,Erection:- Columns/Frames Near TO Chimney  (SP),ERC,2024-09-27,2025-05-24
2995,Erection:- Columns/Frames Between TO Chimney and Chimney,ERC,2024-11-28,2025-04-26
2996,Erection:- Platforms External Structure BOF TO ESP,ERC,2025-06-20,2026-02-14
2997,Erection:- Platform - External Structure,ERC,2025-07-20,2026-03-16
2998,Erection:- Structure and Platform for Fans,ERC,2025-12-17,2026-01-15
2999,Erection :- Structure for Motor Hood/Covering,ERC,2026-01-30,2026-02-13
3000,Erection:- Fan Handling Structure for FD Fan,ERC,2025-10-18,2025-12-16
3001,Erection:- Fan Handling Structure for PA Fan,ERC,2025-09-24,2025-11-22
3002,Erection:- Fan Handling Structure for ID Fan,ERC,2025-10-18,2025-12-16
3003,Erection:- Floor Grill,ERC,2025-07-20,2025-11-16
3004,Erection:- Stairs,ERC,2025-07-20,2025-11-16
3005,Erection:- Hand Rail and Post,ERC,2025-07-20,2025-12-16
3006,Duct.  Dampers and Expn. Joints,ERC,2024-08-07,2026-05-28
3007, AIR DUCTING,ERC,2024-10-29,2026-01-18
3008, FORCED DRAFT AIR,ERC,2024-10-29,2025-12-22
3009, FORCED DRAFT AIR: Pre-assembly of FD duct pieces,ERC,2024-10-29,2025-03-27
3010, FORCED DRAFT AIR: Erection and suspension of ducts on supports,ERC,2024-12-28,2025-05-26
3011, FORCED DRAFT Reresection of gates and actuators,ERC,2025-05-27,2025-08-24
3012, FORCED DRAFT AIR:FD ducting ready after insulation,ERC,2025-08-25,2025-12-22
3013, PRIMARY AIR,ERC,2025-04-27,2026-01-18
3014, PRIMARY AIR: Preassembly of PA duct pieces,ERC,2025-04-27,2025-10-23
3015, PRIMARY AIR: Preassembly and suspension of ducts on supports,ERC,2025-05-27,2025-10-23
3016, PRIMARY AIR: Preassembly of gates and actuators,ERC,2025-06-03,2025-09-20
3017, PRIMARY AIR:PA ducting ready after insulation,ERC,2025-09-21,2026-01-18
3018, FLUE GAS DUCTING,ERC,2024-08-07,2026-05-28
3019, ID TO COMMON DUCT TO Chimney - Priority Pass,ERC,2024-08-07,2026-01-01
3020, ID-B TO Chimney: Preassembly of duct pieces,ERC,2024-08-07,2025-02-02
3021, ID-B TO Chimney: Erection and welding of square ducts and expansion pieces,ERC,2025-04-07,2025-09-03
3022, ID-B TO Chimney: Erection of gates and actuators,ERC,2025-09-04,2025-10-03
3023, ID-B TO Chimney: Ducting ready after insulation,COM,2025-10-04,2026-01-01
3024, ID to COMMON DUCT TO Chimney - Second Pass,ERC,2024-12-05,2026-02-22
3025, ID-A to Chimney: Preassembly of duct pieces,ERC,2024-12-05,2025-06-02
3026, ID-A to Chimney: Erection and welding of square ducts and expansion pieces,ERC,2025-04-29,2025-09-25
3027, ID-A to Chimney: Erection of gates and actuators,ERC,2025-09-26,2025-10-25
3028, ID-A to Chimney: Ducting ready after insulation,COM,2025-10-26,2026-02-22
3029, ECO TO APH,ERC,2025-08-01,2026-01-07
3030, ECO TO APH: Preassembly of duct pieces,ERC,2025-08-01,2025-09-14
3031, ECO TO APH: Erection and welding of square ducts and expansion pieces,ERC,2025-09-15,2025-11-08
3032, ECO TO Perfection of gates and actuators,ERC,2025-11-09,2025-11-23
3033, ECO TO APH: Ducting ready after insulation,COM,2025-11-24,2026-01-07
3034, APH TO BOF,ERC,2025-08-01,2026-01-21
3035, APH TO BOF: Erection of supports,ERC,2025-08-01,2025-09-08
3036, APH TO BOF: Preassembly of duct pieces,ERC,2025-08-01,2025-10-16
3037, APH TO Federation and welding of square ducts and expansion pieces,ERC,2025-09-07,2025-11-22
3038, APH TO Federation of gates and actuators,ERC,2025-11-23,2025-12-07
3039, APH TO BOF: Ducting ready after insulation,COM,2025-12-08,2026-01-21
3040, BOF TO ESP - Priority Pass,ERC,2025-08-04,2026-02-27
3041, BOF -B TO ESP: Preassembly of duct pieces,ERC,2025-08-04,2025-10-17
3042, BOF -B TO ESP: Erection and welding of square ducts and expansion pieces,ERC,2025-09-18,2025-12-16
3043, BOF -B TO Superaction of gates and actuators,ERC,2025-12-17,2025-12-29
3044, BOF -B TO ESP: Ducting ready after insulation,COM,2025-12-30,2026-02-27
3045, BOF TO ESP - Second Pass,ERC,2025-10-03,2026-05-28
3046, BOF_ATO Seducing of duct pieces,ERC,2025-10-03,2025-12-16
3047, BOF_ATO Seducing and welding of square ducts and expansion pieces,ERC,2025-12-17,2026-03-16
3048, BOF_ATO Seducing of gates and actuators,ERC,2026-03-17,2026-03-29
3049, BOF_ATO Seducing ready after insulation,COM,2026-03-30,2026-05-28
3050, ESP to ID - Priority Pass,ERC,2025-01-09,2025-12-24
3051, ESP to ID-A: Preassembly of duct pieces,ERC,2025-01-09,2025-04-08
3052, ESP to ID-A: Erection and welding of square ducts and expansion pieces,ERC,2025-04-09,2025-07-27
3053, ESP to Dilaceration of gates and actuators,ERC,2025-07-28,2025-09-25
3054, ESP to ID-A: Ducting ready after insulation,COM,2025-09-26,2025-12-24
3055, ESPTO ID - Second Pass,ERC,2025-04-10,2026-03-25
3056, ESPTO ID-B: Preassembly of duct pieces,ERC,2025-04-10,2025-07-08
3057, ESPTO ID-B: Erection and welding of square ducts and expansion pieces,ERC,2025-07-09,2025-10-26
3058, ESPTO ID-B: Preassembly of gates and actuators,ERC,2025-10-27,2025-12-25
3059, ESPTO ID-B: Ducting ready after insulation,COM,2025-12-26,2026-03-25
3060,Pulverised Fuel System,OTH,2022-09-27,2025-11-10
3061,Civil Work,CIV,2023-02-24,2025-06-23
3062, Mills Foundation,CIV,2023-02-24,2024-09-15
3063,EXCAVATION,CIV,2023-02-24,2023-05-09
3064,RCC in substructure including PCC,CIV,2023-05-10,2023-07-13
3065,RCC in superstructure,CIV,2024-05-04,2024-08-07
3066,Backfilling,CIV,2024-08-08,2024-09-01
3067,Finishing works,CIV,2024-09-02,2024-09-15
3068,Bunker,ERC,2024-04-20,2025-06-23
3069,Pre-Assy of Bunker at Ground,ERC,2024-04-20,2024-09-26
3070,Coal bunker lift up & welding,ERC,2024-12-16,2025-06-23
3071,Supply,SUP,2022-09-27,2025-08-27
3072,BHEL TRY,SUP,2023-04-10,2025-08-27
3073,Pulverised Fuel Piping (PG-47),SUP,2023-04-10,2024-12-26
3074,Fuel Piping - Sub-delivery (PGMA-47200),SUP,2023-04-10,2024-12-26
3075,Engineering,ENG,2023-04-10,2024-02-15
3076,Manufacturing,MFG,2024-02-16,2024-11-26
3077,Dispatch,DIS,2024-11-27,2024-12-26
3078,FUEL PIPE SUPPORTS (PGMA-47261),SUP,2023-04-10,2024-12-26
3079,Engineering,ENG,2023-04-10,2024-02-15
3080,Manufacturing,MFG,2024-02-16,2024-11-26
3081,Dispatch,DIS,2024-11-27,2024-12-26
3082,FUEL PIPE COUPLING COLLER & ORIFICE (PGMA-47263),SUP,2023-05-18,2024-11-25
3083,Engineering,ENG,2023-05-18,2024-02-03
3084,Manufacturing,MFG,2024-02-04,2024-10-26
3085,Dispatch,DIS,2024-10-27,2024-11-25
3086,FUEL PIPE ST PIPES FOR MILL G (PGMA-47269),SUP,2023-04-10,2024-12-26
3087,Engineering,ENG,2023-04-10,2024-02-15
3088,Manufacturing,MFG,2024-02-16,2024-11-26
3089,Dispatch,DIS,2024-11-27,2024-12-26
3090,Pulverised Fuel Piping - DD items (PGMA-47710),SUP,2023-04-10,2024-12-26
3091,Engineering,ENG,2023-04-10,2024-02-15
3092,Manufacturing,MFG,2024-02-16,2024-11-26
3093,Dispatch,DIS,2024-11-27,2024-12-26
3094,Fuel Piping - Shop Items (PGMA-47858),SUP,2023-04-10,2024-12-26
3095,Engineering,ENG,2023-04-10,2024-02-15
3096,Manufacturing,MFG,2024-02-16,2024-11-26
3097,Dispatch,DIS,2024-11-27,2024-12-26
3098,COAL PIPING MANDATORY SPARES (PGMA-47997),SUP,2023-04-10,2024-12-26
3099,Engineering,ENG,2023-04-10,2024-02-15
3100,Manufacturing,MFG,2024-02-16,2024-11-26
3101,Dispatch,DIS,2024-11-27,2024-12-26
3102,Coal Feeders (PG-65),SUP,2023-11-29,2025-08-27
3103,Coal Feeder- Sub-Delivery (PGMA-65200),SUP,2023-11-29,2025-08-27
3104,Ordering & Engineering,ENG,2023-11-29,2024-10-03
3105,Manufacturing,MFG,2024-10-04,2025-07-28
3106,Dispatch,DIS,2025-07-29,2025-08-27
3107,Coal Feeder - DD items (PGMA-65710),SUP,2023-11-29,2025-08-27
3108,Ordering & Engineering,ENG,2023-11-29,2024-10-03
3109,Manufacturing,MFG,2024-10-04,2025-07-28
3110,Dispatch,DIS,2025-07-29,2025-08-27
3111,36 INCH GRAVIMETRIC FEEDER (PGMA-65736),SUP,2023-11-29,2025-08-27
3112,Ordering & Engineering,ENG,2023-11-29,2024-10-03
3113,Manufacturing,MFG,2024-10-04,2025-07-28
3114,Dispatch,DIS,2025-07-29,2025-08-27
3115,FEEDER MANDATORY SPARE (PGMA-65997),SUP,2023-11-29,2025-08-27
3116,Ordering & Engineering,ENG,2023-11-29,2024-10-03
3117,Manufacturing,MFG,2024-10-04,2025-07-28
3118,Dispatch,DIS,2025-07-29,2025-08-27
3119,Coal Valves & Gates (PG-67),SUP,2023-11-06,2025-08-27
3120,Coal Feeding System- Sub dely. (PGMA-67200),SUP,2023-11-21,2025-07-28
3121,Ordering & Engineering,ENG,2023-11-21,2024-09-10
3122,Manufacturing,MFG,2024-09-11,2025-06-28
3123,Dispatch,DIS,2025-06-29,2025-07-28
3124,RAW COAL GATES NEEDLE TYPE (PGMA-67204),SUP,2023-11-21,2025-07-28
3125,Engineering,ENG,2023-11-21,2024-06-02
3126,Manufacturing,MFG,2024-06-03,2025-06-28
3127,Dispatch,DIS,2025-06-29,2025-07-28
3128,COAL VALVE-36 INCH MOTOR OPERATED (PGMA-67272),SUP,2023-11-21,2025-07-28
3129,Engineering,ENG,2023-11-21,2024-06-02
3130,Manufacturing,MFG,2024-06-03,2025-06-28
3131,Dispatch,DIS,2025-06-29,2025-07-28
3132,"RAW COAL GATE CHAIN OP 36"" CIRCULAR (PGMA-67276)",SUP,2023-11-21,2025-07-28
3133,Engineering,ENG,2023-11-21,2024-06-02
3134,Manufacturing,MFG,2024-06-03,2025-06-28
3135,Dispatch,DIS,2025-06-29,2025-07-28
3136,FEEDER OUTLET ISOLATION GATE (PGMA-67283),SUP,2023-11-21,2025-07-28
3137,Engineering,ENG,2023-11-21,2024-06-02
3138,Manufacturing,MFG,2024-06-03,2025-06-28
3139,Dispatch,DIS,2025-06-29,2025-07-28
3140,Coal Feeding System - DD items (PGMA-67710),SUP,2023-11-21,2025-07-28
3141,Engineering,ENG,2023-11-21,2024-06-02
3142,Manufacturing,MFG,2024-06-03,2025-06-28
3143,Dispatch,DIS,2025-06-29,2025-07-28
3144,DOWN SPOUT (PGMA-67801),SUP,2023-11-06,2025-06-27
3145,Engineering,ENG,2023-11-06,2024-05-05
3146,Manufacturing,MFG,2024-05-06,2025-05-28
3147,Dispatch,DIS,2025-05-29,2025-06-27
3148,BUNKER EMPTYING CHUTE ARRANGEMENT (PGMA-67802),SUP,2023-11-29,2025-08-27
3149,Engineering,ENG,2023-11-29,2024-06-25
3150,Manufacturing,MFG,2024-06-26,2025-07-28
3151,Dispatch,DIS,2025-07-29,2025-08-27
3152,FEED PIPE TO MILL (PGMA-67803),SUP,2023-11-06,2025-06-27
3153,Engineering,ENG,2023-11-06,2024-05-05
3154,Manufacturing,MFG,2024-05-06,2025-05-28
3155,Dispatch,DIS,2025-05-29,2025-06-27
3156,FDR ISOLATION GATE MAND SPARES (PGMA-67997),SUP,2023-11-29,2025-08-27
3157,Engineering,ENG,2023-11-29,2024-10-03
3158,Manufacturing,MFG,2024-10-04,2025-07-28
3159,Dispatch,DIS,2025-07-29,2025-08-27
3160,BHEL HYD,SUP,2022-09-27,2024-10-20
3161,MILL and its Components,SUP,2022-09-27,2024-10-20
3162,MILLS(7 NOS.),SUP,2022-09-27,2024-10-20
3163,Engineering & PROCUREMENT,ENG,2022-09-27,2023-12-25
3164,Manufacturing,MFG,2023-12-26,2024-06-02
3165,ASSEMBLY & TESTING,MFG,2024-02-09,2024-06-17
3166,Dispatch of Major Mill Components ( Bowl Hub  MSL  PGB  Separator Body  Separator Top  KGV  Journal Head  Journal Assly),DIS,2024-03-05,2024-04-13
3167,DISPATCH OF BALANCE MILLS ITEMS &  ASOCIATED LOOSE ITEMS,DIS,2024-07-13,2024-10-20
3168, BHEL BPL,SUP,2023-07-27,2025-03-23
3169,Mill Motor,SUP,2023-07-27,2025-03-23
3170,Engineering  INDENTING AND PROCUREMENT ,ENG,2023-07-27,2024-05-24
3171,Manufacturing & TESTING ,MFG,2024-05-25,2025-02-21
3172,Dispatch &RECEIPT at site,DIS,2025-02-22,2025-03-23
3173, BHEL IP ,SUP,2023-11-21,2024-06-02
3174,Ceralin Lined Pulverised Coal Piping items,SUP,2023-11-21,2024-06-02
3175,Engineering & PROCUREMENT,ENG,2023-11-21,2024-02-03
3176,Manufacturing,MFG,2024-02-04,2024-04-03
3177,Dispatch,DIS,2024-04-04,2024-06-02
3178,Erection,ERC,2024-09-16,2025-11-10
3179,Mills,ERC,2024-09-16,2025-10-16
3180, Foundation checking  cleaning & placement of packers,CIV,2024-09-16,2024-10-10
3181,Erection  alignment & grouting of sole plate  mounting plate,ERC,2024-10-11,2024-10-30
3182,Erection of planetary gear box & mill side assy. ,ERC,2024-10-31,2024-11-19
3183,Erection of bullring ASSY  vane wheel ASSY & bowl hub ASSY ,ERC,2024-11-20,2024-12-19
3184,Erection of separator body and valve outlet,ERC,2024-12-20,2025-01-18
3185,Erection of Centre feed pipe,ERC,2025-01-19,2025-02-03
3186,Erection of dynamic classifier ASSY,ERC,2025-02-04,2025-03-20
3187,Erection of roller journal ASSY,ERC,2025-03-21,2025-05-14
3188,Erection and alignment of motors,ERC,2025-05-15,2025-06-03
3189,Erection of seal air piping  MDV headers,ERC,2025-06-04,2025-08-02
3190, Lube oil system,ERC,2025-08-03,2025-09-01
3191,Erection of labyrinth seal upper and lower,ERC,2025-09-02,2025-10-01
3192, Spring compression and roller gap setting,ERC,2025-10-02,2025-10-16
3193,Pulverised Fuel Piping (PG-47),ERC,2024-12-27,2025-10-29
3194,First 4 Nos Mills,ERC,2024-12-27,2025-04-25
3195,Erection: Fuel Piping,ERC,2024-12-27,2025-04-25
3196,Erection: FUEL PIPE SUPPORTS,ERC,2024-12-27,2025-04-25
3197,Erection: FUEL PIPE COUPLING COLLER & ORIFICE,ERC,2024-12-27,2025-04-25
3198,Last 3 Nos Mills,ERC,2025-07-19,2025-10-29
3199,Erection: Fuel Piping,ERC,2025-07-19,2025-10-29
3200,Erection: FUEL PIPE SUPPORTS,ERC,2025-07-19,2025-10-29
3201,Erection: FUEL PIPE COUPLING COLLER & ORIFICE,ERC,2025-07-19,2025-10-29
3202,Coal Feeders (PG-65),ERC,2025-08-28,2025-11-10
3203,Erection: Placement and alignment of feeders (First 4 Nos),ERC,2025-08-28,2025-11-10
3204,Erection: Placement and alignment of feeders (Last 3 Nos),ERC,2025-08-28,2025-11-10
3205,Coal Valves & Gates (PG-67),ERC,2025-08-28,2025-09-26
3206, Mills/Feeders,ERC,2025-08-28,2025-09-26
3207,Erection:  RAW COAL GATES NEEDLE TYPE,ERC,2025-08-28,2025-09-26
3208,Erection: COAL VALVE-36 INCH MOTOR OPERATED,ERC,2025-08-28,2025-09-26
3209,"Erection: RAW COAL GATE CHAIN OP 36"" CIRCULAR",ERC,2025-08-28,2025-09-26
3210,Erection: FEEDER OUTLET ISOLATION GATE,ERC,2025-08-28,2025-09-26
3211,Erection: DOWN SPOUT,ERC,2025-08-28,2025-09-26
3212,Erection: BUNKER EMPTYING CHUTE ARRANGEMENT,ERC,2025-08-28,2025-09-26
3213,Erection: FEED PIPE TO MILL,ERC,2025-08-28,2025-09-26
3214,APH,OTH,2022-12-26,2026-01-01
3215,Supply,SUP,2022-12-26,2024-11-04
3216,BHEL RPT,SUP,2022-12-26,2024-11-04
3217,LARG AH-ROTORHOUSING(PGMA-52030),SUP,2022-12-26,2023-05-04
3218,Engineering,ENG,2022-12-26,2023-01-24
3219,Manufacturing ,MFG,2023-01-25,2023-03-05
3220,Dispatch,DIS,2023-03-06,2023-05-04
3221,COLD END CONN PLATE(PGMA-52042),SUP,2022-12-26,2023-05-14
3222,Engineering,ENG,2022-12-26,2023-01-24
3223,Manufacturing ,MFG,2023-01-25,2023-03-05
3224,Dispatch,DIS,2023-03-06,2023-05-14
3225,HOT END CONN PLATE(PGMA-52041),SUP,2022-12-26,2023-06-13
3226,Engineering,ENG,2022-12-26,2023-01-24
3227,Manufacturing ,MFG,2023-01-25,2023-03-25
3228,Dispatch,DIS,2023-03-26,2023-06-13
3229,LARG AH-SUPRT BEARNG(PGMA-52262),SUP,2023-01-15,2023-07-13
3230,Engineering,ENG,2023-01-15,2023-02-13
3231,Manufacturing ,MFG,2023-02-14,2023-04-14
3232,Dispatch,DIS,2023-04-15,2023-07-13
3233,LARG AH-GUIDE BEARNG(PGMA-52261),SUP,2023-01-15,2023-07-13
3234,Engineering,ENG,2023-01-15,2023-02-13
3235,Manufacturing ,MFG,2023-02-14,2023-04-14
3236,Dispatch,DIS,2023-04-15,2023-07-13
3237,LARG AH-ROTOR POST(PGMA-52011),SUP,2023-01-15,2023-08-12
3238,Engineering,ENG,2023-01-15,2023-02-13
3239,Manufacturing ,MFG,2023-02-14,2023-04-24
3240,Dispatch,DIS,2023-04-25,2023-08-12
3241,LARG AH-ROTOR ASSY(PGMA-52010),SUP,2023-01-15,2023-08-12
3242,Engineering,ENG,2023-01-15,2023-02-13
3243,Manufacturing ,MFG,2023-02-14,2023-04-24
3244,Dispatch,DIS,2023-04-25,2023-08-12
3245,LARG AH-ROTORPINRACK(PGMA-52012),SUP,2023-02-04,2023-09-11
3246,Engineering,ENG,2023-02-04,2023-03-05
3247,Manufacturing ,MFG,2023-03-06,2023-05-24
3248,Dispatch,DIS,2023-05-25,2023-09-11
3249,SPECIAL TOOLS/CONTRA(PGMA-52000),SUP,2023-02-04,2023-10-11
3250,Engineering,ENG,2023-02-04,2023-03-05
3251,Manufacturing ,MFG,2023-03-06,2023-06-13
3252,Dispatch,DIS,2023-06-14,2023-10-11
3253,LARGE AH ROTOR DRIVE(PGMA-52100),SUP,2023-02-04,2023-10-11
3254,Engineering,ENG,2023-02-04,2023-03-05
3255,Manufacturing ,MFG,2023-03-06,2023-06-13
3256,Dispatch,DIS,2023-06-14,2023-10-11
3257,LARG AH-AUX ROTDRIVE(PGMA-52101),SUP,2023-06-24,2023-12-10
3258,Engineering,ENG,2023-06-24,2023-07-23
3259,Manufacturing ,MFG,2023-07-24,2023-10-21
3260,Dispatch,DIS,2023-10-22,2023-12-10
3261,LARG AH-AXIAL SEAL(PGMA-52054),SUP,2023-02-24,2023-11-10
3262,Engineering,ENG,2023-02-24,2023-03-25
3263,Manufacturing ,MFG,2023-03-26,2023-07-03
3264,Dispatch,DIS,2023-07-04,2023-11-10
3265,LARG AH-BY PASS SEAL(PGMA-52055),SUP,2023-02-24,2023-11-10
3266,Engineering,ENG,2023-02-24,2023-03-25
3267,Manufacturing ,MFG,2023-03-26,2023-07-03
3268,Dispatch,DIS,2023-07-04,2023-11-10
3269,LARG AH-ROTORSEALS(PGMA-52013),SUP,2023-06-04,2024-02-08
3270,Engineering,ENG,2023-06-04,2023-07-03
3271,Manufacturing ,MFG,2023-07-04,2023-10-11
3272,Dispatch,DIS,2023-10-12,2024-02-08
3273,OIL PIPING GUIDE BRG(PGMA-52271),SUP,2023-08-13,2024-04-08
3274,Engineering,ENG,2023-08-13,2023-09-11
3275,Manufacturing ,MFG,2023-09-12,2023-12-20
3276,Dispatch,DIS,2023-12-21,2024-04-08
3277,OIL PIPING SUPRT BRG(PGMA-52272),SUP,2023-08-13,2024-04-08
3278,Engineering,ENG,2023-08-13,2023-09-11
3279,Manufacturing ,MFG,2023-09-12,2023-12-20
3280,Dispatch,DIS,2023-12-21,2024-04-08
3281,LARG AH-GENS DETAILS(PGMA-52220),SUP,2023-10-02,2024-07-07
3282,Engineering,ENG,2023-10-02,2023-10-31
3283,Manufacturing ,MFG,2023-11-01,2024-02-08
3284,Dispatch,DIS,2024-02-09,2024-07-07
3285,LUB OIL CIRCULATION UN(PGMA-52274),SUP,2023-11-21,2024-08-06
3286,Engineering,ENG,2023-11-21,2023-12-20
3287,Manufacturing ,MFG,2023-12-21,2024-03-29
3288,Dispatch,DIS,2024-03-30,2024-08-06
3289,LARGE AIR HEATER-LUBRI(PGMA-52275),SUP,2023-11-21,2024-08-06
3290,Engineering,ENG,2023-11-21,2023-12-20
3291,Manufacturing ,MFG,2023-12-21,2024-03-29
3292,Dispatch,DIS,2024-03-30,2024-08-06
3293,LARG AH-AIRSEAL PIPE(PGMA-52211),SUP,2023-11-21,2024-08-06
3294,Engineering,ENG,2023-11-21,2023-12-20
3295,Manufacturing ,MFG,2023-12-21,2024-03-29
3296,Dispatch,DIS,2024-03-30,2024-08-06
3297,WASH MANIFLD GAS INL(PGMA-52301),SUP,2024-01-10,2024-09-05
3298,Engineering,ENG,2024-01-10,2024-02-08
3299,Manufacturing ,MFG,2024-02-09,2024-05-18
3300,Dispatch,DIS,2024-05-19,2024-09-05
3301,WASH MANIFLD GAS OUT(PGMA-52302),SUP,2024-01-10,2024-09-05
3302,Engineering,ENG,2024-01-10,2024-02-08
3303,Manufacturing ,MFG,2024-02-09,2024-05-18
3304,Dispatch,DIS,2024-05-19,2024-09-05
3305,CLEANING DEVICE ?RETRACT TYPE (PGMA-52338),SUP,2024-01-10,2024-09-05
3306,Engineering,ENG,2024-01-10,2024-02-08
3307,Manufacturing ,MFG,2024-02-09,2024-05-18
3308,Dispatch,DIS,2024-05-19,2024-09-05
3309,LARGE AH-RETRACT CLNG DEVICE (HE)(PGMA-52339),SUP,2024-01-10,2024-09-05
3310,Engineering,ENG,2024-01-10,2024-02-08
3311,Manufacturing ,MFG,2024-02-09,2024-05-18
3312,Dispatch,DIS,2024-05-19,2024-09-05
3313,LARGE AH E C&I COMPONENETS(PGMA-52600),SUP,2024-02-29,2024-11-04
3314,Engineering,ENG,2024-02-29,2024-03-29
3315,Manufacturing ,MFG,2024-03-30,2024-07-07
3316,Dispatch,DIS,2024-07-08,2024-11-04
3317,LARG AH COMMISSIONING SPARES (PGMA-52988),SUP,2024-02-29,2024-11-04
3318,Engineering,ENG,2024-02-29,2024-03-29
3319,Manufacturing ,MFG,2024-03-30,2024-07-07
3320,Dispatch,DIS,2024-07-08,2024-11-04
3321,STEAM COIL APH (PGMA-50510)- BOI,SUP,2023-07-24,2024-07-17
3322,Engineering & Ordering,ENG,2023-07-24,2023-12-20
3323,Manufacturing ,MFG,2023-12-21,2024-05-18
3324,Dispatch,DIS,2024-05-19,2024-07-17
3325,Erection,ERC,2025-05-21,2026-01-01
3326, First APH,ERC,2025-05-21,2025-11-13
3327,Preparatory works,ERC,2025-05-21,2025-05-27
3328,Main pedestal Erection,ERC,2025-05-28,2025-06-04
3329,Erection of Connecting plates cold & hot end and rotor ASSY,ERC,2025-06-05,2025-06-24
3330,Guide bearings and side panels erection,ERC,2025-06-25,2025-07-16
3331,Erection of Module,ERC,2025-07-17,2025-07-31
3332,Erection of Rotor drive ASSY-Spacer bar  pin rack and T bar,ERC,2025-08-01,2025-09-09
3333,Seal setting - Axial and radial,OTH,2025-09-10,2025-10-09
3334,Erection of Lube oil system,ERC,2025-10-10,2025-10-29
3335,Erection of Support systems cleaning device  sensors  alarms etc,ERC,2025-10-30,2025-11-13
3336, Second APH,ERC,2025-06-27,2026-01-01
3337,Preparatory works,ERC,2025-06-27,2025-07-03
3338,Main ASSY,ERC,2025-07-04,2025-07-11
3339,Erection of Connecting plates cold & hot end and rotor ASSY,ERC,2025-07-12,2025-07-31
3340,Guide bearings and side ASSY,ERC,2025-08-01,2025-08-22
3341,Erection of Module,ERC,2025-08-23,2025-09-06
3342,Erection of Rotor drive ASSY-Spacer bar  pin rack and T bar,ERC,2025-09-07,2025-10-21
3343,Seal setting - Axial and radial,ERC,2025-10-22,2025-11-25
3344,Erection of Lube oil system,ERC,2025-11-26,2025-12-17
3345,Erection of Support systems cleaning device  sensors  alarms etc,ERC,2025-12-18,2026-01-01
3346,Various Fans,CIV,2023-01-15,2026-04-30
3347, Rel of DWG for FD Fan,PE - RFC,2023-10-31,2023-10-31
3348, Rel of DWG for ID Fan,PE - RFC,2023-11-10,2023-11-10
3349, Rel of DWG for PA Fan,PE - RFC,2023-07-23,2023-07-23
3350, Rel of DWG for SA Fan,PE - RFC,2023-10-31,2023-10-31
3351,Civil Work,CIV,2023-08-13,2025-07-27
3352,First ID Fan foundations,CIV,2024-01-03,2024-05-27
3353,Excavation,CIV,2024-01-03,2024-01-18
3354,RCC Bottom Raft including PCC,CIV,2024-01-19,2024-02-12
3355,RCC wall,CIV,2024-02-13,2024-03-18
3356,RCC Top Deck,CIV,2024-03-19,2024-05-02
3357,Backfilling,CIV,2024-05-03,2024-05-17
3358,Finishing Work,CIV,2024-05-18,2024-05-27
3359,Second ID Fan foundation,CIV,2024-01-30,2024-06-27
3360,Excavation,CIV,2024-01-30,2024-02-13
3361,RCC Bottom Raft including PCC,CIV,2024-02-14,2024-03-09
3362,RCC wall,CIV,2024-03-10,2024-04-13
3363,RCC Top Deck,CIV,2024-04-14,2024-05-28
3364,Backfilling,CIV,2024-05-29,2024-06-12
3365,Finishing Work,CIV,2024-06-13,2024-06-27
3366,First FD Fan Foundation,CIV,2023-11-21,2024-10-20
3367,Excavation,CIV,2023-11-21,2023-12-05
3368,RCC bottom Raft including PCC,CIV,2023-12-06,2023-12-30
3369,RCC Top Deck,CIV,2024-08-09,2024-10-02
3370,Backfilling,CIV,2024-10-03,2024-10-12
3371,Finishing Work,CIV,2024-10-13,2024-10-20
3372,Second FD Fan Foundation,CIV,2023-12-26,2025-07-09
3373,Excavation,CIV,2023-12-26,2024-01-09
3374,RCC bottom Raft including PCC,CIV,2024-01-10,2024-02-03
3375,RCC Top Deck,CIV,2025-05-07,2025-06-25
3376,Backfilling,CIV,2025-06-26,2025-07-04
3377,Finishing Work,CIV,2025-07-05,2025-07-09
3378,First PA Fan Foundation,CIV,2023-08-13,2024-11-19
3379,Excavation,CIV,2023-08-13,2023-08-27
3380,RCC bottom Raft including PCC,CIV,2023-08-28,2023-09-21
3381,RCC Top Deck,CIV,2024-08-27,2024-10-30
3382,Backfilling,CIV,2024-10-31,2024-11-10
3383,Finishing Work,CIV,2024-11-11,2024-11-19
3384,Second PA Fan Foundation,CIV,2023-09-17,2025-07-27
3385,Excavation,CIV,2023-09-17,2023-10-01
3386,RCC bottom Raft including PCC,CIV,2023-10-02,2023-10-26
3387,RCC Top Deck,CIV,2025-05-04,2025-07-07
3388,Backfilling,CIV,2025-07-08,2025-07-18
3389,Finishing Work,CIV,2025-07-19,2025-07-27
3390,SA fan Foundation,CIV,2025-05-04,2025-07-09
3391,Excavation,CIV,2025-05-04,2025-05-11
3392,RCC bottom Raft including PCC,CIV,2025-05-12,2025-05-26
3393,RCC Top Deck,CIV,2025-05-27,2025-06-28
3394,Backfilling,CIV,2025-06-29,2025-07-05
3395,Finishing Work,CIV,2025-07-06,2025-07-09
3396,Supply,SUP,2023-01-15,2025-04-22
3397,Fans (PG - 55 & 56) - BHEL BAP,SUP,2023-01-15,2024-12-24
3398,AXL IDFAN FDN MATL(PGMA-55021),SUP,2023-01-15,2023-08-12
3399,Engineering,ENG,2023-01-15,2023-02-13
3400,Manufacturing ,MFG,2023-02-14,2023-04-24
3401,Dispatch,DIS,2023-04-25,2023-08-12
3402, FD FAN FOUNDATION MATL(PGMA-55011),SUP,2023-02-04,2023-09-11
3403,Engineering,ENG,2023-02-04,2023-03-05
3404,Manufacturing ,MFG,2023-03-06,2023-05-24
3405,Dispatch,DIS,2023-05-25,2023-09-11
3406,PA FAN FOUNDATION MATL(PGMA-55031),SUP,2023-06-04,2024-02-08
3407,Engineering,ENG,2023-06-04,2023-07-03
3408,Manufacturing ,MFG,2023-07-04,2023-10-11
3409,Dispatch,DIS,2023-10-12,2024-02-08
3410,AXIAL IDFAN COUPLING(PGMA-55820),SUP,2023-11-21,2024-08-06
3411,Engineering,ENG,2023-11-21,2023-12-20
3412,Manufacturing ,MFG,2023-12-21,2024-03-29
3413,Dispatch,DIS,2024-03-30,2024-08-06
3414,1 STG ID rotor(PGMA-55216),SUP,2023-11-21,2024-08-06
3415,Engineering,ENG,2023-11-21,2023-12-20
3416,Manufacturing ,MFG,2023-12-21,2024-03-29
3417,Dispatch,DIS,2024-03-30,2024-08-06
3418,2 STG ID ROTOR(PGMA-55327),SUP,2024-01-10,2024-09-05
3419,Engineering,ENG,2024-01-10,2024-02-08
3420,Manufacturing ,MFG,2024-02-09,2024-05-18
3421,Dispatch,DIS,2024-05-19,2024-09-05
3422,SECOND STAGE ID HOUSING(PGMA-55627),SUP,2024-01-10,2024-09-05
3423,Engineering,ENG,2024-01-10,2024-02-08
3424,Manufacturing ,MFG,2024-02-09,2024-05-18
3425,Dispatch,DIS,2024-05-19,2024-09-05
3426,ID SEALING/COOLING FAN(PGMA-55024),SUP,2024-02-29,2024-10-05
3427,Engineering,ENG,2024-02-29,2024-03-29
3428,Manufacturing ,MFG,2024-03-30,2024-07-07
3429,Dispatch,DIS,2024-07-08,2024-10-05
3430,AXIAL FDFAN COUPLING(PGMA-55810),SUP,2024-02-29,2024-10-05
3431,Engineering,ENG,2024-02-29,2024-03-29
3432,Manufacturing ,MFG,2024-03-30,2024-07-07
3433,Dispatch,DIS,2024-07-08,2024-10-05
3434,1 STG FD HOUSING (PGMA 55516),SUP,2024-02-29,2024-10-05
3435,Engineering,ENG,2024-02-29,2024-03-29
3436,Manufacturing ,MFG,2024-03-30,2024-07-07
3437,Dispatch,DIS,2024-07-08,2024-10-05
3438,FD FAN INSUL WOOL (PGMA 55919),SUP,2024-05-19,2024-12-24
3439,Engineering,ENG,2024-05-19,2024-06-17
3440,Manufacturing ,MFG,2024-06-18,2024-09-25
3441,Dispatch,DIS,2024-09-26,2024-12-24
3442,FD FAN COUPLING GUARD (PGMA 55015),SUP,2024-02-29,2024-10-05
3443,Engineering,ENG,2024-02-29,2024-03-29
3444,Manufacturing ,MFG,2024-03-30,2024-07-07
3445,Dispatch,DIS,2024-07-08,2024-10-05
3446,FD SET & INDN SHAFT (PGMA 55410),SUP,2024-02-29,2024-10-05
3447,Engineering,ENG,2024-02-29,2024-03-29
3448,Manufacturing ,MFG,2024-03-30,2024-07-07
3449,Dispatch,DIS,2024-07-08,2024-10-05
3450,FD FAN EXPN JOINTS (PGMA 55510),SUP,2024-02-29,2024-10-05
3451,Engineering,ENG,2024-02-29,2024-03-29
3452,Manufacturing ,MFG,2024-03-30,2024-07-07
3453,Dispatch,DIS,2024-07-08,2024-10-05
3454,FD FAN DIFFUSER (PGMA 55816),SUP,2024-02-29,2024-10-05
3455,Engineering,ENG,2024-02-29,2024-03-29
3456,Manufacturing ,MFG,2024-03-30,2024-07-07
3457,Dispatch,DIS,2024-07-08,2024-10-05
3458,FD FAN SUCTION BOX (PGMA 55716),SUP,2024-02-29,2024-10-05
3459,Engineering,ENG,2024-02-29,2024-03-29
3460,Manufacturing ,MFG,2024-03-30,2024-07-07
3461,Dispatch,DIS,2024-07-08,2024-10-05
3462,AXIAL FDFAN SILENCER(PGMA-55911),SUP,2024-02-29,2024-10-05
3463,Engineering,ENG,2024-02-29,2024-03-29
3464,Manufacturing ,MFG,2024-03-30,2024-07-07
3465,Dispatch,DIS,2024-07-08,2024-10-05
3466,ID FAN C&I ITEMS(PGMA-55027),SUP,2024-02-29,2024-11-04
3467,Engineering,ENG,2024-02-29,2024-03-29
3468,Manufacturing ,MFG,2024-03-30,2024-07-07
3469,Dispatch,DIS,2024-07-08,2024-11-04
3470,ID FAN CPLNG GUARD (PGMA 55025),SUP,2024-02-29,2024-11-04
3471,Engineering,ENG,2024-02-29,2024-03-29
3472,Manufacturing ,MFG,2024-03-30,2024-07-07
3473,Dispatch,DIS,2024-07-08,2024-11-04
3474,ID SET & INDN SHAFT (PGMA 55420),SUP,2024-02-29,2024-11-04
3475,Engineering,ENG,2024-02-29,2024-03-29
3476,Manufacturing ,MFG,2024-03-30,2024-07-07
3477,Dispatch,DIS,2024-07-08,2024-11-04
3478,ID FAN EXPN JOINTS (PGMA 55520),SUP,2024-02-29,2024-11-04
3479,Engineering,ENG,2024-02-29,2024-03-29
3480,Manufacturing ,MFG,2024-03-30,2024-07-07
3481,Dispatch,DIS,2024-07-08,2024-11-04
3482,ID FAN DIFFUSER (PGMA 55827),SUP,2024-02-29,2024-11-04
3483,Engineering,ENG,2024-02-29,2024-03-29
3484,Manufacturing ,MFG,2024-03-30,2024-07-07
3485,Dispatch,DIS,2024-07-08,2024-11-04
3486,ID FAN SUCTION BOX (PGMA 55727),SUP,2024-02-29,2024-11-04
3487,Engineering,ENG,2024-02-29,2024-03-29
3488,Manufacturing ,MFG,2024-03-30,2024-07-07
3489,Dispatch,DIS,2024-07-08,2024-11-04
3490,AXIAL ID FAN LUBE OIL(PGMA-55920),SUP,2024-02-29,2024-11-04
3491,Engineering,ENG,2024-02-29,2024-03-29
3492,Manufacturing ,MFG,2024-03-30,2024-07-07
3493,Dispatch,DIS,2024-07-08,2024-11-04
3494,FD FAN C&I ITEMS(PGMA-55017),SUP,2024-01-10,2024-10-05
3495,Engineering,ENG,2024-01-10,2024-02-08
3496,Manufacturing ,MFG,2024-02-09,2024-05-18
3497,Dispatch,DIS,2024-05-19,2024-10-05
3498,AXIAL FD FAN LUBE OIL(PGMA-55910),SUP,2024-01-10,2024-10-05
3499,Engineering,ENG,2024-01-10,2024-02-08
3500,Manufacturing ,MFG,2024-02-09,2024-05-18
3501,Dispatch,DIS,2024-05-19,2024-10-05
3502,2 STG PA ROTOR(PGMA-55335),SUP,2024-01-10,2024-10-05
3503,Engineering,ENG,2024-01-10,2024-02-08
3504,Manufacturing ,MFG,2024-02-09,2024-05-18
3505,Dispatch,DIS,2024-05-19,2024-10-05
3506,2 STG PA HOUSING (PGMA 55635),SUP,2024-01-10,2024-10-05
3507,Engineering,ENG,2024-01-10,2024-02-08
3508,Manufacturing ,MFG,2024-02-09,2024-05-18
3509,Dispatch,DIS,2024-05-19,2024-10-05
3510,PA FAN INSUL WOOL (PGMA 55939),SUP,2024-01-10,2024-10-05
3511,Engineering,ENG,2024-01-10,2024-02-08
3512,Manufacturing ,MFG,2024-02-09,2024-05-18
3513,Dispatch,DIS,2024-05-19,2024-10-05
3514,PA FAN CPLNG GUARD (PGMA 55035),SUP,2024-01-10,2024-10-05
3515,Engineering,ENG,2024-01-10,2024-02-08
3516,Manufacturing ,MFG,2024-02-09,2024-05-18
3517,Dispatch,DIS,2024-05-19,2024-10-05
3518,PA SET & INDN SHAFT (PGMA 55430),SUP,2024-01-10,2024-10-05
3519,Engineering,ENG,2024-01-10,2024-02-08
3520,Manufacturing ,MFG,2024-02-09,2024-05-18
3521,Dispatch,DIS,2024-05-19,2024-10-05
3522,PA FAN EXPN JOINTS (PGMA 55530),SUP,2024-01-10,2024-10-05
3523,Engineering,ENG,2024-01-10,2024-02-08
3524,Manufacturing ,MFG,2024-02-09,2024-05-18
3525,Dispatch,DIS,2024-05-19,2024-10-05
3526,PA FAN DIFFUSER (PGMA 55835),SUP,2024-01-10,2024-10-05
3527,Engineering,ENG,2024-01-10,2024-02-08
3528,Manufacturing ,MFG,2024-02-09,2024-05-18
3529,Dispatch,DIS,2024-05-19,2024-10-05
3530,PA FAN SUCTION BOX (PGMA 55735),SUP,2024-01-10,2024-10-05
3531,Engineering,ENG,2024-01-10,2024-02-08
3532,Manufacturing ,MFG,2024-02-09,2024-05-18
3533,Dispatch,DIS,2024-05-19,2024-10-05
3534,RADIAL SEAL AIR FAN ROTOR(PGMA-56173),SUP,2024-01-10,2024-10-05
3535,Engineering,ENG,2024-01-10,2024-02-08
3536,Manufacturing ,MFG,2024-02-09,2024-05-18
3537,Dispatch,DIS,2024-05-19,2024-10-05
3538,AXL PAFAN COUPLING(PGMA-55830),SUP,2024-01-10,2024-10-05
3539,Engineering,ENG,2024-01-10,2024-02-08
3540,Manufacturing ,MFG,2024-02-09,2024-05-18
3541,Dispatch,DIS,2024-05-19,2024-10-05
3542,PA FAN SILENCER(PGMA-55931),SUP,2023-12-21,2024-09-05
3543,Engineering,ENG,2023-12-21,2024-01-19
3544,Manufacturing ,MFG,2024-01-20,2024-04-28
3545,Dispatch,DIS,2024-04-29,2024-09-05
3546,FIRST FILL LUBRICANTS(PGMA-55091),SUP,2024-01-10,2024-10-05
3547,Engineering,ENG,2024-01-10,2024-02-08
3548,Manufacturing ,MFG,2024-02-09,2024-05-18
3549,Dispatch,DIS,2024-05-19,2024-10-05
3550,RADIAL PENT HOUSE VENT(PGMA-56161),SUP,2024-01-10,2024-10-05
3551,Engineering,ENG,2024-01-10,2024-02-08
3552,Manufacturing ,MFG,2024-02-09,2024-05-18
3553,Dispatch,DIS,2024-05-19,2024-10-05
3554,RADIAL SEAL AIR FAN BEARINGS (PGMA 56373),SUP,2024-01-10,2024-10-05
3555,Engineering,ENG,2024-01-10,2024-02-08
3556,Manufacturing ,MFG,2024-02-09,2024-05-18
3557,Dispatch,DIS,2024-05-19,2024-10-05
3558,RADIAL SEAL AIR FAN STATOR (PGMA 56473),SUP,2024-01-10,2024-10-05
3559,Engineering,ENG,2024-01-10,2024-02-08
3560,Manufacturing ,MFG,2024-02-09,2024-05-18
3561,Dispatch,DIS,2024-05-19,2024-10-05
3562,SA FAN CPLNG GUARD (PGMA 56075),SUP,2024-01-10,2024-10-05
3563,Engineering,ENG,2024-01-10,2024-02-08
3564,Manufacturing ,MFG,2024-02-09,2024-05-18
3565,Dispatch,DIS,2024-05-19,2024-10-05
3566,SA FAN MTR CANOPY (PGMA 56079),SUP,2024-01-10,2024-10-05
3567,Engineering,ENG,2024-01-10,2024-02-08
3568,Manufacturing ,MFG,2024-02-09,2024-05-18
3569,Dispatch,DIS,2024-05-19,2024-10-05
3570,SEAL AIR FAN COUPLING((PGMA-56870),SUP,2024-01-10,2024-10-05
3571,Engineering,ENG,2024-01-10,2024-02-08
3572,Manufacturing ,MFG,2024-02-09,2024-05-18
3573,Dispatch,DIS,2024-05-19,2024-10-05
3574,AXL FAN TOOL & FIXTU(PGMA-55000),SUP,2024-01-10,2024-10-05
3575,Engineering,ENG,2024-01-10,2024-02-08
3576,Manufacturing ,MFG,2024-02-09,2024-05-18
3577,Dispatch,DIS,2024-05-19,2024-10-05
3578,PA FAN C&I ITEMS(PGMA-55037),SUP,2024-02-29,2024-11-04
3579,Engineering,ENG,2024-02-29,2024-03-29
3580,Manufacturing ,MFG,2024-03-30,2024-07-07
3581,Dispatch,DIS,2024-07-08,2024-11-04
3582,SEAL AIR FAN C&I ITEMS(PGMA-56077),SUP,2024-05-09,2024-11-14
3583,Engineering,ENG,2024-05-09,2024-06-07
3584,Manufacturing ,MFG,2024-06-08,2024-07-27
3585,Dispatch,DIS,2024-07-28,2024-11-14
3586,RADIAL SEAL AIR FAN MO(PGMA-56670),SUP,2024-02-29,2024-11-04
3587,Engineering,ENG,2024-02-29,2024-03-29
3588,Manufacturing ,MFG,2024-03-30,2024-07-07
3589,Dispatch,DIS,2024-07-08,2024-11-04
3590,AXIAL PA FAN LUBE OIL(PGMA-55930),SUP,2024-02-29,2024-10-05
3591,Engineering,ENG,2024-02-29,2024-03-29
3592,Manufacturing ,MFG,2024-03-30,2024-05-18
3593,Dispatch,DIS,2024-05-19,2024-10-05
3594,Fan Motor - BHEL BPL,SUP,2023-05-27,2025-04-22
3595,ID Fan Motor,SUP,2023-05-27,2025-04-22
3596,Engineering  INDENTING AND PROCUREMENT ,ENG,2023-05-27,2024-02-22
3597,Manufacturing & TESTING ,MFG,2024-02-23,2025-02-21
3598, Dispatch ,DIS,2025-02-22,2025-03-23
3599,RECEIPT AT SITE ,REC,2025-03-24,2025-04-22
3600,FD Fan Motor,SUP,2023-05-27,2025-04-22
3601,Engineering  INDENTING AND PROCUREMENT ,ENG,2023-05-27,2024-02-22
3602,Manufacturing & TESTING ,MFG,2024-02-23,2025-02-21
3603, Dispatch ,DIS,2025-02-22,2025-03-23
3604,RECEIPT AT SITE ,REC,2025-03-24,2025-04-22
3605,PA Fan Motor,SUP,2023-05-27,2025-04-22
3606,Engineering  INDENTING AND PROCUREMENT ,ENG,2023-05-27,2024-02-22
3607,Manufacturing & TESTING ,MFG,2024-02-23,2025-02-21
3608, Dispatch ,DIS,2025-02-22,2025-03-23
3609,RECEIPT AT SITE ,REC,2025-03-24,2025-04-22
3610,Erection,ERC,2024-08-26,2026-04-30
3611,First  ID FAN,ERC,2024-08-26,2026-01-30
3612,Foundation preparation and corrections,CIV,2024-08-26,2024-09-02
3613,Blue matching between base plate & fan housing foot,ERC,2024-09-03,2024-09-20
3614,Suction chamber pre-assembly and Erection,ERC,2024-09-21,2024-10-14
3615,Diffuser pre-assembly undersection,ERC,2024-10-15,2024-11-07
3616,Installation of base plate and fan housing bottom,ERC,2024-11-08,2024-11-25
3617,Erection of rotor assembly and coupling,ERC,2024-11-26,2024-12-15
3618,Motor Erection  alignment & grouting,ERC,2024-12-16,2024-12-27
3619,Installation of Fan housing upper part,ERC,2024-12-28,2025-01-14
3620,Erection of dampers and actuators,ERC,2025-01-15,2025-01-30
3621,Erection of expansion joints,ERC,2025-01-31,2025-02-11
3622,Lube oil system Erection,ERC,2025-02-12,2025-03-13
3623,Final Alignment,ERC,2025-09-30,2025-10-06
3624,Box Up of Fan,ERC,2025-12-01,2025-12-02
3625,Insulation,ERC,2026-01-01,2026-01-30
3626,Second ID Fan,ERC,2024-09-26,2026-04-30
3627,Foundation preparation and corrections,CIV,2024-09-26,2024-10-03
3628,Blue matching between base plate & fan housing foot,ERC,2024-10-04,2024-10-21
3629,Suction chamber pre-assembly Miserection,ERC,2024-10-22,2024-11-14
3630,Diffuser pre-assembly Miserection,ERC,2024-11-15,2024-12-08
3631,Installation of base plate and fan housing bottom,ERC,2024-12-09,2024-12-26
3632,Erection of rotor assembly and coupling,ERC,2024-12-27,2025-01-15
3633,Miserection  alignment & grouting,ERC,2025-01-16,2025-01-27
3634,Installation of Fan housing upper part,ERC,2025-01-28,2025-02-14
3635,Erection of dampers and actuators,ERC,2025-02-15,2025-03-02
3636,Erection of expansion joints,ERC,2025-03-03,2025-03-14
3637,Lube oil Miserection,ERC,2025-03-15,2025-04-13
3638,Final Alignment,ERC,2025-10-11,2025-10-17
3639,Box Up of Fan,ERC,2025-12-31,2026-01-01
3640,Insulation,ERC,2026-04-01,2026-04-30
3641,First FD Fan,ERC,2025-01-19,2026-01-02
3642,Foundation preparation and correction,CIV,2025-01-19,2025-01-24
3643,Blue matching between base plate & fan housing foot,ERC,2025-01-25,2025-02-09
3644,Erection of suction chamber & fan housing bottom,ERC,2025-02-10,2025-02-27
3645,Erection & Alignment of Diffuser ASSY,ERC,2025-02-28,2025-03-17
3646,Silencer preassembly preassembly,ERC,2025-03-18,2025-04-16
3647,Erection of rotor ASSY and coupling,ERC,2025-04-17,2025-04-28
3648,ASSY  alignment and grouting,ERC,2025-04-29,2025-05-08
3649,Mounting of blades and blade gap measurement,ERC,2025-05-09,2025-05-28
3650,Erection of fan housing upper part,ERC,2025-05-29,2025-06-09
3651,Erection of dampers and actuators,ERC,2025-06-10,2025-06-17
3652,Assembly of expansion joints,ERC,2025-06-18,2025-06-25
3653,Lube oil ASSY,ERC,2025-06-26,2025-07-19
3654,Final Alignment,ERC,2025-09-25,2025-09-28
3655,Box Up of Fan,ERC,2025-12-06,2025-12-07
3656,Insulation,ERC,2025-12-10,2026-01-02
3657,Second FD Fan,ERC,2025-07-20,2026-02-27
3658, Foundation preparation and correction,CIV,2025-07-20,2025-07-25
3659, Blue matching between base plate & fan housing foot,ERC,2025-07-26,2025-08-10
3660,Erection of suction chamber & fan housing bottom,ERC,2025-08-11,2025-08-26
3661,Erection & Alignment of Diffuser ASSY,ERC,2025-08-27,2025-09-11
3662, Silencer preassembly preassembly,ERC,2025-09-12,2025-10-07
3663,Erection of rotor ASSY and coupling,ERC,2025-10-08,2025-10-19
3664, ASSY  alignment and grouting,ERC,2025-10-20,2025-10-27
3665, Mounting of blades and blade gap measurement,ERC,2025-10-28,2025-11-14
3666,Erection of fan housing upper part,ERC,2025-11-15,2025-11-26
3667,Erection of dampers and actuators,ERC,2025-11-27,2025-12-04
3668, Assembly of expansion joints,ERC,2025-12-05,2025-12-12
3669, Lube oil ASSY,ERC,2025-12-13,2025-12-30
3670,Final Alignment,ERC,2026-01-17,2026-01-20
3671,Box Up of Fan,ERC,2026-01-31,2026-02-01
3672,Insulation,ERC,2026-02-04,2026-02-27
3673,Second PA Fan,ERC,2025-02-18,2026-03-30
3674,Foundation preparation and correction,CIV,2025-02-18,2025-02-23
3675,Blue matching between base plate & fan housing foot,ERC,2025-02-24,2025-03-07
3676,Erection of suction chamber & fan housing bottom,ERC,2025-03-08,2025-03-23
3677,Erection & Alignment of Diffuser ASSY,ERC,2025-03-24,2025-04-08
3678,Silencer preassembly preassembly,ERC,2025-04-09,2025-05-08
3679,Erection of rotor ASSY and coupling,ERC,2025-03-24,2025-04-04
3680,ASSY  alignment and grouting,ERC,2025-03-24,2025-04-02
3681,Mounting of blades and blade gap measurement,ERC,2025-04-03,2025-04-20
3682,Erection of fan housing upper part,ERC,2025-04-21,2025-04-30
3683,Erection of dampers and actuators,ERC,2025-05-01,2025-05-08
3684,Assembly of expansion joints,ERC,2025-05-09,2025-05-16
3685,Lube oil ASSY,ERC,2025-05-17,2025-06-09
3686,Final Alignment,ERC,2025-09-20,2025-09-23
3687,Box Up of Fan,ERC,2026-02-12,2026-02-13
3688,Insulation,ERC,2026-03-07,2026-03-30
3689,First PA Fan,ERC,2025-08-22,2026-03-07
3690, Foundation preparation and correction,CIV,2025-08-22,2025-08-27
3691, Blue matching between base plate & fan housing foot,ERC,2025-08-28,2025-09-08
3692,Erection of suction chamber & fan housing bottom,ERC,2025-09-09,2025-09-24
3693,Erection & Alignment of Diffuser ASSY,ERC,2025-09-25,2025-10-10
3694, Silencer preassembly preassembly,ERC,2025-09-25,2025-10-24
3695,Erection of rotor ASSY and coupling,ERC,2025-09-25,2025-10-06
3696, ASSY  alignment and grouting,ERC,2025-10-07,2025-10-16
3697, Mounting of blades and blade gap measurement,ERC,2025-10-17,2025-11-03
3698,Erection of fan housing upper part,ERC,2025-11-04,2025-11-13
3699,Erection of dampers and actuators,ERC,2025-11-14,2025-11-21
3700, Assembly of expansion joints,ERC,2025-11-22,2025-11-29
3701, Lube oil ASSY,ERC,2025-11-30,2025-12-23
3702,Final Alignment,ERC,2026-01-12,2026-01-15
3703,Box Up of Fan,ERC,2026-01-28,2026-01-29
3704,Insulation,ERC,2026-02-20,2026-03-07
3705,SA FAN,ERC,2026-01-20,2026-04-21
3706, Foundation preparation and correction,CIV,2026-01-20,2026-01-31
3707, Blue matching between base plate & fan housing foot,ERC,2026-02-01,2026-02-20
3708,Erection of fan housing,ERC,2026-02-21,2026-03-12
3709,Erection of rotor ASSY and coupling,ERC,2026-03-13,2026-03-22
3710, ASSY  alignment and grouting,ERC,2026-03-23,2026-04-01
3711,Erection of dampers and actuators,ERC,2026-04-02,2026-04-21
3712,Electrostatic Precipitator,OTH,2022-11-16,2025-12-12
3713, REL of DWG for ESP Foundation,PE - RFC,2023-02-26,2023-02-26
3714,Civil,CIV,2023-02-27,2023-12-22
3715, ESP Foundations,CIV,2023-02-27,2023-12-22
3716, ESP Foundations- First 3 Pass Foundation,CIV,2023-02-27,2023-10-22
3717, Excavation & PCC of Footing,CIV,2023-02-27,2023-05-22
3718, Excavation & PCC of Footings of 1st Pass,CIV,2023-02-27,2023-04-02
3719, Excavation & PCC of Footings of 2nd Pass,CIV,2023-03-24,2023-04-27
3720, Excavation & PCC of Footings of 3rd Pass,CIV,2023-04-18,2023-05-22
3721, Footing Concreting Works,CIV,2023-03-09,2023-06-26
3722, Casting of Footings of 1st Pass,CIV,2023-03-09,2023-05-07
3723, Casting of Footings of 2nd Pass,CIV,2023-04-03,2023-06-01
3724, Casting of Footings of 3rd Pass,CIV,2023-04-28,2023-06-26
3725, Pedestal Concreting Works,CIV,2023-03-29,2023-09-09
3726, Casting of Pedestals (1st  2nd & Bolt Lift)-1st Pass,CIV,2023-03-29,2023-07-21
3727, Casting of Pedestals (1st  2nd & Bolt Lift)-Pass B,CIV,2023-04-23,2023-08-15
3728, Casting of Pedestals (1st  2nd & Bolt Lift)-Pass C,CIV,2023-05-18,2023-09-09
3729, Backfilling Works,CIV,2023-05-25,2023-10-07
3730, Backfilling & Compaction (First Pass),CIV,2023-05-25,2023-08-17
3731, Backfilling & Compaction (Second Pass),CIV,2023-06-19,2023-09-11
3732, Backfilling & Compaction(Third Pass),CIV,2023-07-15,2023-10-07
3733, Grade Slab Concreting Works (Paving Works),CIV,2023-06-09,2023-10-22
3734, Grade slab casting  Fixing of Earthing Mat Work complete in all respects for first Pass,CIV,2023-06-09,2023-09-01
3735, Grade slab casting  Fixing of Earthing Mat Work complete in all respects for Second Pass,CIV,2023-07-04,2023-09-26
3736, Grade slab casting  Fixing of Earthing Mat Work complete in all respects for Third Pass,CIV,2023-07-30,2023-10-22
3737, ESP Foundations- Balance Three Pass,CIV,2023-04-30,2023-12-22
3738, Excavation & PCC of Footings,CIV,2023-04-30,2023-07-23
3739, Excavation & PCC of Footings of 4th Pass,CIV,2023-04-30,2023-06-03
3740, Excavation & PCC of Footings of 5th Pass,CIV,2023-05-25,2023-06-28
3741, Excavation & PCC of Footings of 6th Pass,CIV,2023-06-19,2023-07-23
3742, Footing Concreting Works,CIV,2023-05-10,2023-08-27
3743, Casting of Footings of 4th Pass,CIV,2023-05-10,2023-07-08
3744, Casting of Footings of 5th Pass,CIV,2023-06-04,2023-08-02
3745, Casting of Footings of 6th Pass,CIV,2023-06-29,2023-08-27
3746, Pedestal Concreting Works,CIV,2023-05-30,2023-11-10
3747, Casting of Pedestals (1st  2nd & Bolt Lift)- 4th Pass,CIV,2023-05-30,2023-09-21
3748, Casting of Pedestals (1st  2nd & Bolt Lift)- 5th Pass,CIV,2023-06-24,2023-10-16
3749, Casting of Pedestals (1st  2nd & Bolt Lift)- 6th Pass,CIV,2023-07-19,2023-11-10
3750, Backfilling Works,CIV,2023-07-26,2023-12-07
3751, Backfilling & Compaction (4th Pass),CIV,2023-07-26,2023-10-18
3752, Backfilling & Compaction (5th Pass),CIV,2023-08-20,2023-11-12
3753, Backfilling & Compaction(6th Pass),CIV,2023-09-14,2023-12-07
3754, Grade Slab Concreting Works (Paving Works),CIV,2023-08-10,2023-12-22
3755, Grade slab casting  Fixing of Earthing Mat Work complete in all respects for 4th Pass,CIV,2023-08-10,2023-11-02
3756, Grade slab casting  Fixing of Earthing Mat Work complete in all respect for 5th Pass,CIV,2023-09-04,2023-11-27
3757, Grade slab casting  Fixing of Earthing Mat Work complete in all respect for 6th Pass,CIV,2023-09-29,2023-12-22
3758,Supply,SUP,2022-11-16,2025-02-02
3759,BAP - Foundation Materials (PGMA 79580),CIV,2022-11-16,2023-02-13
3760,Engineering,ENG,2022-11-16,2022-12-15
3761,Manufacturing ,MFG,2022-12-16,2023-01-04
3762,Dispatch,DIS,2023-01-05,2023-02-13
3763,BAP - Supporting structure for ESP (PGMA 79581),OTH,2022-11-16,2023-02-13
3764,Engineering,ENG,2022-11-16,2022-12-15
3765,Manufacturing ,MFG,2022-12-16,2023-01-04
3766,Dispatch,DIS,2023-01-05,2023-02-13
3767,BAP - ROLL/SLIDE SUPPORTS (PGMA 79501),SUP,2022-11-16,2023-02-13
3768,Engineering,ENG,2022-11-16,2022-12-15
3769,Manufacturing ,MFG,2022-12-16,2023-01-04
3770,Dispatch,DIS,2023-01-05,2023-02-13
3771,BAP - CASING STRUCTURE (PGMA 79548),SUP,2022-12-06,2023-03-05
3772,Engineering,ENG,2022-12-06,2023-01-04
3773,Manufacturing ,MFG,2023-01-05,2023-01-24
3774,Dispatch,DIS,2023-01-25,2023-03-05
3775,BAP - ELECTRICAL MISC ITEMS (PGMA 79541),SUP,2023-12-21,2025-02-02
3776,Engineering,ENG,2023-12-21,2024-02-18
3777,Manufacturing ,MFG,2024-02-19,2024-10-25
3778,Dispatch,DIS,2024-05-29,2025-02-02
3779,BAP - HOPPER RIDGES (PGMA 79543),SUP,2022-12-06,2023-03-05
3780,Engineering,ENG,2022-12-06,2023-01-04
3781,Manufacturing ,MFG,2023-01-05,2023-01-24
3782,Dispatch,DIS,2023-01-25,2023-03-05
3783,BAP - CASING SHELL/PANEL (PGMA 79549),SUP,2022-12-06,2023-02-13
3784,Engineering,ENG,2022-12-06,2023-01-04
3785,Manufacturing ,MFG,2023-01-05,2023-01-24
3786,Dispatch,DIS,2023-01-25,2023-02-13
3787,BAP - EP GALLERIES&STAIRS (PGMA 89610),SUP,2022-12-06,2023-03-15
3788,Engineering,ENG,2022-12-06,2023-01-04
3789,Manufacturing ,MFG,2023-01-05,2023-01-24
3790,Dispatch,SUP,2023-01-25,2023-03-15
3791,BAP - FLOOR GRILL AND STEP T (PGMA 89612),SUP,2022-12-06,2023-08-22
3792,Engineering,ENG,2022-12-06,2023-04-04
3793,Manufacturing ,MFG,2023-04-05,2023-07-03
3794,Dispatch,DIS,2023-07-04,2023-08-22
3795,BAP - ESP ROOF BEAM (PGMA 79528),SUP,2022-12-06,2023-03-15
3796,Engineering,ENG,2022-12-06,2023-01-04
3797,Manufacturing ,MFG,2023-01-05,2023-01-24
3798,Dispatch,DIS,2023-01-25,2023-03-15
3799,BAP - COL ELEC SUSPENSION(PGMA 79519),SUP,2022-12-06,2023-03-25
3800,Engineering,ENG,2022-12-06,2023-01-04
3801,Manufacturing ,MFG,2023-01-05,2023-02-13
3802,Dispatch,DIS,2023-02-14,2023-03-25
3803,BAP - EMIT SYST SUSPENSION(PGMA 79513),SUP,2022-12-06,2023-04-14
3804,Engineering,ENG,2022-12-06,2023-01-04
3805,Manufacturing ,MFG,2023-01-05,2023-02-13
3806,Dispatch,DIS,2023-02-14,2023-04-14
3807,BAP - INSULATOR SUPP PANEL(PGMA 79546),SUP,2022-12-06,2023-04-14
3808,Engineering,ENG,2022-12-06,2023-01-04
3809,Manufacturing ,MFG,2023-01-05,2023-02-13
3810,Dispatch,DIS,2023-02-14,2023-04-14
3811,BAP - EMIT SYS FRAME-TOP(PGMA 79521),SUP,2022-12-06,2023-04-14
3812,Engineering,ENG,2022-12-06,2023-01-04
3813,Manufacturing ,MFG,2023-01-05,2023-02-13
3814,Dispatch,DIS,2023-02-14,2023-04-14
3815,BAP - EMIT SYS FRAME-MIDLE(PGMA 79532),SUP,2022-12-06,2023-04-14
3816,Engineering,ENG,2022-12-06,2023-01-04
3817,Manufacturing ,MFG,2023-01-05,2023-02-13
3818,Dispatch,DIS,2023-02-14,2023-04-14
3819,BAP - EMIT SYS FRAME BOTOM(PGMA 79522),SUP,2022-12-26,2023-05-04
3820,Engineering,ENG,2022-12-26,2023-01-24
3821,Manufacturing ,MFG,2023-01-25,2023-03-05
3822,Dispatch,DIS,2023-03-06,2023-05-04
3823,BAP - SUPPORT INSULATORS(PGMA 79514),SUP,2022-12-26,2023-05-04
3824,Engineering,ENG,2022-12-26,2023-01-24
3825,Manufacturing ,MFG,2023-01-25,2023-03-05
3826,Dispatch,DIS,2023-03-06,2023-05-04
3827,BAP - COLLECTING ELECTRODE(PGMA 79520),SUP,2022-12-26,2023-05-04
3828,Engineering,ENG,2022-12-26,2023-01-24
3829,Manufacturing ,MFG,2023-01-25,2023-03-05
3830,Dispatch,DIS,2023-03-06,2023-05-04
3831,BAP - GAS DIST. ASSY(PGMA 79508),SUP,2022-12-26,2023-05-14
3832,Engineering,ENG,2022-12-26,2023-01-24
3833,Manufacturing ,MFG,2023-01-25,2023-03-05
3834,Dispatch,DIS,2023-03-06,2023-05-14
3835,BAP - ROOF PANEL ASSY(PGMA 79547),SUP,2022-12-26,2023-05-14
3836,Engineering,ENG,2022-12-26,2023-01-24
3837,Manufacturing ,MFG,2023-01-25,2023-03-05
3838,Dispatch,DIS,2023-03-06,2023-05-14
3839,BAP - INLET-OUTLET FUNNEL(PGMA 79550),SUP,2022-12-26,2023-06-13
3840,Engineering,ENG,2022-12-26,2023-01-24
3841,Manufacturing ,MFG,2023-01-25,2023-03-25
3842,Dispatch,DIS,2023-03-26,2023-06-13
3843,BAP - SPLITTER&GUIDE VANES(PGMA 79557),SUP,2022-12-26,2023-06-13
3844,Engineering,ENG,2022-12-26,2023-01-24
3845,Manufacturing ,MFG,2023-01-25,2023-03-25
3846,Dispatch,DIS,2023-03-26,2023-06-13
3847,BAP - SHOCK BARS(PGMA 79524),SUP,2022-12-26,2023-06-13
3848,Engineering,ENG,2022-12-26,2023-01-24
3849,Manufacturing ,MFG,2023-01-25,2023-03-25
3850,Dispatch,DIS,2023-03-26,2023-06-13
3851,BAP - COLL ELECT RAPP MECH(PGMA 79525),SUP,2022-12-26,2023-06-13
3852,Engineering,ENG,2022-12-26,2023-01-24
3853,Manufacturing ,MFG,2023-01-25,2023-03-25
3854,Dispatch,DIS,2023-03-26,2023-06-13
3855,BAP - GAS SCREEN-EP(PGMA 79511),SUP,2022-12-26,2023-06-23
3856,Engineering,ENG,2022-12-26,2023-01-24
3857,Manufacturing ,MFG,2023-01-25,2023-03-25
3858,Dispatch,DIS,2023-03-26,2023-06-23
3859,BAP - EMITTING ELECTRODES(PGMA 79515),SUP,2023-01-15,2023-07-13
3860,Engineering,ENG,2023-01-15,2023-02-13
3861,Manufacturing ,MFG,2023-02-14,2023-04-14
3862,Dispatch,DIS,2023-04-15,2023-07-13
3863,BAP - OUTER ROOF-EP(PGMA 79542),SUP,2023-01-15,2023-07-13
3864,Engineering,ENG,2023-01-15,2023-02-13
3865,Manufacturing ,MFG,2023-02-14,2023-04-14
3866,Dispatch,DIS,2023-04-15,2023-07-13
3867,BAP - HOPPER UPPER PART(PGMA 79544),SUP,2023-01-15,2023-08-12
3868,Engineering,ENG,2023-01-15,2023-02-13
3869,Manufacturing ,MFG,2023-02-14,2023-04-24
3870,Dispatch,DIS,2023-04-25,2023-08-12
3871,BAP - HOP MLD&LOWER PART(PGMA 79545),SUP,2023-01-15,2023-08-12
3872,Engineering,ENG,2023-01-15,2023-02-13
3873,Manufacturing ,MFG,2023-02-14,2023-04-24
3874,Dispatch,DIS,2023-04-25,2023-08-12
3875,BAP - APP PLATFORM-HOPPER(PGMA 79565),SUP,2023-01-15,2023-08-12
3876,Engineering,ENG,2023-01-15,2023-02-13
3877,Manufacturing ,MFG,2023-02-14,2023-04-24
3878,Dispatch,DIS,2023-04-25,2023-08-12
3879,BAP - EMIT ELECT RAPP MECH(PGMA 79516),SUP,2023-02-04,2023-09-11
3880,Engineering,ENG,2023-02-04,2023-03-05
3881,Manufacturing ,MFG,2023-03-06,2023-05-24
3882,Dispatch,DIS,2023-05-25,2023-09-11
3883,BAP - DRIVE ARGT. FOR EMIT.(PGMA 79517),SUP,2023-02-04,2023-09-11
3884,Engineering,ENG,2023-02-04,2023-03-05
3885,Manufacturing ,MFG,2023-03-06,2023-05-24
3886,Dispatch,DIS,2023-05-25,2023-09-11
3887,BAP - INSULATOR HOUSING AS(PGMA 79506),SUP,2023-02-04,2023-10-11
3888,Engineering,ENG,2023-02-04,2023-03-05
3889,Manufacturing ,MFG,2023-03-06,2023-06-13
3890,Dispatch,DIS,2023-06-14,2023-10-11
3891,BAP - PENT HOUSE FOR E P(PGMA 79555),SUP,2023-02-04,2023-10-11
3892,Engineering,ENG,2023-02-04,2023-03-05
3893,Manufacturing ,MFG,2023-03-06,2023-06-13
3894,Dispatch,DIS,2023-06-14,2023-10-11
3895,BAP - PENT HOUSE ROOFING SHE(PGMA 89614),SUP,2023-02-04,2023-10-11
3896,Engineering,ENG,2023-02-04,2023-03-05
3897,Manufacturing ,MFG,2023-03-06,2023-06-13
3898,Dispatch,DIS,2023-06-14,2023-10-11
3899,BAP - ESP ROOF HANDRAILS(PGMA 79526),SUP,2023-02-04,2023-10-11
3900,Engineering,ENG,2023-02-04,2023-03-05
3901,Manufacturing ,MFG,2023-03-06,2023-06-13
3902,Dispatch,DIS,2023-06-14,2023-10-11
3903,BAP - COLL ELEC RAPP DRIVE(PGMA 79526),SUP,2023-05-05,2024-01-09
3904,Engineering,ENG,2023-05-05,2023-06-03
3905,Manufacturing ,MFG,2023-06-04,2023-09-11
3906,Dispatch,DIS,2023-09-12,2024-01-09
3907,BAP - GD-RAPPING MECHANISM(PGMA 79509),SUP,2023-05-05,2024-01-09
3908,Engineering,ENG,2023-05-05,2023-06-03
3909,Manufacturing ,MFG,2023-06-04,2023-09-11
3910,Dispatch,DIS,2023-09-12,2024-01-09
3911,BAP - GD_DRIVE ARRANGEMENT(PGMA 79510),SUP,2023-05-05,2024-01-09
3912,Engineering,ENG,2023-05-05,2023-06-03
3913,Manufacturing ,MFG,2023-06-04,2023-09-11
3914,Dispatch,DIS,2023-09-12,2024-01-09
3915,BAP - INSPECTION DOORS(PGMA 79523),SUP,2023-05-05,2024-01-09
3916,Engineering,ENG,2023-05-05,2023-06-03
3917,Manufacturing ,MFG,2023-06-04,2023-09-11
3918,Dispatch,DIS,2023-09-12,2024-01-09
3919,BAP - CONTROL ROOM-INSERTS(PGMA 79559),SUP,2023-05-05,2024-01-09
3920,Engineering,ENG,2023-05-05,2023-06-03
3921,Manufacturing ,MFG,2023-06-04,2023-09-11
3922,Dispatch,DIS,2023-09-12,2024-01-09
3923,BAP - GEARED MOTORS FOR RAPP(PGMA 79531),SUP,2023-02-24,2023-12-10
3924,Engineering,ENG,2023-02-24,2023-07-23
3925,Manufacturing ,MFG,2023-07-24,2023-10-21
3926,Dispatch,DIS,2023-10-22,2023-12-10
3927,BAP - ESP-SUB-DELIVERY COMPO(PGMA 79505),SUP,2023-06-24,2024-03-09
3928,Engineering,ENG,2023-06-24,2023-07-23
3929,Manufacturing ,MFG,2023-07-24,2023-10-31
3930,Dispatch,DIS,2023-11-01,2024-03-09
3931,BAP - HEATING ELEMENTS(PGMA 79590),SUP,2023-10-02,2024-06-07
3932,Engineering,ENG,2023-10-02,2023-10-31
3933,Manufacturing ,MFG,2023-11-01,2024-02-08
3934,Dispatch,DIS,2024-02-09,2024-06-07
3935,BAP - ELECTRICAL SD COMPTS(PGMA 79530),SUP,2023-10-02,2024-06-07
3936,Engineering,ENG,2023-10-02,2023-10-31
3937,Manufacturing ,MFG,2023-11-01,2024-02-08
3938,Dispatch,DIS,2024-02-09,2024-06-07
3939,BAP - JUNCTION BOX & PUSH BU(PGMA 79537),SUP,2023-10-02,2024-06-07
3940,Engineering,ENG,2023-10-02,2023-10-31
3941,Manufacturing ,MFG,2023-11-01,2024-02-08
3942,Dispatch,DIS,2024-02-09,2024-06-07
3943,BAP - FIXING COMP. FOR ESP I(PGMA 79568),SUP,2023-08-13,2024-02-08
3944,Engineering,ENG,2023-08-13,2023-09-11
3945,Manufacturing ,MFG,2023-09-12,2023-12-20
3946,Dispatch,DIS,2023-12-21,2024-02-08
3947,BAP - WATER WASHING SYSTEM(PGMA 79566),SUP,2023-10-02,2024-07-07
3948,Engineering,ENG,2023-10-02,2023-10-31
3949,Manufacturing ,MFG,2023-11-01,2024-02-08
3950,Dispatch,DIS,2024-02-09,2024-07-07
3951,BAP -SUPPORT INSULATORS(PGMA 79514),SUP,2023-10-02,2024-07-07
3952,Engineering,ENG,2023-10-02,2023-10-31
3953,Manufacturing ,MFG,2023-11-01,2024-02-08
3954,Dispatch,DIS,2024-02-09,2024-07-07
3955,BAP - BAPCON & ACCESSORIES(PGMA 79578),SUP,2024-01-10,2024-09-05
3956,Engineering,ENG,2024-01-10,2024-02-08
3957,Manufacturing ,MFG,2024-02-09,2024-05-18
3958,Dispatch,DIS,2024-05-19,2024-09-05
3959,BAP - IOS PANEL(PGMA 79595),SUP,2024-02-29,2024-11-04
3960,Engineering,ENG,2024-02-29,2024-03-29
3961,Manufacturing ,MFG,2024-03-30,2024-07-07
3962,Dispatch,DIS,2024-07-08,2024-11-04
3963,BAP - INTERLOCKS(PGMA 79572),SUP,2024-02-29,2024-11-04
3964,Engineering,ENG,2024-02-29,2024-03-29
3965,Manufacturing ,MFG,2024-03-30,2024-07-07
3966,Dispatch,DIS,2024-07-08,2024-11-04
3967,BAP - ELECTRICALLY OPERTD HOIST & ACCESSORIES(PGMA 79573),SUP,2024-02-29,2024-11-04
3968,Engineering,ENG,2024-02-29,2024-03-29
3969,Manufacturing ,MFG,2024-03-30,2024-07-07
3970,Dispatch,DIS,2024-07-08,2024-11-04
3971,BAP - GUIDE VANES /GUIDE PLATES(PGMA 79589),SUP,2024-02-29,2024-11-04
3972,Engineering,ENG,2024-02-29,2024-03-29
3973,Manufacturing ,MFG,2024-03-30,2024-07-07
3974,Dispatch,DIS,2024-07-08,2024-11-04
3975,BAP - COMMISSIONING SPARES(PGMA 79988),SUP,2024-02-29,2024-11-04
3976,Engineering,ENG,2024-02-29,2024-03-29
3977,Manufacturing ,MFG,2024-03-30,2024-07-07
3978,Dispatch,DIS,2024-07-08,2024-11-04
3979,BAP - ESP HAND RAILS(PGMA 89611),SUP,2024-02-29,2024-11-04
3980,Engineering,ENG,2024-02-29,2024-03-29
3981,Manufacturing ,MFG,2024-03-30,2024-07-07
3982,Dispatch,DIS,2024-07-08,2024-11-04
3983,BAP - HSFG BOLTS(PGMA 89618),SUP,2023-03-06,2023-11-10
3984,Engineering,ENG,2023-03-06,2023-04-04
3985,Manufacturing ,MFG,2023-04-05,2023-07-13
3986,Dispatch,DIS,2023-07-14,2023-11-10
3987,BAP - OPACITY MONITOR & ACCE(PGMA 79574),SUP,2023-06-04,2024-02-08
3988,Engineering,ENG,2023-06-04,2023-07-03
3989,Manufacturing ,MFG,2023-07-04,2023-10-11
3990,Dispatch,DIS,2023-10-12,2024-02-08
3991,BAP - ASH LEVEL INDICATOR(PGMA 79563),SUP,2023-06-04,2024-02-08
3992,Engineering,ENG,2023-06-04,2023-07-03
3993,Manufacturing ,MFG,2023-07-04,2023-10-11
3994,Dispatch,DIS,2023-10-12,2024-02-08
3995,BAP - EP PERF TEST EQUIPT(PGMA 79561),SUP,2023-06-04,2024-02-08
3996,Engineering,ENG,2023-06-04,2023-07-03
3997,Manufacturing ,MFG,2023-07-04,2023-10-11
3998,Dispatch,DIS,2023-10-12,2024-02-08
3999,BAP - TOOLS & TACKLES(PGMA 79996),SUP,2023-06-04,2024-02-08
4000,Engineering,ENG,2023-06-04,2023-07-03
4001,Manufacturing ,MFG,2023-07-04,2023-10-11
4002,Dispatch,DIS,2023-10-12,2024-02-08
4003,BOI Items,SUP,2022-11-26,2024-06-07
4004, BAP - BOI Items: Cable Trays (79562),SUP,2023-02-24,2024-01-09
4005,Engineering,ENG,2023-02-24,2023-08-22
4006,Manufacturing ,MFG,2023-08-23,2023-11-20
4007,Dispatch,DIS,2023-11-21,2024-01-09
4008, BAP - BOI Items: Floor Grills (89613),SUP,2022-11-26,2023-09-01
4009,Engineering,ENG,2022-11-26,2023-05-14
4010,Manufacturing ,MFG,2023-05-15,2023-07-13
4011,Dispatch,DIS,2023-07-14,2023-09-01
4012, BAP - BOI Items: Cable (79560),SUP,2023-02-24,2024-01-09
4013,Engineering,ENG,2023-02-24,2023-08-22
4014,Manufacturing ,MFG,2023-08-23,2023-11-20
4015,Dispatch,DIS,2023-11-21,2024-01-09
4016,BAP - BOI Items: Gear Motor (79531),SUP,2023-02-24,2023-12-10
4017,Engineering,ENG,2023-02-24,2023-07-23
4018,Manufacturing ,MFG,2023-07-24,2023-10-21
4019,Dispatch,DIS,2023-10-22,2023-12-10
4020,BAP - BOI Items: Inter Locks (79972),SUP,2023-07-24,2024-06-07
4021,Engineering,ENG,2023-07-24,2023-12-20
4022,Manufacturing ,MFG,2023-12-21,2024-04-18
4023,Dispatch,DIS,2024-04-19,2024-06-07
4024,BAP - BOI Items: Insulation wool (79567),SUP,2023-07-24,2024-06-07
4025,Engineering,ENG,2023-07-24,2024-01-19
4026,Manufacturing ,MFG,2024-01-20,2024-04-18
4027,Dispatch,DIS,2024-04-19,2024-06-07
4028,BAP - BOI Items: Aluminium Cladding Sheet (89615),SUP,2023-01-05,2023-10-11
4029,Engineering,ENG,2023-01-05,2023-06-23
4030,Manufacturing ,MFG,2023-06-24,2023-08-22
4031,Dispatch,DIS,2023-08-23,2023-10-11
4032,BAP - BOI Items: PANEL TYPE HOPPER HEATERS & ACCESSORIES (79591),SUP,2023-06-04,2024-06-07
4033,Engineering,ENG,2023-06-04,2023-10-31
4034,Manufacturing ,MFG,2023-11-01,2024-04-18
4035,Dispatch,DIS,2024-04-19,2024-06-07
4036,BAP - BOI Items: LT SWITCH BOARD (79577),SUP,2023-07-24,2024-04-28
4037,Engineering,ENG,2023-07-24,2023-12-20
4038,Manufacturing ,MFG,2023-12-21,2024-03-09
4039,Dispatch,DIS,2024-03-10,2024-04-28
4040,Erection,ERC,2023-10-23,2025-12-12
4041, First 3 Nos Pass,ERC,2023-10-23,2025-09-27
4042,Foundation checking and corrections,CIV,2023-10-23,2023-10-27
4043,Erection: Supporting structures,ERC,2023-10-29,2024-02-05
4044,Erection: Slide supports & Casing Structure,ERC,2023-11-28,2024-03-06
4045,Erection: Casing shell,ERC,2023-12-28,2024-04-05
4046,Erection: ESP Galleries & stairs,ERC,2024-02-06,2024-10-12
4047,Erection: ESP Roof handrails,ERC,2024-10-13,2025-01-10
4048,Erection: Hopper ridges,ERC,2024-01-17,2024-04-15
4049,Erection: ESP Roof panels,ERC,2024-02-16,2024-05-15
4050,Erection: Col & Emitting Ele suspension,ERC,2024-02-26,2024-05-25
4051,Erection: Insulator support panel,ERC,2024-03-27,2024-06-24
4052,Erection: Emit system frame-top  Middle & Bottom,ERC,2024-04-26,2024-07-24
4053,Erection: Gas dist. Assy,ERC,2024-05-26,2024-08-08
4054,Erection: Inlet & outlet funnels,ERC,2024-05-26,2024-08-23
4055,Erection: Splitters & guide vanes,ERC,2024-05-26,2024-08-23
4056,Erection: Col Electrode & Shock Bar,ERC,2024-06-25,2024-10-02
4057,Erection: Roof panel ASSY,ERC,2024-07-25,2024-10-22
4058,Erection: Pent house & Outer Roof for ESP,ERC,2024-09-08,2024-12-06
4059,Erection: Hopper upperpart,ERC,2024-10-08,2025-04-05
4060,Erection: Hopper middle& lower part,ERC,2024-11-07,2025-05-05
4061,Erection: Gas screen,ERC,2025-02-05,2025-04-20
4062,Erection: Hopper App Platform,ERC,2025-02-05,2025-08-03
4063,Erection: Insulator housing,ERC,2025-04-06,2025-07-04
4064,Erection of Inspection doors,ERC,2025-06-05,2025-07-04
4065,Erection of HV Rectifier transformer,ERC,2025-06-05,2025-08-03
4066,Erection of Sub-delivery comp,ERC,2025-07-05,2025-08-03
4067,Erection of Electrically operated hoists,ERC,2025-06-05,2025-09-02
4068,Erection of Col Rapping Mech,ERC,2025-03-07,2025-09-02
4069,Erection of Emit Rapping Mech,ERC,2025-04-06,2025-09-12
4070,Erection of GD-rapping Mech,ERC,2025-07-05,2025-08-18
4071,Erection of Col rapping drive,ERC,2025-07-05,2025-08-18
4072,Erection of Emit rapping drive,ERC,2025-07-05,2025-08-18
4073,Erection of GD drive arrangement,ERC,2025-08-19,2025-09-17
4074,Erection of Geared motors for rap,ERC,2025-07-05,2025-09-02
4075,Erection of Support insulator,ERC,2025-07-05,2025-09-02
4076,Erection of Emit system suspension,ERC,2025-07-05,2025-09-02
4077,Erection of Emit electrodes,ERC,2025-07-05,2025-09-02
4078,Erection of Heating elements,ERC,2025-07-05,2025-08-03
4079,Erection of Water washing system,ERC,2025-07-05,2025-08-18
4080,Erection of Interlocks,ERC,2025-07-05,2025-08-03
4081,Erection of Ash level indicator,ERC,2025-07-05,2025-08-03
4082,Erection of ESP Perf test equipments,ERC,2025-08-04,2025-08-18
4083,Erection of Insulation wool,ERC,2025-05-06,2025-09-27
4084, Last 3 Nos Pass,ERC,2023-12-23,2025-12-12
4085,Foundation checking and corrections,CIV,2023-12-23,2023-12-27
4086,Erection of Supporting structures,ERC,2023-12-29,2024-04-06
4087,Erection of Slide supports & Casing Structure,ERC,2024-01-28,2024-05-06
4088,Erection of Casing shell,ERC,2024-02-27,2024-06-05
4089,Erection of ESP Galleries & stairs,ERC,2024-04-07,2024-12-12
4090,Erection of ESP Roof handrails,ERC,2024-12-13,2025-03-12
4091,Erection of Hopper ridges,ERC,2024-03-18,2024-06-15
4092,Erection of ESP Roof panels,ERC,2024-04-17,2024-07-15
4093,Erection of Col Ele suspension,ERC,2024-04-27,2024-07-25
4094,Erection of Insulator support panel,ERC,2024-05-27,2024-08-24
4095,Erection of Emit system frame-top  Middle & Bottom,ERC,2024-06-26,2024-09-23
4096,Erection of Gas dist. Assy,ERC,2024-07-26,2024-10-08
4097,Erection of Inlet & outlet funnels,ERC,2024-07-26,2024-10-23
4098,Erection of Splitters & guide vanes,ERC,2024-07-26,2024-10-23
4099,Erection of Col Electrode & Shock Bar,ERC,2024-08-25,2024-12-02
4100,Erection of Roof panel ASSY,ERC,2024-09-24,2024-12-22
4101,Erection of Pent house & Outer Roof for ESP,ERC,2024-11-08,2025-02-05
4102,Erection of Hopper upperpart,ERC,2024-12-08,2025-06-05
4103,Erection of Hopper middle& lower part,ERC,2025-01-07,2025-07-05
4104,Erection of Gas screen,ERC,2025-04-07,2025-06-20
4105,Erection of Hopper App Platform,ERC,2025-04-07,2025-10-03
4106,Erection of Insulator housing,ERC,2025-06-06,2025-09-03
4107,Erection of Inspection doors,ERC,2025-08-05,2025-09-03
4108,Erection of HV Rectifier transformer,ERC,2025-08-05,2025-10-03
4109,Erection of Sub-delivery comp,ERC,2025-09-04,2025-10-03
4110,Erection of Electrically operated hoists,ERC,2025-08-05,2025-11-02
4111,Erection of Col Rapping Mech,ERC,2025-05-07,2025-11-02
4112,Erection of Emit Rapping Mech,ERC,2025-06-06,2025-11-12
4113,Erection of GD-rapping Mech,ERC,2025-09-04,2025-10-18
4114,Erection of Col rapping drive,ERC,2025-09-04,2025-10-18
4115,Erection of Emit rapping drive,ERC,2025-09-04,2025-10-18
4116,Erection of GD drive arrangement,ERC,2025-10-19,2025-11-17
4117,Erection of Geared motors for rap,ERC,2025-10-19,2025-12-12
4118,Erection of Support insulator,ERC,2025-10-14,2025-12-07
4119,Erection of Emit system suspension,ERC,2025-10-09,2025-12-02
4120,Erection of Emit electrodes,ERC,2025-10-04,2025-11-27
4121,Erection of Heating elements,ERC,2025-09-29,2025-10-28
4122,Erection of Water washing system,ERC,2025-09-29,2025-11-12
4123,Erection of Interlocks,ERC,2025-09-29,2025-10-28
4124,Erection of Ash level indicator,ERC,2025-09-29,2025-10-28
4125,Erection of ESP Perf test equipments,ERC,2025-10-29,2025-11-12
4126,Erection of Insulation wool,ERC,2025-07-06,2025-11-27
4127,Turbo-generator & Auxiliaries,OTH,2022-09-27,2026-04-20
4128,Basic engineering,ENG,2022-10-27,2023-02-23
4129,PH -Civil / Structural Steel Work,OTH,2023-05-04,2025-12-08
4130,REL OF DWG STG Foundation,PE - RFC,2023-05-04,2023-05-04
4131,Rel of DWG for PH BLDG. PH BLDG.COLS FDN ON ROW A to E ,PE - RFC,2023-06-23,2023-06-23
4132,Rel of DWG for PH BLDG. (AB BAY)- INTERMEDIATE COLS. FDN,PE - RFC,2023-07-27,2023-07-27
4133,Rel of DWG for PH BLDG.- CEP PIT,PE - RFC,2023-09-07,2023-09-07
4134,Rel of DWG for PH BLDG-BC BAY INTERMEDIATE COLUMN FOUNDATION,PE - RFC,2023-09-07,2023-09-07
4135,Rel of DWG for PH BLDG. - OIL CANAL,PE - RFC,2023-12-28,2023-12-28
4136,Rel of DWG for PH BLDG.-C.W. PIT,PE - RFC,2024-02-22,2024-02-22
4137,Rel of DWG for PH BLDG.(AB BAY-TG)- FL @EL +8.5M,PE - RFC,2024-05-02,2024-05-02
4138,Rel of DWG for PH BLDG. (AB BAY-CR)- FL @ EL 17.0M,PE - RFC,2024-05-02,2024-05-02
4139,Rel of DWG for PH BLDG (AB BAY)- METAL DECK ROOF,PE - RFC,2024-05-16,2024-05-16
4140,Rel of DWG for PH BLDG.(AB BAY)- FL @EL +3.5M,PE - RFC,2024-05-16,2024-05-16
4141,Rel of DWG for PH BLDG. (AB BAY-TG)- FL @ EL 17.0M,PE - RFC,2024-05-16,2024-05-16
4142,Rel of DWG for PH BLDG.(BC BAY-TG) - FL @EL + 25.5M,PE - RFC,2024-05-23,2024-05-23
4143,Rel of DWG for PH BLDG.(BC BAY-CR) - FL @EL + 34.0M,PE - RFC,2024-06-06,2024-06-06
4144,Rel of DWG for PH BLDG.(BC BAY-TG)- EL. +8.50 M,PE - RFC,2024-06-13,2024-06-13
4145,Rel of DWG for PH BLDG.(BC BAY-TG)- FL @ EL 17.0M,PE - RFC,2024-06-27,2024-06-27
4146,Rel of DWG for PH BLDG. (AB BAY-CR)- FL @ EL 12M,PE - RFC,2024-07-11,2024-07-11
4147,Rel of DWG for PH BLDG.(BC BAY-TG) - FL @EL + 5.0M,PE - RFC,2024-07-18,2024-07-18
4148,Rel of DWG for PH BLDG.(AB BAY-CR)- FL @EL +8.5M,PE - RFC,2024-08-08,2024-08-08
4149,Rel of DWG for PH BLDG. - FL @ EL + 0.0M,PE - RFC,2024-08-15,2024-08-15
4150,Rel of DWG for PH BLDG.(BCDEFGH BAY-CR)- FL @ EL 17M,PE - RFC,2024-08-15,2024-08-15
4151,Rel of DWG for PH BLDG.(BCDEFGH BAY-CR)- FL @ EL 8.5M,PE - RFC,2024-08-22,2024-08-22
4152,Rel of DWG for PH BLDG.(BCDEFGH BAY-CR)- FL @ EL 25.5 M,PE - RFC,2024-08-22,2024-08-22
4153,Rel of DWG for PH BLDG.(BCDEFGH BAY-CR)- @ EL 29.5M,PE - RFC,2024-08-29,2024-08-29
4154,STG Foundation (TG Raft & Deck),CIV,2023-05-05,2024-04-07
4155,Civil Work,CIV,2023-05-05,2024-04-07
4156,EXCAVATION & PCC,CIV,2023-05-05,2023-05-29
4157,RCC TG RAFT,CIV,2023-05-30,2023-08-31
4158,COLUMN & DECK CASTING WORK WITH STAGING,CIV,2023-09-01,2024-04-07
4159,COLUMN CASTING,CIV,2023-09-01,2024-02-07
4160,TG DECK CASTING WORK,CIV,2024-02-08,2024-04-07
4161,PH AB & BC bay civil works,CIV,2023-06-27,2023-12-04
4162,Civil Work,CIV,2023-06-27,2023-12-04
4163,Excavation & PCC,CIV,2023-06-27,2023-09-11
4164,For A row,CIV,2023-06-27,2023-07-31
4165,For B row,CIV,2023-07-18,2023-08-21
4166,For C row,CIV,2023-08-08,2023-09-11
4167,Raft casting,CIV,2023-07-12,2023-10-06
4168,For A row,CIV,2023-07-12,2023-08-25
4169,For B row,CIV,2023-08-02,2023-09-15
4170,For C row,CIV,2023-08-23,2023-10-06
4171,Pedestals (Till Bolt Lift),CIV,2023-08-11,2023-11-10
4172,For A row,CIV,2023-08-11,2023-10-09
4173,For B row,CIV,2023-08-22,2023-10-20
4174,For C row,CIV,2023-09-12,2023-11-10
4175,Backfilling for AB Bay,CIV,2023-09-25,2023-11-23
4176,Backfilling for BC Bay,CIV,2023-10-06,2023-12-04
4177,D  E  F bay civil Work,CIV,2023-08-26,2024-01-02
4178,Civil Work,CIV,2023-08-26,2023-09-21
4179,Excavation & PCC for D row Columns,CIV,2023-09-12,2023-09-21
4180,Excavation & PCC for E row Columns,CIV,2023-08-26,2023-09-04
4181,Excavation & PCC for F row Columns,CIV,2023-08-26,2023-09-04
4182,Foundations,CIV,2023-09-05,2023-10-21
4183,Casting of Raft  footings  columns Till Bolt Lift for D Row,CIV,2023-09-22,2023-10-21
4184,Casting of Raft  footings  columns Till Bolt Lift for E Row,CIV,2023-09-05,2023-10-04
4185,Casting of Raft  footings  columns Till Bolt Lift for F Row,CIV,2023-09-05,2023-10-04
4186,Backfilling Works,CIV,2023-10-05,2024-01-02
4187,PH - Structural Steel Work(Supply by Trichy),OTH,2023-07-02,2025-12-08
4188,Civil Work,OTH,2023-07-02,2024-08-24
4189,Columns Fabrication works,CIV,2023-07-02,2023-10-29
4190,Structural steel fabrication A row &Dispatch,DIS,2023-07-02,2023-08-15
4191,Structural steel fabrication B row &Dispatch,DIS,2023-07-27,2023-09-09
4192,Structural steel fabrication C row &Dispatch,DIS,2023-08-21,2023-10-04
4193,Structural steel fabrication Intermediate columns &Dispatch,DIS,2023-09-15,2023-10-29
4194,Column Erection works,ERC,2023-10-12,2024-03-09
4195,Structural steel Erection A row,ERC,2023-10-12,2023-12-10
4196,Structural selection B row,ERC,2023-11-06,2024-01-04
4197,Structural selection C row,ERC,2023-12-01,2024-01-29
4198,Structural selection Intermediate columns,ERC,2023-12-21,2024-02-18
4199,Grouting works,CIV,2023-12-11,2024-03-09
4200,FABRICATION of floor beams(Supply-Trichy),SUP,2023-10-05,2024-05-06
4201,Fabrication of floor beam & bracings @ EL 3.5 mtr &Dispatch,DIS,2023-10-05,2023-11-03
4202,Fabrication of floor beam & bracings @ EL 5.0 mtr &Dispatch,DIS,2023-10-20,2023-11-18
4203,Fabrication of floor beam & bracings @ EL 8.5 mtr &Dispatch,DIS,2023-11-04,2023-12-03
4204,Fabrication of floor beam & bracings @ EL 12 mtr &Dispatch,DIS,2023-11-19,2023-12-18
4205,Fabrication of floor beam & bracings @ EL 17.00 mtr &Dispatch,DIS,2023-12-04,2024-01-02
4206,Fabrication of floor beam & bracings @ EL 25.50 mtr &Dispatch,DIS,2023-12-19,2024-01-17
4207,Fabrication of floor beam & bracings @ EL 29 mtr &Dispatch,DIS,2024-02-22,2024-03-22
4208,Fabrication of floor beam & bracings @ EL 13.5 mtr &Dispatch,DIS,2024-03-08,2024-04-06
4209,Fabrication of floor beam & bracings @ EL 34.00 mtr &Dispatch,DIS,2024-03-23,2024-04-21
4210,Fabrication of AB bay Roof trusses & Elevation bracings &Dispatch,DIS,2024-01-03,2024-03-07
4211,Dispatch of Fabricated beams,DIS,2023-10-10,2024-05-06
4212,Erection of Floor Beams,ERC,2023-11-06,2024-06-08
4213,Erection of floor beam & bracings @ EL 3.5 mtr,ERC,2023-11-06,2023-12-05
4214,Erection of floor beam & bracings @ EL 5.0 mtr,ERC,2023-12-06,2024-01-04
4215,Erection of floor beam & bracings @ EL 8.5 mtr,ERC,2024-01-05,2024-02-03
4216,Erection of floor beam & bracings @ EL 12 mtr,ERC,2024-02-04,2024-02-15
4217,Erection of floor beam & bracings @ EL 17.0 mtr,ERC,2024-02-16,2024-02-27
4218,Erection of floor beam & bracings @ EL 25.50 mtr,ERC,2024-02-28,2024-03-10
4219,Erection of floor beam & bracings @ EL 29 mtr,ERC,2024-03-11,2024-04-09
4220,Erection of floor beam & bracings @ EL 13.5 mtr,ERC,2024-04-10,2024-05-09
4221,Erection of floor beam & bracings @ EL 34.00 mtr,ERC,2024-05-10,2024-06-08
4222,Erection of Roof trusses along with elevation Bracing (Grid A  B & C),ERC,2024-03-11,2024-03-22
4223,Cladding along A row,ERC,2024-04-07,2024-06-15
4224,Cladding along C row,ERC,2024-05-17,2024-07-25
4225,Cladding along Gable end,ERC,2024-07-26,2024-08-24
4226,PH Slab Casting & Roof,CIV,2024-06-19,2025-03-15
4227,RCC slab @ + 3.5 Mtr Level,CIV,2025-02-14,2025-03-15
4228,RCC slab @ + 5.0 Mtr Level,CIV,2025-01-15,2025-02-13
4229,RCC slab @ + 8.5 Mtr Level,CIV,2024-12-16,2025-01-14
4230,RCC slab @ + 12.0 Mtr Level,CIV,2024-11-16,2024-12-15
4231,RCC slab @ + 17.0 Mtr Level,CIV,2024-10-17,2024-11-15
4232,RCC slab @ + 34.00 Mtr Level,CIV,2024-09-17,2024-10-16
4233,RCC slab @ + 25.50 Mtr Level,CIV,2024-08-18,2024-09-16
4234,RCC slab @ + 13.50 Mtr Level,CIV,2024-07-19,2024-08-17
4235,RCC slab @ + 34.00 Mtr Level,CIV,2024-06-19,2024-07-18
4236,Grade slab level 0.00 Mtr,CIV,2024-08-16,2025-12-08
4237,RCC Grade Slab AB  BC  CD bay,CIV,2024-08-16,2024-11-13
4238,RCC Grade Slab of remaining bays,CIV,2024-11-14,2024-12-13
4239,RCC Misc. Foundation,CIV,2024-12-14,2025-03-13
4240,Brickwork,CIV,2025-03-14,2025-06-11
4241,Plaster,OTH,2025-06-12,2025-09-09
4242,Flooring,CIV,2025-09-10,2025-12-08
4243,CW pit,CIV,2025-03-16,2025-07-24
4244,Excavation & PCC,CIV,2025-03-16,2025-05-09
4245,RCC Raft,CIV,2025-05-10,2025-06-04
4246,RCC Pipe Support Pedestal,CIV,2025-06-05,2025-06-19
4247,RCC Wall,CIV,2025-06-20,2025-07-24
4248,Oil Canal,CIV,2024-03-26,2025-05-14
4249,Oil Canal Columns  Beam Erection & welding work,CIV,2024-03-26,2024-05-09
4250,Platform for Oil canal trench,CIV,2024-05-10,2024-06-28
4251,RCC Trench Slab,CIV,2024-11-16,2025-01-29
4252,RCC Trench walls,CIV,2025-02-14,2025-05-14
4253,Steam Turbine,OTH,2022-09-27,2026-04-20
4254,Civil,CIV,2024-12-31,2025-07-08
4255,MOT Room,CIV,2024-12-31,2024-12-31
4256,LPBP Foundation,CIV,2025-06-14,2025-07-08
4257, LPBP Hydraulic Unit foundations: RCC,CIV,2025-06-14,2025-06-28
4258, LPBP Hydraulic Unit foundations: Finishing works,CIV,2025-06-29,2025-07-08
4259,Supply,SUP,2022-09-27,2025-09-28
4260,TG embedment,SUP,2022-09-27,2023-12-25
4261,Engineering,ENG,2022-09-27,2023-06-13
4262,Manufacturing,MFG,2023-06-14,2023-11-25
4263,Dispatch,DIS,2023-11-26,2023-12-25
4264, Base Plate Assembly,SUP,2022-09-27,2024-05-13
4265,Engineering,ENG,2022-09-27,2023-09-26
4266,Manufacturing,MFG,2023-09-27,2024-03-29
4267,Dispatch,DIS,2024-03-30,2024-05-13
4268, Bearing Pedestals (Front  HP-IP  IP-LP & LP-Gen.),SUP,2022-09-27,2024-05-13
4269,Engineering,ENG,2022-09-27,2023-09-26
4270,Manufacturing,MFG,2023-09-27,2024-03-29
4271,Dispatch,DIS,2024-03-30,2024-05-13
4272, LP Inner Casing,SUP,2022-09-27,2024-10-12
4273,Engineering,ENG,2022-09-27,2023-10-16
4274,Manufacturing,MFG,2023-10-17,2024-07-29
4275,Dispatch,DIS,2024-07-30,2024-10-12
4276, LP Outer Casing,SUP,2022-09-27,2024-10-12
4277,Engineering,ENG,2022-09-27,2023-10-16
4278,Manufacturing,MFG,2023-10-17,2024-07-29
4279,Dispatch,DIS,2024-07-30,2024-10-12
4280, LP Rotor,SUP,2022-09-27,2024-10-27
4281,Engineering,ENG,2022-09-27,2023-11-02
4282,Manufacturing,MFG,2023-11-03,2024-09-27
4283,Dispatch,DIS,2024-09-28,2024-10-27
4284, HP Turbine,SUP,2022-09-27,2024-12-21
4285,Engineering,ENG,2022-09-27,2023-11-10
4286,Manufacturing,MFG,2023-11-11,2024-12-01
4287,Dispatch,DIS,2024-12-02,2024-12-21
4288, IP Turbine,SUP,2022-09-27,2025-01-07
4289,Engineering,ENG,2022-09-27,2023-11-04
4290,Manufacturing,MFG,2023-11-05,2024-09-27
4291,Dispatch,DIS,2024-09-28,2025-01-07
4292, Cross Around Pipe,SUP,2022-09-27,2024-11-12
4293,Engineering,ENG,2022-09-27,2023-11-04
4294,Manufacturing,MFG,2023-11-05,2024-09-27
4295,Dispatch,DIS,2024-09-28,2024-11-12
4296,ESV & CV and Overload Valve,SUP,2022-09-27,2025-01-12
4297,Engineering,ENG,2022-09-27,2023-11-10
4298,Manufacturing,MFG,2023-11-11,2024-11-27
4299,Dispatch,DIS,2024-11-28,2025-01-12
4300,BOI- LP by Pass LPBP(HWR),SUP,2023-10-22,2025-07-03
4301,NIT,ENQ,2023-10-22,2023-10-22
4302,Ordering,ORD,2023-10-23,2024-05-09
4303,Manufacturing,MFG,2024-05-10,2025-03-05
4304,Dispatch,DIS,2025-03-06,2025-07-03
4305,BOI- Turbine Integral piping TIP(PC-Chennai),SUP,2023-10-22,2025-09-28
4306,NIT,ENQ,2023-10-22,2023-10-22
4307,Ordering,ORD,2023-10-23,2024-04-26
4308,Manufacturing,MFG,2024-04-27,2025-05-31
4309,Dispatch,DIS,2025-06-01,2025-09-28
4310,BOI- Oil Module(HWR),SUP,2023-10-22,2025-07-03
4311,NIT,ENQ,2023-10-22,2023-10-22
4312,Ordering,ORD,2023-10-23,2024-05-09
4313,Manufacturing,MFG,2024-05-10,2025-03-05
4314,Dispatch,DIS,2025-03-06,2025-07-03
4315,IV & CV,SUP,2022-09-27,2025-01-22
4316,Engineering,ENG,2022-09-27,2023-11-10
4317,Manufacturing,MFG,2023-11-11,2024-12-07
4318,Dispatch,DIS,2024-12-08,2025-01-22
4319,Suspension of LPBP Valves,SUP,2022-09-27,2025-01-22
4320,Engineering,ENG,2022-09-27,2024-01-04
4321,Manufacturing,MFG,2024-01-05,2024-12-07
4322,Dispatch,DIS,2024-12-08,2025-01-22
4323,Instruments & JBs,SUP,2022-09-27,2025-04-13
4324,Engineering,ENG,2022-09-27,2024-02-13
4325,Manufacturing,MFG,2024-02-14,2025-02-27
4326,Dispatch,DIS,2025-02-28,2025-04-13
4327,TG C&I Package,SUP,2022-09-27,2025-04-14
4328,Engineering,ENG,2022-09-27,2024-02-13
4329,Manufacturing,MFG,2024-02-14,2025-02-10
4330,Dispatch,DIS,2025-02-11,2025-04-14
4331,Compensator,SUP,2022-09-27,2024-12-12
4332,Engineering,ENG,2022-09-27,2023-12-05
4333,Manufacturing,MFG,2023-12-06,2024-10-28
4334,Dispatch,DIS,2024-10-29,2024-12-12
4335,Balance BOIs,SUP,2023-10-22,2025-03-25
4336,NIT,ENQ,2023-10-22,2023-10-22
4337,Ordering,ORD,2023-10-23,2024-07-28
4338,Manufacturing,MFG,2023-10-23,2024-11-25
4339,Dispatch,DIS,2024-11-26,2025-03-25
4340,Erection,ERC,2024-08-07,2026-04-20
4341, PEDESTAL RELATED WORK,ERC,2024-08-07,2024-12-05
4342,Preparation of foundation  making of required Platform & Anchor Plate blue matching,ERC,2024-08-07,2024-09-14
4343,Cleaning LP bearing Pedestals & LP base Plates  Levelling & Centering,ERC,2024-09-15,2024-09-27
4344,Cleaning of IP pedestals  assembly and alignment,ERC,2024-09-28,2024-10-10
4345,Cleaning of HP pedestals  assembly and alignment,ERC,2024-10-11,2024-10-23
4346,Grouting of all pedestals after final alignment,ERC,2024-10-24,2024-11-05
4347,Stretching of foundation bolts and locking of nuts,ERC,2024-12-01,2024-12-05
4348, HP TURBINE,ERC,2024-12-22,2025-02-10
4349, HP Turbine: Placement of HP module on temp packers,ERC,2024-12-22,2024-12-27
4350, HP Turbine: Clean main and aux HP bearing  prepare of assembly and installation,ERC,2024-12-28,2025-01-08
4351, HP Turbine: Placing HP module in position  levelling & centering,ERC,2025-01-09,2025-01-26
4352, HP Turbine: Alignment of HP turbine casing radially and axially to the HP shaft & Checking and recordings of journal and coupling dimensions and runout,ERC,2025-01-27,2025-02-10
4353, IP TURBINE,ERC,2025-02-11,2025-04-07
4354, IP TURBINE: Placement of IP turbine on the temp packers,ERC,2025-02-11,2025-02-16
4355, IP TURBINE: clean main and aux IP bearings  preparation for assembly and installation,ERC,2025-02-17,2025-02-28
4356, IP TURBINE: Setting down IP shaft in the bearings and alignment of the shaft,ERC,2025-03-01,2025-03-20
4357, IP TURBINE: Alignment of the IP casing radially and axially to the IP shaft,ERC,2025-03-21,2025-04-07
4358, LP TURBINE,ERC,2024-11-08,2025-05-19
4359, LP TURBINE: Placement of Longitudinal Girders and levelling  alignment,ERC,2024-11-08,2024-11-27
4360, LP TURBINE: Placement & alignment of LP end walls,ERC,2024-11-28,2024-12-17
4361, LP TURBINE: Fit up and welding of bracing pipes for LP outer casings,ERC,2024-12-18,2025-01-06
4362, LP TURBINE: Placement  alignment  fit up and welding of LP inner-outer casing bottom half,ERC,2025-01-07,2025-02-01
4363, LP TURBINE: Temporary mounting of expansion joint,ERC,2025-02-02,2025-02-11
4364, LP TURBINE: Placement and alignment of LP inner-inner casing bottom half,ERC,2025-02-12,2025-02-26
4365, LP TURBINE: Erection of LP shaft sealing assembly on the bearing,ERC,2025-02-27,2025-03-08
4366, LP TURBINE: Installation of the LP rotor on the main and aux bearings and alignment,ERC,2025-03-09,2025-03-19
4367, LP TURBINE: Checking radial and axial clearances of the rotor with the bearing,ERC,2025-03-20,2025-03-29
4368, LP TURBINE: Placement of upper half of the shaft sealing assembly,ERC,2025-03-30,2025-04-11
4369, LP TURBINE: Mounting of LP top half of guide blade carrier,ERC,2025-04-12,2025-04-21
4370, LP TURBINE: Checking of the radial and axial clearances of LP inner casing,ERC,2025-04-22,2025-05-01
4371, LP TURBINE: Placement and alignment of the LP top halves,ERC,2025-05-02,2025-05-10
4372, LP TURBINE: Drilling and reaming of holes in the Joint plane of the LP outer casing,ERC,2025-05-11,2025-05-19
4373, MISCELLANEOUS ACTIVITIES,ERC,2025-05-20,2025-09-25
4374, TURB. MISCELLANEOUS ACTIVITIES: Alignment of HP IP LPT rotors.,ERC,2025-05-20,2025-07-03
4375, TURB. MISCELLANEOUS ACTIVITIES: Coupling LP-IP rotor with Aux. Coupling bolts,ERC,2025-07-04,2025-08-07
4376, TURB. MISCELLANEOUS ACTIVITIES: Coupling IP-HP rotor and recording swing value.,ERC,2025-07-04,2025-08-07
4377, TURB. MISCELLANEOUS ACTIVITIES: Reaming honing & machining of coupling bolt,ERC,2025-07-19,2025-09-05
4378, TURB. MISCELLANEOUS ACTIVITIES: Pre-assembly and welding of LP outer casing,ERC,2025-08-17,2025-09-20
4379, TURB. MISCELLANEOUS ACTIVITIES: Turbine boxed up,ERC,2025-09-21,2025-09-25
4380, LUBE OIL SYSTEM,ERC,2025-01-01,2025-11-25
4381, TURB. LUBE OIL SYSTEM: Cleaning SYSTEM: Cleaning of Main Oil tank,ERC,2025-01-01,2025-01-30
4382, TURB. LUBE OIL SYSTEM: Placement of Oil Module,ERC,2025-01-31,2025-02-24
4383, TURB. LUBE OIL SYSTEM: Placement of motors and couplings,ERC,2025-02-25,2025-03-30
4384, TURB. LUBE OIL SYSTEM: Erection of filters  oil cooler  vapor exhauster etc in the Main oil room,ERC,2025-03-31,2025-04-29
4385, TURB. LUBE OIL SYSTEM: Lube oil piping  jacking oil & seal oil piping to bearings and recirculation.,ERC,2025-04-30,2025-09-26
4386, TURB. LUBE OIL SYSTEM:ERECTION OF OIL PURIFICATION UNIT,ERC,2025-09-27,2025-10-26
4387,Turbine: Oil flushing,ERC,2025-09-27,2025-11-25
4388, VALVES,ERC,2025-03-03,2026-04-20
4389, LP BYPASS VALVES,ERC,2025-07-09,2025-08-22
4390, TURB. LP BYPASS Valves: Erection of LP bypass valves,ERC,2025-07-09,2025-08-22
4391, EMERGENCY STOP VALVES,ERC,2025-03-03,2025-04-01
4392, TURB. EMERGENCY STOP Vivisection of main steam stop valves,ERC,2025-03-03,2025-03-17
4393, TURB. EMERGENCY STOP VALVES: Assembly of breech nuts with HP casings,ERC,2025-03-18,2025-04-01
4394, IV CONTROL VALVES,ERC,2025-04-28,2025-05-10
4395, TURB. IV CONTROL VALVES: Assembly of RH stop and control valve,ERC,2025-04-28,2025-05-10
4396,HP BYPASS VALVES,ERC,2026-03-27,2026-04-20
4397,HP BYPASS VALVES: Assembly of HP bypass valves,ERC,2026-03-27,2026-04-20
4398,Generator,ERC,2022-09-27,2026-04-10
4399,Civil,ERC,2025-03-14,2025-08-11
4400, Gas Room Readiness,ERC,2025-08-11,2025-08-11
4401, PW Pump & Filter Foundation,CIV,2025-03-14,2025-03-14
4402, PW cooler foundation,OTH,2025-03-14,2025-03-14
4403, Seal oil unit foundation,OTH,2025-05-03,2025-05-03
4404,Supply,SUP,2022-09-27,2024-12-27
4405, Foundation Accessories,SUP,2022-09-27,2024-04-28
4406,Engineering,ENG,2022-09-27,2023-09-01
4407,Manufacturing,MFG,2023-09-02,2024-03-29
4408,Dispatch,DIS,2024-03-30,2024-04-28
4409, Generator Stator,SUP,2022-09-27,2024-10-10
4410,Engineering,ENG,2022-09-27,2023-10-16
4411,Manufacturing,MFG,2023-10-17,2024-09-10
4412,Dispatch,DIS,2024-09-11,2024-10-10
4413, Generator Rotor ,SUP,2022-09-27,2024-10-25
4414,Engineering,ENG,2022-09-27,2023-10-31
4415,Manufacturing,MFG,2023-11-01,2024-09-25
4416,Dispatch,DIS,2024-09-26,2024-10-25
4417,Brushless Exciter Set & accessories,SUP,2022-09-27,2024-10-12
4418,Engineering,ENG,2022-09-27,2023-11-23
4419,Manufacturing,MFG,2023-11-24,2024-08-29
4420,Dispatch,DIS,2024-08-30,2024-10-12
4421,Gen. completing items,SUP,2022-09-27,2024-10-07
4422,Engineering,ENG,2022-09-27,2023-10-16
4423,Manufacturing,MFG,2023-10-17,2024-08-07
4424,Dispatch,DIS,2024-08-08,2024-10-07
4425,Gen. Auxiliaries Systems,SUP,2022-09-27,2024-12-12
4426,Engineering,ENG,2022-09-27,2023-12-05
4427,Manufacturing,MFG,2023-12-06,2024-10-28
4428,Dispatch,DIS,2024-10-29,2024-12-12
4429,TG Piping,SUP,2022-09-27,2024-12-12
4430,Engineering,ENG,2022-09-27,2023-12-05
4431,Manufacturing,MFG,2023-12-06,2024-10-28
4432,Dispatch,DIS,2024-10-29,2024-12-12
4433,PW System equipments,SUP,2022-09-27,2024-12-12
4434,Engineering,ENG,2022-09-27,2023-12-05
4435,Manufacturing,MFG,2023-12-06,2024-10-28
4436,Dispatch,DIS,2024-10-29,2024-12-12
4437,Loose instruments,SUP,2022-09-27,2024-12-27
4438,Engineering,ENG,2022-09-27,2023-12-05
4439,Manufacturing,MFG,2023-12-06,2024-10-28
4440,Dispatch,DIS,2024-10-29,2024-12-27
4441,Erection,ERC,2024-12-06,2026-04-10
4442, MECHANICAL ASSEMBLY STATOR AND ROTOR,ERC,2024-12-06,2025-08-05
4443,Checking of foundations,CIV,2024-12-06,2024-12-15
4444,Setting and alignment of machine sole plates,ERC,2024-12-21,2025-01-09
4445,Stator lifting and placement on the foundations,ERC,2025-03-20,2025-04-07
4446,Visual inspection of rotor and stator,ERC,2025-04-08,2025-04-17
4447,Mounting of bushing compartment,ERC,2025-04-18,2025-05-02
4448,Insertions and removal of Hydrogen coolers,ERC,2025-05-03,2025-05-12
4449,Generator rotor insertion,ERC,2025-05-13,2025-05-22
4450,Alignment of generator,ERC,2025-05-23,2025-06-11
4451,Aligning and coupling the brushless exciter rotor,ERC,2025-06-12,2025-07-01
4452,Mounting of generator end shields,ERC,2025-07-02,2025-07-16
4453,Generator bearing assembly,ERC,2025-07-17,2025-07-26
4454,Alignment with LP rotor,ERC,2025-07-27,2025-08-05
4455, EXCITATION SYSTEM,ERC,2024-12-21,2025-07-20
4456,Placement and grouting of foundations plates,CIV,2024-12-21,2024-12-27
4457,Physical inspection and placement of excitor components and excitation transformer,ERC,2025-06-12,2025-07-11
4458,Gen- exciter rotor alignment and correction,OTH,2025-07-12,2025-07-20
4459, PW SYSTEM,ERC,2025-03-15,2025-08-20
4460, GEN. PW Mounting of PW skid,ERC,2025-03-15,2025-03-24
4461, GEN. PW Mounting of alkalizer unit,ERC,2025-03-25,2025-04-03
4462, GEN. PW alkalizer of PW pipings and recirculation line,ERC,2025-04-04,2025-05-12
4463, GEN. PW recirculation of PW tanks,ERC,2025-07-17,2025-08-05
4464, GEN. PW SYSTEM:PW line flushing and cleaning,ERC,2025-08-06,2025-08-20
4465, SEAL OIL SYSTEM,ERC,2025-05-04,2025-08-18
4466, GEN. SEAL OIL recirculation of Seal oil unit,ERC,2025-05-04,2025-05-20
4467, GEN. SEAL OIL recirculation of seal oil piping,ERC,2025-05-21,2025-08-18
4468, Oil flushing of lube oil and seal oil sys.,ERC,2025-11-01,2025-12-11
4469,Box up of exciter,ERC,2025-12-12,2025-12-19
4470, Air leak test,ERC,2026-04-01,2026-04-10
4471,Condenser & Vacuum system,OTH,2022-09-27,2025-11-09
4472,Civil,CIV,2023-05-05,2024-02-23
4473,Condenser Foundation,CIV,2023-05-05,2024-02-23
4474,EXCAVATION,CIV,2023-05-05,2023-06-03
4475,RCC in substructure including PCC,CIV,2023-06-04,2023-08-12
4476,RCC in superstructure,CIV,2023-08-13,2023-12-10
4477,Backfilling & Finishing Work,CIV,2023-12-11,2024-02-23
4478,Supply,SUP,2022-09-27,2025-06-22
4479,Hot Well and bottom plate,SUP,2022-09-27,2024-02-11
4480,Engineering,ENG,2022-09-27,2023-06-28
4481,Manufacturing,MFG,2023-06-29,2023-12-28
4482,Dispatch,DIS,2023-12-29,2024-02-11
4483,Condenser Support,SUP,2022-09-27,2024-02-11
4484,Engineering,ENG,2022-09-27,2023-06-28
4485,Manufacturing,MFG,2023-06-29,2023-12-28
4486,Dispatch,DIS,2023-12-29,2024-02-11
4487,Side Walls & Internal details,SUP,2022-09-27,2024-03-12
4488,Engineering,ENG,2022-09-27,2023-07-08
4489,Manufacturing,MFG,2023-07-09,2024-01-27
4490,Dispatch,DIS,2024-01-28,2024-03-12
4491,Water box & Water chamber,SUP,2022-09-27,2024-05-13
4492,Engineering,ENG,2022-09-27,2023-08-12
4493,Manufacturing,MFG,2023-08-13,2024-03-29
4494,Dispatch,DIS,2024-03-30,2024-05-13
4495,Dome Walls & Dome internals,SUP,2022-09-27,2024-05-13
4496,Engineering,ENG,2022-09-27,2023-08-12
4497,Manufacturing,MFG,2023-08-13,2024-03-29
4498,Dispatch,DIS,2024-03-30,2024-05-13
4499,LPH-1 supports & other Condenser loose items ,SUP,2022-09-27,2024-07-13
4500,Engineering,ENG,2022-09-27,2023-09-26
4501,Manufacturing,MFG,2023-09-27,2024-05-29
4502,Dispatch,DIS,2024-05-30,2024-07-13
4503,Gland Steam Condenser & LPH-1,SUP,2022-09-27,2024-07-28
4504,Engineering,ENG,2022-09-27,2023-09-26
4505,Manufacturing,MFG,2023-09-27,2024-05-29
4506,Dispatch,DIS,2024-05-30,2024-07-28
4507,Loose items of GSC & LPH-1,SUP,2022-09-27,2024-08-12
4508,Engineering,ENG,2022-09-27,2023-10-06
4509,Manufacturing,MFG,2023-10-07,2024-06-28
4510,Dispatch,DIS,2024-06-29,2024-08-12
4511,Condenser Instruments,SUP,2022-09-27,2024-06-28
4512,Engineering,ENG,2022-09-27,2023-09-26
4513,Manufacturing,MFG,2023-09-27,2024-05-29
4514,Dispatch,DIS,2024-05-30,2024-06-28
4515,BPL - RE Joints,SUP,2023-08-28,2025-04-12
4516,Engineering  INDENTING AND PROCUREMENT ,ENG,2023-08-28,2024-04-13
4517,Manufacturing & TESTING ,MFG,2024-04-14,2025-02-11
4518, Dispatch ,DIS,2025-02-12,2025-03-13
4519,RECEIPT AT SITE ,REC,2025-03-14,2025-04-12
4520,BPL - Flash Tank,SUP,2023-05-27,2025-06-22
4521,Engineering  INDENTING AND PROCUREMENT ,ENG,2023-05-27,2024-04-23
4522,Manufacturing & TESTING ,MFG,2024-04-24,2025-04-23
4523, Dispatch ,DIS,2025-04-24,2025-05-23
4524,RECEIPT AT SITE ,REC,2025-05-24,2025-06-22
4525,BPL - Misc. Tank,SUP,2023-05-27,2025-03-11
4526,Engineering  INDENTING AND PROCUREMENT ,ENG,2023-05-27,2024-02-25
4527,Manufacturing & TESTING ,MFG,2024-02-26,2025-01-10
4528, Dispatch ,DIS,2025-01-11,2025-02-09
4529,RECEIPT AT SITE ,REC,2025-02-10,2025-03-11
4530,Erection,ERC,2024-07-29,2025-11-09
4531, Condenser: Checking and corrections of foundations,ERC,2024-07-29,2024-07-31
4532, Condenser: Prepn. Of foundation. & packer plate grouting.,ERC,2024-08-01,2024-08-10
4533, Condenser: Pre-Assy of Bottom plate with hot well & Springs.,ERC,2024-08-01,2024-08-30
4534, Condenser: Water Box/water chamber pre-ASSY & welding.,ERC,2024-08-11,2024-08-30
4535, Condenser: Pre-Assy of side walls.,ERC,2024-08-11,2024-09-09
4536, Condenser: Bottom plate Lowering  Levelling & Centering w.r.t LPT .,ERC,2024-09-02,2024-09-26
4537, Condenser: TSP Hole cleaning,ERC,2024-09-27,2024-10-16
4538, Condenser: Ern. Of FWC RWC & side walls and shell formation.,ERC,2024-10-17,2024-10-31
4539, Condenser: Lower Dome walls pre - assy.,ERC,2024-10-17,2024-11-25
4540, Condenser: Dome stiffening structure (Middle Zone) pre-assembly.,ERC,2024-10-27,2024-12-05
4541, Condenser: Erection of TSP's  alignment & Ern. Of shell internals.,ERC,2024-11-11,2024-12-20
4542, Condenser: Ern of Lower dome walls (4 sides) & alignment.,ERC,2024-11-26,2024-12-25
4543, Condenser: Welding of TSP's and other shell Internals.,ERC,2024-08-31,2024-10-14
4544, Condenser: Lower dome walls (4 sides) welding COMPLETION.,ERC,2024-12-28,2025-02-05
4545, Condenser: Lowering of dome stiffening structure  levelling & welding.,ERC,2025-02-06,2025-02-20
4546, Condenser: Cond. Tubing / Tube insertion.,ERC,2025-02-08,2025-03-24
4547, Condenser: TUBE EXPANSION.,ERC,2025-02-23,2025-04-08
4548, Condenser: Pre-assembly of Upper dome walls.,ERC,2025-02-06,2025-03-02
4549, Condenser: Ern. Of upper dome wall (front & rear).,ERC,2025-03-05,2025-03-14
4550, Condenser: Laying Temp. line for filling water in steam space.,ERC,2025-04-11,2025-04-20
4551, Condenser: LEAK TEST (SHELL SIDE),ERC,2025-04-09,2025-04-13
4552, Condenser: Sand blasting and W. box/W. Chamber painting .,ERC,2025-04-14,2025-05-08
4553, Condenser: Sand blasting and painting of water chambers.,ERC,2025-04-24,2025-05-18
4554, Chamber of water box and tightening of bolts.,ERC,2025-05-19,2025-06-12
4555, Condenser: Hydro TEST (C.W.SIDE).,ERC,2025-06-16,2025-06-25
4556, Condenser: FLOATING & NECK WELDING.,ERC,2025-06-28,2025-07-17
4557, Condenser: C.W. Piping (A row to cond.) & R.E Joints.,ERC,2025-05-09,2025-07-22
4558, Condenser: Extraction Piping inside Condenser.,ERC,2025-06-26,2025-08-09
4559, Condenser: Dome stiffening piping (upper dome) & welding.,ERC,2025-07-23,2025-08-11
4560, Condenser: Assy. Of Stand Pipes  all fittings & other instruments.,ERC,2025-08-12,2025-08-26
4561, Condenser: C.W. CHARGING.,ERC,2025-08-30,2025-09-08
4562, Condenser: Measurement of spring height & grouting.,ERC,2025-09-09,2025-09-13
4563, Condenser: Scraps cuttings  grindings. / finishings,ERC,2025-09-14,2025-09-18
4564,Erection of Vacuum Pump with associated piping,ERC,2025-07-23,2025-11-09
4565,Erection of Gland Steam Condenser and associated piping,ERC,2025-07-23,2025-11-09
4566,Erection of Flash tank  Flash box  drain cooler & G.S.C.,ERC,2025-08-12,2025-11-09
4567,Other Misc. Piping like Control fluid  Drain & vent piping  Instrument & Service air etc.,ERC,2025-08-12,2025-11-09
4568,Power Cycle Pumps,ERC,2022-09-27,2026-02-10
4569,Turbine Driven Boiler Feed Pump & Booster Pump,ERC,2022-09-27,2026-02-10
4570,Civil,CIV,2024-10-17,2025-02-07
4571,First TDBFP Foundation,CIV,2024-10-17,2025-01-12
4572,Columns & piping  Instrument & Welding Work,ERC,2024-10-17,2024-11-15
4573,Platform For TDBFP Foundation,CIV,2024-11-16,2024-12-13
4574,RCC Foundation Casting work,CIV,2024-12-14,2025-01-12
4575,Second TDBFP Foundation,CIV,2024-11-12,2025-02-07
4576, Columns & piping  Instrument & Welding Work,CIV,2024-11-12,2024-12-11
4577, Platform For TDBFP Foundation,CIV,2024-12-12,2025-01-08
4578, RCC Foundation Casting work,CIV,2025-01-09,2025-02-07
4579,Supply,SUP,2022-09-27,2024-10-19
4580,HYD- TURBINE DRIVEN BOOSTER PUMP,SUP,2022-09-27,2024-10-19
4581,Engineering & PROCUREMENT,ENG,2022-09-27,2023-12-25
4582,Manufacturing,MFG,2023-12-26,2024-06-02
4583,ASSEMBLY & TESTING,MFG,2024-06-03,2024-09-19
4584,Dispatch OF TDBP AND ALL ASSOCIATED ITEMS,DIS,2024-09-20,2024-10-19
4585,HYD- TURBINE DRIVEN BOILER FEED PUMP,SUP,2022-09-27,2024-10-19
4586,Engineering & PROCUREMENT,ENG,2022-09-27,2023-12-25
4587,Manufacturing,MFG,2023-12-26,2024-06-02
4588,ASSEMBLY & TESTING,MFG,2024-06-03,2024-09-19
4589,Dispatch OF TDBFP AND ALL ASSOCIATED ITEMS,DIS,2024-09-20,2024-10-19
4590,HYD- BFP DRIVE TURBINE,SUP,2022-09-27,2024-10-19
4591,Engineering & PROCUREMENT,ENG,2022-09-27,2023-12-25
4592,Manufacturing,MFG,2023-12-26,2024-06-02
4593,ASSEMBLY & TESTING,MFG,2024-06-03,2024-09-19
4594,Dispatch OF DRIVE TURBINE AND ALL ASSOCIATED ITEMS,DIS,2024-09-20,2024-10-19
4595,HYD- BFP DT LUB OIL SYSTEM,SUP,2022-09-27,2024-10-19
4596,Engineering & PROCUREMENT,ENG,2022-09-27,2023-12-25
4597,Manufacturing,MFG,2023-12-26,2024-06-02
4598,ASSEMBLY & TESTING,MFG,2024-06-03,2024-09-19
4599,Dispatch OF LUBE OIL SYSTEM AND ALL ASSOCIATED ITEMS,DIS,2024-09-20,2024-10-19
4600,Erection,ERC,2025-02-10,2026-02-10
4601,First TURBINE DRIVEN BFP,ERC,2025-02-10,2026-01-15
4602,Foundation checking and correction,CIV,2025-02-10,2025-02-15
4603,Placement of sole plates and grouting,ERC,2025-02-16,2025-02-25
4604,Placement of turbine assembly on the sole plates and alignment,ERC,2025-02-26,2025-03-22
4605,Erection of inlet and exhaust piping,ERC,2025-03-23,2025-04-03
4606,Erection of gland sealing system and connecting piping,ERC,2025-04-04,2025-04-23
4607,Erection and grouting of governing system and control valves,ERC,2025-04-24,2025-05-13
4608,Placement and alignment of booster pump and gearbox,ERC,2025-05-14,2025-05-28
4609,Placement of BFP,ERC,2025-05-29,2025-06-12
4610,Grouting of all equipments,ERC,2025-06-13,2025-07-12
4611,Erection and fit ups of inlet and exhaust of BP and BFP,ERC,2025-07-13,2025-08-05
4612,Erection of oil tanks  filters  collars and grouting,ERC,2025-08-06,2025-08-29
4613,Erection of AOP  JOP  EOP and alignment,ERC,2025-08-30,2025-09-23
4614,Lube oil piping and governing oil piping,ERC,2025-09-24,2025-12-22
4615,Seal water and cooling water piping,ERC,2025-12-23,2026-01-15
4616,Second TURBINE DRIVEN BFP,ERC,2025-03-08,2026-02-10
4617,Foundation checking and correction,CIV,2025-03-08,2025-03-13
4618,Placement of sole plates and grouting,ERC,2025-03-14,2025-03-23
4619,Placement of turbine assembly on the sole plates and alignment,ERC,2025-03-24,2025-04-17
4620,Erection of inlet and exhaust piping,ERC,2025-04-18,2025-04-29
4621,Erection of gland sealing system and connecting piping,ERC,2025-04-30,2025-05-19
4622,Erection and grouting of governing system and control valves,ERC,2025-05-20,2025-06-08
4623,Placement and alignment of booster pump and gearbox,ERC,2025-06-09,2025-06-23
4624,Placement of BFP,ERC,2025-06-24,2025-07-08
4625,Grouting of all equipments,ERC,2025-07-09,2025-08-07
4626,Erection and fit ups of inlet and exhaust of BP and BFP,ERC,2025-08-08,2025-08-31
4627,Erection of oil tanks  filters  collars and grouting,ERC,2025-09-01,2025-09-24
4628,Erection of AOP  JOP  EOP and alignment,ERC,2025-09-25,2025-10-19
4629,Lube oil piping and governing oil piping,ERC,2025-10-20,2026-01-17
4630,Seal water and cooling water piping,ERC,2026-01-18,2026-02-10
4631,Motor Driven Boiler Feed Pumps and Booster Pumps,ERC,2022-09-27,2025-06-04
4632,Civil,CIV,2024-11-02,2025-01-07
4633,MDBFP Foundation,CIV,2024-11-02,2025-01-07
4634,Columns & governing & Welding Work,CIV,2024-11-02,2024-11-16
4635,Platform For MDBFP Foundation,CIV,2024-11-17,2024-12-08
4636,RCC Foundation Casting work,CIV,2024-12-09,2025-01-07
4637,Supply,SUP,2022-09-27,2025-01-14
4638,HYD - MOTOR DRIVEN BOOSTER PUMP,SUP,2022-09-27,2024-08-31
4639,Engineering & PROCUREMENT,ENG,2022-09-27,2023-12-25
4640,Manufacturing,MFG,2023-12-26,2024-06-02
4641,ASSEMBLY & TESTING,MFG,2024-04-15,2024-08-01
4642,Dispatch OF MDBP AND ALL ASSOCIATED ITEMS,DIS,2024-08-02,2024-08-31
4643,HYD - MOTOR DRIVEN BOILER FEED PUMP,SUP,2022-09-27,2024-08-31
4644,Engineering & PROCUREMENT,ENG,2022-09-27,2023-12-25
4645,Manufacturing,MFG,2023-12-26,2024-06-02
4646,ASSEMBLY & TESTING,MFG,2024-04-15,2024-08-01
4647,Dispatch OF MDBFP AND ALL ASSOCIATED ITEMS,DIS,2024-08-02,2024-08-31
4648,BPL - BFP Motor,SUP,2023-07-27,2025-01-14
4649,Engineering  INDENTING AND PROCUREMENT ,ENG,2023-07-27,2024-05-09
4650,Manufacturing & TESTING ,MFG,2024-05-10,2024-12-15
4651,Dispatch,DIS,2024-12-16,2025-01-14
4652,Erection,ERC,2025-02-05,2025-06-04
4653,Foundation checking and correction,CIV,2025-02-05,2025-02-10
4654,Placement and alignment of booster pump and motor,ERC,2025-02-11,2025-02-16
4655,Placement and alignment of coupling and BFP,ERC,2025-02-17,2025-02-22
4656,Bolting of equipments and grouting,ERC,2025-02-23,2025-03-06
4657,Erection of oil pumps and grouting,ERC,2025-03-07,2025-03-22
4658,Erection of oil tanks and centrifuge,ERC,2025-03-23,2025-04-07
4659,Erection of LO and WO coolers,ERC,2025-04-08,2025-04-17
4660,Lube oil and working oil piping,ERC,2025-04-18,2025-05-03
4661,Seal water and colling water piping,ERC,2025-05-04,2025-05-19
4662,Erection of discharge and suction piping and valves,ERC,2025-05-20,2025-06-04
4663,Condensate Extraction Pump,ERC,2022-09-27,2025-11-03
4664,Civil,CIV,2023-10-13,2024-08-05
4665,CEP FOUNDATION: Excavation & PCC,CIV,2023-10-13,2023-12-05
4666,CEP FOUNDATION: RCC Raft,CIV,2023-12-12,2024-02-29
4667,CEP FOUNDATION: RCC Circular Wall,CIV,2024-03-08,2024-07-05
4668,CEP FOUNDATION: Finishing works,CIV,2024-07-06,2024-08-05
4669,Supply,SUP,2022-09-27,2025-03-22
4670,HYD -Condensate EXTRACT PUMP,SUP,2022-09-27,2024-10-19
4671,Engineering & PROCUREMENT,ENG,2022-09-27,2023-12-25
4672,Manufacturing,MFG,2023-12-26,2024-06-02
4673,ASSEMBLY & TESTING,OTH,2024-06-03,2024-09-19
4674,Dispatch OF CEP AND ALL ASSOCIATED ITEMS,DIS,2024-09-20,2024-10-19
4675,HYD - DRIP PUMP,SUP,2022-09-27,2024-10-19
4676,Engineering & PROCUREMENT,ENG,2022-09-27,2023-12-25
4677,Manufacturing,MFG,2023-12-26,2024-06-02
4678,ASSEMBLY & TESTING,OTH,2024-06-03,2024-09-19
4679,Dispatch OF DRIP PUMP AND ALL ASSOCIATED ITEMS,DIS,2024-09-20,2024-10-19
4680,BPL - CEP Motor,SUP,2023-06-26,2025-03-22
4681,Engineering  INDENTING AND PROCUREMENT ,ENG,2023-06-26,2024-03-23
4682,Manufacturing & TESTING ,MFG,2024-03-24,2025-01-21
4683,Dispatch ,DIS,2025-01-22,2025-02-20
4684,RECEIPT AT SITE ,REC,2025-02-21,2025-03-22
4685,Erection,ERC,2024-08-06,2025-11-03
4686,Checking and correction of foundations/ pit inspection,ERC,2024-08-06,2024-08-20
4687,Placement of frame  cannister,ERC,2024-11-09,2024-12-23
4688,Erection and alignment of main pump assembly,ERC,2024-12-24,2025-02-06
4689,Maintaining the verticality and alignment of pump with cannister,ERC,2025-02-07,2025-03-08
4690,Assembly of bearings and filling oil,ERC,2025-03-09,2025-04-22
4691,Fit up of the suction and discharge piping pieces,ERC,2025-04-23,2025-06-06
4692,releasing the pump on the suction and discharge piping,ERC,2025-06-07,2025-07-01
4693,Fixing of coupling and placement of motor,ERC,2025-07-02,2025-07-26
4694,Erection of cooling water and seal water piping,ERC,2025-07-27,2025-09-09
4695,Mechanical Cleaning of suction and discharge piping,ERC,2025-09-10,2025-10-09
4696,piping hangers values calibrated,ERC,2025-10-10,2025-11-03
4697,Misc. Horizontal Pump,ERC,2023-08-03,2025-10-23
4698,Civil,CIV,2024-10-06,2025-05-26
4699, Boiler Fill Pump & Hot well Make up Pump Foundation,CIV,2024-10-06,2024-12-03
4700, Boiler Fill Pump & Hot well Make up Pump Foundation: EXCAVATION,CIV,2024-10-06,2024-10-15
4701, Boiler Fill Pump & Hot well Make up Pump Foundation: RCC in substructure including PCC,CIV,2024-10-16,2024-10-30
4702, Boiler Fill Pump & Hot well Make up Pump Foundation: RCC in superstructure,CIV,2024-10-31,2024-11-24
4703, Boiler Fill Pump & Hot well Make up Pump Foundation: Backfilling,CIV,2024-11-25,2024-11-30
4704, Boiler Fill Pump & Hot well Make up Pump Foundation: Finishing works,CIV,2024-12-01,2024-12-03
4705, SG DMCW Pump foundation,CIV,2024-12-15,2025-03-15
4706, SG DMCW Pump foundation: EXCAVATION,CIV,2024-12-15,2025-01-03
4707, SG DMCW Pump foundation: RCC in substructure including PCC,CIV,2025-01-04,2025-01-28
4708, SG DMCW Pump foundation: RCC in superstructure,CIV,2025-01-29,2025-03-04
4709, SG DMCW Pump foundation: Backfilling,CIV,2025-03-05,2025-03-11
4710, SG DMCW Pump foundation: Finishing works,CIV,2025-03-12,2025-03-15
4711, TG DMCW Pump foundation: EXCAVATION,CIV,2024-12-15,2025-05-26
4712, TG DMCW Pump foundation: RCC in substructure including PCC,CIV,2024-12-15,2025-01-08
4713, TG DMCW Pump foundation: RCC in superstructure,CIV,2025-01-09,2025-02-12
4714, TG DMCW Pump foundation: Backfilling,CIV,2025-02-13,2025-02-19
4715, TG DMCW Pump foundation: Finishing works,CIV,2025-02-20,2025-05-26
4716, ACW Pump foundation: EXCAVATION,CIV,2024-12-15,2025-05-26
4717, ACW Pump foundation: RCC in substructure including PCC,CIV,2024-12-15,2025-01-08
4718, ACW Pump foundation:  RCC in superstructure,CIV,2025-01-09,2025-02-12
4719, ACW Pump foundation:  Backfilling,CIV,2025-02-13,2025-02-19
4720, ACW Pump foundation:  Finishing works,CIV,2025-02-20,2025-05-26
4721,Supply (BHEL PEM),SUP,2023-08-03,2024-09-25
4722,Ordering,ORD,2023-08-03,2023-10-31
4723,Detailed Engineering,ENG,2023-11-01,2024-03-29
4724,Manufacturing,MFG,2024-03-30,2024-08-26
4725,Dispatch,DIS,2024-08-27,2024-09-25
4726,Erection,ERC,2024-12-04,2025-10-23
4727,Erection of Boiler Fill Pump & Associated piping,ERC,2024-12-04,2025-02-01
4728,Erection of Hotwell make up Pump and Associated Piping,ERC,2024-12-04,2025-02-01
4729,Erection of SG DMCW pump & Associated Piping,ERC,2025-03-26,2025-08-07
4730,Erection of TG DMCW Pump & Associated Piping,ERC,2025-05-27,2025-09-28
4731,Erection of  ACW Pump & Associated Piping ,ERC,2025-05-27,2025-10-23
4732,HP/LP Heaters & Deaerator,SUP,2022-09-27,2025-05-26
4733,HP Heaters,SUP,2022-09-27,2025-05-01
4734,Civil,CIV,2025-02-26,2025-03-21
4735, HP Heaters Footing: RCC,CIV,2025-02-26,2025-03-11
4736, HP Heaters Pedestals with pockets,CIV,2025-03-12,2025-03-21
4737,Supply,SUP,2022-09-27,2024-10-19
4738,HYD - HP Heaters,SUP,2022-09-27,2024-10-19
4739,ENGINEERING & PROCUREMENT,ENG,2022-09-27,2023-12-25
4740,MANUFACTURING,MFG,2023-12-26,2024-06-02
4741,ASSEMBLY& TESTING,MFG,2024-06-03,2024-09-19
4742,Dispatch OF HP HEATER AND ALL ASSOCIATED ITEMS,DIS,2024-09-20,2024-10-19
4743,Erection,ERC,2025-04-12,2025-05-01
4744,Placement & alignment of HP Heaters,ERC,2025-04-12,2025-05-01
4745,LP Heaters,SUP,2022-09-27,2025-05-26
4746, Civil,CIV,2025-02-12,2025-03-07
4747,LP Heaters Footing: RCC,CIV,2025-02-12,2025-02-25
4748, LP Heaters Pedestals with pockets,CIV,2025-02-26,2025-03-07
4749,Supply,SUP,2022-09-27,2024-10-19
4750, HYD - LP Heaters,SUP,2022-09-27,2024-10-19
4751,ENGINEERING & PROCUREMENT,ENG,2022-09-27,2023-12-25
4752,MANUFACTURING,MFG,2023-12-26,2024-06-02
4753,ASSEMBLY& TESTING,MFG,2024-06-03,2024-09-19
4754,Dispatch OF LP HEATER AND ALL ASSOCIATED ITEMS,DIS,2024-09-20,2024-10-19
4755,Erection,ERC,2025-05-02,2025-05-26
4756, Placement & alignment of LP Heaters,ERC,2025-05-02,2025-05-26
4757,Deaerator,SUP,2022-09-27,2024-12-28
4758, Civil,CIV,2024-08-16,2024-09-09
4759,Deaerator Footing: RCC,CIV,2024-08-16,2024-08-30
4760,Deaerator Pedestals with pockets & insert,CIV,2024-08-31,2024-09-09
4761,Supply,SUP,2022-09-27,2024-10-19
4762, HYD - Deaerator,SUP,2022-09-27,2024-10-19
4763,ENGINEERING & PROCUREMENT,ENG,2022-09-27,2023-12-25
4764,MANUFACTURING,MFG,2023-12-26,2024-06-02
4765,ASSEMBLY& TESTING,MFG,2024-06-03,2024-09-19
4766,Dispatch OF DEAERATOR AND ALL ASSOCIATED ITEMS,DIS,2024-09-20,2024-10-19
4767, HYD - Drain Cooler,SUP,2022-09-27,2024-10-19
4768,ENGINEERING & PROCUREMENT,ENG,2022-09-27,2023-12-25
4769,MANUFACTURING,MFG,2023-12-26,2024-06-02
4770,ASSEMBLY& TESTING,MFG,2024-06-03,2024-09-19
4771,Dispatch OF DRAIN COOLER AND ALL ASSOCIATED ITEMS,DIS,2024-09-20,2024-10-19
4772,Erection,ERC,2024-10-20,2024-12-28
4773,Lifting and placement of De-aerator and Feed Storage Tank with fittings and associated platform,ERC,2024-10-20,2024-11-03
4774,Welding of FST shells,ERC,2024-11-04,2024-12-18
4775,Erection of drain cooler,ERC,2024-12-19,2024-12-28
4776,Dosing System,SUP,2023-08-23,2026-01-05
4777,Chemical Dosing System,SUP,2023-08-23,2025-11-26
4778,Civil,CIV,2025-03-07,2025-04-10
4779,EXCAVATION,CIV,2025-03-07,2025-03-11
4780,RCC in substructure including PCC,CIV,2025-03-12,2025-03-21
4781,RCC in superstructure,CIV,2025-03-22,2025-03-31
4782,Backfilling,CIV,2025-04-01,2025-04-05
4783,Finishing works,CIV,2025-04-06,2025-04-10
4784,Supply (BHEL PEM),SUP,2023-08-23,2024-11-04
4785,Ordering,ORD,2023-08-23,2023-11-20
4786,Detailed Engineering,ENG,2023-11-21,2024-04-18
4787,Manufacturing,MFG,2024-04-19,2024-10-05
4788,Dispatch,DIS,2024-10-06,2024-11-04
4789,Erection,ERC,2025-05-01,2025-11-26
4790,Erection of Chemical Dosing Skids & Associated Piping,ERC,2025-05-01,2025-09-27
4791,Electrical   C&I and Commissioning,COM,2025-09-28,2025-11-26
4792,Oxygen Dosing System,SUP,2023-08-23,2026-01-05
4793,Civil,CIV,2025-04-16,2025-05-20
4794,EXCAVATION,CIV,2025-04-16,2025-04-20
4795,RCC in substructure including PCC,CIV,2025-04-21,2025-04-30
4796,RCC in superstructure,CIV,2025-05-01,2025-05-10
4797,Backfilling,CIV,2025-05-11,2025-05-15
4798,Finishing works,CIV,2025-05-16,2025-05-20
4799,Supply (BHEL PEM),SUP,2023-08-23,2024-10-30
4800,Ordering,ORD,2023-08-23,2023-11-20
4801,Detailed Engineering,ENG,2023-11-21,2024-04-18
4802,Manufacturing,MFG,2024-04-19,2024-09-15
4803,Dispatch,DIS,2024-09-16,2024-10-30
4804,Erection,ERC,2025-06-10,2026-01-05
4805,Erection of Oxygen Dosing Skids & Associated Piping,ERC,2025-06-10,2025-11-06
4806,Electrical   C&I and Commissioning,COM,2025-11-07,2026-01-05
4807,PLATE HEAT EXCHANGERS,SUP,2023-10-12,2025-03-29
4808,Civil,CIV,2024-12-04,2025-02-11
4809, SG PHE foundation,CIV,2024-12-04,2025-01-07
4810,RCC Pedestal,CIV,2024-12-04,2025-01-02
4811,Finishing works,CIV,2025-01-03,2025-01-07
4812, TG PHE foundation:,CIV,2025-01-08,2025-02-11
4813,RCC Pedestal,CIV,2025-01-08,2025-02-06
4814,Finishing works,CIV,2025-02-07,2025-02-11
4815,Supply (BHEL PEM),SUP,2023-10-12,2024-10-05
4816,Ordering,ORD,2023-10-12,2024-01-09
4817,Detailed Engineering,ENG,2024-01-10,2024-05-08
4818,Manufacturing,MFG,2024-05-09,2024-09-05
4819,Dispatch,DIS,2024-09-06,2024-10-05
4820,Erection,ERC,2025-01-29,2025-03-29
4821,SG PHE Erection,ERC,2025-01-29,2025-02-27
4822,TG Perfection,ERC,2025-02-28,2025-03-29
4823,Auxiliary PRDS,OTH,2023-10-12,2025-09-15
4824,Supply BOI-PEM,SUP,2023-10-12,2024-12-19
4825,Ordering,ORD,2023-10-12,2024-01-09
4826,Detailed Engineering,ENG,2024-01-10,2024-06-07
4827,Manufacturing,MFG,2024-06-08,2024-11-04
4828,Dispatch,DIS,2024-11-05,2024-12-19
4829,Erection,ERC,2025-03-20,2025-09-15
4830,Erection of Aux PRDS ,ERC,2025-03-20,2025-09-15
4831,Online Condenser Tube Cleaning System,ORD,2024-04-25,2026-02-20
4832,Supply  BHEL PEM,SUP,2024-04-25,2025-04-04
4833, COLTCS ,SUP,2024-04-25,2025-04-04
4834,Ordering,ORD,2024-04-25,2024-07-23
4835,Detailed Engineering,ENG,2024-07-24,2024-11-20
4836,Manufacturing,MFG,2024-10-26,2024-10-27
4837,Dispatch,DIS,2025-03-05,2025-04-04
4838,Erection,ERC,2025-06-26,2026-02-20
4839,Erection of COLTCS,ERC,2025-06-26,2025-11-22
4840,Erection of Conical strainer,ERC,2025-07-26,2025-12-22
4841,Electrical   C&I work and Commissioning,COM,2025-12-23,2026-02-20
4842,Piping & Valves,SUP,2022-09-27,2026-02-02
4843,Supply,SUP,2022-09-27,2025-05-30
4844,BHEL PC (PG 80 & 81),SUP,2022-09-27,2025-05-30
4845,For Non Drainable HT,SUP,2023-01-25,2024-11-27
4846,Engineering COMPLETION,ENG,2023-01-25,2023-06-03
4847,COMPLETION OF DDR,ENG,2023-06-04,2023-08-22
4848,MS FROM SUPERHEATER TO BOILER STOP VALVE (PGMA-80300),SUP,2023-08-23,2024-11-27
4849,Manufacturing,MFG,2023-08-23,2024-10-13
4850,Dispatch,DIS,2024-10-14,2024-11-27
4851,H AND S FOR Hydro TEST - (PGMA 80920),SUP,2023-08-23,2024-11-27
4852,Manufacturing,MFG,2023-08-23,2024-10-13
4853,Dispatch,DIS,2024-10-14,2024-11-27
4854,IMPORTED ELECTRODES- (PGMA -80-992),SUP,2023-08-23,2024-11-27
4855,Manufacturing,MFG,2023-08-23,2024-10-13
4856,Dispatch,DIS,2024-10-14,2024-11-27
4857,Misc. Erection MATLS- (PGMA -80-993),SUP,2023-08-23,2024-11-27
4858,Manufacturing,MFG,2023-08-23,2024-10-13
4859,Dispatch,DIS,2024-10-14,2024-11-27
4860,For BLU,SUP,2022-09-27,2025-01-30
4861,Engineering,ENG,2022-09-27,2023-07-08
4862,COMPLETION of DDR,ENG,2023-03-11,2023-10-24
4863,AUX STEAM HEADER- (PGMA -80-340),OTH,2023-04-28,2024-11-30
4864,Manufacturing,MFG,2023-04-28,2024-10-16
4865,Dispatch,DIS,2024-10-17,2024-11-30
4866,80341 AUX STEAM HEADER INTERCONN. BET UNITS,SUP,2023-04-28,2024-11-30
4867,Manufacturing,MFG,2023-04-28,2024-10-16
4868,Dispatch,DIS,2024-10-17,2024-11-30
4869, NON DDR - FLOW NOZZLE- (PGMA -80-326),SUP,2023-04-28,2024-11-30
4870,Manufacturing,MFG,2023-04-28,2024-10-16
4871,Dispatch,DIS,2024-10-17,2024-11-30
4872,AUX STEAM TO SCAPH- (PGMA -80-342),SUP,2023-04-28,2024-11-30
4873,Manufacturing,MFG,2023-04-28,2024-10-16
4874,Dispatch,DIS,2024-10-17,2024-11-30
4875,AUX STEAM TO AH SOOT BLOWERS- (PGMA -80-343),SUP,2023-04-28,2024-11-30
4876,Manufacturing,MFG,2023-04-28,2024-10-16
4877,Dispatch,DIS,2024-10-17,2024-11-30
4878,AUX STEAM TO DEAERATING HEATER- (PGMA -80-345),SUP,2023-04-28,2024-11-30
4879,Manufacturing,MFG,2023-04-28,2024-10-16
4880,Dispatch,DIS,2024-10-17,2024-11-30
4881,AUX STEAM HEADER SV EXHAUST- (PGMA -80-373),SUP,2023-04-28,2024-11-30
4882,Manufacturing,MFG,2023-04-28,2024-10-16
4883,Dispatch,DIS,2024-10-17,2024-11-30
4884,CONDENSATE SUCTION- (PGMA -80-400),SUP,2023-04-28,2024-09-29
4885,Manufacturing,MFG,2023-04-28,2024-08-15
4886,Dispatch,DIS,2024-08-16,2024-09-29
4887,CD FROM PUMP TO LPH1/DC INLET TEE AND RE- (PGMA -80-401),SUP,2023-04-28,2024-09-29
4888,Manufacturing,MFG,2023-04-28,2024-08-15
4889,Dispatch,DIS,2024-08-16,2024-09-29
4890,CD FROM LPH1/DC INLET TEE TO TG TP- (PGMA -80-402),SUP,2023-04-28,2024-09-29
4891,Manufacturing,MFG,2023-04-28,2024-08-15
4892,Dispatch,DIS,2024-08-16,2024-09-29
4893,CD FROM TG TP TO DEAERATING HEATER- (PGMA -80-403),SUP,2023-04-28,2024-09-29
4894,Manufacturing,MFG,2023-04-28,2024-08-15
4895,Dispatch,DIS,2024-08-16,2024-09-29
4896,CONDENSATE FOR SEALING OF VACUUM- (PGMA -80-407),SUP,2023-04-28,2024-09-29
4897,Manufacturing,MFG,2023-04-28,2024-08-15
4898,Dispatch,DIS,2024-08-16,2024-09-29
4899,CONDENSATE DUMP FROM HEADER- (PGMA -80-408),SUP,2023-04-28,2024-09-29
4900,Manufacturing,MFG,2023-04-28,2024-08-15
4901,Dispatch,DIS,2024-08-16,2024-09-29
4902,CONDENSATE TRANSFER- (PGMA -80-412),SUP,2023-04-28,2024-11-30
4903,Manufacturing,MFG,2023-04-28,2024-10-16
4904,Dispatch,DIS,2024-10-17,2024-11-30
4905,ERECTION MATERIALS FOR INSTRUMENTS- (PGMA -80-418),SUP,2023-04-28,2024-11-30
4906,Manufacturing,MFG,2023-04-28,2024-10-16
4907,Dispatch,DIS,2024-10-17,2024-11-30
4908,DEAERATOR SAFETY VALVE EXHAUST TO ATM- (PGMA -80-419),SUP,2023-04-28,2024-11-30
4909,Manufacturing,MFG,2023-04-28,2024-10-16
4910,Dispatch,DIS,2024-10-17,2024-11-30
4911,BOILER FEED PUMP SUCTION- (PGMA -80-420),SUP,2023-04-28,2024-08-30
4912,Manufacturing,MFG,2023-04-28,2024-07-16
4913,Dispatch,DIS,2024-07-17,2024-08-30
4914,BOILER FEED PUMP RECIRCULATION- (PGMA -80-421),SUP,2023-04-28,2024-08-30
4915,Manufacturing,MFG,2023-04-28,2024-07-16
4916,Dispatch,DIS,2024-07-17,2024-08-30
4917,BOILER FEED PUMP TO HPH INCLUDING BYPASS- (PGMA -80-423),SUP,2023-04-28,2024-08-30
4918,Manufacturing,MFG,2023-04-28,2024-07-16
4919,Dispatch,DIS,2024-07-17,2024-08-30
4920,BFD BETWEEN HTRS AND GROUP PROTECTION- (PGMA -80-424),SUP,2023-04-28,2024-08-30
4921,Manufacturing,MFG,2023-04-28,2024-07-16
4922,Dispatch,DIS,2024-07-17,2024-08-30
4923,BFD FROM FINAL HPH TO SG TP- (PGMA -80-425),SUP,2023-04-28,2024-08-30
4924,Manufacturing,MFG,2023-04-28,2024-07-16
4925,Dispatch,DIS,2024-07-17,2024-08-30
4926,SPRAY WATER TO HPBP- (PGMA -80-430),SUP,2023-04-28,2024-11-30
4927,Manufacturing,MFG,2023-04-28,2024-10-16
4928,Dispatch,DIS,2024-10-17,2024-11-30
4929,UNLISTED SPRAY WATER - SG SCOPE- (PGMA -80-434),SUP,2023-04-28,2024-11-30
4930,Manufacturing,MFG,2023-04-28,2024-10-16
4931,Dispatch,DIS,2024-10-17,2024-11-30
4932,SPRAY WATER FROM BFP INTERSTAGE- (PGMA -80-433),SUP,2023-04-28,2024-11-30
4933,Manufacturing,MFG,2023-04-28,2024-10-16
4934,Dispatch,DIS,2024-10-17,2024-11-30
4935,DEAERATING HEATER OVER FLOW AND DRAIN- (PGMA -80-446),SUP,2023-04-28,2024-11-30
4936,Manufacturing,MFG,2023-04-28,2024-10-16
4937,Dispatch,DIS,2024-10-17,2024-11-30
4938,BOILER INTEGRAL PIPING DRAINS- (PGMA -80-451),SUP,2023-04-28,2024-11-30
4939,Manufacturing,MFG,2023-04-28,2024-10-16
4940,Dispatch,DIS,2024-10-17,2024-11-30
4941,HP PIPING DRAINS - SG SCOPE- (PGMA -80-452),SUP,2023-04-28,2024-11-30
4942,Manufacturing,MFG,2023-04-28,2024-10-16
4943,Dispatch,DIS,2024-10-17,2024-11-30
4944,LP PIPING DRAINS - SG SCOPE- (PGMA -80-453),SUP,2023-04-28,2024-11-30
4945,Manufacturing,MFG,2023-04-28,2024-10-16
4946,Dispatch,DIS,2024-10-17,2024-11-30
4947,SCAPH DRAINS- (PGMA -80-454),SUP,2023-04-28,2024-11-30
4948,Manufacturing,MFG,2023-04-28,2024-10-16
4949,Dispatch,DIS,2024-10-17,2024-11-30
4950,DRAIN FROM UNLISTED EQPT/VESSEL-SG SCOPE- (PGMA -80-455),SUP,2023-04-28,2024-11-30
4951,Manufacturing,MFG,2023-04-28,2024-10-16
4952,Dispatch,DIS,2024-10-17,2024-11-30
4953,SG AUX COOLING WATER UNIT SYSTEM- (PGMA -80-460),SUP,2023-04-28,2024-08-30
4954,Manufacturing,MFG,2023-04-28,2024-07-16
4955,Dispatch,DIS,2024-07-17,2024-08-30
4956,PC - TG AUX COOLING WATER- (PGMA -80-463),SUP,2023-04-28,2024-08-30
4957,Manufacturing,MFG,2023-04-28,2024-07-16
4958,Dispatch,DIS,2024-07-17,2024-08-30
4959,PC - MAIN CIRCULATION WATER PIPING- (PGMA -80-468),SUP,2023-04-28,2024-08-30
4960,Manufacturing,MFG,2023-04-28,2024-07-16
4961,Dispatch,DIS,2024-07-17,2024-08-30
4962,PC - MISCELLANEOUS COOLING WATER (PGMA - 80 - 469),SUP,2023-04-28,2024-08-30
4963,Manufacturing,MFG,2023-04-28,2024-07-16
4964,Dispatch,DIS,2024-07-17,2024-08-30
4965,PC - BOILER WATER WASH TO AND FROM UNIT- (PGMA -80-471),SUP,2023-04-28,2024-09-29
4966,Manufacturing,MFG,2023-04-28,2024-08-15
4967,Dispatch,DIS,2024-08-16,2024-09-29
4968,PC - DEMINERALISED WATER SYSTEM- (PGMA -80-473),SUP,2023-04-28,2024-09-29
4969,Manufacturing,MFG,2023-04-28,2024-08-15
4970,Dispatch,DIS,2024-08-16,2024-09-29
4971,PC - SERVICE WATER PIPING- (PGMA -80-477),SUP,2023-04-28,2024-09-29
4972,Manufacturing,MFG,2023-04-28,2024-08-15
4973,Dispatch,DIS,2024-08-16,2024-09-29
4974,PC - FIRE WATER-OTHER AREAS- (PGMA -80-480),SUP,2023-04-28,2024-11-30
4975,Manufacturing,MFG,2023-04-28,2024-10-16
4976,Dispatch,DIS,2024-10-17,2024-11-30
4977,PC - CONTROL OIL PIPING  (PGMA -80-484),SUP,2023-04-28,2024-11-30
4978,Manufacturing,MFG,2023-04-28,2024-10-16
4979,Dispatch,DIS,2024-10-17,2024-11-30
4980,PC - LOW PRESSURE DOSING PIPING- (PGMA -80-601),SUP,2023-04-28,2024-09-29
4981,Manufacturing,MFG,2023-04-28,2024-08-15
4982,Dispatch,DIS,2024-08-16,2024-09-29
4983,PC - ACID CLEANING PIPING-TEMPORARY (PGMA - 80-604),SUP,2023-04-28,2024-09-29
4984,Manufacturing,MFG,2023-04-28,2024-08-15
4985,Dispatch,DIS,2024-08-16,2024-09-29
4986,PC - SERVICE AIR-COMP SUCT AND DIS TO RECEI- (PGMA -80-610),SUP,2023-04-28,2024-09-29
4987,Manufacturing,MFG,2023-04-28,2024-08-15
4988,Dispatch,DIS,2024-08-16,2024-09-29
4989,PC - SERVICE AIR FOR INDIVIDUAL UNITS- (PGMA -80-612),SUP,2023-04-28,2024-09-29
4990,Manufacturing,MFG,2023-04-28,2024-08-15
4991,Dispatch,DIS,2024-08-16,2024-09-29
4992,PC - INST AIR COMP SUC AND DIS TO RECEIVER- (PGMA -80-614),SUP,2023-04-28,2024-09-29
4993,Manufacturing,MFG,2023-04-28,2024-08-15
4994,Dispatch,DIS,2024-08-16,2024-09-29
4995,PC - INSTRUMENT AIR FOR INDIVIDUAL UNIT- (PGMA -80-616),SUP,2023-04-28,2024-09-29
4996,Manufacturing,MFG,2023-04-28,2024-08-15
4997,Dispatch,DIS,2024-08-16,2024-09-29
4998,PC - FUEL OIL Supply AND RETURN PIPING- (PGMA -80-650),SUP,2023-04-28,2024-09-29
4999,Manufacturing,MFG,2023-04-28,2024-08-15
5000,Dispatch,DIS,2024-08-16,2024-09-29
5001,PC - H AND S FOR LP PIPING- (PGMA -80-933),SUP,2023-04-28,2024-11-30
5002,Manufacturing,MFG,2023-04-28,2024-10-16
5003,Dispatch,DIS,2024-10-17,2024-11-30
5004,PC - SUB DELIVERY VALVES FOR LIGHT UP- (PGMA -80-901),SUP,2023-04-28,2024-11-30
5005,Manufacturing,MFG,2023-04-28,2024-10-16
5006,Dispatch,DIS,2024-10-17,2024-11-30
5007,PC - H AND S FOR LIGHT UP STEAM LINE- (PGMA -80-921),SUP,2023-04-28,2024-11-30
5008,Manufacturing,MFG,2023-04-28,2024-10-16
5009,Dispatch,DIS,2024-10-17,2024-11-30
5010,PC - H&S FOR TEMPORARY PIPING ACID AND ALKALI (PGMA -80-926),SUP,2023-04-28,2024-11-30
5011,Manufacturing,MFG,2023-04-28,2024-10-16
5012,Dispatch,DIS,2024-10-17,2024-11-30
5013,PC - H&S FOR TEMPORARY PIPING - STEAM BLOWING (PGMA -80-927),SUP,2023-04-28,2024-11-30
5014,Manufacturing,MFG,2023-04-28,2024-10-16
5015,Dispatch,DIS,2024-10-17,2024-11-30
5016,PC - H AND S FOR BOILER LIGHT UP - TG- (PGMA -80-928),SUP,2023-04-28,2024-11-30
5017,Manufacturing,MFG,2023-04-28,2024-10-16
5018,Dispatch,DIS,2024-10-17,2024-11-30
5019,PC - CW STORAGE TANK 16-25 CUM- (PGMA -81-036),SUP,2023-04-28,2024-06-30
5020,Manufacturing,MFG,2023-04-28,2024-05-16
5021,Dispatch,DIS,2024-05-17,2024-06-30
5022,PC - SPECIAL TANKS AND VESSELS- (PGMA -81-060),SUP,2023-04-28,2024-06-30
5023,Manufacturing,MFG,2023-04-28,2024-05-16
5024,Dispatch,DIS,2024-05-17,2024-06-30
5025,PC - COOLING WATER PUMP- (PGMA -81-110),SUP,2023-04-28,2024-11-30
5026,Manufacturing,MFG,2023-04-28,2024-10-16
5027,Dispatch,DIS,2024-10-17,2024-11-30
5028,PC - FIX COM FOR MISCELLANEOUS PPG INSULATION- (PGMA -81-318),SUP,2023-04-28,2024-11-30
5029,Manufacturing,MFG,2023-04-28,2024-10-16
5030,Dispatch,DIS,2024-10-17,2024-11-30
5031,PC - MINERAL WOOL MATTRESS- (PGMA -81-325),SUP,2023-04-28,2025-01-30
5032,Manufacturing,MFG,2023-04-28,2024-12-16
5033,Dispatch,DIS,2024-12-17,2025-01-30
5034,PC - SEALING COMPOUND FOR INSL- (PGMA -81-341),SUP,2023-04-28,2024-11-30
5035,Manufacturing,MFG,2023-04-28,2024-10-16
5036,Dispatch,DIS,2024-10-17,2024-11-30
5037,PC - ALUMINIUM CLADDING FOR INSULATION- (PGMA -81-350),SUP,2023-04-28,2025-01-30
5038,Manufacturing,MFG,2023-04-28,2024-12-16
5039,Dispatch,DIS,2024-12-17,2025-01-30
5040,PC - DIRECT GAUGES FOR STEAM LINES- (PGMA -81-411),SUP,2023-04-28,2024-11-30
5041,Manufacturing,MFG,2023-04-28,2024-10-16
5042,Dispatch,DIS,2024-10-17,2024-11-30
5043,PC - DIRECT GAUGES FOR NON-STEAM LINES- (PGMA -81-412),SUP,2023-04-28,2024-11-30
5044,Manufacturing,MFG,2023-04-28,2024-10-16
5045,Dispatch,DIS,2024-10-17,2024-11-30
5046,PC - LOCAL CONTROL EQPT FOR NON-STEAM LINES- (PGMA -81-414),SUP,2023-04-28,2024-11-30
5047,Manufacturing,MFG,2023-04-28,2024-10-16
5048,Dispatch,DIS,2024-10-17,2024-11-30
5049,PC - TEST THERMOWELLS- (PGMA -81-415),SUP,2023-04-28,2024-11-30
5050,Manufacturing,MFG,2023-04-28,2024-10-16
5051,Dispatch,DIS,2024-10-17,2024-11-30
5052,PC - INSTRUMENTATION FOR STARTUP SYSTEM- (PGMA -81-417),SUP,2023-04-28,2024-11-30
5053,Manufacturing,MFG,2023-04-28,2024-10-16
5054,Dispatch,DIS,2024-10-17,2024-11-30
5055,For SB,SUP,2022-09-27,2025-04-01
5056,Engineering COMPLETION,ENG,2022-09-27,2023-07-08
5057,COMPLETION of DDR,ENG,2023-03-11,2023-10-24
5058,PC - MS FROM BOILER STOP VALVE TO ESV- (PGMA -80-301),SUP,2023-04-28,2025-04-01
5059,Manufacturing,MFG,2023-04-28,2025-02-15
5060,Dispatch,DIS,2025-02-16,2025-04-01
5061,PC - MS FROM ESV TO TURBINE (PGMA - 80-302),SUP,2023-04-28,2025-04-01
5062,Manufacturing,MFG,2023-04-28,2025-02-15
5063,Dispatch,DIS,2025-02-16,2025-04-01
5064,PC - MS HEADER TO AUX PRDS- (PGMA -80-303),SUP,2023-04-28,2025-04-01
5065,Manufacturing,MFG,2023-04-28,2025-02-15
5066,Dispatch,DIS,2025-02-16,2025-04-01
5067,PC - MS HEADER TO HPBP VALVE- (PGMA -80-304),SUP,2023-04-28,2025-04-01
5068,Manufacturing,MFG,2023-04-28,2025-02-15
5069,Dispatch,DIS,2025-02-16,2025-04-01
5070,PC - HRH FROM REHEATER TO INTERCEPTOR VALVE- (PGMA -80-310),SUP,2023-04-28,2025-04-01
5071,Manufacturing,MFG,2023-04-28,2025-02-15
5072,Dispatch,DIS,2025-02-16,2025-04-01
5073,PC - LPBP VALVE UPSTREAM AND DOWNSTREAM- (PGMA -80-312),SUP,2023-04-28,2025-04-01
5074,Manufacturing,MFG,2023-04-28,2025-02-15
5075,Dispatch,DIS,2025-02-16,2025-04-01
5076,PC - PERMANENT STEAM BLOWING (PGMA - 80-319),SUP,2023-04-28,2025-04-01
5077,Manufacturing,MFG,2023-04-28,2025-02-15
5078,Dispatch,DIS,2025-02-16,2025-04-01
5079,PC - CRH FROM TURBINE TO REHEATER- (PGMA -80-320),SUP,2023-04-28,2025-04-01
5080,Manufacturing,MFG,2023-04-28,2025-02-15
5081,Dispatch,DIS,2025-02-16,2025-04-01
5082,PC - HPBP VALVE TO CRH PIPING- (PGMA -80-321),SUP,2023-04-28,2025-04-01
5083,Manufacturing,MFG,2023-04-28,2025-02-15
5084,Dispatch,DIS,2025-02-16,2025-04-01
5085,PC - STEAM TO BFP DRIVE TURBINE- (PGMA -80-323),SUP,2023-04-28,2025-04-01
5086,Manufacturing,MFG,2023-04-28,2025-02-15
5087,Dispatch,DIS,2025-02-16,2025-04-01
5088,PC - CRH HEADER TO AUX.PRDS- (PGMA -80-324),SUP,2023-04-28,2025-04-01
5089,Manufacturing,MFG,2023-04-28,2025-02-15
5090,Dispatch,DIS,2025-02-16,2025-04-01
5091,PC - H AND S FOR CRITICAL PPG(BLR & TG AREA)- (PGMA -80-830),SUP,2023-04-28,2025-04-01
5092,Manufacturing,MFG,2023-04-28,2025-02-15
5093,Dispatch,DIS,2025-02-16,2025-04-01
5094,PC - AUX STRUCTURE FOR CRITICAL PIPING-SG- (PGMA -80-940),SUP,2023-04-28,2025-04-01
5095,Manufacturing,MFG,2023-04-28,2025-02-15
5096,Dispatch,DIS,2025-02-16,2025-04-01
5097,For SYN,SUP,2022-09-27,2025-05-30
5098,Engineering COMPLETION,ENG,2022-09-27,2023-07-08
5099,COMPLETION of DDR,ENG,2023-03-11,2023-10-24
5100,PC - HP AND LP BYPASS WARM UP- (PGMA -80-307),SUP,2023-04-28,2025-05-30
5101,Manufacturing,MFG,2023-04-28,2025-04-15
5102,Dispatch,DIS,2025-04-16,2025-05-30
5103,PC - CRH PIPING TO DEAERATING HEATER- (PGMA -80-322),SUP,2023-04-28,2025-05-30
5104,Manufacturing,MFG,2023-04-28,2025-04-15
5105,Dispatch,DIS,2025-04-16,2025-05-30
5106,PC - EXTRACTION STEAM TO BFP DRIVE TURBINE- (PGMA -80-329),SUP,2023-04-28,2025-05-30
5107,Manufacturing,MFG,2023-04-28,2025-04-15
5108,Dispatch,DIS,2025-04-16,2025-05-30
5109,PC - EXTRACTION STEAM TO LP HEATER-2- (PGMA -80-331),SUP,2023-04-28,2025-05-30
5110,Manufacturing,MFG,2023-04-28,2025-04-15
5111,Dispatch,DIS,2025-04-16,2025-05-30
5112,PC - EXTRACTION STEAM TO LP HEATER-3- (PGMA -80-332),SUP,2023-04-28,2025-05-30
5113,Manufacturing,MFG,2023-04-28,2025-04-15
5114,Dispatch,DIS,2025-04-16,2025-05-30
5115,PC - EXTRACTION STEAM TO LP HEATER-4- (PGMA -80-333),SUP,2023-04-28,2025-05-30
5116,Manufacturing,MFG,2023-04-28,2025-04-15
5117,Dispatch,DIS,2025-04-16,2025-05-30
5118,PC - EXTRACTION STEAM TO LP HEATER-5 (PGMA - 80334),SUP,2023-04-28,2025-05-30
5119,Manufacturing,MFG,2023-04-28,2025-04-15
5120,Dispatch,DIS,2025-04-16,2025-05-30
5121,PC - EXTRACTION STEAM TO DEAERATING HEATER- (PGMA -80-335),SUP,2023-04-28,2025-05-30
5122,Manufacturing,MFG,2023-04-28,2025-04-15
5123,Dispatch,DIS,2025-04-16,2025-05-30
5124,PC - EXTRACTION STEAM TO HP HEATER NO.1- (PGMA -80-336),SUP,2023-04-28,2025-05-30
5125,Manufacturing,MFG,2023-04-28,2025-04-15
5126,Dispatch,DIS,2025-04-16,2025-05-30
5127,PC - EXTRACTION STEAM TO HP HEATER-2- (PGMA -80-337),SUP,2023-04-28,2025-05-30
5128,Manufacturing,MFG,2023-04-28,2025-04-15
5129,Dispatch,DIS,2025-04-16,2025-05-30
5130,PC - EXTRACTION STEAM TO HP HEATER-3- (PGMA -80-338),SUP,2023-04-28,2025-05-30
5131,Manufacturing,MFG,2023-04-28,2025-04-15
5132,Dispatch,DIS,2025-04-16,2025-05-30
5133,PC - AUX STEAM TO BFD TURBINE- (PGMA -80-339),SUP,2023-04-28,2025-05-30
5134,Manufacturing,MFG,2023-04-28,2025-04-15
5135,Dispatch,DIS,2025-04-16,2025-05-30
5136,PC - AUX STEAM TO GLAND SEALS - TG SCOPE- (PGMA -80-349),SUP,2023-04-28,2025-05-30
5137,Manufacturing,MFG,2023-04-28,2025-04-15
5138,Dispatch,DIS,2025-04-16,2025-05-30
5139,PC - AUX STEAM TO UNLISTED USERS - SG SCOPE- (PGMA -80-351),SUP,2023-04-28,2025-05-30
5140,Manufacturing,MFG,2023-04-28,2025-04-15
5141,Dispatch,DIS,2025-04-16,2025-05-30
5142,PC - EXHAUST STEAM FROM PRIME MOVERS-TG SCOPE- (PGMA -80-363),SUP,2023-04-28,2025-05-30
5143,Manufacturing,MFG,2023-04-28,2025-04-15
5144,Dispatch,DIS,2025-04-16,2025-05-30
5145,PC - HP DRAIN FLASH TANK VENT TO ATMOSPHERE- (PGMA -80-370),SUP,2023-04-28,2025-05-30
5146,Manufacturing,MFG,2023-04-28,2025-04-15
5147,Dispatch,DIS,2025-04-16,2025-05-30
5148,PC - DRAIN FLASH TANK VENT TO CONDENSER- (PGMA -80-371),SUP,2023-04-28,2025-05-30
5149,Manufacturing,MFG,2023-04-28,2025-04-15
5150,Dispatch,DIS,2025-04-16,2025-05-30
5151,PC - UNLISTED SV EXHAUSTS - TG SCOPE- (PGMA -80-375),SUP,2023-04-28,2025-05-30
5152,Manufacturing,MFG,2023-04-28,2025-04-15
5153,Dispatch,DIS,2025-04-16,2025-05-30
5154, PC - HPH SV EXHAUST TO FLASH TANK- (PGMA -80-379),SUP,2023-04-28,2025-05-30
5155,Manufacturing,MFG,2023-04-28,2025-04-15
5156,Dispatch,DIS,2025-04-16,2025-05-30
5157,PC - HP HEATER VENTS - TG SCOPE- (PGMA -80-381),SUP,2023-04-28,2025-05-30
5158,Manufacturing,MFG,2023-04-28,2025-04-15
5159,Dispatch,DIS,2025-04-16,2025-05-30
5160,PC - LP HEATER VENTS- (PGMA -80-382),SUP,2023-04-28,2025-05-30
5161,Manufacturing,MFG,2023-04-28,2025-04-15
5162,Dispatch,DIS,2025-04-16,2025-05-30
5163,PC - VENT FROM UNLISTED PPG/EQPT TO COND- (PGMA -80-385),SUP,2023-04-28,2025-05-30
5164,Manufacturing,MFG,2023-04-28,2025-04-15
5165,Dispatch,DIS,2025-04-16,2025-05-30
5166,STEAM BLOWING PIPING-TEMPORARY (PGMA - 80-399),SUP,2023-04-28,2025-05-30
5167,Manufacturing,MFG,2023-04-28,2025-04-15
5168,Dispatch,DIS,2025-04-16,2025-05-30
5169,PC - UNLISTED SPRAY WATER - TG SCOPE- (PGMA -80-435),SUP,2023-04-28,2025-05-30
5170,Manufacturing,MFG,2023-04-28,2025-04-15
5171,Dispatch,DIS,2025-04-16,2025-05-30
5172,PC - CONTROL OIL PIPING ESV & IV- (PGMA -80-482),SUP,2023-04-28,2025-05-30
5173,Manufacturing,MFG,2023-04-28,2025-04-15
5174,Dispatch,DIS,2025-04-16,2025-05-30
5175,PC - GLAND STEAM COOLER DRAINS- (PGMA -80-442),SUP,2023-04-28,2025-05-30
5176,Manufacturing,MFG,2023-04-28,2025-04-15
5177,Dispatch,DIS,2025-04-16,2025-05-30
5178,PC - LP HEATER-1 TO CONDENSER- (PGMA -80-443),SUP,2023-04-28,2025-05-30
5179,Manufacturing,MFG,2023-04-28,2025-04-15
5180,Dispatch,DIS,2025-04-16,2025-05-30
5181,PC - LP HEATER-2/3/4/5 DRAINS AND DRIP PUMP I- (PGMA -80-444),SUP,2023-04-28,2025-05-30
5182,Manufacturing,MFG,2023-04-28,2025-04-15
5183,Dispatch,DIS,2025-04-16,2025-05-30
5184,PC - HP HEATER DRAINS- (PGMA -80-447),SUP,2023-04-28,2025-05-30
5185,Manufacturing,MFG,2023-04-28,2025-04-15
5186,Dispatch,DIS,2025-04-16,2025-05-30
5187,PC - DRAIN FROM UNLISTED EQPT/VESSEL-TG SCOPE- (PGMA -80-448),SUP,2023-04-28,2025-05-30
5188,Manufacturing,MFG,2023-04-28,2025-04-15
5189,Dispatch,DIS,2025-04-16,2025-05-30
5190,PC - TG CYCLE PIPING DRAINS AND VENTS- (PGMA -80-449),SUP,2023-04-28,2025-05-30
5191,Manufacturing,MFG,2023-04-28,2025-04-15
5192,Dispatch,DIS,2025-04-16,2025-05-30
5193,PC - MANIFOLDS FOR HP FLASH BOX AND CONDENS- (PGMA -80-457),SUP,2023-04-28,2025-05-30
5194,Manufacturing,MFG,2023-04-28,2025-04-15
5195,Dispatch,DIS,2025-04-16,2025-05-30
5196,PC - HP FLASH TANK DRAIN TO CONDENSER- (PGMA -80-459),SUP,2023-04-28,2025-05-30
5197,Manufacturing,MFG,2023-04-28,2025-04-15
5198,Dispatch,DIS,2025-04-16,2025-05-30
5199,PC - DRINKING WATER PIPING- (PGMA -80-478),SUP,2023-04-28,2025-05-30
5200,Manufacturing,MFG,2023-04-28,2025-04-15
5201,Dispatch,DIS,2025-04-16,2025-05-30
5202,PC - HP FLASH TANK VENT TO CONDENSER- (PGMA -80-493),SUP,2023-04-28,2025-05-30
5203,Manufacturing,MFG,2023-04-28,2025-04-15
5204,Dispatch,DIS,2025-04-16,2025-05-30
5205,PC - LP FLASH TANK VENT TO CONDENSER- (PGMA -80-494),SUP,2023-04-28,2025-05-30
5206,Manufacturing,MFG,2023-04-28,2025-04-15
5207,Dispatch,DIS,2025-04-16,2025-05-30
5208,PC - LP FLASH TANK DRAIN TO COND- (PGMA -80-495),SUP,2023-04-28,2025-05-30
5209,Manufacturing,MFG,2023-04-28,2025-04-15
5210,Dispatch,DIS,2025-04-16,2025-05-30
5211,PC - LP Condensate PIPING WITHIN TG HALL FOR- (PGMA -80-545),SUP,2023-04-28,2025-05-30
5212,Manufacturing,MFG,2023-04-28,2025-04-15
5213,Dispatch,DIS,2025-04-16,2025-05-30
5214,PC - LUB OIL FLUSHING & PR TESTING (PGMA - 80-673),SUP,2023-04-28,2025-05-30
5215,Manufacturing,MFG,2023-04-28,2025-04-15
5216,Dispatch,DIS,2025-04-16,2025-05-30
5217,PC - H AND S FOR SYNCHRONISATION - TG- (PGMA -80-930),SUP,2023-04-28,2025-05-30
5218,Manufacturing,MFG,2023-04-28,2025-04-15
5219,Dispatch,DIS,2025-04-16,2025-05-30
5220,PC - CLEAN DRAIN FLASH TANK - DIA 1500 MM- (PGMA -81-012),SUP,2023-04-28,2025-05-30
5221,Manufacturing,MFG,2023-04-28,2025-04-15
5222,Dispatch,DIS,2025-04-16,2025-05-30
5223,PC -Condensate TRANSFER PUMP- (PGMA -81-100),SUP,2023-04-28,2024-11-30
5224,Manufacturing,MFG,2023-04-28,2024-10-16
5225,Dispatch,DIS,2024-10-17,2024-11-30
5226,PC - PERFORMANCE GUARANTEE TEST MATERIALS- (PGMA -81-416),SUP,2023-04-28,2025-05-30
5227,Manufacturing,MFG,2023-04-28,2025-04-15
5228,Dispatch,DIS,2025-04-16,2025-05-30
5229,BOI-PEM - THERMAL INSULATION - R-MATTRESSES/P-SECN ,SUP,2024-01-20,2025-03-14
5230,Ordering,ORD,2024-01-20,2024-04-18
5231,Detailed Engineering,ENG,2024-04-19,2024-09-15
5232,Manufacturing,MFG,2024-09-16,2025-02-12
5233,Dispatch,DIS,2025-02-13,2025-03-14
5234,BOI-PEM -  THERMAL INSULATION -ANCILLARY MATERIAL ,SUP,2023-12-01,2025-01-23
5235,Ordering,ORD,2023-12-01,2024-02-28
5236,Detailed Engineering,ENG,2024-02-29,2024-07-27
5237,Manufacturing,MFG,2024-07-28,2024-12-24
5238,Dispatch,DIS,2024-12-25,2025-01-23
5239,BOI-PEM -  ALUMINIUM SHEETS/COILS,SUP,2024-04-04,2025-05-28
5240,Ordering,ORD,2024-04-04,2024-07-02
5241,Detailed Engineering,ENG,2024-07-03,2024-11-29
5242,Manufacturing,MFG,2024-11-30,2025-04-28
5243,Dispatch,DIS,2025-04-29,2025-05-28
5244, BOI- PEM - AIR TRAPS ,SUP,2023-11-21,2025-01-13
5245,Ordering,ORD,2023-11-21,2024-02-18
5246,Detailed Engineering,ENG,2024-02-19,2024-07-17
5247,Manufacturing,MFG,2024-07-18,2024-12-14
5248,Dispatch,DIS,2024-12-15,2025-01-13
5249,PEM - STEAM TRAPS ,SUP,2023-12-01,2025-01-23
5250,Ordering,ORD,2023-12-01,2024-02-28
5251,Detailed Engineering,ENG,2024-02-29,2024-07-27
5252,Manufacturing,MFG,2024-07-28,2024-12-24
5253,Dispatch,DIS,2024-12-25,2025-01-23
5254,Valves,SUP,2022-09-27,2025-05-22
5255,Supply,SUP,2022-09-27,2025-05-22
5256,TRYV - Power Cycle Piping  DM. Water & Lube Oil System Valves ( PGMA - 80913),SUP,2024-05-28,2025-02-11
5257,Manufacturing,MFG,2024-05-28,2024-11-27
5258,Dispatch,DIS,2024-08-28,2025-02-11
5259,TRYV - Turbine Integral Piping system Valves( PGMA - 80919),SUP,2024-05-28,2025-02-11
5260,Manufacturing,MFG,2024-05-28,2024-11-27
5261,Dispatch,DIS,2024-08-28,2025-02-11
5262,TRYV - Extraction Line QCNRVs( PGMA - 80918),SUP,2024-05-28,2025-02-11
5263,Manufacturing,MFG,2024-05-28,2024-11-27
5264,Dispatch,DIS,2024-08-28,2025-02-11
5265,TRYV - HP Bypass System - Oil Supply System Valves( PGMA - 22100),SUP,2024-05-28,2025-02-11
5266,Manufacturing,MFG,2024-05-28,2024-11-27
5267,Dispatch,DIS,2024-08-28,2025-02-11
5268,TRYV - HP Bypass System - HP Bypass valve ASSY valves( PGMA - 22101),SUP,2024-05-28,2025-02-11
5269,Manufacturing,MFG,2024-05-28,2024-11-27
5270,Dispatch,DIS,2024-08-28,2025-02-11
5271,TRYV - HP Bypass System - Oil Piping HP Bypass Valves( PGMA - 22600),SUP,2024-05-28,2025-02-11
5272,Manufacturing,MFG,2024-05-28,2024-11-27
5273,Dispatch,DIS,2024-08-28,2025-02-11
5274,TRYV - HP Bypass System - Common HP Oil Piping Valves( PGMA - 22601),SUP,2024-05-28,2025-02-11
5275,Manufacturing,MFG,2024-05-28,2024-11-27
5276,Dispatch,DIS,2024-08-28,2025-02-11
5277,TRYV - HP Bypass System - Hand Tools( PGMA - 22701),SUP,2024-05-28,2025-02-11
5278,Manufacturing,MFG,2024-05-28,2024-11-27
5279,Dispatch ,DIS,2024-08-28,2025-02-11
5280,TRYV - HP Bypass System - Special Equipments( PGMA - 22889),SUP,2024-05-28,2025-02-11
5281,Manufacturing,MFG,2024-05-28,2024-11-27
5282,Dispatch,DIS,2024-08-28,2025-02-11
5283,TRYV - HP Bypass System - Common Spares( PGMA - 22988),SUP,2024-05-28,2025-02-11
5284,Manufacturing,MFG,2024-05-28,2024-11-27
5285,Dispatch,DIS,2024-08-28,2025-02-11
5286,TRYV - Root Valves (Normal Measurement+PG Test) ( PGMA - 80914),SUP,2024-05-28,2025-02-11
5287,Manufacturing,MFG,2024-05-28,2024-11-27
5288,Dispatch,DIS,2024-08-28,2025-02-11
5289,TRYV - SG Integral Piping Valves ( PGMA - 80905),SUP,2024-05-28,2025-02-11
5290,Manufacturing,MFG,2024-05-28,2024-11-27
5291,Dispatch,DIS,2024-08-28,2025-02-11
5292,TRYV - Low Pressure piping valves ( PGMA - 80277),SUP,2024-05-28,2025-02-11
5293,Manufacturing,MFG,2024-05-28,2024-11-27
5294,Dispatch,DIS,2024-08-28,2025-02-11
5295,TRYV - Heat Exchanger and Fabrication Water Expansion Relief Valves (WERV)( PGMA - 80278),SUP,2024-05-28,2025-02-11
5296,Manufacturing,MFG,2024-05-28,2024-11-27
5297,Dispatch,DIS,2024-08-28,2025-02-11
5298,TRYV - BFP Drive Turbine Valves including SRV and QCNRV's ( PGMA - 80279),SUP,2024-05-28,2025-02-11
5299,Manufacturing,MFG,2024-05-28,2024-11-27
5300,Dispatch,DIS,2024-08-28,2025-02-11
5301,TRYV - Acid Cleaning Valves ( PGMA - 80917),SUP,2024-05-28,2025-02-11
5302,Manufacturing,MFG,2024-05-28,2024-11-27
5303,Dispatch,DIS,2024-08-28,2025-02-11
5304,TRYV - Steam Blowing Valves ( PGMA - 80918),SUP,2024-05-28,2025-02-11
5305,Manufacturing,MFG,2024-05-28,2024-11-27
5306,Dispatch,DIS,2024-08-28,2025-02-11
5307,BOI-PEM - BUTTERFLY VALVES (STEAM SERVICE) ,SUP,2022-09-27,2024-07-14
5308,Ordering,ORD,2023-10-19,2024-01-16
5309,Detailed Engineering,ENG,2024-01-17,2024-06-14
5310,Manufacturing,MFG,2022-09-27,2023-02-23
5311,Dispatch,DIS,2024-06-15,2024-07-14
5312,BOI-PEM - BALL VALVES ,SUP,2023-10-19,2024-12-11
5313,Ordering,ORD,2023-10-19,2024-01-16
5314,Detailed Engineering,ENG,2024-01-17,2024-06-14
5315,Manufacturing,MFG,2024-06-15,2024-11-11
5316,Dispatch,DIS,2024-11-12,2024-12-11
5317,BOI-PEM - AIR RELEASE VALVES ,SUP,2023-08-23,2024-11-14
5318,Ordering,ORD,2023-08-23,2023-11-20
5319,Detailed Engineering,ENG,2023-11-21,2024-04-18
5320,Manufacturing,MFG,2024-04-19,2024-09-15
5321,Dispatch,DIS,2024-09-16,2024-10-15
5322,Dispatch,DIS,2024-10-16,2024-11-14
5323,BOI-PEM - LUBE OIL TRANSFER PUMPS,SUP,2024-01-30,2025-03-24
5324,Ordering,ORD,2024-01-30,2024-04-28
5325,Detailed Engineering,ENG,2024-04-29,2024-09-25
5326,Manufacturing,MFG,2024-09-26,2025-02-22
5327,Dispatch,DIS,2025-02-23,2025-03-24
5328,BOI-PEM - SUMP PUMPS/SUBMERSIBLE PUMPS,SUP,2023-11-01,2024-12-24
5329,Ordering,ORD,2023-11-01,2024-01-29
5330,Detailed Engineering,ENG,2024-01-30,2024-06-27
5331,Manufacturing,MFG,2024-06-28,2024-11-24
5332,Dispatch,DIS,2024-11-25,2024-12-24
5333,BPL - Butterfly Valve,SUP,2023-04-26,2025-05-22
5334,Engineering  INDENTING AND PROCUREMENT ,ENG,2023-04-26,2024-03-23
5335,Manufacturing & TESTING ,MFG,2024-03-24,2025-03-23
5336, Dispatch ,DIS,2025-03-24,2025-04-22
5337,RECEIPT AT SITE ,REC,2025-04-23,2025-05-22
5338,Erection,ERC,2024-11-28,2026-02-02
5339, DRIP LINES AND DRAINS,ERC,2025-09-14,2025-12-31
5340,Erection  welding and supports for drip and drain lines & valves,ERC,2025-09-14,2025-12-25
5341,Hydro test of drip and drain lines,ERC,2025-12-26,2025-12-31
5342, HRH PIPING,ERC,2025-05-02,2025-11-28
5343,Preassembly  Erection and align of HRH Pipe to IV,ERC,2025-05-02,2025-08-29
5344,P-91 welding of HRH Pipe up to IV,ERC,2025-05-02,2025-09-28
5345,Erection of hangers of HRH up to IV,ERC,2025-06-01,2025-10-28
5346,erection and align HRH line from IV to turbine,ERC,2025-10-29,2025-11-10
5347,P-91 welding of HRH upto turbine,ERC,2025-11-11,2025-11-19
5348,Erection of supports up to turbine,ERC,2025-11-20,2025-11-28
5349, LP AND HP BYPASS PIPING,ERC,2025-08-23,2026-01-25
5350,Erection of LP BP upstream and downstream,ERC,2025-08-23,2025-09-15
5351,Erection of LP warm up piping,ERC,2025-09-16,2025-09-27
5352,P-91 welding on LPBP piping,ERC,2025-09-28,2025-10-21
5353,Erection of hangers of LPBP piping,ERC,2025-10-22,2025-11-08
5354,Erection of HP Bp upstream and downstream,ERC,2025-11-09,2025-12-02
5355,Erection of HP warm up piping,ERC,2025-12-03,2025-12-14
5356,P-91 welding on HPBP piping,ERC,2025-12-15,2026-01-07
5357,Erection of hangers of HPBP,ERC,2026-01-08,2026-01-25
5358,Condensate PIPING,ERC,2025-03-09,2025-09-04
5359,Erection  welding  valves and supports for Condensate line,ERC,2025-03-09,2025-09-04
5360, BOILER FEED LINE PIPING,ERC,2025-02-17,2025-10-11
5361,Erection  welding  valves and supports for BFD and suction lines,ERC,2025-02-17,2025-08-15
5362,Hydro test of BFD lines,ERC,2025-08-16,2025-08-21
5363,Thermal insulation,ERC,2025-08-22,2025-10-11
5364, MAIN STEAM PIPING,ERC,2024-11-28,2025-08-29
5365,for Condensate and align MS Pipe from SH header to BSV,ERC,2024-11-28,2025-01-26
5366,P-91 welding and SR of MS Pipe from SH header to BSV,ERC,2024-11-28,2025-02-25
5367,Erection of hangers from SH header to BSV,ERC,2024-12-28,2025-03-27
5368,for Condensate and align of MS Pipe from BSV to ESV,ERC,2025-04-02,2025-06-30
5369,P-91 welding and SR of MS Pipe from BSV to ESV,ERC,2025-04-02,2025-07-30
5370,Erection of hangers of MS Pipe from BSV to ESV,ERC,2025-05-02,2025-08-29
5371, EXTRACTION PIPING,ERC,2025-08-10,2025-12-29
5372,Extraction piping to LPH-1  2  3,ERC,2025-08-10,2025-09-02
5373,Extraction piping to Deaerator,ERC,2025-09-03,2025-09-14
5374,Extraction piping to HPH 6  7,ERC,2025-09-15,2025-10-02
5375,Erection piping to TDBFP,ERC,2025-10-03,2025-10-28
5376,HP welding on ext. lines,ERC,2025-10-29,2025-12-03
5377,Erection of hangers,ERC,2025-12-04,2025-12-29
5378, CRH PIPING,ERC,2025-04-02,2025-08-29
5379,ext. and align of CRH Pipe from Turbine to RH header,ERC,2025-04-02,2025-06-30
5380,P-91 welding and SR in main CRH Pipe from Turbine to RH header,ERC,2025-04-02,2025-07-30
5381,Erection of tap off to TDBFP  Aux PRDS and Deaerator,ERC,2025-07-01,2025-07-30
5382,HP welding and testing on Tap Off piping from CRH Pipe,ERC,2025-07-16,2025-08-14
5383,Erection of hangers,ERC,2025-05-02,2025-08-29
5384,MISC HP & LP PIPING WITH VALVES & SUPPORTS,ERC,2025-06-16,2025-12-12
5385,Hydro test of MS piping,ERC,2025-08-30,2025-09-05
5386,Insulation of MS and HPBP upstream piping,ERC,2025-09-06,2026-01-03
5387,Hydro test of HRH piping,ERC,2025-10-29,2025-11-04
5388,Insulation of HRH and LPBP piping,ERC,2025-11-05,2026-02-02
5389,Hydro test of CRH piping,ERC,2025-08-30,2025-09-05
5390,Insulation of CRH & HPBP downstream piping,ERC,2025-09-06,2025-12-04
5391,Electrical,OTH,2022-09-27,2026-05-07
5392,Rel of DGW for Service power Transformer  Aux Transformer  Misc. transformer,PE - RFC,2023-04-29,2024-02-22
5393,Rel of DGW for ST,PE - RFC,2024-02-23,2024-02-23
5394,Rel of DGW for ESP/FGD control room,PE - RFC,2023-04-15,2023-04-15
5395,Civil,CIV,2023-05-16,2025-08-06
5396,TRANSFORMER YARD,CIV,2024-02-23,2025-02-20
5397,GENERATOR TRANSFORMER FOUNDATION,CIV,2024-02-23,2024-09-09
5398,foundation readiness for Erection,CIV,2024-02-23,2024-06-21
5399,Rail fixing & final stage casting,CIV,2024-06-22,2024-09-09
5400,STATION TRANSFORMER FOUNDATION,CIV,2024-02-24,2024-08-21
5401,foundation readiness correction,CIV,2024-02-24,2024-07-02
5402,Rail fixing & final stage casting,CIV,2024-07-03,2024-08-21
5403,Service power transformer,CIV,2024-08-25,2025-02-20
5404,foundation readiness correction,CIV,2024-08-25,2025-01-01
5405,Rail fixing & final stage casting,CIV,2025-01-02,2025-02-20
5406,Unit Aux Transformer,CIV,2024-08-25,2025-02-20
5407,foundation readiness correction,CIV,2024-08-25,2025-01-01
5408,Rail fixing & final stage casting,CIV,2025-01-02,2025-02-20
5409,Misc. Service Transformer,CIV,2024-08-25,2025-01-01
5410,foundation readiness Misc.,CIV,2024-08-25,2025-01-01
5411,UNIT TRANSFORMER FOUNDATION,CIV,2024-06-28,2024-12-24
5412,foundation readiness Misc.,CIV,2024-06-28,2024-11-04
5413,Rail fixing & final stage casting,CIV,2024-11-05,2024-12-24
5414,STATION AUXILLARY TRANSFORMER FOUNDATION,CIV,2024-07-08,2025-01-03
5415,foundation readiness Misc.,CIV,2024-07-08,2024-11-14
5416,Rail fixing & final stage casting,CIV,2024-11-15,2025-01-03
5417,Fire Wall  Fencing  BPI   LA & other Misc. Works,CIV,2024-11-15,2025-02-12
5418,SPBD Pedestals FOUNDATION,CIV,2025-01-02,2025-04-22
5419,Excavation,CIV,2025-01-02,2025-01-21
5420,RCC foundation,CIV,2025-01-12,2025-03-07
5421,RCC pedestal,CIV,2025-02-16,2025-04-16
5422,Backfilling & Finishing Work,CIV,2025-04-13,2025-04-22
5423,MV SwitchGear Room,CIV,2025-03-16,2025-08-06
5424,RCC in column encasing works,CIV,2025-03-16,2025-03-30
5425,Brick Work & Plastering,CIV,2025-05-07,2025-06-20
5426,Flooring,CIV,2025-06-21,2025-06-27
5427,Door  Window- glass  aluminium fixing works,CIV,2025-06-28,2025-07-22
5428,Finishing works,CIV,2025-07-23,2025-08-06
5429,LT SwitchGear Room,CIV,2025-01-15,2025-05-01
5430, RCC in column encasing works,CIV,2025-01-15,2025-01-29
5431, Brick Work & Plastering,CIV,2025-01-30,2025-03-15
5432, Flooring,CIV,2025-03-16,2025-03-22
5433, Door  Window- glass  aluminium fixing works,CIV,2025-03-23,2025-04-16
5434, Finishing works,CIV,2025-04-17,2025-05-01
5435,UPS & Battery Room,CIV,2024-12-16,2025-05-16
5436,RCC in column encasing works,CIV,2024-12-16,2024-12-30
5437,Brick Work & Plastering,CIV,2024-12-31,2025-02-13
5438,Flooring,CIV,2025-02-14,2025-02-20
5439,false ceiling & insulation works,CIV,2025-02-21,2025-04-06
5440,Door  Window- glass  aluminium fixing works,CIV,2025-04-07,2025-05-01
5441,Finishing works,CIV,2025-05-02,2025-05-16
5442,IPBD Pedestals FOUNDATION,CIV,2024-10-26,2025-02-22
5443, Excavation,CIV,2024-10-26,2024-11-19
5444, RCC foundation,CIV,2024-11-10,2025-01-03
5445, RCC pedestal,CIV,2024-12-14,2025-02-16
5446, Backfilling & Finishing Work,CIV,2025-02-13,2025-02-22
5447,ESP/FGD Control Room,CIV,2023-05-16,2024-09-16
5448,Up to Plinth Level,CIV,2023-05-16,2023-10-12
5449,EXCAVATION,CIV,2023-05-16,2023-05-30
5450,PCC,CIV,2023-05-31,2023-06-09
5451,Reinforcement cutting & Bending of Footings & columns (1st 2nd 3rd),CIV,2023-06-10,2023-06-29
5452,Footing Casting work,CIV,2023-06-30,2023-07-24
5453,Pedestal 1st 2nd  Final lift- Till Plinth Beam Level,CIV,2023-07-25,2023-09-17
5454,Backfilling,CIV,2023-09-18,2023-09-27
5455,Plinth Beam Concreting Work,CIV,2023-09-28,2023-10-12
5456,up to First Floor,CIV,2023-10-03,2023-12-21
5457,Fabrication of Column & Bracings,ERC,2023-10-03,2023-11-01
5458,Erection of  Column & Bracings,ERC,2023-10-23,2023-11-06
5459,Fabrication of First Floor Beams,ERC,2023-10-28,2023-11-26
5460,Erection of  First Floor Beams,ERC,2023-11-17,2023-12-01
5461,Slab Casting of First Floor,CIV,2023-12-02,2023-12-21
5462,Up to 2nd Floor,CIV,2023-12-02,2024-01-25
5463,Fabrication of Second Floor Beams,ERC,2023-12-02,2023-12-31
5464,Erection of Second Floor Beams,ERC,2023-12-22,2024-01-05
5465,Slab Casting of Second Floor,CIV,2024-01-06,2024-01-25
5466,Up to Third Floor & Roof,CIV,2024-01-06,2024-04-09
5467,Fabrication of Third Floor Beams,ERC,2024-01-06,2024-02-04
5468,Erection of Third Floor Beams,ERC,2024-01-26,2024-02-09
5469,Slab Casting of Third Floor,CIV,2024-02-10,2024-02-29
5470,Parapet wall of Roof,CIV,2024-03-01,2024-03-10
5471,Water Proofing of Roof,CIV,2024-03-11,2024-04-09
5472,Brickwork,CIV,2024-01-11,2024-05-09
5473,Plaster Exterior & Interior,CIV,2024-02-10,2024-06-08
5474,Painting,CIV,2024-05-20,2024-07-18
5475,Flooring,CIV,2024-06-19,2024-08-17
5476,Finishing Works,CIV,2024-07-19,2024-09-16
5477,Transformer Foundations & adjoining wall,CIV,2024-04-10,2024-05-09
5478,Supply,SUP,2022-09-27,2025-12-17
5479,JHS - 25 MVA Service Power Transformer,SUP,2023-04-05,2024-12-16
5480,Engineering,ENG,2023-04-05,2023-10-31
5481,Manufacturing & testing,MFG,2023-08-03,2024-11-16
5482, Packing  Dispatch,DIS,2024-07-20,2024-12-16
5483,JHS - 16 MVA Unit Aux Transformer,SUP,2023-04-05,2024-12-16
5484,Engineering,ENG,2023-04-05,2023-10-31
5485,Manufacturing & testing,MFG,2023-08-03,2024-11-16
5486, Packing  Dispatch,DIS,2024-07-20,2024-12-16
5487,JHS - 7.5  MVA Misc. Service Transformer,SUP,2022-09-27,2024-06-09
5488,Engineering,ENG,2022-09-27,2023-04-24
5489,Manufacturing & testing,MFG,2023-01-25,2024-05-10
5490, Packing  Dispatch,DIS,2024-01-12,2024-06-09
5491,JHS - UNIT TRANSFORMER,SUP,2023-07-04,2025-03-24
5492,Engineering,ENG,2023-07-04,2024-01-29
5493,Manufacturing & testing,MFG,2023-11-01,2024-10-25
5494, Dispatch,DIS,2024-06-28,2024-12-24
5495,RECEIPT,SUP,2024-09-26,2025-03-24
5496,JHS - Dry Type Transformer (DTT),SUP,2023-08-03,2025-01-23
5497,Engineering,ENG,2023-08-03,2024-01-29
5498,Manufacturing & testing,MFG,2023-11-01,2024-08-26
5499, Dispatch,DIS,2024-04-29,2024-10-25
5500,RECEIPT,REC,2024-07-28,2025-01-23
5501,JHS - HVR,SUP,2023-10-02,2024-09-25
5502,Engineering,ENG,2023-10-02,2024-03-29
5503,Manufacturing & testing,MFG,2023-12-31,2024-08-26
5504, Dispatch,DIS,2024-04-29,2024-08-26
5505,RECEIPT,REC,2024-05-29,2024-09-25
5506,BPL - Generator Transformer,SUP,2023-03-11,2025-03-19
5507,Engineering  INDENTING AND PROCUREMENT ,ENG,2023-03-11,2024-02-13
5508,Manufacturing & TESTING ,MFG,2024-02-14,2025-01-18
5509, Dispatch ,DIS,2025-01-19,2025-02-17
5510,RECEIPT AT SITE ,REC,2025-02-18,2025-03-19
5511,BPL - HT Switchgear,SUP,2024-09-25,2025-09-21
5512,Engineering  INDENTING AND PROCUREMENT ,ENG,2024-09-25,2025-04-24
5513,Manufacturing & TESTING ,MFG,2025-04-25,2025-07-23
5514, Dispatch ,DIS,2025-07-24,2025-08-22
5515,RECEIPT AT SITE ,REC,2025-08-23,2025-09-21
5516,BPL - Station Transformer,SUP,2023-04-05,2024-12-16
5517,Engineering,ENG,2023-04-05,2023-10-31
5518,Manufacturing & testing,MFG,2023-08-03,2024-11-16
5519, Packing  Dispatch,DIS,2024-07-20,2024-12-16
5520, BPL - GRP,SUP,2023-12-31,2025-08-16
5521,Engineering  INDENTING AND PROCUREMENT ,ENG,2023-12-31,2024-12-29
5522,Manufacturing & TESTING ,MFG,2024-12-30,2025-06-17
5523, Dispatch ,DIS,2025-06-18,2025-07-17
5524,RECEIPT AT SITE ,REC,2025-07-18,2025-08-16
5525,RUDR - SPBD,SUP,2023-11-21,2025-07-07
5526,Main Supply,SUP,2023-11-21,2025-07-07
5527,Engineering & PROCUREMENT,ENG,2023-11-21,2024-11-19
5528,Manufacturing,MFG,2024-10-21,2025-04-18
5529,Dispatch,DIS,2025-02-18,2025-06-17
5530,RECEIPT AT SITE,REC,2025-03-10,2025-07-07
5531,BOIs-SPBD,SUP,2023-11-21,2025-07-07
5532,Engineering & PROCUREMENT,ENG,2023-11-21,2024-11-19
5533,Manufacturing,MFG,2024-10-21,2025-04-18
5534,Dispatch,DIS,2025-02-18,2025-06-17
5535,RECEIPT AT SITE,REC,2025-03-10,2025-07-07
5536,RUDR - IPBD,SUP,2023-12-31,2025-08-26
5537,Main Supply,SUP,2023-12-31,2025-08-16
5538,Engineering & PROCUREMENT,ENG,2023-12-31,2024-12-29
5539,Manufacturing,MFG,2024-11-30,2025-05-28
5540,Dispatch,DIS,2025-03-30,2025-07-27
5541,RECEIPT AT SITE,REC,2025-04-19,2025-08-16
5542,BOIs-IPBD,SUP,2024-01-10,2025-08-26
5543,Engineering & PROCUREMENT,ENG,2024-01-10,2025-01-08
5544,Manufacturing,MFG,2024-12-10,2025-06-07
5545,Dispatch,DIS,2025-04-09,2025-08-06
5546,RECEIPT AT SITE,REC,2025-04-29,2025-08-26
5547,SBU - LV Switchgear & L V Bus Duct,SUP,2023-08-23,2024-11-19
5548,Engineering & PROCUREMENT,ENG,2023-08-23,2024-05-18
5549,Manufacturing,MFG,2023-12-06,2024-10-15
5550,Dispatch,DIS,2023-12-21,2024-10-30
5551,RECEIPT AT SITE,REC,2024-01-10,2024-11-19
5552,BOI- PEM - DC BATTERY CHARGER ,SUP,2023-09-02,2024-11-04
5553,Ordering,ORD,2023-09-02,2023-11-30
5554,Detailed Engineering,ENG,2023-12-01,2024-04-18
5555,Manufacturing,MFG,2024-04-19,2024-10-05
5556,Dispatch,DIS,2024-10-06,2024-11-04
5557,BOI-PEM - CABLE TRAYS & ACC. ,SUP,2023-08-23,2024-09-15
5558,Ordering,ORD,2023-08-23,2023-11-20
5559,Detailed Engineering,ENG,2023-11-21,2024-04-18
5560,Manufacturing,MFG,2024-04-19,2024-08-16
5561,Dispatch,DIS,2024-08-17,2024-09-15
5562,BOI-PEM - ABOVE GROUND EARTHING MATERIALS EXCEPT CHP  AHP & SWITCHYARD,SUP,2023-09-22,2024-09-15
5563,Ordering,ORD,2023-09-22,2023-12-20
5564,Detailed Engineering,ENG,2023-12-21,2024-04-18
5565,Manufacturing,MFG,2024-04-19,2024-08-16
5566,Dispatch,DIS,2024-08-17,2024-09-15
5567,BOI-PEM - CABLE TERM.& JOINT KITS ,SUP,2023-09-22,2025-01-03
5568,Ordering,ORD,2023-09-22,2023-12-20
5569,Detailed Engineering,ENG,2023-12-21,2024-04-18
5570,Manufacturing,MFG,2024-04-19,2024-12-04
5571,Dispatch,DIS,2024-12-05,2025-01-03
5572,BOI-PEM - TREFOIL CLAMPS ,SUP,2023-09-22,2025-01-03
5573,Ordering,ORD,2023-09-22,2023-12-20
5574,Detailed Engineering,ENG,2023-12-21,2024-04-18
5575,Manufacturing,MFG,2024-04-19,2024-12-04
5576,Dispatch,DIS,2024-12-05,2025-01-03
5577,BOI- PEM - LT PVC CONTROL CABLE,SUP,2023-09-22,2025-01-03
5578,Ordering,ORD,2023-09-22,2023-12-20
5579,Detailed Engineering,ENG,2023-12-21,2024-04-18
5580,Manufacturing,MFG,2024-04-19,2024-12-04
5581,Dispatch,DIS,2024-12-05,2025-01-03
5582,BOI-PEM - DC Lead Acid/Nicad Battery,SUP,2023-12-01,2024-11-24
5583,Ordering,ORD,2023-12-01,2024-02-28
5584,Detailed Engineering,ENG,2024-02-29,2024-06-27
5585,Manufacturing,MFG,2024-06-28,2024-10-25
5586,Dispatch,DIS,2024-10-26,2024-11-24
5587,BOI-PEM - Electrical Lab (Calibration and diagnostics),SUP,2023-09-22,2025-01-03
5588,Ordering,ORD,2023-09-22,2023-12-20
5589,Detailed Engineering,ENG,2023-12-21,2024-04-18
5590,Manufacturing,MFG,2024-04-19,2024-12-04
5591,Dispatch,DIS,2024-12-05,2025-01-03
5592,BOI-PEM - Electrical Lab (Metering and testing),SUP,2024-03-10,2025-08-01
5593,Ordering,ORD,2024-03-10,2024-06-27
5594,Detailed Engineering,ENG,2024-06-28,2025-02-02
5595,Manufacturing,MFG,2025-02-03,2025-07-02
5596,Dispatch,DIS,2025-07-03,2025-08-01
5597,BOI-PEM - FIRE SEALING SYSTEM ,SUP,2024-10-24,2025-12-17
5598,Ordering,ORD,2024-10-24,2025-01-21
5599,Detailed Engineering,ENG,2025-01-22,2025-06-20
5600,Manufacturing,MFG,2025-06-21,2025-11-17
5601,Dispatch,DIS,2025-11-18,2025-12-17
5602,BOI-PEM - CABLE TRAY SUPPORT SYSTEM - BOLTABLE,SUP,2023-11-01,2025-03-09
5603,Ordering,ORD,2023-11-01,2024-01-29
5604,Detailed Engineering,ENG,2024-01-30,2024-06-27
5605,Manufacturing,MFG,2024-06-28,2025-02-07
5606,Dispatch,DIS,2025-02-08,2025-03-09
5607,BOI-PEM - HT XLPE CABLES ,SUP,2023-08-23,2024-10-15
5608,Ordering,ORD,2023-08-23,2023-11-20
5609,Detailed Engineering,ENG,2023-11-21,2024-04-18
5610,Manufacturing,MFG,2024-04-19,2024-09-15
5611,Dispatch,DIS,2024-09-16,2024-10-15
5612,BOI- PEM - LT XLPE POWER CABLE ,SUP,2023-08-23,2024-10-15
5613,Ordering,ORD,2023-08-23,2023-11-20
5614,Detailed Engineering,ENG,2023-11-21,2024-04-18
5615,Manufacturing,MFG,2024-04-19,2024-09-15
5616,Dispatch,DIS,2024-09-16,2024-10-15
5617,BOI-PEM - SCREENED CONTROL CABLES ,SUP,2023-10-12,2024-12-04
5618,Ordering,ORD,2023-10-12,2024-01-09
5619,Detailed Engineering,ENG,2024-01-10,2024-06-07
5620,Manufacturing,MFG,2024-06-08,2024-11-04
5621,Dispatch,DIS,2024-11-05,2024-12-04
5622,BOI-PEM - MS ROD FOR BELOW GROUND EARTHING ,SUP,2023-10-12,2024-12-04
5623,Ordering,ORD,2023-10-12,2024-01-09
5624,Detailed Engineering,ENG,2024-01-10,2024-06-07
5625,Manufacturing,MFG,2024-06-08,2024-11-04
5626,Dispatch,DIS,2024-11-05,2024-12-04
5627,BOI-PEM - NEUTRAL GROUNDING RESISTOR ,SUP,2023-09-14,2024-11-06
5628,Ordering,ORD,2023-09-14,2023-12-12
5629,Detailed Engineering,ENG,2023-12-13,2024-05-10
5630,Manufacturing,MFG,2024-05-11,2024-10-07
5631,Dispatch,DIS,2024-10-08,2024-11-06
5632,BOI-PEM - OIL FILLED SERVICE TRANSFORMER ,SUP,2023-09-22,2024-11-14
5633,Ordering,ORD,2023-09-22,2023-12-20
5634,Detailed Engineering,ENG,2023-12-21,2024-05-18
5635,Manufacturing,MFG,2024-05-19,2024-10-15
5636,Dispatch,DIS,2024-10-16,2024-11-14
5637,BOI-PEM - STATION LIGHTING SYSTEM ,SUP,2023-08-23,2024-12-04
5638,Lighting Poles and Masts ,ORD,2023-08-23,2024-10-15
5639,Ordering,OTH,2023-08-23,2023-11-20
5640,Detailed Engineering,ENG,2023-11-21,2024-04-18
5641,Manufacturing,MFG,2024-04-19,2024-09-15
5642,Dispatch,DIS,2024-09-16,2024-10-15
5643,Lighting Distribution Boards,SUP,2023-08-23,2024-10-15
5644,Ordering,ORD,2023-08-23,2023-11-20
5645,Detailed Engineering,ENG,2023-11-21,2024-04-18
5646,Manufacturing,MFG,2024-04-19,2024-09-15
5647,Dispatch,DIS,2024-09-16,2024-10-15
5648,Lighting Fixtures  Lamps & Misc. Items.,SUP,2023-08-23,2024-10-15
5649,Ordering,ORD,2023-08-23,2023-11-20
5650,Detailed Engineering,ENG,2023-11-21,2024-04-18
5651,Manufacturing,MFG,2024-04-19,2024-09-15
5652,Dispatch,DIS,2024-09-16,2024-10-15
5653,Lighting PVC wires,SUP,2023-10-12,2024-12-04
5654,Ordering,ORD,2023-10-12,2024-01-09
5655,Detailed Engineering,ENG,2024-01-10,2024-06-07
5656,Manufacturing,MFG,2024-06-08,2024-11-04
5657,Dispatch,DIS,2024-11-05,2024-12-04
5658,Lighting Rigid Steel Conduits,SUP,2023-10-12,2024-12-04
5659,Ordering,ORD,2023-10-12,2024-01-09
5660,Detailed Engineering,ENG,2024-01-10,2024-06-07
5661,Manufacturing,MFG,2024-06-08,2024-11-04
5662,Dispatch,DIS,2024-11-05,2024-12-04
5663,Erection,ERC,2023-04-10,2026-05-07
5664,Station Transformer  Service power transformer  Unit Transformer & Misc. Service Transformer,ERC,2025-02-21,2025-06-19
5665,Placement of Main tank  erection of headers pipes  radiator bank  conservator,ERC,2025-02-21,2025-04-11
5666,Pre-commissioning/Protection tests and Relays Testing.,COM,2025-05-02,2025-05-22
5667,Statutory Clearance.,ERC,2025-05-23,2025-05-24
5668,Transformer Charging.,ERC,2025-06-19,2025-06-19
5669,SP BUS DUCTS OF STATION BOARDS (0BA 0BB 0CC&0CB) AND RELATED TIE'S FOR UNIT BOARDS (6BA 6BB),ERC,2025-04-23,2025-06-18
5670,Erection of support structure,ERC,2025-04-23,2025-05-07
5671,Erection of SPBD from ST Transformer to Station Boards 11kV Boards (0BA&0BB),ERC,2025-05-08,2025-06-02
5672,Tie from Station Boards to Unit Boards (11 KV) (6BA & 6BB) and to Station Boards (11 KV) (0CC& 0CD),ERC,2025-06-03,2025-06-10
5673,Hi-pot & CRM of Bus duct,ERC,2025-06-11,2025-06-14
5674,SBD of Station and Related TIE's ready for charging,ERC,2025-06-15,2025-06-18
5675,HT SWITCH GEARS (Station and Unit Boards),ERC,2025-04-07,2025-08-18
5676,Placement of panels  coupling  bus bar joints and released for cabling,ERC,2025-04-07,2025-05-06
5677,Control bus  interpanel wiring,ERC,2025-05-07,2025-05-24
5678,contact resistance tests for bus bar joints,ERC,2025-05-25,2025-06-05
5679,HV test of power bus,ERC,2025-06-06,2025-06-09
5680,CT/PT/Relay testing,ERC,2025-06-10,2025-07-14
5681,Breaker commissioning checks,COM,2025-07-15,2025-08-13
5682,Switchgear Charging,ERC,2025-08-14,2025-08-18
5683,SERVICE & UNIT AUXILLARY TRANSFORMERS,ERC,2025-05-12,2025-08-27
5684,Placement of Main intercanal of headers pipes  radiator bank  conservator,ERC,2025-05-12,2025-05-19
5685,Installation of turret  bushing,ERC,2025-05-20,2025-05-23
5686,Vacuum Pulling and N2 Filling.,ERC,2025-05-24,2025-05-27
5687,Oil filteration  filling and dry out,ERC,2025-05-28,2025-06-02
5688,Power and control cabling  cabling between marshalling box and transformer/fans,ERC,2025-06-03,2025-06-08
5689,LV Testing of transformer.,ERC,2025-08-19,2025-08-20
5690,Pre-commissioning/Protection tests and Relays Testing.,COM,2025-08-21,2025-08-23
5691,Statutory Clearance.,ERC,2025-08-24,2025-08-25
5692,Transformer Charging.,ERC,2025-08-26,2025-08-27
5693,HT SWITCH GEARS (Unit Auxiliary Boards and Station Auxiliary Boards (6CA  0CA) 3.5 M EL,ERC,2025-04-07,2025-08-29
5694,Placement of panels  coupling  bus bar joints and released for cabling,ERC,2025-04-07,2025-04-16
5695,Control bus  interpanel wiring,ERC,2025-04-17,2025-04-24
5696,contact resistance tests for bus bar joints,ERC,2025-04-25,2025-04-28
5697,HV test of power bus,ERC,2025-04-29,2025-04-30
5698,CT/PT/Relay testing .,ERC,2025-05-01,2025-05-10
5699,Breaker commissioning checks,COM,2025-05-11,2025-05-20
5700,Switchgear Charging.,ERC,2025-08-28,2025-08-29
5701,LT SWITCHGEAR MCC LT Transformers and LT Bus Ducts.  LT Transformers and LT Bus Ducts.,ERC,2025-03-31,2025-11-08
5702,Erection of Boiler MCC LT Transformers  LT Bus Ducts and LV Testing of Transformer and CT/PT/Relays/breaker Testing.,ERC,2025-03-31,2025-04-19
5703,Erection of Turbine MCC LT Transformers  LT Bus Ducts and LV Testing of Transformer and CT/PT/Relays/breaker Testing.,ERC,2025-04-20,2025-05-09
5704,Erection of Station Switch Gear PMCC/MCC LT Transformers  LT Bus Ducts and LV Testing of Transformer and CT/PT/Relays/breaker Testing.,ERC,2025-05-10,2025-05-29
5705,Erection of Unit Switch Gear PMCC/MCC LT Transformers Bus Ducts and LV Testing of Transformer and CT/PT/Relays/breaker Testing.,ERC,2025-05-30,2025-06-18
5706,Erection of Boiler Valve MCC LT Transformers Bus Ducts and LV Testing of Transformer and CT/PT/Relays/breaker Testing.,ERC,2025-06-19,2025-07-08
5707,Erection of Turbine Valve MCC LT Transformers Bus Ducts and LV Testing of Transformer and CT/PT/Relays/breaker Testing.,ERC,2025-07-09,2025-07-28
5708,Erection of FOPH MCC LT Transformers Bus Ducts and LV Testing of Transformer and CT/PT/Relays/breaker Testing.,ERC,2025-07-29,2025-08-17
5709,Erection of CWPH MCC LT Transformers  LT Bus Ducts and LV Testing of Transformer and CT/PT/Relays/breaker Testing.,ERC,2025-08-18,2025-09-06
5710,Erection of Emergency MCC LT Transformers  LT Bus Ducts and LV Testing of Transformer and CT/PT/Relays Testing.,ERC,2025-09-07,2025-09-26
5711,Erection of Soot Blower MCC LT Transformers Bus Ducts and LV Testing of Transformer and CT/PT/Relays/breaker Testing.,ERC,2025-09-27,2025-10-16
5712,Other MCC,ERC,2025-09-27,2025-10-16
5713,IR checking and Interlock Trials of Swgrs.,ERC,2025-10-17,2025-10-28
5714,LT SWITCHGEAR MCC LT Transformers and LT Bus Ducts:LT Switchgear Charging.,ERC,2025-10-29,2025-11-08
5715,220 V MAIN PLANT DC BATTERY SYSTEM,ERC,2025-03-13,2025-09-21
5716,Placement of batteries,ERC,2025-03-13,2025-04-26
5717,Placement of Battery Charger Panel & its DCDB,ERC,2025-04-27,2025-05-06
5718,Cabling and connections,ERC,2025-05-07,2025-05-16
5719,Connections with the DC main bus,ERC,2025-05-17,2025-05-26
5720,Charging and Dis-Charging.,ERC,2025-08-30,2025-09-08
5721,Main plant battery system ready for Re-Charging,ERC,2025-09-09,2025-09-20
5722,Battery system commissioned,COM,2025-09-21,2025-09-21
5723,HT/LT Cabling and Associated Tray Work for BLU,ERC,2025-09-14,2025-12-12
5724,Power and Control Cabling for Valves and Dampers for BLU,ERC,2025-09-14,2025-12-12
5725,Unit AUX Transformer,ERC,2025-04-22,2025-08-02
5726,Placement of Main Ducts' of headers pipes  radiator bank  conservator,ERC,2025-04-22,2025-05-11
5727,Installation of turret  bushing,ERC,2025-05-12,2025-05-18
5728,Vacuum Pulling and N2 Filling.,ERC,2025-05-19,2025-05-23
5729,Oil Vacuum and dry out,ERC,2025-05-24,2025-06-01
5730,Power and control cabling  cabling between marshalling box and transformer/fans,ERC,2025-06-02,2025-06-10
5731,LV Testing of transformer  SFRA  Tan Delta  OLTC  NGR etc.,ERC,2025-06-11,2025-06-17
5732,Pre-commissioning/Protection tests and Relays Testing.,COM,2025-07-08,2025-07-27
5733,Statutory Clearance.,ERC,2025-07-28,2025-08-01
5734,Transformer Charging.,ERC,2025-08-02,2025-08-02
5735,GENERATOR TRANSFORME (R/Y/B),ERC,2025-04-19,2026-04-20
5736,Placement of Main tank  Erection of headers pipes  radiator bank  conservator,ERC,2025-04-19,2025-07-17
5737,Installation of turret  bushing etc,ERC,2025-07-23,2025-08-21
5738,Vacuum Pulling and N2 Filling.,ERC,2025-08-29,2025-09-27
5739,Oil filtration  filling and dry out,ERC,2025-10-03,2025-11-01
5740,Cabling between marshalling box and transformer/fans& Pumps,ERC,2025-11-07,2025-11-21
5741,LV Testing of transformer  SFRA  Tan Delta etc.,ERC,2025-11-22,2025-12-16
5742,Pre-commissioning/Protection tests and Relays Testing.,COM,2026-01-16,2026-03-16
5743,Statutory Clearance.,ERC,2026-03-17,2026-04-05
5744,Transformer Ready for charging,ERC,2026-04-06,2026-04-20
5745,UNIT TRANSFORMERS,ERC,2024-12-25,2026-04-24
5746,Placement of Main tank  Erection of headers pipes  radiator bank  conservator,ERC,2024-12-25,2025-01-07
5747,Installation of turret  bushing etc,ERC,2025-01-08,2025-01-15
5748,Vacuum Pulling and N2 Filling.,ERC,2025-10-03,2025-10-08
5749,Oil filtration  filling and dry out,ERC,2025-11-07,2025-11-14
5750,Power and control cabling  cabling between marshalling box and transformer/fans,ERC,2025-11-15,2025-11-20
5751,LV Testing of transformer  OLTC  NGR etc.,ERC,2025-11-21,2025-11-24
5752,Pre-commissioning/Protection tests and Relays Testing.,COM,2025-11-25,2025-12-04
5753,BTS readiness,ERC,2025-11-25,2025-12-04
5754,Statutory Clearance.,ERC,2026-04-06,2026-04-08
5755,Readiness for Transformer charging,ERC,2026-04-24,2026-04-24
5756,STATION TRANSFORMERS,ERC,2024-12-17,2025-04-27
5757,Placement of Main tank  Erection of headers pipes  radiator bank  conservator,ERC,2024-12-17,2024-12-30
5758,Installation of turret  bushing etc,ERC,2024-12-31,2025-01-07
5759,Vacuum Pulling and N2 Filling.,ERC,2025-01-08,2025-01-13
5760,Oil filtration  filling and dry out,ERC,2025-01-14,2025-01-21
5761,Power and control cabling  cabling between marshalling box and transformer/fans,ERC,2025-01-22,2025-01-27
5762,LV Testing of transformer  OLTC  NGR etc.,ERC,2025-01-28,2025-01-31
5763,Pre-commissioning/Protection tests and Relays Testing.,COM,2025-02-01,2025-02-10
5764,BTS readiness,ERC,2025-02-01,2025-02-10
5765,Statutory Clearance.,ERC,2025-02-11,2025-02-13
5766,Readiness for Transformer charging,ERC,2025-04-27,2025-04-27
5767,SP BUS DUCTS OF UNIT BOARDS AND RELATED TIE'S,ERC,2025-05-03,2025-06-07
5768,Erection of support structure ,ERC,2025-05-03,2025-05-12
5769,Erection of SPBD from UT Transformer to Unit Boards11 kV Boards,ERC,2025-05-13,2025-05-28
5770,Connection of Tie from Station Boards to Unit Boards (11kV).,ERC,2025-05-29,2025-06-03
5771,Hi-pot & CRM of Bus duct,ERC,2025-06-04,2025-06-05
5772,SPBD of Unit and Related TIE's ready for charging,ERC,2025-06-06,2025-06-07
5773,IP BUS DUCTS,ERC,2025-07-18,2025-11-25
5774,IP BUS DUCTS: erection and foundation parts and supports for ducts,ERC,2025-07-18,2025-08-16
5775,IP BUS DUCTS: Erection & Welding of conductor and duct enclosures for the main run,ERC,2025-08-17,2025-10-15
5776,IP BUS Clearance & Welding of conductor and duct enclosures for the tap off run,ERC,2025-10-16,2025-11-04
5777,IP BUS Clearance of NGT and LAVT .,ERC,2025-11-05,2025-11-14
5778,IP BUS DUCTS: Testing of NGT  LAVT.,ERC,2025-11-15,2025-11-20
5779,IP BUS DUCTS: Hi-Pot test & CRM of IPBD,ERC,2025-11-21,2025-11-22
5780,IP BUS DUCTS:IPBD ready for charging,ERC,2025-11-23,2025-11-25
5781,HT/LT Cabling & associated Tray  other Works for Rolling and Synchronisation.,ERC,2025-12-13,2026-04-11
5782,ESP Charging,ERC,2024-08-18,2025-12-20
5783,Erection and alignment of EC Panels and LTMSB and ACP Panels,ERC,2024-08-18,2024-09-16
5784,Checking of control bus  interpanel wiring,ERC,2024-09-17,2024-09-26
5785,Contact resistance tests for bus bar joints,ERC,2024-09-27,2024-10-04
5786,HT SWITCH GEARS:CT/PT/Relay testing after readiness of DC Supply,ERC,2024-10-05,2024-10-24
5787,Testing of HVR's of ESP,ERC,2025-10-04,2025-10-19
5788,Cable Laying and Termination of Cables for ESP,ERC,2025-10-20,2025-10-29
5789,Charging of LTMSB ACP and EC Panels,ERC,2025-10-30,2025-11-04
5790,Dummy Load   SCC and OCC of Panels,ERC,2025-11-05,2025-11-18
5791,Field Charging and Charging of heaters and operation or CERM and EERM.,ERC,2025-12-13,2025-12-20
5792,HT SWITCH GEARS FOR AHP CHP  Fire along with Associated Auxiliary Transformers.,ERC,2025-01-30,2025-08-05
5793,Placement of panels  coupling  bus bar joints and released for cabling,ERC,2025-01-30,2025-03-03
5794,control bus  interpanel wiring,ERC,2025-03-04,2025-03-24
5795,contact resistance tests for bus bar joints,ERC,2025-03-25,2025-04-02
5796,HV test of power bus,ERC,2025-04-03,2025-04-08
5797,CT/PT/ Relay testing and LV Testing of Transformers.,ERC,2025-04-09,2025-04-29
5798,Breaker commissioning checks and Readiness of Transformers.,COM,2025-04-30,2025-05-20
5799,Switchgear energized,ERC,2025-08-03,2025-08-05
5800,Readiness of STRP,ERC,2025-03-16,2025-05-14
5801,Erection and Commissioning of GRP  ECP  DATA concentrator panel & DAVR,COM,2025-08-17,2025-12-04
5802,Erection and Commissioning of DAVR,COM,2025-10-02,2026-04-19
5803,HT/LT Cabling & associated Tray   other Works for Coal Firing and AHP & CHP,ERC,2025-08-06,2026-05-07
5804,Completion of BOP Packages viz LT SWGRS FIRE SYSTEMS AND FIRE SEALING.,ERC,2025-12-18,2026-03-01
5805,Erection of Below Ground earthing,ERC,2023-04-10,2025-08-21
5806,Erection Above Ground earthing,ERC,2025-03-23,2025-11-25
5807,Readiness of Trial Run COMPLETION including EMS,ERC,2026-03-02,2026-03-11
5808,Completion of Station Lighting Package,ERC,2024-04-19,2024-12-25
5809,Control & Instrumentation,ERC,2023-04-15,2026-05-15
5810,Civil,CIV,2024-11-16,2025-09-01
5811,Main Control Room,CIV,2024-11-16,2025-09-01
5812,RCC in column encasing works,CIV,2024-11-16,2024-12-30
5813,Brick Work & Plastering,CIV,2024-12-31,2025-02-18
5814,Flooring,CIV,2025-02-19,2025-03-30
5815,false ceiling & insulation works,CIV,2025-03-11,2025-06-03
5816,Door  Window- glass  aluminium fixing works,CIV,2025-06-04,2025-07-18
5817,Finishing works,CIV,2025-07-19,2025-09-01
5818,Supply,SUP,2023-04-15,2025-09-26
5819,BHEL EDN,SUP,2023-04-15,2025-02-02
5820,DAVR PACKAGE,SUP,2023-04-15,2024-12-24
5821,Engineering,ENG,2023-04-15,2024-06-07
5822,Manufacturing ,MFG,2024-06-08,2024-11-04
5823,Dispatch ,DIS,2024-08-07,2024-12-04
5824,RECEIPT at Site ,REC,2024-08-27,2024-12-24
5825,SG C&I PACKAGE ,SUP,2023-04-15,2024-10-05
5826,Engineering,ENG,2023-04-15,2024-03-19
5827,Manufacturing ,MFG,2024-03-20,2024-08-16
5828,Dispatch ,DIS,2024-05-19,2024-09-15
5829,RECEIPT at Site ,REC,2024-06-08,2024-10-05
5830,TG C&I PACKAGE ,SUP,2023-08-13,2025-02-02
5831,Engineering,ENG,2023-08-13,2024-07-17
5832,Manufacturing ,MFG,2024-07-18,2024-12-14
5833,Dispatch ,DIS,2024-09-16,2025-01-13
5834,RECEIPT at Site ,REC,2024-10-06,2025-02-02
5835,HMI,SUP,2023-12-21,2025-02-02
5836,Engineering,ENG,2023-12-21,2024-08-16
5837,Manufacturing ,MFG,2024-08-17,2024-12-14
5838,Dispatch ,DIS,2024-09-16,2025-01-13
5839,RECEIPT at Site ,REC,2024-10-06,2025-02-02
5840,Station C&I,SUP,2023-12-21,2025-02-02
5841,Engineering,ENG,2023-12-21,2024-08-16
5842,Manufacturing ,MFG,2024-08-17,2024-12-14
5843,Dispatch ,DIS,2024-09-16,2025-01-13
5844,RECEIPT at Site ,REC,2024-10-06,2025-02-02
5845,Offsite C&I,OTH,2023-12-21,2025-02-02
5846,Engineering,ENG,2023-12-21,2024-08-16
5847,Manufacturing ,MFG,2024-08-17,2024-12-14
5848,Dispatch ,DIS,2024-09-16,2025-01-13
5849,RECEIPT at Site ,REC,2024-10-06,2025-02-02
5850,FIELD INSTRUMENTS and erection MATERIALS,SUP,2023-12-21,2025-02-02
5851,Engineering,ENG,2023-12-21,2024-08-16
5852,Manufacturing ,MFG,2024-08-17,2024-12-14
5853,Dispatch ,DIS,2024-09-16,2025-01-13
5854,RECEIPT at Site ,REC,2024-10-06,2025-02-02
5855,CABLES AND CABLE TRAY,SUP,2023-08-23,2024-10-05
5856,Engineering,ENG,2023-08-23,2024-04-18
5857,Manufacturing ,MFG,2024-04-19,2024-08-16
5858,Dispatch ,DIS,2024-05-19,2024-09-15
5859,RECEIPT at Site ,REC,2024-06-08,2024-10-05
5860,CCTV,SUP,2023-12-21,2025-02-02
5861,Engineering,ENG,2023-12-21,2024-08-16
5862,Manufacturing ,MFG,2024-08-17,2024-12-14
5863,Dispatch ,DIS,2024-09-16,2025-01-13
5864,RECEIPT at Site ,REC,2024-10-06,2025-02-02
5865,LVS,SUP,2023-08-23,2024-10-05
5866,Engineering,ENG,2023-08-23,2024-04-18
5867,Manufacturing ,MFG,2024-04-19,2024-08-16
5868,Dispatch ,DIS,2024-05-19,2024-09-15
5869,RECEIPT at Site ,REC,2024-06-08,2024-10-05
5870,UPS & ACDB,SUP,2023-08-23,2024-10-05
5871,Engineering,ENG,2023-08-23,2024-04-18
5872,Manufacturing ,MFG,2024-04-19,2024-08-16
5873,Dispatch ,DIS,2024-05-19,2024-09-15
5874,RECEIPT at Site ,REC,2024-06-08,2024-10-05
5875,UPS BATTERY,SUP,2023-08-23,2024-10-05
5876,Engineering,ENG,2023-08-23,2024-04-18
5877,Manufacturing ,MFG,2024-04-19,2024-08-16
5878,Dispatch ,DIS,2024-05-19,2024-09-15
5879,RECEIPT at Site ,REC,2024-06-08,2024-10-05
5880,CHARGER FOR BATTERY,SUP,2023-08-23,2024-10-05
5881,Engineering,ENG,2023-08-23,2024-04-18
5882,Manufacturing ,MFG,2024-04-19,2024-08-16
5883,Dispatch ,DIS,2024-05-19,2024-09-15
5884,RECEIPT at Site ,REC,2024-06-08,2024-10-05
5885,MASTER SLAVE CLOCK,SUP,2023-12-21,2025-02-02
5886,Engineering,ENG,2023-12-21,2024-08-16
5887,Manufacturing ,MFG,2024-08-17,2024-12-14
5888,Dispatch ,DIS,2024-09-16,2025-01-13
5889,RECEIPT at Site ,REC,2024-10-06,2025-02-02
5890,HART MANAGEMENT SYSTEM,SUP,2023-12-21,2025-02-02
5891,Engineering,ENG,2023-12-21,2024-08-16
5892,Manufacturing ,MFG,2024-08-17,2024-12-14
5893,Dispatch ,DIS,2024-09-16,2025-01-13
5894,RECEIPT at Site ,REC,2024-10-06,2025-02-02
5895,TURBINE SUPERVISORY SSTEM,SUP,2023-12-21,2025-02-02
5896,Engineering,ENG,2023-12-21,2024-08-16
5897,Manufacturing ,MFG,2024-08-17,2024-12-14
5898,Dispatch ,DIS,2024-09-16,2025-01-13
5899,RECEIPT at Site ,REC,2024-10-06,2025-02-02
5900,ANALYZERS AND MEASURING INSTRUMENTS INCLUDING SOx   NOx ,SUP,2023-12-21,2025-02-02
5901,Engineering,ENG,2023-12-21,2024-08-16
5902,Manufacturing ,MFG,2024-08-17,2024-12-14
5903,Dispatch ,DIS,2024-09-16,2025-01-13
5904,RECEIPT at Site ,REC,2024-10-06,2025-02-02
5905,HMI BOIs AND DIGITAL TECHNOLOGIES,SUP,2023-12-21,2025-02-02
5906,Engineering,ENG,2023-12-21,2024-08-16
5907,Manufacturing ,MFG,2024-08-17,2024-12-14
5908,Dispatch ,DIS,2024-09-16,2025-01-13
5909,RECEIPT at Site ,REC,2024-10-06,2025-02-02
5910,BOI- PEM,SUP,2023-08-23,2025-01-29
5911,BOI-PEM CONTROL VALVE ,SUP,2023-08-23,2024-10-15
5912,Ordering,ORD,2023-08-23,2023-11-20
5913,Detailed Engineering,ENG,2023-11-21,2024-04-18
5914,Manufacturing,MFG,2024-04-19,2024-09-15
5915,Dispatch,DIS,2024-09-16,2024-10-15
5916,BOI- PEM-FLOW ELEMENT - NOZZLE ,SUP,2023-12-07,2025-01-29
5917,Ordering,ORD,2023-12-07,2024-03-05
5918,Detailed Engineering,ENG,2024-03-06,2024-08-02
5919,Manufacturing,MFG,2024-08-03,2024-12-30
5920,Dispatch,DIS,2024-12-31,2025-01-29
5921,BOI-PEM-FLOW ELEMENT - ORIFICE ,SUP,2023-12-07,2025-01-29
5922,Ordering,ORD,2023-12-07,2024-03-05
5923,Detailed Engineering,ENG,2024-03-06,2024-08-02
5924,Manufacturing,MFG,2024-08-03,2024-12-30
5925,Dispatch,DIS,2024-12-31,2025-01-29
5926,BOI-PEM-ULTRASONIC FLOW METER,SUP,2023-12-07,2025-01-29
5927,Ordering,ORD,2023-12-07,2024-03-05
5928,Detailed Engineering,ENG,2024-03-06,2024-08-02
5929,Manufacturing,MFG,2024-08-03,2024-12-30
5930,Dispatch,DIS,2024-12-31,2025-01-29
5931,BOI-PEM-ELECTROMAGNETIC FLOW METER,SUP,2023-12-07,2025-01-29
5932,Ordering,ORD,2023-12-07,2024-03-05
5933,Detailed Engineering,ENG,2024-03-06,2024-08-02
5934,Manufacturing,MFG,2024-08-03,2024-12-30
5935,Dispatch,DIS,2024-12-31,2025-01-29
5936,BOI-PEM-ROTAMETER ,SUP,2023-12-01,2025-01-23
5937,Ordering,ORD,2023-12-01,2024-02-28
5938,Detailed Engineering,ENG,2024-02-29,2024-07-27
5939,Manufacturing,MFG,2024-07-28,2024-12-24
5940,Dispatch,DIS,2024-12-25,2025-01-23
5941,BHEL TRY,SUP,2023-06-20,2025-09-26
5942,Blr. Control and Instrumentation,SUP,2023-06-20,2025-09-26
5943,Boiler Fuel Firing Controls (PG-95),SUP,2023-07-23,2025-09-26
5944,FSSS FLAME SCANNER (PGMA-95088),SUP,2023-07-23,2025-02-27
5945,Engineering,ENG,2023-07-23,2024-04-17
5946,Manufacturing,MFG,2024-04-18,2025-01-28
5947,Dispatch,DIS,2025-01-29,2025-02-27
5948,FSSS FLAME SCANNER (PGMA-95088),SUP,2023-07-23,2025-02-27
5949,Engineering,ENG,2023-07-23,2024-04-17
5950,Manufacturing,MFG,2024-04-18,2025-01-28
5951,Dispatch,DIS,2025-01-29,2025-02-27
5952,FSSS FIELD INTERCONNECTING EQUIPMENTS (PGMA-95091),SUP,2023-07-23,2025-02-27
5953,Engineering,ENG,2023-07-23,2024-04-17
5954,Manufacturing,MFG,2024-04-18,2025-01-28
5955,Dispatch,DIS,2025-01-29,2025-02-27
5956,GRAVIMETRIC FEEDER REMOTE POWER CABINET (PGMA-95485),SUP,2023-10-21,2025-08-27
5957,Engineering,ENG,2023-10-21,2024-07-17
5958,Manufacturing,MFG,2024-07-18,2025-07-28
5959,Dispatch,DIS,2025-07-29,2025-08-27
5960,UCB MOUNTED INSTS & CALIBRATION KIT (PGMA-95487),SUP,2023-10-21,2025-08-27
5961,Engineering,ENG,2023-10-21,2024-07-17
5962,Manufacturing,MFG,2024-07-18,2025-07-28
5963,Dispatch,DIS,2025-07-29,2025-08-27
5964,FEEDER MOUNTED C&I EQUIPMENTS (PGMA-95488),SUP,2023-10-21,2025-08-27
5965,Engineering,ENG,2023-10-21,2024-07-17
5966,Manufacturing,MFG,2024-07-18,2025-07-28
5967,Dispatch,DIS,2025-07-29,2025-08-27
5968,COAL FLOW MONITER (PGMA-95489),SUP,2023-10-21,2025-08-27
5969,Engineering,ENG,2023-10-21,2024-07-17
5970,Manufacturing,MFG,2024-07-18,2025-07-28
5971,Dispatch,DIS,2025-07-29,2025-08-27
5972,FUEL FIRING CONTROL COMMISSIONING SPARE (PGMA-95988),SUP,2023-10-21,2025-09-26
5973,Engineering,ENG,2023-10-21,2024-07-17
5974,Manufacturing,MFG,2024-07-18,2025-08-27
5975,Dispatch,DIS,2025-08-28,2025-09-26
5976,Boiler House Auxiliaries Control (PG-96),SUP,2023-10-21,2025-06-27
5977,SOOT BLOWER MOTOR CONTROL CENTRE (PGMA-96186),SUP,2023-10-21,2025-06-27
5978,Engineering,ENG,2023-10-21,2024-07-16
5979,Manufacturing,MFG,2024-07-17,2025-05-28
5980,Dispatch,DIS,2025-05-29,2025-06-27
5981,FURNACE TEMPARATURE PROBE STARTER BOX (PGMA-96188),SUP,2023-10-21,2025-06-27
5982,Engineering,ENG,2023-10-21,2024-07-16
5983,Manufacturing,MFG,2024-07-17,2025-05-28
5984,Dispatch,DIS,2025-05-29,2025-06-27
5985,MISCELLANEOUS STARTER BOX (PGMA-96193),SUP,2023-10-21,2025-06-27
5986,Engineering,ENG,2023-10-21,2024-07-16
5987,Manufacturing,MFG,2024-07-17,2025-05-28
5988,Dispatch,DIS,2025-05-29,2025-06-27
5989,Boiler Instruments and Misc. Controls (PG-97),SUP,2023-06-20,2025-06-27
5990,INSTRUMENTATION FIELD TRANSMITTERS (PGMA-97097),SUP,2023-07-23,2025-02-27
5991,Engineering,ENG,2023-07-23,2024-04-17
5992,Manufacturing,MFG,2024-04-18,2025-01-28
5993,Dispatch,DIS,2025-01-29,2025-02-27
5994,BOI-LU-FLOWMETERS (PGMA-97282),SUP,2023-12-01,2025-05-24
5995,NIT,ENQ,2023-12-01,2023-12-01
5996,Ordering,ORD,2023-12-02,2024-06-18
5997,Manufacturing,MFG,2024-06-19,2025-04-24
5998,Dispatch,DIS,2025-04-25,2025-05-24
5999,FIELD GAUGES (PGMA-97284),SUP,2023-10-21,2025-06-27
6000,Engineering,ENG,2023-10-21,2024-08-15
6001,Manufacturing,MFG,2024-08-16,2025-05-28
6002,Dispatch,DIS,2025-05-29,2025-06-27
6003,FIELD SWITCHES (PGMA-97285),SUP,2023-10-21,2025-06-27
6004,Engineering,ENG,2023-10-21,2024-07-16
6005,Manufacturing,MFG,2024-07-17,2025-05-28
6006,Dispatch,DIS,2025-05-29,2025-06-27
6007,INST & ACC IN STEAM WATER SB SYSTEM (PGMA-97287),SUP,2023-10-21,2025-06-27
6008,Engineering,ENG,2023-10-21,2024-07-16
6009,Manufacturing,MFG,2024-07-17,2025-05-28
6010,Dispatch,DIS,2025-05-29,2025-06-27
6011,MTM CLAMPS AND PADS (PGMA-97297),SUP,2023-07-23,2025-02-27
6012,Engineering,ENG,2023-07-23,2024-04-17
6013,Manufacturing,MFG,2024-04-18,2025-01-28
6014,Dispatch,DIS,2025-01-29,2025-02-27
6015,MTM THERMO COUPLES & JUNCTION BOXES (PGMA-97298),SUP,2023-07-23,2025-02-27
6016,Engineering,ENG,2023-07-23,2024-04-17
6017,Manufacturing,MFG,2024-04-18,2025-01-28
6018,Dispatch,DIS,2025-01-29,2025-02-27
6019,ACOUSTIC STEAM LEAK DETECTOR SYTEM (PGMA-97585),SUP,2023-10-21,2025-06-27
6020,Engineering,ENG,2023-10-21,2024-07-16
6021,Manufacturing,MFG,2024-07-17,2025-05-28
6022,Dispatch,DIS,2025-05-29,2025-06-27
6023,ACOUSTIC STEAM LEAK DETECTOR SYTEM (PGMA-97585),SUP,2023-10-21,2025-06-27
6024,Engineering,ENG,2023-10-21,2024-07-16
6025,Manufacturing,MFG,2024-07-17,2025-05-28
6026,Dispatch,DIS,2025-05-29,2025-06-27
6027,ERECTION MATERIALS (PGMA-97590),SUP,2023-06-20,2025-01-25
6028,Engineering,ENG,2023-06-20,2024-03-15
6029,Manufacturing,MFG,2024-03-16,2024-12-26
6030,Dispatch,DIS,2024-12-27,2025-01-25
6031,MISCELLANEOUS ITEMS (PGMA-97591),SUP,2023-07-23,2025-03-29
6032,Engineering,ENG,2023-07-23,2024-04-17
6033,Manufacturing,MFG,2024-04-18,2025-02-27
6034,Dispatch,DIS,2025-02-28,2025-03-29
6035,PNEUMATIC TUBINGS & FITTINGS AIRSET (PGMA-97592),SUP,2023-07-23,2025-02-27
6036,Engineering,ENG,2023-07-23,2024-04-17
6037,Manufacturing,MFG,2024-04-18,2025-01-28
6038,Dispatch,DIS,2025-01-29,2025-02-27
6039,CLOSED CIRCUIT TELEVISION SYSTEM (PGMA-97596),SUP,2023-10-21,2025-06-27
6040,Engineering,ENG,2023-10-21,2024-07-16
6041,Manufacturing,MFG,2024-07-17,2025-05-28
6042,Dispatch,DIS,2025-05-29,2025-06-27
6043,PNEUMATIC ACTUATOR IN AIR&FLUE GAS SYS (PGMA-97599),SUP,2023-10-21,2025-06-27
6044,Engineering,ENG,2023-10-21,2024-07-16
6045,Manufacturing,MFG,2024-07-17,2025-05-28
6046,Dispatch,DIS,2025-05-29,2025-06-27
6047,Erection,ERC,2024-09-14,2026-05-15
6048,Civil clearance for Control Room for C&I Work,CIV,2025-07-19,2025-07-19
6049,MAIN CONTROL ROOM,ERC,2025-07-20,2025-10-27
6050,24 V DC Battery Charger  DCDB & its Battery Bank -E&C,ERC,2025-07-20,2025-10-17
6051,DCS Panels installation in CER,ERC,2025-07-20,2025-10-17
6052,Power Supply & earthing - cabling to DCS Panels,ERC,2025-08-09,2025-10-17
6053,Control Desk & Human Machine Interface (HMI) -E&C,ERC,2025-07-20,2025-10-17
6054,Network cabling,ERC,2025-08-09,2025-10-22
6055,Interpanel Cabling,ERC,2025-10-03,2025-10-22
6056,DCS Panels Charging,ERC,2025-10-23,2025-10-27
6057,BOILER OPERATING FLOOR (AB Elevation),ERC,2025-10-05,2025-12-19
6058,Copper Tubing for LOTV/Corner Valves/Control Valves,ERC,2025-10-05,2025-10-08
6059,Erection of JB Frames and JBs for AB Elevation,ERC,2025-10-09,2025-10-15
6060,Healthiness checking of Limit Switches & Adjusting the same,ERC,2025-10-16,2025-10-21
6061,Cabling for Valves & Limit Switches of AB Elevation,ERC,2025-10-22,2025-10-28
6062,Stroking of Corner Skid Valves,ERC,2025-10-29,2025-11-01
6063,Stroking of LOTV & LOCV,ERC,2025-11-02,2025-11-03
6064,HEA Igniters  flame scanners  cabling and commissioning,COM,2025-12-10,2025-12-17
6065,Firing Floor Instrumentation - PS  TS  PT  Flow TXR  etc,ERC,2025-12-10,2025-12-17
6066,Gun Trial,COM,2025-12-18,2025-12-19
6067,SADC,ERC,2024-09-14,2025-11-20
6068,Erection of SADC I/P  Press. SW & AFR station after calibration,ERC,2024-09-14,2024-09-28
6069,Calibration of SADC Power Cylinders,ERC,2024-09-29,2024-10-13
6070,Erection of Trays for Cu Tubing,ERC,2024-10-14,2024-10-23
6071,Erection of Cu Tubing. & flexible hoses,ERC,2024-10-24,2024-11-12
6072,Cabling of SADC system,ERC,2024-11-13,2024-11-22
6073,Commissioning of SADC System,COM,2025-11-01,2025-11-20
6074,FD FAN,ERC,2025-07-20,2026-02-03
6075,First FD Fan,ERC,2025-07-20,2025-12-09
6076,Motor Winding & Bearing Temperature signals hookup to DCS,ERC,2025-07-20,2025-07-25
6077,Motor Decoupled Trial Run,ERC,2025-09-24,2025-09-24
6078,Remote operation of drives like LOPs  Motor  Blade Pitch  Gates  etc,ERC,2025-11-14,2025-11-21
6079,FDF Instrumentation,ERC,2025-11-22,2025-12-05
6080,Lube Oil flushing,ERC,2025-08-14,2025-08-27
6081,FDF Protection checking & Fan Trial,COM,2025-12-08,2025-12-09
6082,Second FD Fan,ERC,2025-12-31,2026-02-03
6083,Motor Winding & Bearing Temperature signals hookup to DCS,ERC,2025-12-31,2026-01-05
6084,Motor Decoupled Trial Run,COM,2026-01-06,2026-01-06
6085,Remote operation of drives like LOPs  Motor  Blade Pitch  Gates  etc,ERC,2026-01-07,2026-01-14
6086,FDF Instrumentation,ERC,2026-01-21,2026-01-30
6087,Lube Oil flushing,ERC,2026-01-03,2026-01-16
6088,FDF Protection checking & Fan Trial,COM,2026-02-02,2026-02-03
6089,ID FAN,ERC,2025-03-14,2026-03-31
6090,First ID Fan,ERC,2025-03-14,2025-12-31
6091,Motor Winding & Bearing Temperature signals hookup to DCS,ERC,2025-03-14,2025-03-19
6092,Motor Decoupled Trial,COM,2025-09-19,2025-09-19
6093,Remote operation of drives like LOPs  Motor  IGV  Scoop  Gates  etc,ERC,2025-11-09,2025-11-18
6094,IDF Instrumentation,ERC,2025-11-19,2025-11-30
6095,Lube Oil flushing,ERC,2025-03-14,2025-04-02
6096,IDF Protection checking & Fan Trial ,COM,2025-12-30,2025-12-31
6097,Second ID Fan,ERC,2025-04-14,2026-03-31
6098, Motor Winding & Bearing Temperature signals hookup to DCS,ERC,2025-04-14,2025-04-19
6099, Motor Decoupled Trial,COM,2025-09-30,2025-09-30
6100, Remote operation of drives like LOPs  Motor  IGV  Scoop  Gates  etc,ERC,2025-12-09,2025-12-18
6101, IDF Instrumentation,ERC,2025-12-19,2025-12-30
6102, Lube Oil flushing,ERC,2025-04-14,2025-05-03
6103, IDF Protection checking & Fan Trial ,COM,2026-03-30,2026-03-31
6104,APH,ERC,2025-10-30,2026-02-01
6105,First APH,ERC,2025-10-30,2025-11-29
6106,APH Instrumentation like Brg RTD  Fire Sensing T/C  GO Switch  etc.,ERC,2025-10-30,2025-11-13
6107,Remote operation of drives like LOPs  Electric Motor  Air Motor  etc,ERC,2025-11-14,2025-11-19
6108,Oil Flushing,ERC,2025-11-20,2025-11-27
6109,APH Protection checking & Motor / Fan Trial,COM,2025-11-28,2025-11-29
6110,Second APH,ERC,2026-01-02,2026-02-01
6111, APH Instrumentation like Brg RTD  Fire Sensing T/C  GO Switch  etc.,ERC,2026-01-02,2026-01-16
6112, Remote operation of drives like LOPs  Electric Motor  Air Motor  etc,ERC,2026-01-17,2026-01-22
6113,Oil Flushing,ERC,2026-01-23,2026-01-30
6114, SAPH Protection checking & Motor / Fan Trial,COM,2026-01-31,2026-02-01
6115,SCANNER FAN,ERC,2025-10-16,2025-11-02
6116,DC Scanner Air Fan Starter Panel Erection & Cabling,ERC,2025-10-16,2025-10-25
6117,Protection Checking & Motor & Fan Trial,COM,2025-10-26,2025-10-29
6118,Commissioning of O/L Dampers & Scanner Air Parameters,COM,2025-10-30,2025-11-02
6119,INSTRUMENTATION FOR BLU,ERC,2025-08-08,2026-01-01
6120,Boiler MTM Thermo-couple erection,ERC,2025-10-09,2025-11-02
6121,ACW Pump Instrumentation & Commissioning,COM,2025-10-24,2025-11-04
6122,SG DMCW Pump Instrumentation & Commissioning,COM,2025-08-08,2025-08-19
6123,TG DMCW Pump Instrumentation & Commissioning,COM,2025-09-29,2025-10-10
6124,Air & Flue Gas Path Instrumentation,ERC,2025-12-17,2025-12-28
6125,Remote operation of drives like Boiler Drains & Vents  FG Path Gates & Dampers,ERC,2025-12-27,2025-12-29
6126,Furnace Parameters readiness like Furnace Pressure  Secondary Air Flow  Flue Gas Pressures & Temperatures  etc.,ERC,2025-12-21,2025-12-30
6127,Boiler Protection Trial,COM,2025-12-31,2026-01-01
6128,C&I Readiness for BOILER LIGHT-UP,ERC,2026-01-02,2026-01-02
6129,BOILER OPERATING FLOOR (CD Elevation),ERC,2025-10-12,2025-11-20
6130,Copper Tubing for HOTV/Corner Valves/Control Valves,ERC,2025-10-12,2025-10-15
6131,Erection of JB Frames and JBs for CD Elevation,ERC,2025-10-16,2025-10-23
6132,Healthiness checking of Limit Switches & Adjusting the same,ERC,2025-10-24,2025-10-29
6133,Cabling for Valves & Limit Switches of CD Elevation,ERC,2025-10-30,2025-11-04
6134,Stroking of Corner Skid Valves,ERC,2025-11-05,2025-11-08
6135,Stroking of HOTV & HOFCV,ERC,2025-11-09,2025-11-10
6136,Installation of HEA Igniters  flame scanners and its cabling and commissioning,COM,2025-11-11,2025-11-18
6137,Firing Floor Instrumentation - PS  TS  PT  Flow TXR  etc,ERC,2025-11-11,2025-11-18
6138,Gun Trial,COM,2025-11-19,2025-11-20
6139,Readiness for BOILER CHEMICAL CLEANING,ERC,2025-11-21,2025-11-25
6140,BOILER OPERATING FLOOR (EF Elevation),ERC,2025-11-26,2026-01-13
6141,Copper Tubing for Corner Valves,ERC,2025-11-26,2025-12-03
6142,Erection of JB Frames and JBs for CD Elevation,ERC,2025-12-04,2025-12-11
6143,Healthiness checking of Limit Switches & Adjusting the same,ERC,2025-12-12,2025-12-19
6144,Cabling for Valves & Limit Switches of EF Elevation,ERC,2025-12-20,2025-12-27
6145,Stroking of Corner Skid Valves,ERC,2025-12-28,2026-01-01
6146,Installation of HEA Igniters  flame scanners and its cabling and commissioning,COM,2026-01-02,2026-01-11
6147,Gun Trial,COM,2026-01-12,2026-01-13
6148,MDBFP,ERC,2025-06-05,2025-09-18
6149,Motor Winding/Brg RTD hookup to DCS & HT Breaker cabling & remote operation from DCS,ERC,2025-06-05,2025-06-14
6150,LGB & LIR Erection & Cabling,ERC,2025-06-15,2025-06-24
6151,Impulse Piping of LO LGB  Seal Wtr LGB  FW LIR-HYD/EDN  BP/BFP Suction Strainer DPT  Suction Flow Txr  PT  etc.,ERC,2025-06-25,2025-07-09
6152,MDBFP Motor Trial,COM,2025-08-19,2025-08-19
6153,Hydraulic Coupling Instrumentation - LS  Speed Probe  PT,ERC,2025-08-20,2025-08-29
6154,Commissioning of scoop controller  Speed Measurement  etc,COM,2025-08-30,2025-09-03
6155,MDBFP Motor+Hydraulic Coupling Trial,COM,2025-09-04,2025-09-04
6156,FW System Instrumentation,ERC,2025-09-05,2025-09-14
6157,Copper tubing & commissioning of BFP Re-circulation valve,COM,2025-09-15,2025-09-16
6158,Discharge MOV commissioning,COM,2025-09-17,2025-09-17
6159,MDBFP Coupled Trial,COM,2025-09-18,2025-09-18
6160,Readiness for STEAM BLOWING,ERC,2025-12-01,2025-12-25
6161,Boiler C&I Required for Synchronisation,ERC,2025-09-16,2026-04-28
6162,Instrumentation - Air and Flue Gas Path,ERC,2026-03-25,2026-04-03
6163,Instrumentation - Steam and Water Cycle,ERC,2026-01-26,2026-02-04
6164,EWLI commissioning,COM,2026-02-05,2026-02-12
6165,APRDS Instrumentation & Commissioning,COM,2025-09-16,2025-10-10
6166,HPBP Instrumentation & Commissioning,COM,2026-04-21,2026-04-28
6167,TG C&I READINESS FOR BARRING GEAR,ERC,2025-08-19,2026-01-26
6168,LO System Instrumentation,ERC,2025-10-07,2025-10-21
6169,LO System Drives - Cabling Commissioning,COM,2025-10-22,2025-10-31
6170,LO Temp. CV commissioning,COM,2025-10-27,2025-10-31
6171,Seal Oil System Instrumentation & Drives Commissioning,COM,2025-08-19,2025-08-30
6172,Turbine/Generator Bearing Temperature Measurement Instrumentation,ERC,2025-12-12,2025-12-15
6173,Turbine Supervisory Instrumentation,ERC,2025-12-16,2025-12-20
6174,LO System Interlocks & Protection Trial,ERC,2025-12-16,2025-12-28
6175,Barring Gear,ERC,2026-01-26,2026-01-26
6176,TG C&I READINESS FOR SYNCHRONISATION,ERC,2025-08-21,2026-04-27
6177,Gland Steam System Instrumentation,ERC,2025-11-10,2025-11-24
6178,Vacuum System Instrumentation,ERC,2025-11-10,2025-11-23
6179,Vacuum Breaker Commissioning,COM,2025-11-24,2025-11-26
6180,Commissioning of Vacuum Pumps,COM,2025-11-27,2025-12-02
6181,Primary Water Instrumentation,ERC,2025-08-21,2025-09-09
6182,Generator Instrumentation,ERC,2026-04-11,2026-04-25
6183,MAL Valves commissioning,COM,2025-11-20,2025-12-01
6184,Turbine Integral Drain Valves commissioning,COM,2025-11-25,2025-12-04
6185,Condensate System Instrumentation,ERC,2025-09-05,2025-09-19
6186,Hotwell Instrumentation,ERC,2025-09-20,2025-09-29
6187,CEP Instrumentation & Commissioning,COM,2025-11-04,2025-11-18
6188,Control Valve Commissioning,COM,2025-11-04,2025-11-17
6189,LP Bypass System Instrumentation - Commissioning,COM,2026-04-06,2026-04-20
6190,Steam line instrumentation,ERC,2025-09-09,2025-09-23
6191,Governing System Commissioning,COM,2026-04-06,2026-04-20
6192,Stop Valve/Control Valve Position F/B Commissioning,COM,2026-04-21,2026-04-24
6193,Turbine Protection checking,COM,2026-04-25,2026-04-27
6194,C&I READINESS FOR COAL FIRING,ERC,2025-06-03,2026-05-05
6195,PA FAN,ERC,2025-06-10,2026-03-06
6196,Second PA Fan,ERC,2025-06-10,2026-03-06
6197,Motor Winding & Bearing Temperature signals hookup to DCS,ERC,2025-06-10,2025-06-15
6198,Motor Decoupled trial run,ERC,2025-09-14,2025-09-14
6199,Remote operation of drives like LOPs  Motor  etc,ERC,2026-01-15,2026-01-22
6200,Lube Oil flushing,ERC,2025-07-10,2025-07-23
6201,PA FAN - Instrumentation,ERC,2026-02-02,2026-02-11
6202,Outlet Gate & Blade Pitch Commissioning,COM,2026-02-12,2026-02-17
6203,Hot PA Header Instrumentation,ERC,2026-02-18,2026-02-27
6204,Protection Check & Fan Trial run,COM,2026-03-05,2026-03-06
6205,First PA Fan:,ERC,2025-12-24,2026-02-19
6206,Motor Winding & Bearing Temperature signals hookup to DCS,ERC,2025-12-24,2025-12-29
6207,Motor Decoupled trial run,COM,2025-12-30,2025-12-30
6208,Remote operation of drives like LOPs  Motor  etc,COM,2025-12-31,2026-01-07
6209,Lube Oil flushing,ERC,2025-12-29,2026-01-11
6210,PA FAN - Instrumentation,ERC,2026-01-18,2026-01-27
6211,Outlet Gate & Blade Pitch Commissioning,COM,2026-01-28,2026-02-02
6212,Hot PA Header Instrumentation,ERC,2026-02-03,2026-02-12
6213,Protection Check & Fan Trial run,COM,2026-02-18,2026-02-19
6214,MILLS,ERC,2025-09-02,2025-11-20
6215,Mills,ERC,2025-09-02,2025-11-20
6216,Motor Winding & Bearing Temperature signals hookup to DCS,ERC,2025-09-02,2025-09-11
6217,Remote operation of drives like LOPs  Motor  etc,COM,2025-09-12,2025-09-21
6218,Oil Flushing,ERC,2025-09-22,2025-10-16
6219,Mill Instrumentation,ERC,2025-10-17,2025-11-05
6220,Protection checking & Motor / Mill Trial,COM,2025-11-06,2025-11-15
6221,Cabling  commissioning & calibration of Feeders,COM,2025-11-11,2025-11-20
6222,Drives like I/L gates  O/L gates  HAD/G  CAD/G  etc commissioning,COM,2025-11-18,2025-11-20
6223,SEAL AIR FAN,ERC,2026-04-22,2026-05-05
6224,Seal Air System Instrumentation,ERC,2026-04-22,2026-05-01
6225,Protection Checking & Motor & Fan Trial,COM,2026-05-02,2026-05-05
6226,Boiler C&I Required for Coal Firing,ERC,2025-06-03,2026-04-25
6227,SH & RH Spray System,ERC,2026-03-27,2026-04-10
6228,Burner Tilt Commissioning,COM,2026-04-06,2026-04-20
6229,Erection & Commissioning of O2 Analysers,COM,2025-06-03,2025-09-30
6230,ERV commissioning,COM,2026-04-06,2026-04-20
6231,Soot Blower System Instrumentation & commissioning of MOVs/CVs/SOVs,COM,2025-07-30,2025-08-18
6232,SWAS -Erection & Commissioning,COM,2026-04-06,2026-04-25
6233,TDBFP,ERC,2026-02-11,2026-04-18
6234,L.O. System Instrumentation,ERC,2026-02-11,2026-02-20
6235,LGB & Commissioning & Cabling,COM,2026-02-11,2026-02-20
6236,Impulse piping of LO LGB  Seal Wtr LGB  FW LIR-HYD  BP/BFP Suction Strainer DPT  etc.,ERC,2026-02-21,2026-03-04
6237,LO Drives commissioning,COM,2026-03-05,2026-03-09
6238,TSI & Speed Probes Installation,ERC,2026-03-10,2026-03-19
6239,Barring Gear,ERC,2026-03-20,2026-03-20
6240,Stm Line  GS line  Exhaust - Instrumentation & CV commissioning,COM,2026-03-21,2026-03-28
6241,Governing System Commissioning,COM,2026-03-29,2026-04-01
6242,TDBFP Solo Run,COM,2026-04-02,2026-04-02
6243,Gearbox Instrumentation,ERC,2026-04-03,2026-04-04
6244,FW System Instrumentation,ERC,2026-04-05,2026-04-14
6245,Copper tubing & commissioning of BFP Re-circulation valve,COM,2026-04-15,2026-04-16
6246,Discharge MOV commissioning,COM,2026-04-17,2026-04-17
6247,TDBFP Coupled Trial,ERC,2026-04-18,2026-04-18
6248,E&C of EPABX (Telephone) system,ERC,2025-07-27,2026-04-17
6249,E&C of AAQMS,ERC,2026-04-16,2026-05-15
6250,BOP Systems,OTH,2022-09-27,2026-08-05
6251,Chimney,OTH,2023-07-13,2025-11-30
6252,Chimney- Detailed Engineering & RELEASE OF DRAWING,PE - RFC,2023-07-13,2023-07-13
6253,Chimney- Readiness for BLU,COM,2025-09-01,2025-09-01
6254,Chimney- Complete Readiness,COM,2025-11-30,2025-11-30
6255,Chimney- CIVIL Work,CIV,2023-07-14,2024-11-27
6256,Chimney- Excavation & PCC,CIV,2023-07-14,2023-08-17
6257,Chimney- Reinforcement fixing & Raft segment casting,CIV,2023-08-03,2024-01-02
6258,Chimney- Reinforcement cutting & Bending Works,CIV,2023-08-03,2023-09-21
6259,Chimney- Raft ,CIV,2023-08-23,2023-12-20
6260,Chimney- Starter Block for slipform work,CIV,2023-12-31,2024-01-02
6261,Chimney- Backfilling Works,CIV,2023-12-26,2024-01-24
6262,Chimney- Slipform apparatus arrival @ site,CIV,2023-12-20,2023-12-20
6263,Chimney- Slipform Erection to start at site,CIV,2024-01-08,2024-03-02
6264,Chimney- Shell Casting includes platforms & door openings,CIV,2024-03-13,2024-11-27
6265,Chimney- Shell Casting includes platforms at 45 mtr height,CIV,2024-03-13,2024-05-06
6266,Chimney- Shell Casting includes platforms at 90 mtr height,CIV,2024-05-14,2024-06-27
6267,Chimney- Shell Casting includes platforms at 135 mtr height,CIV,2024-07-05,2024-08-13
6268,Chimney- Shell Casting includes platforms at 180 mtr height,CIV,2024-08-21,2024-09-24
6269,Chimney- Shell Casting includes platforms at 225 mtr height,CIV,2024-10-02,2024-10-31
6270,Chimney- Shell Casting includes platforms at 270 mtr height,CIV,2024-11-08,2024-11-27
6271,Chimney- Preassembly of Main beams & Supporting Beams of Inner Support Structure,CIV,2024-06-01,2024-11-27
6272,Chimney- Preassembly of Steel Flue,CIV,2024-06-01,2024-11-27
6273,Chimney- Inner supporting structure Erection   alignment & fixing in position,CIV,2024-12-13,2025-05-01
6274,Chimney-Erection & alignment at 270 Mtr height,CIV,2024-12-13,2025-01-11
6275,Chimney-Erection & alignment at 225 Mtr height,CIV,2025-01-17,2025-02-10
6276,Chimney-Erection & alignment at 180 Mtr height,CIV,2025-02-16,2025-03-07
6277,Chimney-Erection & alignment at 135 Mtr height,CIV,2025-03-13,2025-04-01
6278,Chimney-Erection & alignment at 90 Mtr height,CIV,2025-04-07,2025-04-21
6279,Chimney-Erection & alignment at 45 mtr height,CIV,2025-04-22,2025-05-01
6280,Chimney-Flue Erection with borosilicate/Titanium/C276 Alloy lining,CIV,2025-05-07,2025-09-01
6281,Chimney-Erection from 275 Mtr to 225 Mtr height,CIV,2025-05-07,2025-05-26
6282,Chimney-Erection 225 Mtr to 180 Mtr height,CIV,2025-06-01,2025-06-18
6283,Chimney-Erection from 180 mtr to 135 Mtr height,CIV,2025-06-24,2025-07-09
6284,Chimney-Erection from 135 mtr to 90 Mtr height,CIV,2025-07-15,2025-07-30
6285,Chimney-Erection from 90 mtr to 45 Mtr height,CIV,2025-08-05,2025-08-17
6286,Chimney-Erection from 45 Mtr to 0.00 mtr height,CIV,2025-08-23,2025-09-01
6287,Chimney- Painting of Outer shell structure,CIV,2025-09-05,2025-11-03
6288,Chimney- Painting upto platforms at 45 mtr height,CIV,2025-09-05,2025-09-14
6289,Chimney- Painting upto platform at 90 mtr height,CIV,2025-09-15,2025-09-24
6290,Chimney- Painting upto platform at 135 mtr height,CIV,2025-09-25,2025-10-04
6291,Chimney- Painting upto platform at 180 mtr height,CIV,2025-10-05,2025-10-14
6292,Chimney- Painting upto platform at 225 mtr height,CIV,2025-10-15,2025-10-24
6293,Chimney- Painting upto platforms at 270 mtr height,CIV,2025-10-25,2025-11-03
6294,Chimney- Grade slab Casting & earthing rod installation,CIV,2025-09-22,2025-11-20
6295,Chimney-Supply & Fixing of aviation lights  lightening arrestor  Chimney Lift &COMPLETION of other Electrical Works,CIV,2025-09-02,2025-11-30
6296,NDCT cooling Tower,CIV,2023-05-19,2025-12-26
6297, NDCT Execution Agency(Ordering by PEM),CIV,2023-05-19,2023-12-15
6298,Enquiry,ENQ,2023-05-19,2023-05-19
6299,PO Placement,ORD,2023-05-20,2023-10-16
6300, Submission of Basic Engineering Design/Drgs,ENG,2023-10-17,2023-12-15
6301,Supply for Cooling Tower,SUP,2024-12-25,2025-05-23
6302, Cooling  Tower- Dispatch: Fill,DIS,2024-12-25,2025-04-23
6303, Cooling  Tower- Dispatch: Distribution Pipe,DIS,2024-12-25,2025-04-23
6304, Cooling  Tower- Dispatch: Nozzles,DIS,2024-12-25,2025-04-23
6305, Cooling  Tower- Dispatch: Butterfly Valve,DIS,2024-12-25,2025-04-23
6306, Cooling  Tower- Dispatch: Pumps/ Motors and connecting pipes and valves,DIS,2024-12-25,2025-04-23
6307, Cooling  Tower- Dispatch: AW Lights and other lights and fittings,DIS,2024-12-25,2025-04-23
6308, Cooling  Tower- Dispatch: Cable  Tray and distribution board,DIS,2024-12-25,2025-04-23
6309, Cooling  Tower- Dispatch: Lighting protection equipment,DIS,2024-12-25,2025-04-23
6310, Cooling  Tower- Dispatch: Earthing,DIS,2024-12-25,2025-04-23
6311, Cooling  Tower- Dispatch: Miscellaneous items - Gates  Sluice valve  Thermowell etc,DIS,2024-12-25,2025-05-23
6312, Cooling Tower Civil Work,CIV,2023-12-16,2025-12-26
6313, Cooling Tower Civil : Excavation,CIV,2023-12-16,2024-01-29
6314, Cooling Tower Civil : PCC Under Foundation,CIV,2023-12-31,2024-02-13
6315, Cooling Tower Civil : Raft/Footing Casting,CIV,2024-01-15,2024-03-19
6316, Cooling Tower Civil : Pedestal Casting,CIV,2024-02-19,2024-03-31
6317, Cooling Tower Civil : Racker Column Casting,CIV,2024-03-02,2024-07-29
6318, Cooling Tower Civil : Tower Crane Erection,ERC,2024-02-19,2024-03-19
6319, Cooling Tower Civil : Ring Beam Casting,CIV,2024-05-01,2024-08-28
6320, Cooling Tower Civil : PCC for Pound,CIV,2024-02-29,2024-04-28
6321, Cooling Tower Civil : RCC for pound floor ,CIV,2024-03-30,2024-07-27
6322, Cooling Tower Civil : Pound wall RCC,CIV,2024-04-14,2024-08-11
6323, Cooling Tower Civil : Shell Casting including top platform (Approx 100 Lift),CIV,2024-06-15,2025-07-02
6324, Cooling Tower Civil : Shell casting Initial manual lifts,CIV,2024-09-01,2024-10-25
6325, Cooling Tower Civil : Jump form erection,CIV,2024-06-15,2024-09-22
6326, Cooling Tower Civil : Shell casting- next 27 nos lifts,CIV,2024-10-26,2024-12-19
6327, Cooling Tower Civil : Shell casting - next 23 nos lifts,CIV,2024-12-20,2025-02-02
6328, Cooling Tower Civil : shell casting - next 23 nos lifts,CIV,2025-02-03,2025-03-19
6329, Cooling Tower Civil : shell casting- next 25 nos  lift,CIV,2025-03-20,2025-05-08
6330, Cooling Tower Civil : shell casting COMPLETION including top platform,CIV,2025-05-09,2025-07-02
6331,Inner Grillage columns casting,CIV,2024-06-01,2025-11-12
6332, Cooling Tower Civil : Grillage columns 1st lift,CIV,2024-06-01,2024-10-03
6333, Cooling Tower Civil : Grillage columns 2nd lift,CIV,2024-09-04,2025-01-06
6334, Cooling Tower Civil : Bottom connecting beam,CIV,2024-12-08,2025-04-01
6335, Cooling Tower Civil : Top connecting beam,CIV,2025-03-03,2025-06-25
6336, Cooling Tower Civil : Auxiliary /secondary connecting bottom beams,CIV,2025-05-27,2025-09-03
6337, Cooling Tower Civil : Auxiliary /secondary connecting top beams,CIV,2025-08-05,2025-11-12
6338, Cooling Tower Civil : Precast Auxiliary 1st tier,CIV,2025-04-02,2025-06-30
6339, Cooling Tower Civil : Precast Auxiliary 2nd tier,CIV,2025-07-01,2025-09-28
6340, Cooling Tower Civil :Erection of duct columns 1st lift,ERC,2025-04-02,2025-06-30
6341, Cooling Tower Civil :Erection of duct columns 2nd lift,ERC,2025-05-02,2025-07-30
6342, Cooling Tower Civil :Erection of grillage bracket 1st lift,ERC,2025-05-02,2025-07-30
6343, Cooling Tower Civil :Erection of grillage bracket 2nd lift,ERC,2025-06-01,2025-08-29
6344, Cooling Tower Civil : Stair case & Ladders,CIV,2025-06-03,2025-09-20
6345, Cooling Tower Civil :COMPLETION of work,CIV,2025-11-13,2025-12-26
6346, Cooling Tower E&C ,ERC,2025-01-04,2025-11-25
6347, Cooling Tower E&C :Erection of Fill  Distribution pipe & Nozzle,ERC,2025-06-18,2025-10-15
6348, Cooling Tower E&C :Erection of Pump  connecting pipes and Valve,ERC,2025-08-17,2025-10-15
6349, Cooling Tower E&C : Fabrication Tower E&C of Hot water piping,ERC,2025-01-04,2025-06-02
6350, Cooling Tower E&C :Erection of Cable Tray  AW Lights and other lights and fittings,ERC,2025-06-03,2025-09-10
6351, Cooling Tower E&C :Erection of Lighting protection equipment,ERC,2025-06-03,2025-09-10
6352, Cooling Tower E&C :Erection of Miscellaneous items - Gates  Sluice valve   Thermowell etc,ERC,2025-09-11,2025-10-10
6353, Cooling Tower E&C : Commissioning,COM,2025-11-13,2025-11-25
6354,Air Conditioning System,ERC,2023-10-27,2026-01-19
6355, Rel of Dwg for Air conditioning system,PE - RFC,2024-06-18,2024-06-18
6356, Air conditioning system Execution Agency,PRC,2023-10-27,2024-03-26
6357,Enquiry,ENQ,2023-10-27,2023-10-27
6358,PO Placement,ORD,2024-03-26,2024-03-26
6359, Air Conditioning  System-Dispatch,DIS,2024-10-23,2025-01-20
6360, Air Conditioning  System-Dispatch: Screw Chiller Unit,DIS,2024-10-23,2024-11-21
6361, Air Conditioning  System-Dispatch: Cooling Water Pumps,DIS,2024-10-23,2024-11-21
6362, Air Conditioning  System-Dispatch: Chilled Water Pumps,DIS,2024-10-23,2024-11-21
6363, Air Conditioning  System-Dispatch: Pipe & Fittings,DIS,2024-11-22,2024-12-21
6364, Air Conditioning  System-Dispatch: AHU,DIS,2024-12-22,2025-01-20
6365, Air Conditioning  System-Dispatch: Duct & Dampers,DIS,2024-12-22,2025-01-20
6366, Air Conditioning  System-Dispatch: Cable & Cable Tray,DIS,2024-12-22,2025-01-20
6367, Air Conditioning  System-Dispatch: Valves,DIS,2024-11-22,2024-12-21
6368, Air Conditioning  System-Dispatch: Misc. Items,DIS,2024-12-22,2025-01-20
6369,E&C for AIR CONDITIONING SYSTEM,ERC,2024-11-22,2026-01-19
6370, AIR CONDITIONING SYSTEM E&C:Water cooled screw chiller unit,ERC,2024-11-22,2024-12-21
6371, AIR CONDITIONING SYSTEM E&C:Condenser cooling water pumps,ERC,2024-12-22,2025-02-04
6372, AIR CONDITIONING SYSTEM E&C:Chilled Water circulating Pumps,ERC,2025-02-05,2025-03-21
6373, AIR CONDITIONING SYSTEM E&C:Cooling Tower,ERC,2025-03-22,2025-07-19
6374, AIR CONDITIONING SYSTEM E&C:Interconnecting piping,ERC,2025-05-21,2025-09-17
6375, AIR CONDITIONING SYSTEM E&C:Air Handling Units,ERC,2025-06-20,2025-10-17
6376, AIR CONDITIONING SYSTEM E&C:Ducting / Dampers / Hangers / Supports / Fire dampers,ERC,2025-07-20,2025-12-16
6377, AIR CONDITIONING SYSTEM E&C:Electrical & C&I  Misc. item,ERC,2025-08-19,2026-01-05
6378, AIR CONDITIONING SYSTEME&C:AC SYSTEM Commissioning,COM,2026-01-06,2026-01-19
6379,Air Compressor System,ERC,2023-08-23,2025-12-21
6380, Rel of Dwg for Air compressor house,PE - RFC,2024-06-04,2024-06-04
6381, Air compressor system Execution Agency,PRC,2023-08-23,2024-01-20
6382,Enquiry,ENQ,2023-08-23,2023-08-23
6383,PO Placement,ORD,2023-08-24,2024-01-20
6384, Civil,CIV,2024-06-05,2025-12-21
6385, Air Compressor Building: Foundation,CIV,2024-06-05,2024-12-01
6386, Air Compressor Building: Structure Erection,ERC,2024-12-02,2025-03-31
6387, Air Compressor Building: Grade Slab,CIV,2025-04-01,2025-04-30
6388, Air Compressor Building: Cladding & Sheeting,CIV,2025-04-01,2025-04-30
6389, Air Compressor Building: EOT Erection,ERC,2025-04-01,2025-07-29
6390, Air Compressor Building: Brick Work & Plastering,CIV,2025-07-30,2025-10-27
6391, Air Compressor Building: Flooring,CIV,2025-10-28,2025-11-21
6392, Air Compressor Building: Finishing works,CIV,2025-11-22,2025-12-21
6393,Supply-PEM,SUP,2024-09-07,2024-10-21
6394,Dispatch of COMPRESSED AIR SYSTEM: Instrument & Service air Compressors,DIS,2024-09-07,2024-10-06
6395,Dispatch of COMPRESSED AIR SYSTEM: Air Dryer,DIS,2024-09-07,2024-10-06
6396,Dispatch of COMPRESSED AIR SYSTEM: Air receiver tank,DIS,2024-09-07,2024-10-06
6397,Dispatch of COMPRESSED AIR SYSTEM: Pipe & Fittings,DIS,2024-09-22,2024-10-21
6398,Dispatch of COMPRESSED AIR SYSTEM: Valves,DIS,2024-09-22,2024-10-21
6399,Dispatch of COMPRESSED AIR SYSTEM: Cables and cable tray and other electrical & C&I  items,DIS,2024-09-22,2024-10-21
6400,Dispatch of COMPRESSED AIR SYSTEM: PLC,DIS,2024-09-22,2024-10-21
6401,Dispatch of COMPRESSED AIR SYSTEM: Misc. Items,DIS,2024-09-22,2024-10-21
6402,Erection,ERC,2025-05-01,2025-10-24
6403,E&C for compressed air system: ERECTION OF DRYER FOR INSTRUMENT AIR COMPRESSOR,ERC,2025-05-01,2025-05-07
6404,E&C for compressed air Misc. OF RECEIVER TANK FOR INSTRUMENT AIR COMPRESSOR,ERC,2025-05-08,2025-05-14
6405,E&C for compressed air system: PLACEMENT OF INSTRUMENT AIR COMPRESSOR ON ON FOUNDATION,ERC,2025-05-15,2025-06-03
6406,E&C for compressed air system: PLACEMENT OF DRYER FOR SERVICE AIR COMPRESSOR,ERC,2025-06-04,2025-06-10
6407,E&C for compressed air system: PLACEMENT OF RECEIVER TANK FOR SERVICE AIR COMPRESSOR,ERC,2025-06-11,2025-06-17
6408,E&C for compressed air system: PLACEMENT OF SERVICE AIR COMPRESSOR ON ON FOUNDATION,ERC,2025-06-18,2025-07-07
6409,E&C for compressed air system: PLACEMENT OF PIPES AND FITTINGS,ERC,2025-07-08,2025-08-21
6410,E&C for compressed air system: PLACEMENT OF VALVES,ERC,2025-08-22,2025-09-08
6411,E&C for compressed air system: PLACEMENT OF PLC  Electrical   C&I and misc. items FOR COMRESSED AIR SYSTEM,ERC,2025-09-09,2025-10-08
6412,E&C for compressed air system: Commissioning of compressed air system,COM,2025-10-09,2025-10-24
6413,Water Treatment system ,CIV,2023-06-04,2025-12-26
6414,Raw Water Storage Reservoir & Pump house,CIV,2023-07-14,2025-04-14
6415,Civil,CIV,2023-07-14,2025-04-14
6416,Rel of DWG for Raw water storage tank,PE - RFC,2023-09-27,2023-09-27
6417,Rel of DWG for Raw water PH,PE - RFC,2023-12-26,2023-12-26
6418,RAW WATER RESERVOIR,CIV,2023-10-28,2024-04-09
6419,  EXCAVATION,CIV,2023-10-28,2023-11-21
6420,  PCC,CIV,2023-11-22,2023-12-06
6421,  RCC,CIV,2023-12-07,2024-03-05
6422,  Backfilling,CIV,2024-03-06,2024-03-20
6423,  Finishing works,CIV,2024-03-21,2024-04-09
6424,RAW WATER CONTROL ROOM,CIV,2023-07-14,2023-12-25
6425,  EXCAVATION,CIV,2023-07-14,2023-08-07
6426,  PCC,CIV,2023-08-08,2023-08-22
6427,  RCC,CIV,2023-08-23,2023-11-20
6428,  Backfilling,CIV,2023-11-21,2023-12-05
6429,  Finishing works,CIV,2023-12-06,2023-12-25
6430,Raw Water Pump House,CIV,2024-01-26,2025-04-14
6431,Raw Water Pump House: EXCAVATION,CIV,2024-01-26,2024-02-19
6432,Raw Water Pump House: RCC in substructure including PCC,CIV,2024-02-20,2024-05-19
6433,Raw Water Pump House: RCC in superstructure including equipment foundation,CIV,2024-05-20,2024-09-16
6434,Raw Water Pump House: Brick Work & Plastering,CIV,2024-09-17,2024-12-15
6435,Raw Water Pump House: Flooring,CIV,2024-12-16,2025-01-14
6436,Raw Water Pump House: Backfilling,CIV,2025-01-15,2025-02-13
6437,Raw Water Pump House: Finishing works,CIV,2025-02-14,2025-04-14
6438,Erection,ERC,2023-11-01,2025-03-14
6439,Raw water Piping and associated work,CIV,2023-11-01,2025-02-07
6440,Readiness of Control room,CIV,2023-12-06,2025-03-14
6441,Pre-treatment Plant,CIV,2023-06-04,2025-09-25
6442, PT Plant Execution Agency,PRC,2023-06-04,2024-06-15
6443,Enquiry,ENQ,2023-06-04,2023-06-04
6444,PO Placement,ORD,2023-11-17,2023-11-17
6445, Rel of Drawing for Cascade Aerator/Flash Mixer/Stilting Chamber/Parshall Flume,PE - RFC,2024-05-16,2024-05-16
6446, Rel of Drg for CLARI FOCULATOR,PE - RFC,2024-06-15,2024-06-15
6447, Rel of Drg for Chemical House,PE - RFC,2024-06-15,2024-06-15
6448, Rel of Drg for Pump House,PE - RFC,2024-06-15,2024-06-15
6449,Civil Work,CIV,2024-06-16,2025-07-20
6450, Cascade Aerator/Flash Mixer/Stilting Chamber/Parshall Flume,CIV,2024-06-16,2024-12-12
6451,EXCAVATION,CIV,2024-06-16,2024-07-10
6452,RCC in substructure including PCC,CIV,2024-07-11,2024-08-14
6453,RCC in superstructure,CIV,2024-08-15,2024-10-13
6454,Backfilling,CIV,2024-10-14,2024-10-28
6455,Finishing works,CIV,2024-10-29,2024-12-12
6456, CLARI FOCULATOR,CIV,2024-06-26,2025-02-20
6457,EXCAVATION,CIV,2024-06-26,2024-07-20
6458,RCC in substructure including PCC,CIV,2024-07-21,2024-09-13
6459,RCC in superstructure,CIV,2024-09-14,2024-12-07
6460,Backfilling,CIV,2024-12-08,2024-12-22
6461,Finishing works,CIV,2025-02-11,2025-02-20
6462, Chemical House,CIV,2024-06-26,2025-07-20
6463,EXCAVATION,CIV,2024-06-26,2024-07-10
6464,RCC in substructure including PCC,CIV,2024-07-11,2024-08-14
6465,RCC in superstructure including equipment foundation,CIV,2024-08-15,2024-11-12
6466,Brick Work & Plastering,CIV,2024-12-13,2025-03-12
6467,Flooring,CIV,2025-03-13,2025-04-01
6468,Backfilling,CIV,2025-04-02,2025-04-21
6469,Finishing works,CIV,2025-04-22,2025-07-20
6470, Pump House,CIV,2024-06-26,2025-06-15
6471,EXCAVATION,CIV,2024-06-26,2024-07-15
6472,RCC in substructure including PCC,CIV,2024-07-16,2024-08-19
6473,RCC in superstructure including equipment foundation,CIV,2024-08-20,2024-11-17
6474,Brick Work & Plastering,CIV,2024-12-08,2025-02-05
6475,Flooring,CIV,2025-02-06,2025-02-25
6476,Backfilling,CIV,2025-02-26,2025-03-17
6477,Finishing works,CIV,2025-03-18,2025-06-15
6478,Supply,SUP,2024-07-15,2024-12-08
6479,Dispatch of Rake mechanism with drive & motor,DIS,2024-08-04,2024-11-02
6480,Dispatch of Transfer Pumps,DIS,2024-07-15,2024-10-07
6481,Dispatch of Injection Pumps ,DIS,2024-08-14,2024-10-24
6482,Dispatch of Dosing Pumps,DIS,2024-08-14,2024-10-24
6483,Dispatch of Agitator with motor ,DIS,2024-08-04,2024-10-03
6484,Dispatch of Piping  Fittings and valves,DIS,2024-08-14,2024-11-13
6485,Dispatch of Electrical & C&I items (Transmitters  local instruments  cable  junction box  PLC etc.),DIS,2024-08-14,2024-12-08
6486,Dispatch of Misc. Items & Potable pump,DIS,2024-08-14,2024-12-08
6487,Erection,ERC,2024-11-18,2025-09-25
6488,Erection of Mixer cum solid recirculation device with drive and motor,ERC,2024-12-23,2025-02-10
6489,Erection of Rake mechanism with drive & motor,ERC,2024-12-23,2025-02-10
6490,Erection of Transfer Pumps (Sludge  Lime Slake etc),ERC,2024-11-23,2024-12-12
6491,Erection of Injection Pumps (Alum etc),ERC,2024-11-18,2024-12-07
6492,Erection of Dosing Pumps (Poly electrolyte  lime solution etc),ERC,2024-11-18,2024-12-07
6493,Erection of Agitator and motor for Alum/Lime Slaking/Lime Solution,ERC,2024-11-18,2024-12-07
6494,Erection of Piping  Fittings and valves,ERC,2024-12-13,2025-02-10
6495,Erection of Electrical  C&I & Misc. items,ERC,2025-02-11,2025-04-16
6496,Commissioning of clarifier along with Chlorination and Filter water system to feed the DM Plant,COM,2025-02-11,2025-02-15
6497,Commissioning of 1st CW Clarifier  clarified water pumps and associated System to feed clarified water to CW system,COM,2025-04-17,2025-07-26
6498,Commissioning of 2nd Clarifier for CW System,COM,2025-07-27,2025-09-25
6499,Commissioning of Potable Water System,COM,2025-03-13,2025-05-26
6500,Commissioning of Service water system,COM,2025-03-13,2025-07-26
6501,DM Plant,OTH,2023-06-23,2025-07-20
6502, Rel of Dwg for DM Plant Building,PE - RFC,2024-02-09,2024-02-09
6503, Rel of Dwg for DM Plant equipment foundation,PE - RFC,2025-02-07,2025-02-07
6504, Rel of Dwg for DM Plant Neutralization Pit,PE - RFC,2024-09-09,2024-09-09
6505, DM Plant Execution Agency,PRC,2023-06-23,2024-01-19
6506,Enquiry,ENQ,2023-06-23,2023-06-23
6507,PO Placement,ORD,2023-06-24,2023-11-20
6508, Submission of Basic Engineering Design/Drgs,ENG,2023-11-21,2024-01-19
6509, Civil Works,CIV,2024-02-10,2025-05-19
6510, Acid alkali Unloading & storage area,CIV,2024-02-10,2024-12-25
6511,EXCAVATION,CIV,2024-02-10,2024-02-29
6512,RCC in substructure including PCC,CIV,2024-03-01,2024-04-04
6513,RCC in superstructure including equipment foundation,CIV,2024-04-05,2024-05-19
6514,Brick Work & Plastering,CIV,2024-11-16,2024-11-25
6515,Flooring,CIV,2024-11-26,2024-12-05
6516,Backfilling,CIV,2024-12-06,2024-12-15
6517,Finishing works,CIV,2024-12-16,2024-12-25
6518, DM Plant Building including Vessel Foundation,CIV,2024-02-10,2025-05-19
6519,EXCAVATION,CIV,2024-02-10,2024-03-10
6520,RCC in substructure including PCC,CIV,2024-03-11,2024-04-29
6521,RCC in superstructure including equipment foundation,CIV,2024-04-30,2024-07-28
6522,Backfilling,CIV,2024-07-29,2024-08-17
6523,Brick Work & Plastering,CIV,2024-12-01,2025-01-29
6524,Flooring,CIV,2025-01-30,2025-02-18
6525,Finishing works,CIV,2025-02-19,2025-05-19
6526, Neutralization Pit,CIV,2024-09-10,2025-02-21
6527,EXCAVATION,CIV,2024-09-10,2024-10-14
6528,RCC in substructure including PCC,CIV,2024-10-15,2024-11-23
6529,RCC in superstructure,CIV,2024-11-24,2024-12-23
6530,Backfilling,CIV,2024-12-24,2025-01-07
6531,Acid Proof lining,CIV,2025-01-08,2025-02-21
6532,Supply for DM Plant,SUP,2024-04-04,2024-08-01
6533,Dispatch of Activated carbon filter,DIS,2024-04-04,2024-05-18
6534,Dispatch of Cation Exchange Unit,DIS,2024-04-04,2024-05-18
6535,Dispatch of Anion Exchange Unit,DIS,2024-04-04,2024-05-18
6536,Dispatch of Mix Bed Exchanger Unit,DIS,2024-04-04,2024-05-18
6537,Dispatch of Agitators,DIS,2024-05-19,2024-07-02
6538,Dispatch of Air Blowers,DIS,2024-05-19,2024-07-02
6539,Dispatch of Supply & Transfer Pumps,DIS,2024-04-04,2024-05-18
6540,Dispatch of Unloading Pumps,DIS,2024-04-04,2024-05-18
6541,Dispatch of Storage/Measuring Tanks,DIS,2024-04-04,2024-05-18
6542,Dispatch of Pipe  Fittings & Valves,DIS,2024-04-04,2024-05-18
6543,Dispatch of Electrical & C&I Items (Motors  Measuring instruments  Cable tray  JBs  Control panel etc.),DIS,2024-06-18,2024-08-01
6544,Dispatch of Balance Items,DIS,2024-06-18,2024-08-01
6545,Erection,ERC,2024-07-19,2025-07-20
6546,Erection of Activated carbon filter,ERC,2024-07-29,2024-10-26
6547,Erection of Cation Exchange Unit,ERC,2024-07-29,2024-10-26
6548,Erection of Anion Exchange Unit,ERC,2024-07-29,2024-10-26
6549,Erection of Mix Bed Exchanger,ERC,2024-07-29,2024-10-26
6550,Agitators,ERC,2024-10-27,2024-11-10
6551,Erection of Air Blowers,ERC,2024-11-11,2024-11-30
6552,Erection of Supply & Transfer Pumps,ERC,2024-08-18,2024-11-05
6553,Erection of Unloading Pumps,ERC,2024-08-08,2024-10-26
6554,Erection of Storage/Measuring Tanks,ERC,2024-07-29,2024-11-15
6555,Erection of Pipe  Fittings & Valves,ERC,2024-07-19,2024-11-05
6556,Electrical   C&I and Misc. Items (DTT  Motors  Measuring instruments  Cable tray  JBs  Control panel etc.),ERC,2024-09-22,2024-11-05
6557,Readiness for HT(Completion of DM Plant: 1st Stream along with associated systems and Charging of DM Fill System),ERC,2025-02-16,2025-02-20
6558,Completion of DM Plant (Balance streams),ERC,2025-02-21,2025-07-20
6559,Effluent Treatment Plant with ZLD,OTH,2023-12-01,2025-12-26
6560,ETP Execution Agency,PRC,2023-12-01,2024-08-27
6561,Enquiry,ENQ,2023-12-01,2023-12-01
6562,PO Placement,ORD,2023-12-02,2024-06-28
6563,Engineering Design/Drgs,ENG,2024-06-29,2024-08-27
6564,Civil,CIV,2024-09-13,2025-07-14
6565,EXCAVATION,CIV,2024-09-13,2024-10-27
6566,RCC in substructure including PCC,CIV,2024-10-28,2025-01-15
6567,RCC in superstructure including equipment foundation,CIV,2025-01-16,2025-05-15
6568,Backfilling,CIV,2025-05-16,2025-06-14
6569,Finishing works,CIV,2025-06-15,2025-07-14
6570,Supply,SUP,2025-03-16,2025-05-14
6571,ATMOSPHERIC TANKS (Flash Mixer  Floculator  Alkali Dosing and Alum Dosing Tank),SUP,2025-03-16,2025-05-14
6572,AGITATORS  STRAINERS ,SUP,2025-03-16,2025-05-14
6573,TUBES/MEDIA FOR INCLINED SURFACE SETTLER AND OIL WATER SEPERATOR ,SUP,2025-03-16,2025-05-14
6574,PUMPS & BLOWERS,SUP,2025-03-16,2025-05-14
6575,PIPING AND FITTINGS,SUP,2025-03-16,2025-05-14
6576,VALVES ,SUP,2025-03-16,2025-05-14
6577,ELECTRICAL ITEMS,SUP,2025-03-16,2025-05-14
6578,INSTRUMENTS AND CONTROL SYSTEM,SUP,2025-03-16,2025-05-14
6579,MISC ITEMS,SUP,2025-03-16,2025-05-14
6580,Erection,ERC,2025-07-15,2025-12-26
6581,ATMOSPHERIC TANKS (Flash Mixer  Floculator  Alkali Dosing and Alum Dosing Tank),ERC,2025-07-15,2025-08-03
6582,TUBES/MEDIA FOR INCLINED SURFACE SETTLER AND OIL WATER SEPERATOR ,ERC,2025-08-04,2025-09-17
6583,AGITATORS  STRAINERS ,ERC,2025-09-18,2025-10-07
6584,PUMPS & BLOWERS,ERC,2025-07-15,2025-08-03
6585,PIPING AND FITTINGS ALOGWITH VALVES,ERC,2025-08-04,2025-10-02
6586,ELECTRICAL ITEMS,ERC,2025-09-03,2025-11-01
6587,INSTRUMENTS AND CONTROL SYSTEM,ERC,2025-09-03,2025-11-11
6588,MISC ITEMS,ERC,2025-10-28,2025-11-26
6589,COMMISSIONING,COM,2025-11-27,2025-12-26
6590,Fuel Oil Handling system,OTH,2023-08-23,2025-11-17
6591, Rel of DWG for LDO,PE - RFC,2024-06-14,2024-06-14
6592, Rel of DWG for FO TR Pump House,PE - RFC,2024-06-28,2024-06-28
6593, Rel of DWG for FO Pressurizing Pump House,PE - RFC,2024-06-14,2024-06-14
6594, FO system Execution Agency,PRC,2023-08-23,2024-03-20
6595,Enquiry,ENQ,2023-08-23,2023-08-23
6596,PO Placement,ORD,2023-08-24,2024-03-20
6597, Civil,CIV,2024-06-24,2025-09-17
6598,LDO Day Tank Foundation,CIV,2024-06-24,2024-10-27
6599,  LDO Day Tank Foundation: EXCAVATION,CIV,2024-06-24,2024-07-13
6600,  LDO Day Tank Foundation: RCC in substructure including PCC,CIV,2024-07-14,2024-08-17
6601,  LDO Day Tank Foundation: RCC in superstructure,CIV,2024-08-18,2024-10-01
6602,  LDO Day Tank Foundation: Backfilling,CIV,2024-10-02,2024-10-11
6603,  LDO Day Tank Foundation: Finishing works,CIV,2024-10-12,2024-10-27
6604, FO Pressurizing pump house & Unloading pump house,CIV,2024-06-25,2025-09-17
6605, FO Pressurizing pump house: Foundation,CIV,2024-06-25,2024-12-21
6606, FO Pressurizing pump house: Mixer  Floculator  Alkali,CIV,2024-12-22,2025-04-20
6607, FO Pressurizing pump house: Grade Slab,CIV,2025-04-21,2025-05-20
6608, FO Pressurizing pump house: Cladding & Sheeting,CIV,2025-04-21,2025-05-20
6609, FO Pressurizing pump house: Mixer  Floculator  Alkali,CIV,2025-05-21,2025-09-17
6610, FO Pressurizing pump house: Brick Work & Plastering,CIV,2025-05-21,2025-08-18
6611, FO Pressurizing pump house: Flooring,CIV,2025-05-21,2025-06-14
6612, FO Pressurizing pump house: Finishing works,CIV,2025-08-19,2025-09-17
6613,Supply,SUP,2024-07-19,2025-01-14
6614,FOPH Dispatch- Steel for Day Tanks,SUP,2024-07-19,2024-09-16
6615,FOPH Dispatch-Transfer Pumps,SUP,2024-10-17,2024-12-15
6616,FOPH Dispatch- Pipes & Fittings,SUP,2024-11-16,2025-01-14
6617,FOPH Dispatch- Valves,SUP,2024-11-16,2025-01-14
6618,FOPH Dispatch- Electrical and C&l items(Instruments  Cable & Cable Trays etc.),SUP,2024-11-16,2025-01-14
6619,FOPH Dispatch- Misc. items,SUP,2024-11-16,2025-01-14
6620,Erection,ERC,2024-11-07,2025-11-17
6621,E&C FO System: Fabrication of  LDO Day Tank,ERC,2024-11-07,2025-03-21
6622,E&C FO System: Water fill Test of LDO Tank,ERC,2025-03-22,2025-03-31
6623,E&C FO System: Erection of transfer Pumps,ERC,2025-04-01,2025-04-20
6624,E&C FO Misc. of  LDO Pump,ERC,2025-05-21,2025-07-19
6625,E&C FO Misc. of Piping from PUMP House to Boiler,ERC,2025-07-20,2025-11-07
6626,E&C FO Misc. of piping and valves,ERC,2025-04-21,2025-05-30
6627,E&C FO System: Electrical and C&I /misc. items,ERC,2025-05-31,2025-06-19
6628,E&C FO System: Painting of Tanks,ERC,2025-06-20,2025-07-12
6629,E&C FO System: Testing & Commissioning,COM,2025-11-08,2025-11-17
6630,Site fabricated tank,OTH,2023-05-05,2025-12-24
6631,Rel of dwg for Condensate storage tank,PE - RFC,2024-03-10,2024-03-10
6632,Condensate Storage Tank,OTH,2023-05-05,2025-02-07
6633,Site fabricated tank execution agency,OTH,2023-05-05,2024-04-02
6634,Enquiry,ENQ,2023-05-05,2023-05-05
6635,PO placement,ORD,2023-05-06,2023-10-02
6636,Supply,SUP,2024-02-03,2024-04-02
6637,Civil Work,CIV,2024-03-11,2024-07-23
6638,Condensate Storage Tank Foundation,CIV,2024-03-11,2024-07-23
6639,Condensate Storage Tank Foundation - EXCAVATION,CIV,2024-03-11,2024-03-30
6640,Condensate Storage Tank Foundation- PCC including RCC substructure,CIV,2024-03-31,2024-05-14
6641,Condensate Storage Tank Foundation - RCC in super structure,CIV,2024-05-15,2024-06-28
6642,Condensate Storage Tank Foundation - Backfilling,CIV,2024-06-29,2024-07-13
6643,Condensate Storage Tank Foundation - Finishing,CIV,2024-07-14,2024-07-23
6644,Erection,ERC,2024-07-24,2025-02-07
6645,E&C of CST - Fabrication &Erection of Bottom Plate,ERC,2024-07-24,2024-08-07
6646,E&C of CST -Marking of edge preparation & Rolling of shell plates,ERC,2024-08-03,2024-08-27
6647,E&C of CST -Shifting  Erection & Alignment of Shell Plates,ERC,2024-08-28,2024-10-26
6648,E&C of CST -Erection of Curb Angle,ERC,2024-10-27,2024-11-07
6649,E&C of CST -NDT of Tee & Horizontal Joint,ERC,2024-11-10,2024-11-16
6650,E&C of CST -Erection of Roof Structure,ERC,2024-11-17,2024-11-23
6651,E&C of CST -Erection of Roof Plate,ERC,2024-11-24,2024-11-30
6652,E&C of CST -Erection of Nozzles,ERC,2024-12-03,2024-12-05
6653,E&C of CST -Vacuum Test of Bottom Plate,ERC,2024-12-06,2024-12-07
6654,E&C of CST -Vacuum Test of Roof Plate,ERC,2024-12-08,2024-12-09
6655,E&C of CST -Erection of Staircase & Railing,ERC,2024-12-10,2024-12-21
6656,E&C of CST -Water Filled Test,ERC,2024-12-24,2024-12-28
6657,E&C of CST -Cleaning   Sand Blasting & Painting of Tank (Internal),ERC,2024-12-31,2025-01-08
6658,E&C of CST -Cleaning & Painting of Tank (External),ERC,2025-01-09,2025-01-17
6659,E&C of CST -Erection of NaOH Breather & Seal Pot,ERC,2025-01-28,2025-02-05
6660,E&C of CST - Readiness of CST,ERC,2025-02-06,2025-02-07
6661,Readiness of other site fabricated tank,ERC,2025-02-08,2025-12-24
6662,CW & ACW System,ERC,2022-09-27,2025-11-25
6663,Civil Work,CIV,2024-01-10,2025-11-25
6664, Rel of Drawing for CW Sump,PE - RFC,2024-01-10,2024-01-10
6665, Rel of Drawing for CW Pump House,PE - RFC,2024-07-08,2024-07-08
6666, Rel of Drawing for CW Channel,PE - RFC,2024-12-05,2024-12-05
6667, CW Pump House & ACW pump house,OTH,2024-01-11,2025-11-25
6668, CW & ACW Sump & Forebay,CIV,2024-01-11,2024-08-22
6669, CW & ACW Sump & Forebay: Excavation & PCC,CIV,2024-01-11,2024-02-09
6670, CW & ACW Sump & Forebay: Sump Raft Casting,CIV,2024-02-10,2024-03-25
6671, CW & ACW Sump & Forebay: Fore Bay Raft Casting,CIV,2024-03-26,2024-05-09
6672, CW & ACW Sump & Forebay: Fore Bay Retaining walls Casting,CIV,2024-05-10,2024-08-07
6673, CW & ACW Sump & Forebay: Backfilling,CIV,2024-08-08,2024-08-22
6674, CW & ACW Sump & Forebay: Sump wall 1st Lift,CIV,2024-03-26,2024-04-14
6675, CW & ACW Sump & Forebay: Sump wall 2nd Lift,CIV,2024-04-15,2024-05-04
6676, CW & ACW Sump & Forebay: Sump wall final Lift,CIV,2024-05-05,2024-05-24
6677, CW & ACW Sump & Forebay: Pump slab casting,CIV,2024-05-25,2024-06-23
6678, Concrete Volute Pump,CIV,2024-05-05,2024-10-11
6679, Concrete Volute Pump: First Stage Casting,CIV,2024-05-05,2024-06-18
6680, Concrete Volute Pump: Second Stage casting,CIV,2024-06-24,2024-08-07
6681, Concrete Volute Pump: Third Stage Casting,CIV,2024-08-13,2024-09-11
6682, Concrete Volute Pump: Final Stage Casting & HT,CIV,2024-09-17,2024-10-11
6683, CW Pump House Building,CIV,2024-07-09,2025-11-25
6684,CW Pump House Building: Foundation,CIV,2024-07-09,2025-01-04
6685,CW Pump House Building: Forebay: Fore,CIV,2025-01-05,2025-05-04
6686,CW Pump House Building: Grade Slab,CIV,2025-05-05,2025-06-03
6687,CW Pump House Building: Cladding & Sheeting,CIV,2025-05-05,2025-06-03
6688,CW Pump House Building: EOT Erection,ERC,2025-06-04,2025-10-01
6689,CW Pump House Building:: Brick Work & Plastering,CIV,2025-07-04,2025-10-01
6690,CW Pump House Building: Flooring,CIV,2025-10-02,2025-10-26
6691,CW Pump House Building: Finishing works,CIV,2025-10-27,2025-11-25
6692,CW Channel,CIV,2024-07-19,2025-08-02
6693,Excavation,CIV,2025-02-04,2025-08-02
6694,PCC,CIV,2024-11-06,2025-05-04
6695,RCC,CIV,2024-07-19,2025-02-03
6696,Mechanical Erection (Valves/Gates etc),ERC,2025-02-04,2025-06-03
6697,Supply,SUP,2022-09-27,2025-04-22
6698,BOI- PEM - MISC.PUMPS (VERTICAL) ,SUP,2023-07-14,2024-09-05
6699,Ordering,ORD,2023-07-14,2023-10-11
6700,Detailed Engineering,ENG,2023-10-12,2024-03-09
6701,Manufacturing,MFG,2024-03-10,2024-08-06
6702,Dispatch,DIS,2024-08-07,2024-09-05
6703,BOI-PEM - M.E. BELLOWS ,SUP,2023-08-23,2024-10-15
6704,Ordering,ORD,2023-08-23,2023-11-20
6705,Detailed Engineering,ENG,2023-11-21,2024-04-18
6706,Manufacturing,MFG,2024-04-19,2024-09-15
6707,Dispatch,DIS,2024-09-16,2024-10-15
6708,BOI-PEM - SELF CLEANING STRAINERS ,SUP,2023-09-12,2024-11-04
6709,Ordering,ORD,2023-09-12,2023-12-10
6710,Detailed Engineering,ENG,2023-12-11,2024-05-08
6711,Manufacturing,MFG,2024-05-09,2024-10-05
6712,Dispatch,DIS,2024-10-06,2024-11-04
6713,BPL - CW Pump Motor,SUP,2023-07-27,2025-04-22
6714,Engineering  INDENTING AND PROCUREMENT ,ENG,2023-07-27,2024-05-24
6715,Manufacturing & TESTING ,MFG,2024-05-25,2025-02-21
6716, Dispatch ,DIS,2025-02-22,2025-03-23
6717,RECEIPT AT SITE ,REC,2025-03-24,2025-04-22
6718,COOLING WATER PUMP (CV TYPE) -2 Nos (1 No Common for Both Units),OTH,2022-09-27,2025-01-17
6719,ENGINEERING & PROCUREMENT,ENG,2022-09-27,2023-12-25
6720,MANUFACTURING,MFG,2023-12-26,2024-08-31
6721,ASSEMBLY& TESTING,MFG,2024-09-01,2024-12-18
6722,Dispatch OF COOLING WATER PUMP AND ALL ASSOCIATED ITEMS,DIS,2024-12-19,2025-01-17
6723,Erection,ERC,2024-11-06,2025-10-09
6724,Placement and alignment of CW Pump,ERC,2025-06-04,2025-07-03
6725,Placement and alignment of CW Pump Motor,ERC,2025-06-04,2025-06-18
6726,Placement and alignment of ACW Pump,ERC,2025-06-04,2025-06-28
6727,Erection of SCS,ERC,2025-06-29,2025-07-13
6728,Pipe  fittings & Valves for ACW system,ERC,2025-07-14,2025-10-09
6729,Erection of DISCHARGE PIPING FROM CWP TO CONDENSOR,ERC,2024-11-06,2025-07-03
6730,Erection of CW PIPING-CW INLET HEADER OF CONDENSER,ERC,2025-05-05,2025-07-03
6731,Erection of CW PIPING- CW OUTLET HEADER OF CONDENSER,ERC,2025-05-05,2025-07-03
6732,Erection of CW PIPING-HOT WATER PIPING FROM CONDENSER TO CT,ERC,2024-11-06,2025-07-03
6733,CW pump Electrical and C&I intersection,ERC,2025-02-04,2025-07-03
6734,CW pump trial,COM,2025-07-04,2025-07-13
6735,EOT Cranes For PH,OTH,2023-01-18,2024-07-28
6736,Supply,SUP,2023-01-18,2024-03-12
6737,BOI-PEM - D/G EOT CRANE,SUP,2023-01-18,2024-03-12
6738,Ordering,ORD,2023-01-18,2023-04-17
6739,Detailed Engineering,ENG,2023-04-18,2023-09-14
6740,Manufacturing,MFG,2023-09-15,2024-02-11
6741,Dispatch,DIS,2024-02-12,2024-03-12
6742,Erection,ERC,2024-03-28,2024-07-28
6743,Inspection of power house AB Bay,ERC,2024-03-28,2024-04-01
6744,Erection of Crane girder in AB Bay,ERC,2024-04-02,2024-04-29
6745,Erection of Rails in AB Bay,ERC,2024-04-30,2024-06-10
6746,Assembly of Crane on girder in AB Bay,ERC,2024-06-11,2024-07-08
6747,Load testing of EOT crane in AB Bay,COM,2024-07-09,2024-07-18
6748,Commissioning of EOT crane in AB Bay,COM,2024-07-19,2024-07-28
6749,Ventilation System,OTH,2023-08-23,2026-03-26
6750,RFC Air Washer Building drawings,PE - RFC,2024-05-29,2024-05-29
6751, Ventilation system Execution Agency,PRC,2023-08-23,2024-01-20
6752,Enquiry,ENQ,2023-08-23,2023-08-23
6753,PO Placement,ORD,2023-08-24,2024-01-20
6754, Ventilation System,PRC,2024-05-30,2025-06-03
6755,Air Washer Building: EXCAVATION,CIV,2024-05-30,2024-06-18
6756,Air Washer Building: RCC in substructure including PCC,CIV,2024-06-19,2024-07-28
6757,Air Washer Building: RCC in superstructure along with equipment foundation,CIV,2024-07-29,2024-10-26
6758,Air Washer Building: Brick Work & Plastering,CIV,2024-10-27,2025-01-24
6759,Air Washer Building: Flooring,CIV,2025-01-25,2025-02-18
6760,Air Washer Building: Backfilling,CIV,2025-02-19,2025-03-05
6761,Air Washer Building: Finishing works,CIV,2025-03-06,2025-06-03
6762,Supply,SUP,2024-09-17,2025-01-14
6763,Ventilation System,SUP,2024-09-17,2025-01-14
6764,VENTILATION SYSTEM Dispatch-Centrifugal Fans,DIS,2024-10-17,2024-11-15
6765,VENTILATION SYSTEM Dispatch-Air washer units,DIS,2024-10-17,2024-11-15
6766,VENTILATION SYSTEM Dispatch-Air Filtration system,DIS,2024-10-17,2024-11-15
6767,VENTILATION SYSTEM Dispatch-Roof Exhausters,DIS,2024-10-17,2024-11-15
6768,VENTILATION SYSTEM Dispatch-Ducting / Dampers / Hangers / Supports / Fire dampers etc,DIS,2024-09-17,2025-01-14
6769,VENTILATION SYSTEM Dispatch-Misc. Items,DIS,2024-10-17,2024-11-15
6770,E&C for VENTILATION SYSTEM,ERC,2024-11-16,2026-03-26
6771,E&C for VENTILATION Misc. of Centrifugal Fans complete,ERC,2024-11-16,2025-01-04
6772,E&C for VENTILATION Misc. of Air washer units complete,ERC,2025-01-05,2025-03-05
6773,E&C for VENTILATION Misc. of Air Filtration system complete,ERC,2025-03-06,2025-04-20
6774,E&C for VENTILATION Misc. of Roof Exhausters complete,ERC,2025-04-21,2025-05-30
6775,E&C for VENTILATION Misc. of Ducting / Dampers / Hangers / Supports / Fire dampers complete,ERC,2025-05-31,2025-11-26
6776,E&C for VENTILATION SYSTEM: Electrical & C&I/Misc. items,ERC,2025-05-31,2025-11-26
6777,E&C for VENTILATION SYSTEM:VENTILATION SYSTEM COMPLETE,ERC,2025-11-27,2026-03-26
6778,Condensate Polishing Unit ,OTH,2023-07-24,2026-02-24
6779,Rel of Dwg for CPU foundation,PE - RFC,2024-03-21,2024-03-21
6780,Condensate Polishing Unit,OTH,2023-07-24,2023-12-21
6781,Enquiry,ENQ,2023-07-24,2023-07-24
6782,PO Placement,ORD,2023-07-25,2023-12-21
6783,Civil,CIV,2024-04-21,2025-03-16
6784,Condensate Polishing Unit Regeneration Building: EXCAVATION,CIV,2024-04-21,2024-05-20
6785,Condensate Polishing Unit Regeneration Building: RCC in substructure including PCC,CIV,2024-05-21,2024-08-08
6786,Condensate Polishing Unit Regeneration Building: RCC in superstructure,CIV,2024-08-09,2025-01-15
6787,Condensate Polishing Unit Regeneration Building: Backfilling,CIV,2025-01-16,2025-02-14
6788,Condensate Polishing Unit Regeneration Building: Finishing works,CIV,2025-02-15,2025-03-16
6789,Supply for Condensate POLISHING SYSTEM,SUP,2024-08-08,2024-12-15
6790,CONDENSATE POLISHING SYSTEM: Dispatch of CPU-Condensate Polisher Mixed Beds,DIS,2024-08-08,2024-11-05
6791,CONDENSATE POLISHING SYSTEM: Dispatch of CPU-Interconnecting Pipe  Valves & Fittings,DIS,2024-08-18,2024-12-15
6792,CONDENSATE POLISHING SYSTEM: Dispatch of CPU External Regeneration System,DIS,2024-08-18,2024-11-15
6793,CONDENSATE POLISHING SYSTEM: Dispatch of Misc. Items,DIS,2024-08-18,2024-12-15
6794,E&C for Condensate POLISHING SYSTEM,DIS,2025-03-17,2026-02-24
6795,CONDENSATE POLISHING SYSTEM: Dispatch of CPU-Erection of Condensate Polisher Mixed Beds complete,ERC,2025-03-17,2025-07-04
6796,CONDENSATE POLISHING SYSTEM: Dispatch of CPU-Erection of Interconnecting Piping Valves  Fittings complete,ERC,2025-07-05,2025-11-01
6797,CONDENSATE POLISHING SYSTEM: Dispatch of CPU-Erection of External Regeneration System complete,ERC,2025-11-02,2026-01-15
6798,CONDENSATE POLISHING SYSTEM: Dispatch of CPU ready for testing and commissioning,COM,2026-01-16,2026-02-24
6799,CW Treatment System,OTH,2023-08-24,2025-12-15
6800,Rel of Dwg for CW treatment building,PE - RFC,2024-09-16,2024-09-16
6801,Supply,SUP,2023-08-24,2025-01-15
6802,Enquiry,ENQ,2023-08-24,2023-08-24
6803,PO placement,ORD,2023-08-25,2024-01-21
6804,Tanks - (Sulphuric acid storage tanks  Sulphuric acid day tanks  Corrosion inhibitor tank  Scale inhibitor /corrosion inhibitor tank  Biocide tank etc),SUP,2024-08-09,2024-11-06
6805,Pumps - (Transfer & Dosing etc.),SUP,2024-08-29,2024-11-26
6806,Skid/Ladder/Platform for Tanks,SUP,2024-09-18,2024-12-16
6807,Strainer,SUP,2024-09-18,2024-12-16
6808,Valves,SUP,2024-09-18,2024-12-16
6809,C&I ITEMS,SUP,2024-10-18,2025-01-15
6810,ELECTRICAL ITEMS,SUP,2024-10-18,2025-01-15
6811,INTERCONNECTING PIPING & FITTINGS,SUP,2024-10-18,2025-01-15
6812,MISCELLANEOUS ITEMS,SUP,2024-10-18,2025-01-15
6813,Civil,CIV,2024-10-07,2025-10-01
6814,CW treatment Building including Equipment Foundation,CIV,2024-10-07,2025-10-01
6815, EXCAVATION,CIV,2024-10-07,2024-11-05
6816, RCC in substructure including PCC,CIV,2024-11-06,2024-12-25
6817, RCC in superstructure including equipment foundation,CIV,2024-12-26,2025-03-25
6818, Backfilling,CIV,2025-03-26,2025-04-14
6819, Brick Work & Plastering,CIV,2025-04-15,2025-06-13
6820, Flooring,CIV,2025-06-14,2025-07-03
6821, Finishing works,CIV,2025-07-04,2025-10-01
6822,Erection,ERC,2025-04-15,2025-12-15
6823, Tanks - (Sulphuric acid storage tanks  Sulphuric acid day tanks  Corrosion inhibitor tank  Scale inhibitor /corrosion inhibitor tank  Biocide tank etc),ERC,2025-04-15,2025-06-13
6824, Pumps - (Transfer & Dosing etc.),ERC,2025-04-30,2025-06-28
6825, Skid/Ladder/Platform for Tanks,ERC,2025-06-29,2025-08-27
6826, Strainer,ERC,2025-06-29,2025-10-26
6827, Valves,ERC,2025-06-29,2025-10-26
6828, C&I ITEMS,ERC,2025-07-29,2025-11-25
6829, ELECTRICAL ITEMS,ERC,2025-07-29,2025-11-25
6830, INTERCONNECTING PIPING & FITTINGS,ERC,2025-06-29,2025-10-26
6831, MISCELLANEOUS ITEMS,ERC,2025-09-12,2025-12-05
6832,Commissioning,COM,2025-12-06,2025-12-15
6833,Fire Detection & Protection Sys,OTH,2023-02-24,2026-08-05
6834,Supply (BHEL- PESD),SUP,2023-04-15,2025-04-15
6835,Hydrant Valve,SUP,2023-04-15,2024-08-13
6836,Engineering,ENG,2023-04-15,2024-01-13
6837,Ordering & Manufacturing,ORD,2023-11-15,2024-04-15
6838,Dispatch,DIS,2024-04-16,2024-08-13
6839,Water Monitor & Water cum Foam monitor,SUP,2023-04-15,2024-08-13
6840,Engineering,ENG,2023-04-15,2024-01-13
6841,Ordering & Manufacturing,ORD,2023-11-15,2024-04-15
6842,Dispatch,DIS,2024-04-16,2024-08-13
6843,Deluge Valve,OTH,2023-04-15,2024-08-13
6844,Engineering,ENG,2023-04-15,2024-01-13
6845,Ordering & Manufacturing,ORD,2023-11-15,2024-04-15
6846,Dispatch,DIS,2024-04-16,2024-08-13
6847,Spray Nozzles,OTH,2023-04-15,2024-08-13
6848,Engineering,ENG,2023-04-15,2024-01-13
6849,Ordering & Manufacturing,ORD,2023-11-15,2024-04-15
6850,Dispatch,DIS,2024-04-16,2024-08-13
6851,QBD,OTH,2023-04-15,2025-04-15
6852,Engineering,ENG,2023-04-15,2024-01-13
6853,Ordering & Manufacturing,ORD,2024-01-14,2024-12-13
6854,Dispatch,DIS,2024-12-14,2025-04-15
6855,Hose Box,OTH,2023-04-15,2025-04-15
6856,Engineering,ENG,2023-04-15,2024-01-13
6857,Ordering & Manufacturing,ORD,2024-01-14,2024-12-13
6858,Dispatch,DIS,2024-12-14,2025-04-15
6859,Foam Branch Pipe,OTH,2023-04-15,2025-04-15
6860,Engineering,ENG,2023-04-15,2024-01-13
6861,Ordering & Manufacturing,ORD,2024-01-14,2024-12-13
6862,Dispatch,DIS,2024-12-14,2025-04-15
6863,Inline Balance Proportioner,OTH,2023-04-15,2025-04-15
6864,Engineering,ENG,2023-04-15,2024-01-13
6865,Ordering & Manufacturing,ORD,2024-01-14,2024-12-13
6866,Dispatch,DIS,2024-12-14,2025-04-15
6867,Foam Chamber with Deflector,OTH,2023-04-15,2025-04-15
6868,Engineering,ENG,2023-04-15,2024-01-13
6869,Ordering & Manufacturing,ORD,2024-01-14,2024-12-13
6870,Dispatch,DIS,2024-12-14,2025-04-15
6871,Fire Hose with Coupling,OTH,2023-04-15,2024-08-13
6872,Engineering,ENG,2023-04-15,2024-01-13
6873,Ordering & Manufacturing,ORD,2023-11-15,2024-04-15
6874,Dispatch,DIS,2024-04-16,2024-08-13
6875,Hose Reel,OTH,2023-04-15,2025-04-15
6876,Engineering,ENG,2023-04-15,2024-01-13
6877,Ordering & Manufacturing,ORD,2024-01-14,2024-12-13
6878,Dispatch,DIS,2024-12-14,2025-04-15
6879,Branch Pipe with Nozzle,OTH,2023-04-15,2025-04-15
6880,Engineering,ENG,2023-04-15,2024-01-13
6881,Ordering & Manufacturing,ORD,2024-01-14,2024-12-13
6882,Dispatch,DIS,2024-12-14,2025-04-15
6883,Foam Concentrated Control Valve,OTH,2023-04-15,2025-04-15
6884,Engineering,ENG,2023-04-15,2024-01-13
6885,Ordering & Manufacturing,ORD,2024-01-14,2024-12-13
6886,Dispatch,DIS,2024-12-14,2025-04-15
6887,Solenoid Valve,OTH,2023-04-15,2024-08-13
6888,Engineering,ENG,2023-04-15,2024-01-13
6889,Ordering & Manufacturing,ORD,2023-11-15,2024-04-15
6890,Dispatch,DIS,2024-04-16,2024-08-13
6891,Foam Concentrate,OTH,2023-04-15,2025-04-15
6892,Engineering,ENG,2023-04-15,2024-01-13
6893,Ordering & Manufacturing,ORD,2024-01-14,2024-12-13
6894,Dispatch,DIS,2024-12-14,2025-04-15
6895,Gun Metal Valve for ARV,OTH,2023-04-15,2025-04-15
6896,Engineering,ENG,2023-04-15,2024-01-13
6897,Ordering & Manufacturing,ORD,2024-01-14,2024-12-13
6898,Dispatch,DIS,2024-12-14,2025-04-15
6899,Air Release Valve,OTH,2023-04-15,2025-04-15
6900,Engineering,ENG,2023-04-15,2024-01-13
6901,Ordering & Manufacturing,ORD,2024-01-14,2024-12-13
6902,Dispatch,DIS,2024-12-14,2025-04-15
6903,DV LCP,OTH,2023-04-15,2025-04-15
6904,Engineering,ENG,2023-04-15,2024-01-13
6905,Ordering & Manufacturing,ORD,2024-01-14,2024-12-13
6906,Dispatch,DIS,2024-12-14,2025-04-15
6907,Sprinkler system,OTH,2023-04-15,2025-04-15
6908,Engineering,ENG,2023-04-15,2024-01-13
6909,Ordering & Manufacturing,ORD,2024-01-14,2024-12-13
6910,Dispatch,DIS,2024-12-14,2025-04-15
6911,Pressure Regulating Valve (Foam System),OTH,2023-04-15,2025-04-15
6912,Engineering,ENG,2023-04-15,2024-01-13
6913,Ordering & Manufacturing,ORD,2024-01-14,2024-12-13
6914,Dispatch,DIS,2024-12-14,2025-04-15
6915,Pressure Relief Valve,OTH,2023-04-15,2025-04-15
6916,Engineering,ENG,2023-04-15,2024-01-13
6917,Ordering & Manufacturing,ORD,2024-01-14,2024-12-13
6918,Dispatch,DIS,2024-12-14,2025-04-15
6919,Foam Tank,OTH,2023-04-15,2025-04-15
6920,Engineering,ENG,2023-04-15,2024-01-13
6921,Ordering & Manufacturing,ORD,2024-01-14,2024-12-13
6922,Dispatch,DIS,2024-12-14,2025-04-15
6923,Air Compressor,OTH,2023-04-15,2025-04-15
6924,Engineering,ENG,2023-04-15,2024-01-13
6925,Ordering & Manufacturing,ORD,2024-01-14,2024-12-13
6926,Dispatch,DIS,2024-12-14,2025-04-15
6927,Hydro Pneumatic Tank,OTH,2023-04-15,2025-04-15
6928,Engineering,ENG,2023-04-15,2024-01-13
6929,Ordering & Manufacturing,ORD,2024-01-14,2024-12-13
6930,Dispatch,DIS,2024-12-14,2025-04-15
6931,Foam Pump,OTH,2023-04-15,2025-04-15
6932,Engineering,ENG,2023-04-15,2024-01-13
6933,Ordering & Manufacturing,ORD,2024-01-14,2024-12-13
6934,Dispatch,DIS,2024-12-14,2025-04-15
6935,Pressure Transmitters,OTH,2023-04-15,2024-08-13
6936,Engineering,ENG,2023-04-15,2024-01-13
6937,Ordering & Manufacturing,ORD,2023-11-15,2024-04-15
6938,Dispatch,DIS,2024-04-16,2024-08-13
6939,Pressure Switches,OTH,2023-04-15,2024-04-19
6940,Engineering,ENG,2023-04-15,2023-12-13
6941,Ordering & Manufacturing,ORD,2023-12-14,2024-03-20
6942,Dispatch,DIS,2024-03-21,2024-04-19
6943,Level Switches,OTH,2023-04-15,2025-04-15
6944,Engineering,ENG,2023-04-15,2024-01-13
6945,Ordering & Manufacturing,ORD,2024-01-14,2024-12-13
6946,Dispatch,DIS,2024-12-14,2025-04-15
6947,Flow Switches,OTH,2023-04-15,2025-04-15
6948,Engineering,ENG,2023-04-15,2024-01-13
6949,Ordering & Manufacturing,ORD,2024-01-14,2024-12-13
6950,Dispatch,DIS,2024-12-14,2025-04-15
6951,Pressure Gauges,OTH,2023-04-15,2024-08-13
6952,Engineering,ENG,2023-04-15,2024-01-13
6953,Ordering & Manufacturing,ORD,2023-11-15,2024-04-15
6954,Dispatch,DIS,2024-04-16,2024-08-13
6955,Differential pressure Gauges,OTH,2023-04-15,2024-08-13
6956,Engineering,ENG,2023-04-15,2024-01-13
6957,Ordering & Manufacturing,ORD,2023-11-15,2024-04-15
6958,Dispatch,DIS,2024-04-16,2024-08-13
6959,Radar Level Transmitters,OTH,2023-04-15,2025-04-15
6960,Engineering,ENG,2023-04-15,2024-01-13
6961,Ordering & Manufacturing,ORD,2024-01-14,2024-12-13
6962,Dispatch,DIS,2024-12-14,2025-04-15
6963,IGES Package,OTH,2023-04-15,2025-04-15
6964,Engineering,ENG,2023-04-15,2024-01-13
6965,Ordering & Manufacturing,ORD,2024-01-14,2024-12-13
6966,Dispatch,DIS,2024-12-14,2025-04-15
6967,Portable Fire Extinguishers,OTH,2023-04-15,2024-08-13
6968,Engineering,ENG,2023-04-15,2024-01-13
6969,Ordering & Manufacturing,ORD,2023-11-15,2024-04-15
6970,Dispatch,DIS,2024-04-16,2024-08-13
6971,Fire Water Pipes,OTH,2023-04-15,2024-08-13
6972,Engineering,ENG,2023-04-15,2024-01-13
6973,Ordering & Manufacturing,ORD,2023-11-15,2024-04-15
6974,Dispatch,DIS,2024-04-16,2024-08-13
6975,Fire Fighting System Conventional Valves,OTH,2023-04-15,2025-04-15
6976,Engineering,ENG,2023-04-15,2024-01-13
6977,Ordering & Manufacturing,ORD,2024-01-14,2024-12-13
6978,Dispatch,DIS,2024-12-14,2025-04-15
6979,Fire Water Flanges,OTH,2023-04-15,2024-08-13
6980,Engineering,ENG,2023-04-15,2024-01-13
6981,Ordering & Manufacturing,ORD,2023-11-15,2024-04-15
6982,Dispatch,DIS,2024-04-16,2024-08-13
6983,Fire Water Butt welded Fittings,OTH,2023-04-15,2024-08-13
6984,Engineering,ENG,2023-04-15,2024-01-13
6985,Ordering & Manufacturing,ORD,2023-11-15,2024-04-15
6986,Dispatch,DIS,2024-04-16,2024-08-13
6987,Fire Water Flanged Fittings,OTH,2023-04-15,2024-08-13
6988,Engineering,ENG,2023-04-15,2024-01-13
6989,Ordering & Manufacturing,ORD,2023-11-15,2024-04-15
6990,Dispatch,DIS,2024-04-16,2024-08-13
6991,Gaskets,OTH,2023-04-15,2024-08-13
6992,Engineering,ENG,2023-04-15,2024-01-13
6993,Ordering & Manufacturing,ORD,2023-11-15,2024-04-15
6994,Dispatch,DIS,2024-04-16,2024-08-13
6995,Bolts  U Bolts  Nuts & Clamps,OTH,2023-04-15,2024-08-13
6996,Engineering,ENG,2023-04-15,2024-01-13
6997,Ordering & Manufacturing,ORD,2023-11-15,2024-04-15
6998,Dispatch,DIS,2024-04-16,2024-08-13
6999,Structural Material,OTH,2023-04-15,2025-04-15
7000,Engineering,ENG,2023-04-15,2024-01-13
7001,Ordering & Manufacturing,ORD,2024-01-14,2024-12-13
7002,Dispatch,DIS,2024-12-14,2025-04-15
7003,Fire Detection & Alarm System,OTH,2023-04-15,2024-08-13
7004,Engineering,ENG,2023-04-15,2024-01-13
7005,Ordering & Manufacturing,ORD,2023-11-15,2024-04-15
7006,Dispatch,DIS,2024-04-16,2024-08-13
7007,Fire Alarm Cables,OTH,2023-04-15,2024-08-13
7008,Engineering,ENG,2023-04-15,2024-01-13
7009,Ordering & Manufacturing,ORD,2023-11-15,2024-04-15
7010,Dispatch,DIS,2024-04-16,2024-08-13
7011,Fire Protection System PLC,OTH,2023-04-15,2024-08-13
7012,Engineering,ENG,2023-04-15,2024-01-13
7013,Ordering & Manufacturing,ORD,2023-11-15,2024-04-15
7014,Dispatch,DIS,2024-04-16,2024-08-13
7015,E&C for PLC system,OTH,2023-04-15,2024-08-13
7016,Engineering,ENG,2023-04-15,2024-01-13
7017,Ordering & Manufacturing,ORD,2023-11-15,2024-04-15
7018,Dispatch,DIS,2024-04-16,2024-08-13
7019,Spares for PLC system,OTH,2023-04-15,2024-08-13
7020,Engineering,ENG,2023-04-15,2024-01-13
7021,Ordering & Manufacturing,ORD,2023-11-15,2024-04-15
7022,Dispatch,DIS,2024-04-16,2024-08-13
7023,Cable Trays & Accessories,OTH,2023-04-15,2025-04-15
7024,Engineering,ENG,2023-04-15,2024-01-13
7025,Ordering & Manufacturing,ORD,2024-01-14,2024-12-13
7026,Dispatch,DIS,2024-12-14,2025-04-15
7027,Fire Water Pumps & Auxiliaries,OTH,2023-04-15,2025-04-15
7028,Engineering,ENG,2023-04-15,2024-01-13
7029,Ordering & Manufacturing,ORD,2024-01-14,2024-12-13
7030,Dispatch,DIS,2024-12-14,2025-04-15
7031,Fire Water Storage Tank,OTH,2023-04-15,2025-04-15
7032,Engineering,ENG,2023-04-15,2024-01-13
7033,Ordering & Manufacturing,ORD,2024-01-14,2024-12-13
7034,Dispatch,DIS,2024-12-14,2025-04-15
7035,Paint & Primer,OTH,2023-04-15,2025-04-15
7036,Engineering,ENG,2023-04-15,2024-01-13
7037,Ordering & Manufacturing,ORD,2024-01-14,2024-12-13
7038,Dispatch,DIS,2024-12-14,2025-04-15
7039,Wrapping & Coating for Underground Piping,OTH,2023-04-15,2025-04-15
7040,Engineering,ENG,2023-04-15,2024-01-13
7041,Ordering & Manufacturing,ORD,2024-01-14,2024-12-13
7042,Dispatch,DIS,2024-12-14,2025-04-15
7043,Civil ,CIV,2023-02-24,2024-02-18
7044,Civil Readiness of Fire water pump house including pipe pedestal & tank foundation and Booster pump house,CIV,2023-02-24,2024-02-18
7045,Erection,ERC,2025-03-31,2026-08-05
7046,Erection: PUMPs with motor,ERC,2025-04-16,2025-07-24
7047,Erection: TANK,ERC,2025-04-26,2025-08-03
7048,Erection: AIR COMPRESSOR,ERC,2025-06-05,2025-08-03
7049,Erection: Pipe  Fittings & Valves,ERC,2025-07-25,2025-11-01
7050,Erection: Electrical & C&I work,ERC,2025-08-19,2025-11-01
7051,Erection: Commissioning of pump,COM,2025-11-02,2025-11-06
7052,Erection: Commissioning of FPS for BLU including foam system,COM,2025-11-07,2026-01-05
7053,Erection: Commissioning of Balance FPS,COM,2026-01-06,2026-04-15
7054,HYDRANT SYSTEM,ERC,2025-07-25,2026-05-20
7055,HYDRANT SYSTEM: PIPING,ERC,2025-07-25,2026-03-21
7056,HYDRANT SYSTEM: VALVE,ERC,2026-01-21,2026-04-20
7057,HYDRANT SYSTEM: FIRE HOSE,ERC,2026-02-20,2026-05-20
7058,SPRAY SYSTEM,ERC,2025-08-24,2026-06-29
7059,SPRAY SYSTEM: PIPING,ERC,2025-08-24,2026-06-19
7060,SPRAY SYSTEM: VALVE,ERC,2026-02-20,2026-06-09
7061,SPRAY SYSTEM: FITTINGS,ERC,2026-03-12,2026-06-29
7062,HVWS SYSTEM FOR TRANSFORMERS,ERC,2025-09-03,2026-08-05
7063,HVWS SYSTEM FOR TRANSFORMERS: DELUGE VALVES,ERC,2025-09-03,2026-05-10
7064,HVWS SYSTEM FOR TRANSFORMERS: Pipe  valves and fittings,ERC,2025-10-23,2026-08-05
7065,N2 injection system for GT & ST (if applicable),ERC,2026-03-09,2026-08-05
7066,HVWS SYSTEM FOR OIL EQUIPMENTS,ERC,2025-04-30,2025-10-01
7067,HVWS SYSTEM FOR OIL EQUIPMENTS: DELUGE VALVES,ERC,2025-04-30,2025-08-27
7068,HVWS SYSTEM FOR OIL EQUIPMENTS: Pipe  valves and fittings,ERC,2025-04-30,2025-09-16
7069,HVWS SYSTEM FOR OIL EQUIPMENTS: INSTRUMENT & GAUGES,ERC,2025-09-17,2025-10-01
7070,HVWS SYSTEM FOR BOILER BURNER FRONT,ERC,2025-11-07,2026-01-17
7071,HVWS SYSTEM FOR BOILER BURNER FRONT: DELUGE VALVES,ERC,2025-11-07,2026-01-17
7072,HVWS SYSTEM FOR BOILER BURNER FRONT: Pipe  valves and fittings,ERC,2025-11-07,2026-01-17
7073,HVWS SYSTEM FOR BOILER BURNER FRONT: INSTRUMENT & GAUGES,ERC,2025-11-07,2026-01-17
7074,MVWS - SYSTEM -- ESP 0.0 MTR ELEVATION,ERC,2025-07-06,2025-11-17
7075,MVWS - SYSTEM -- ESP 0.0 MTR ELEVATION: DELUGE VALVES,ERC,2025-07-06,2025-11-02
7076,MVWS - SYSTEM -- ESP 0.0 MTR ELEVATION: Pipe  valves and fittings,ERC,2025-07-06,2025-11-02
7077,MVWS - SYSTEM -- ESP 0.0 MTR ELEVATION: INSTRUMENT & GAUGES,ERC,2025-11-03,2025-11-17
7078,MVWS SYSTEM - TG BUILDING CABLE GALLERIES,ERC,2025-09-02,2026-02-18
7079,MVWS SYSTEM - TG BUILDING CABLE GALLERIES: DELUGE VALVES,ERC,2025-09-02,2025-12-30
7080,MVWS SYSTEM - TG BUILDING CABLE GALLERIES: Pipe  valves and fittings,ERC,2025-09-02,2026-01-29
7081,MVWS SYSTEM - TG BUILDING CABLE GALLERIES: INSTRUMENT & GAUGES,ERC,2026-01-30,2026-02-18
7082,MVWS SYSTEM FOR DIESEL TANK IN DG HOUSE,ERC,2025-05-23,2025-08-05
7083,MVWS SYSTEM FOR DIESEL TANK IN DG HOUSE: DELUGE VALVES,ERC,2025-06-07,2025-08-05
7084,MVWS SYSTEM FOR DIESEL TANK IN DG HOUSE: Pipe  valves and fittings,ERC,2025-05-23,2025-07-21
7085,MVWS SYSTEM FOR DIESEL TANK IN DG HOUSE: INSTRUMENT & GAUGES,ERC,2025-07-22,2025-08-05
7086,FIRE DETECTION SYSTEM,ERC,2026-01-06,2026-08-05
7087,FIRE DETECTION SYSTEM: FIRE ALARM PANELS,ERC,2026-01-06,2026-08-05
7088,FIRE DETECTION SYSTEM: DETECTORS,ERC,2026-01-06,2026-08-05
7089,FIRE DETECTION SYSTEM: CABLES,ERC,2026-01-06,2026-08-05
7090,Inert Gas System,ERC,2025-03-31,2025-11-15
7091,Coal Handling Plant,OTH,2022-09-27,2026-01-26
7092, Civil Works,CIV,2022-09-27,2025-03-14
7093,Rel of Dwg for Track Hopper,PE - RFC,2023-10-01,2023-10-01
7094,Rel of Dwg for MCCs,PE - RFC,2023-07-23,2023-07-23
7095,Rel of Dwg for penthouse,PE - RFC,2023-08-12,2023-08-12
7096,Rel of Dwg for Stacker Reclaimer,PE - RFC,2023-09-26,2023-09-26
7097,Rel of Dwg for Stock yard,PE - RFC,2023-07-23,2023-07-23
7098,Rel of Dwg for Coal Shed,PE - RFC,2022-09-27,2022-09-27
7099,Rel of Dwg for Crusher House,PE - RFC,2023-11-20,2023-11-20
7100,Rel of Dwg for Conveyor Gallery & Trestles,PE - RFC,2023-07-23,2023-07-23
7101,Rel of Dwg for TPs,PE - RFC,2023-10-01,2023-10-01
7102, Track Hopper,OTH,2023-10-02,2024-06-27
7103, Track Hopper: EXCAVATION,CIV,2023-10-02,2023-10-31
7104, Track Hopper: RCC in substructure including PCC,CIV,2023-11-01,2024-03-29
7105, Track Hopper: Grade Slab,CIV,2024-03-30,2024-04-13
7106, Track Hopper: RCC in superstructure,CIV,2024-04-14,2024-05-13
7107, Track Hopper: Backfilling,CIV,2024-05-14,2024-06-12
7108, Track Hopper: Finishing works,CIV,2024-06-13,2024-06-27
7109, CHP Main Control cum MCC Room,CIV,2023-07-24,2025-03-14
7110, Main Control Room: EXCAVATION,CIV,2023-07-24,2023-08-22
7111, Main Control Room: RCC in substructure including PCC,CIV,2023-08-23,2023-12-20
7112, Main Control Room: RCC/Structure work in superstructure,CIV,2023-12-21,2024-08-16
7113, Main Control Room: backfilling,CIV,2024-08-02,2024-08-26
7114, Main Control Room: Brick Work & Plastering,CIV,2024-08-17,2024-10-15
7115, Main Control Room: Flooring,CIV,2024-10-16,2024-12-14
7116, Main Control Room: Finishing work,CIV,2024-12-15,2025-03-14
7117, CHP MCC Room,CIV,2023-07-24,2024-08-04
7118, MCC Room: EXCAVATION,CIV,2023-07-24,2023-08-07
7119, MCC Room: RCC in substructure including PCC,CIV,2023-08-08,2023-09-06
7120, MCC Room: RCC/Structure work in superstructure,CIV,2023-09-07,2024-03-07
7121, MCC Room: Brick Work & Plastering,CIV,2024-03-08,2024-05-06
7122, MCC Room: Flooring,CIV,2024-05-07,2024-05-21
7123, MCC Room: Backfilling,CIV,2024-05-22,2024-06-05
7124, MCC Room: Finishing works,CIV,2024-06-06,2024-08-04
7125,Common CHP  LHP & GHP Pump House,COM,2023-07-24,2024-08-04
7126, Pump House: EXCAVATION,CIV,2023-07-24,2023-08-07
7127, Pump House: RCC in substructure including PCC,CIV,2023-08-08,2023-09-06
7128, Pump House: RCC/Structure work in superstructure,CIV,2023-09-07,2024-03-07
7129, Pump House: Brick Work & Plastering,CIV,2024-03-08,2024-05-06
7130, Pump House: Flooring,CIV,2024-05-07,2024-05-21
7131, Pump House: Backfilling,CIV,2024-05-22,2024-06-05
7132, Pump House: Finishing works,CIV,2024-06-06,2024-08-04
7133,CHP Workshop cum office Building ,CIV,2023-07-24,2024-08-04
7134, CHP Workshop: EXCAVATION,CIV,2023-07-24,2023-08-07
7135, CHP Workshop: RCC in substructure including PCC,CIV,2023-08-08,2023-09-06
7136, CHP Workshop: RCC/Structure work in superstructure,CIV,2023-09-07,2024-03-07
7137, CHP Workshop: Brick Work & Plastering,CIV,2024-03-08,2024-05-06
7138, CHP Workshop: Flooring,CIV,2024-05-07,2024-05-21
7139, CHP Workshop: Backfilling,CIV,2024-05-22,2024-06-05
7140, CHP Workshop: Finishing works,CIV,2024-06-06,2024-08-04
7141,CHP Dozer Shed,CIV,2023-07-24,2024-08-04
7142, Dozer Shed: EXCAVATION,CIV,2023-07-24,2023-08-07
7143, Dozer Shed: RCC in substructure including PCC,CIV,2023-08-08,2023-09-06
7144, Dozer Shed: RCC/Structure work in superstructure,CIV,2023-09-07,2024-03-07
7145, Dozer Shed: Brick Work & Plastering,CIV,2024-03-08,2024-05-06
7146, Dozer Shed: Flooring,CIV,2024-05-07,2024-05-21
7147, Dozer Shed: Backfilling,CIV,2024-05-22,2024-06-05
7148, Dozer Shed: Finishing works,CIV,2024-06-06,2024-08-04
7149,CHP Coal Settling Pond ( CSSP),CIV,2023-10-02,2024-06-27
7150,CSSP: EXCAVATION,CIV,2023-10-02,2023-10-31
7151,CSSP: RCC in substructure including PCC,CIV,2023-11-01,2024-03-29
7152,CSSP: Grade Slab,CIV,2024-03-30,2024-04-13
7153,CSSP: RCC in superstructure,CIV,2024-04-14,2024-05-13
7154,CSSP: Backfilling,CIV,2024-05-14,2024-06-12
7155,CSSP: Finishing works,CIV,2024-06-13,2024-06-27
7156, Stacker Reclaimer ,CIV,2023-09-27,2024-06-22
7157, Stacker Reclaimer: EXCAVATION,CIV,2023-09-27,2023-11-25
7158, Stacker Reclaimer: RCC in substructure including PCC,CIV,2023-11-26,2024-03-24
7159, Stacker Reclaimer: RCC in superstructure (Drive house),CIV,2024-03-25,2024-04-23
7160, Stacker Reclaimer: Backfilling,CIV,2024-04-24,2024-05-23
7161, Stacker Reclaimer: Finishing works,CIV,2024-05-24,2024-06-22
7162, Stock Yard,CIV,2023-07-24,2023-11-05
7163, Stock Yard: EXCAVATION,CIV,2023-07-24,2023-09-06
7164, Stock Yard: RCC with PCC,CIV,2023-09-07,2023-11-05
7165, Crusher House,CIV,2023-11-01,2025-02-02
7166, Crusher House: EXCAVATION,CIV,2023-11-21,2023-12-05
7167, Crusher House: RCC in substructure including PCC,CIV,2023-12-06,2024-01-19
7168, Crusher House: RCC/Steel Structure in superstructure,CIV,2024-01-20,2025-01-03
7169, Crusher House: Backfilling,CIV,2025-01-04,2025-01-18
7170, Crusher House: Finishing works,CIV,2025-01-19,2025-02-02
7171, Transfer Points,CIV,2023-11-21,2024-06-29
7172,CHP Transfer Point-1,CIV,2023-11-21,2024-06-29
7173, Transfer Point-2: EXCAVATION,CIV,2023-11-21,2023-11-27
7174, Transfer Point-2: RCC in substructure including PCC,CIV,2023-11-28,2024-01-11
7175, Transfer Point-2: RCC in superstructure,CIV,2024-01-12,2024-01-31
7176, Transfer Point-2: Backfilling,CIV,2024-02-01,2024-02-15
7177, Transfer Point-2: Finishing works,CIV,2024-02-16,2024-03-01
7178, Transfer Point-2: Structural works,CIV,2024-03-02,2024-06-29
7179,CHP Transfer Point-2,CIV,2023-11-21,2024-06-29
7180, Transfer Point-2: EXCAVATION,CIV,2023-11-21,2023-11-27
7181, Transfer Point-2: RCC in substructure including PCC,CIV,2023-11-28,2024-01-11
7182, Transfer Point-2: RCC in superstructure,CIV,2024-01-12,2024-01-31
7183, Transfer Point-2: Backfilling,CIV,2024-02-01,2024-02-15
7184, Transfer Point-2: Finishing works,CIV,2024-02-16,2024-03-01
7185, Transfer Point-2: Structural works,CIV,2024-03-02,2024-06-29
7186,CHP Transfer Point-3 & any additional TPs,CIV,2023-11-21,2024-06-29
7187, Transfer Point-3: EXCAVATION,CIV,2023-11-21,2023-11-27
7188, Transfer Point-3: RCC in substructure including PCC,CIV,2023-11-28,2024-01-11
7189, Transfer Point-3: RCC in superstructure,CIV,2024-01-12,2024-01-31
7190, Transfer Point-3: Backfilling,CIV,2024-02-01,2024-02-15
7191, Transfer Point-3: Finishing works,CIV,2024-02-16,2024-03-01
7192, Transfer Point-3: Structural works,CIV,2024-03-02,2024-06-29
7193,Drive House,CIV,2023-11-21,2024-06-29
7194,Drive House:  EXCAVATION,CIV,2023-11-21,2023-11-27
7195,Drive House: RCC in substructure including PCC,CIV,2023-11-28,2024-01-11
7196,Drive House:  RCC in superstructure,CIV,2024-01-12,2024-01-31
7197,Drive House: Backfilling,CIV,2024-02-01,2024-02-15
7198,Drive House:  Finishing works,CIV,2024-02-16,2024-03-01
7199,Drive House:  Structural works,CIV,2024-03-02,2024-06-29
7200, Conveyor Tunnel,CIV,2023-11-01,2024-06-27
7201,Conv. 1A & 1B TUNNEL: Excavation,CIV,2023-11-21,2023-11-27
7202,Conv. 1A & 1B TUNNEL: RCC in substructure including PCC,CIV,2023-11-01,2024-03-29
7203,Conv. 1A & 1B TUNNEL: Grade Slab,CIV,2024-03-30,2024-04-13
7204,Conv. 1A & 1B TUNNEL: RCC in superstructure,CIV,2024-04-14,2024-05-13
7205,Conv. 1A & 1B TUNNEL: Backfilling,CIV,2024-05-14,2024-06-12
7206,Conv. 1A & 1B TUNNEL: Finishing works,CIV,2024-06-13,2024-06-27
7207, Conveyor Galleries with Trestles,CIV,2023-11-21,2024-09-27
7208, Conveyor Gallery -1A & 1B,CIV,2024-02-01,2024-09-27
7209, Conveyor Gallery -1A & 1B: EXCAVATION,CIV,2024-02-01,2024-03-01
7210, Conveyor Gallery -1A & 1B: RCC in substructure including PCC,CIV,2024-03-02,2024-04-30
7211, Conveyor Gallery -1A & 1B: RCC/Structure in superstructure,CIV,2024-05-01,2024-05-30
7212, Conveyor Gallery -1A & 1B: Backfilling,CIV,2024-05-31,2024-06-29
7213, Conveyor Gallery -1A & 1B: Finishing works,CIV,2024-06-30,2024-07-14
7214, Conveyor Gallery -1A & 1B: Structural work,ERC,2024-05-31,2024-09-27
7215, Conveyor Gallery -2A & 2B,CIV,2024-02-01,2024-09-27
7216, Conveyor Gallery -2A & 2B: EXCAVATION,CIV,2024-02-01,2024-03-01
7217, Conveyor Gallery -2A & 2B: RCC in substructure including PCC,CIV,2024-03-02,2024-04-30
7218, Conveyor Gallery -2A & 2B: RCC/Structure in superstructure,CIV,2024-05-01,2024-05-30
7219, Conveyor Gallery -2A & 2B: Backfilling,CIV,2024-05-31,2024-06-29
7220, Conveyor Gallery -2A & 2B: Finishing works,CIV,2024-06-30,2024-07-14
7221, Conveyor Gallery -2A & 2B: Structural work,ERC,2024-05-31,2024-09-27
7222, Conveyor Gallery -3A & 3B,CIV,2024-02-01,2024-09-27
7223, Conveyor Gallery -3A & 3B: EXCAVATION,CIV,2024-02-01,2024-03-01
7224, Conveyor Gallery -3A & 3B: RCC in substructure including PCC,CIV,2024-03-02,2024-04-30
7225, Conveyor Gallery -3A & 3B: RCC/Structure in superstructure,CIV,2024-05-01,2024-05-30
7226, Conveyor Gallery -3A & 3B: Backfilling,CIV,2024-05-31,2024-06-29
7227, Conveyor Gallery -3A & 3B: Finishing works,CIV,2024-06-30,2024-07-14
7228, Conveyor Gallery -3A & 3B: Structural work,ERC,2024-05-31,2024-09-27
7229, Conveyor Gallery -4A & 4B,CIV,2024-02-01,2024-09-27
7230, Conveyor Gallery -4A & 4B: EXCAVATION,CIV,2024-02-01,2024-03-01
7231, Conveyor Gallery -4A & 4B: RCC in substructure including PCC,CIV,2024-03-02,2024-04-30
7232, Conveyor Gallery -4A & 4B: RCC/Structure in superstructure,CIV,2024-05-01,2024-05-30
7233, Conveyor Gallery -4A & 4B: Backfilling,CIV,2024-05-31,2024-06-29
7234, Conveyor Gallery -4A & 4B: Finishing works,CIV,2024-06-30,2024-07-14
7235, Conveyor Gallery -4A & 4B: Structural work,ERC,2024-05-31,2024-09-27
7236, Conveyor Gallery -5A & 5B,CIV,2024-02-01,2024-09-27
7237, Conveyor Gallery -5A & 5B: EXCAVATION,CIV,2024-02-01,2024-03-01
7238, Conveyor Gallery -5A & 5B: RCC in substructure including PCC,CIV,2024-03-02,2024-04-30
7239, Conveyor Gallery -5A & 5B: RCC/Structure in superstructure,CIV,2024-05-01,2024-05-30
7240, Conveyor Gallery -5A & 5B: Backfilling,CIV,2024-05-31,2024-06-29
7241, Conveyor Gallery -5A & 5B: Finishing works,CIV,2024-06-30,2024-07-14
7242, Conveyor Gallery -5A & 5B: Structural work,ERC,2024-05-31,2024-09-27
7243, Reversible Yard Conveyor Gallery -6,CIV,2023-11-21,2024-08-28
7244, Conveyor Gallery -6: EXCAVATION,CIV,2024-02-01,2024-03-01
7245, Conveyor Gallery -6: RCC in substructure including PCC,CIV,2024-03-02,2024-04-30
7246, Conveyor Gallery -6: RCC/Structure in superstructure,CIV,2024-05-01,2024-05-30
7247, Conveyor Gallery -6: Backfilling,CIV,2024-05-31,2024-06-29
7248, Conveyor Gallery -6: Finishing works,CIV,2024-06-30,2024-07-14
7249, Conveyor Gallery -6: Structural work,ERC,2024-05-31,2024-08-28
7250,Cable Trestle/Cable Gallery,CIV,2023-11-21,2024-06-17
7251, Cable Gallery: EXCAVATION,CIV,2023-11-21,2023-12-20
7252, Cable Gallery: RCC in substructure including PCC,CIV,2023-12-21,2024-02-18
7253, Cable Gallery: RCC/Structure in superstructure,CIV,2024-02-19,2024-03-19
7254, Cable Gallery: Backfilling,CIV,2024-03-20,2024-04-18
7255, Cable Gallery: Finishing works,CIV,2024-04-19,2024-05-03
7256, Cable Gallery: Structural work,ERC,2024-03-20,2024-06-17
7257,Engineering  Supply &Erection,CIV,2022-09-27,2026-01-26
7258,Finalisation of CHP layout,ENG,2022-09-27,2022-10-06
7259, Basic Engineering for CHP ( Flow Diagram  Profiles ),ENG,2022-10-07,2022-10-21
7260, Track Hopper (Paddle Feeder),PRC,2022-11-20,2026-01-26
7261, NIT,ENQ,2022-11-20,2022-11-20
7262, Order Placement,ORD,2022-11-21,2023-03-20
7263,Detailed Engineering& Approval of Dwgs datasheet and QAP,ENG,2023-03-21,2024-01-14
7264,Manufacturing,MFG,2023-11-16,2024-09-10
7265,Dispatch,DIS,2024-02-14,2024-12-09
7266,Erection of mechanical equipments,ERC,2024-05-24,2025-06-07
7267,Erection of Electrical & C&I Items including cabling etc,ERC,2025-04-09,2025-07-07
7268, Commissioning,COM,2025-07-08,2025-12-04
7269, Trial Run with load,COM,2025-12-28,2026-01-26
7270, Stacker Reclaimer (Reversible),PRC,2022-11-20,2026-01-26
7271, NIT,ENQ,2022-11-20,2022-11-20
7272, Order Placement,ORD,2022-11-21,2023-02-18
7273,Detailed Engineering& Approval of Dwgs datasheet and QAP,ENG,2023-02-19,2023-12-15
7274,Manufacturing,MFG,2023-07-19,2024-06-22
7275,dispatch,OTH,2023-10-17,2024-08-11
7276,Erection of mechanical equipments,ERC,2024-05-14,2025-03-09
7277,Erection of Electrical & C&I Items including cabling etc,ERC,2025-02-08,2025-05-08
7278, Commissioning,COM,2025-05-09,2025-11-04
7279, Trial Run with load,COM,2025-12-28,2026-01-26
7280, Conveyor System for CHP  LHP & GHP (incl. Conv  CR  ACVS  DE & Boiler tripper),PRC,2022-12-20,2026-01-26
7281, NIT,ENQ,2022-12-20,2022-12-20
7282, Order Placement,ORD,2022-12-21,2023-04-19
7283,Detailed Engineering& Approval of Dwgs datasheet and QAP,ENG,2023-04-20,2024-04-18
7284,Manufacturing,MFG,2024-01-20,2024-11-14
7285,Inspection  Dispatch and RECEIPT at site,DIS,2024-04-19,2025-02-12
7286,Erection of technological structure,ERC,2024-10-26,2025-05-23
7287,Erection of mechanical equipments including tripper,ERC,2025-01-24,2025-08-21
7288,DE Erection,ERC,2025-01-14,2025-07-12
7289,Erection of Belt,ERC,2025-05-24,2025-07-22
7290,Erection of Electrical & C&I Items including cabling etc,ERC,2025-01-24,2025-06-22
7291,Commissioning,COM,2025-06-23,2025-12-19
7292, Trial Run with load,COM,2025-12-28,2026-01-26
7293, Crusher House (Part of Conv. System),ERC,2023-04-20,2026-01-26
7294,Detailed Engineering& Approval of Dwgs datasheet and QAP,ENG,2023-04-20,2024-04-18
7295,Manufacturing,MFG,2024-01-20,2024-11-14
7296,Inspection  Dispatch and RECEIPT at site,DIS,2024-04-19,2025-02-12
7297,Erection of mechanical equipments,ERC,2024-10-26,2025-06-22
7298,and RECEIPT,REC,2025-03-25,2025-08-21
7299,Erection of Electrical & C&I Items including cabling etc,ERC,2025-05-09,2025-09-05
7300, Commissioning,COM,2025-07-08,2025-11-04
7301, Trial Run with load,COM,2025-12-28,2026-01-26
7302, DS & Water System + BOBR,PRC,2023-02-18,2025-06-04
7303, NIT,ENQ,2023-02-18,2023-02-18
7304, Order Placement,ORD,2023-02-19,2023-06-18
7305,Detailed Engineering& Approval of Dwgs datasheet and QAP,ENG,2023-06-19,2024-04-13
7306,Manufacturing,MFG,2024-01-15,2024-11-09
7307,Inspection  Dispatch and RECEIPT at site,DIS,2024-04-14,2024-12-29
7308,Erection of mechanical equipments,ERC,2024-06-13,2025-03-06
7309,Erection of Electrical & C&I Items including cabling etc,ERC,2025-03-07,2025-06-04
7310,JHS - 16MVA  11/3.45 KV CHP AUX Transformer ,ERC,2023-04-05,2025-06-04
7311,Engineering,ENG,2023-04-05,2023-10-31
7312,Manufacturing & testing,MFG,2023-08-03,2024-11-16
7313, Packing  Dispatch,DIS,2024-07-20,2024-12-16
7314,Erection of Aux Transformer,ERC,2025-01-16,2025-06-04
7315,Commissioning of Stacker Reclaimer & Crusher House for coal feeding,COM,2025-06-23,2025-11-27
7316,Commissioning of Coal Handling system including Coal Transportation system for achieving Coal Firing of Unit # 1,COM,2025-11-05,2026-01-25
7317, Trial Run with load,COM,2025-11-28,2025-12-27
7318,Ash Handling Plant,OTH,2022-12-25,2026-04-26
7319, Civil Works,CIV,2023-04-10,2025-05-08
7320,Rel of Dwg for ASH WATER  ASH SLURRY PUMP HOUSE,PE - RFC,2024-02-18,2024-02-18
7321,Rel of dwg for Compressor House,PE - RFC,2023-09-26,2023-09-26
7322,Rel of dwg for Silos,PE - RFC,2023-11-25,2023-11-25
7323,Rel of dwg for Pipe Rack,PE - RFC,2023-11-25,2023-11-25
7324,Rel of dwg for Pipe pedestal,PE - RFC,2023-10-26,2023-10-26
7325,Rel of dwg for MCCs,PE - RFC,2023-09-26,2023-09-26
7326, Bottom Ash Hopper,CIV,2023-04-10,2023-08-22
7327, Bottom Ash Hopper: EXCAVATION,OTH,2023-04-10,2023-04-24
7328, Bottom Ash Hopper: RCC in substructure including PCC,CIV,2023-04-25,2023-05-24
7329, Bottom Ash Hopper: RCC in superstructure,CIV,2023-05-25,2023-07-23
7330, Bottom Ash Hopper: Backfilling,CIV,2023-07-24,2023-08-07
7331, Bottom Ash Hopper: Finishing works,CIV,2023-08-08,2023-08-22
7332,ASH SLURRY PUMP HOUSE,CIV,2024-03-20,2025-05-08
7333,ASH SLURRY PUMP HOUSE: EXCAVATION,CIV,2024-03-20,2024-05-03
7334,ASH SLURRY PUMP HOUSE: RCC in substructure including PCC,CIV,2024-05-04,2024-07-27
7335,ASH SLURRY PUMP HOUSE: RCC in superstructure,CIV,2024-07-28,2024-11-24
7336,ASH SLURRY PUMP HOUSE: Brick Work & Plastering,CIV,2024-11-25,2025-01-23
7337,ASH SLURRY PUMP HOUSE: Flooring,CIV,2025-01-24,2025-02-22
7338,ASH SLURRY PUMP HOUSE: Backfilling,CIV,2025-02-23,2025-03-09
7339,ASH SLURRY PUMP HOUSE: Finishing works,CIV,2025-03-10,2025-05-08
7340,ASH WATER PUMP HOUSE,CIV,2024-03-20,2025-05-08
7341,ASH WATER PUMP HOUSE: EXCAVATION,CIV,2024-03-20,2024-05-03
7342,ASH WATER PUMP HOUSE: RCC in substructure including PCC,CIV,2024-05-04,2024-07-27
7343,ASH WATER PUMP HOUSE: RCC in superstructure,CIV,2024-07-28,2024-11-24
7344,ASH WATER PUMP HOUSE: Brick Work & Plastering,CIV,2024-11-25,2025-01-23
7345,ASH WATER PUMP HOUSE: Flooring,CIV,2025-01-24,2025-02-22
7346,ASH WATER PUMP HOUSE: Backfilling,CIV,2025-02-23,2025-03-09
7347,ASH WATER PUMP HOUSE: Finishing works,CIV,2025-03-10,2025-05-08
7348,Compressor House,CIV,2023-10-27,2024-06-17
7349,Compressor House: EXCAVATION,CIV,2023-10-27,2023-11-05
7350,Compressor House: RCC in substructure including PCC,CIV,2023-11-06,2024-01-19
7351,Compressor House: RCC in superstructure,CIV,2024-01-20,2024-05-08
7352,Compressor House: Backfilling,CIV,2024-05-09,2024-05-18
7353,Compressor House: Finishing works,CIV,2024-05-19,2024-06-17
7354,Fly Ash Silo,CIV,2023-12-26,2024-10-31
7355,Fly Ash Silo: EXCAVATION,CIV,2023-12-26,2024-01-04
7356,Fly Ash Silo: RCC in substructure including PCC,CIV,2024-01-05,2024-03-05
7357,Fly Ash Silo: RCC shell  column  tie beam and staircase,CIV,2024-03-06,2024-09-11
7358,Fly Ash Silo: RCC slab,CIV,2024-09-12,2024-10-11
7359,Fly Ash Silo: Backfilling,CIV,2024-10-12,2024-10-21
7360,Fly Ash Silo: Finishing works,CIV,2024-10-22,2024-10-31
7361,Intermediate Silo,CIV,2023-12-26,2024-10-31
7362,Intermediate Silo: EXCAVATION,CIV,2023-12-26,2024-01-04
7363,Intermediate Silo: RCC in substructure including PCC,CIV,2024-01-05,2024-03-05
7364,Intermediate Silo: RCC shell  column  tie beam and staircase,CIV,2024-03-06,2024-09-11
7365,Intermediate Silo: RCC slab,CIV,2024-09-12,2024-10-11
7366,Intermediate Silo: Backfilling,CIV,2024-10-12,2024-10-21
7367,Intermediate Silo: Finishing works,CIV,2024-10-22,2024-10-31
7368,Silo Utility Building,CIV,2023-10-27,2024-10-30
7369,Silo Utility Building: EXCAVATION,CIV,2023-10-27,2023-11-05
7370,Silo Utility Building: RCC in substructure including PCC,CIV,2023-11-06,2024-02-03
7371,Silo Utility Building: RCC in superstructure,CIV,2024-02-04,2024-05-23
7372,Silo Utility Building: Brick work & plastering,CIV,2024-05-24,2024-08-21
7373,Silo Utility Building: Flooring,CIV,2024-08-22,2024-09-20
7374,Silo Utility Building: Backfilling,CIV,2024-09-21,2024-09-30
7375,Silo Utility Building: Finishing works,CIV,2024-10-01,2024-10-30
7376,Classifier Silo,CIV,2023-10-27,2024-10-30
7377,Classifier Silo: EXCAVATION,CIV,2023-10-27,2023-11-05
7378,Classifier Silo: RCC in substructure including PCC,CIV,2023-11-06,2024-02-03
7379,Classifier Silo: RCC in superstructure,CIV,2024-02-04,2024-05-23
7380,Classifier Silo: Brick work & plastering,CIV,2024-05-24,2024-08-21
7381,Classifier Silo: Flooring,CIV,2024-08-22,2024-09-20
7382,Classifier Silo: Backfilling,CIV,2024-09-21,2024-09-30
7383,Classifier Silo: Finishing works,CIV,2024-10-01,2024-10-30
7384, Pipe Rack (Inside Plant),CIV,2023-11-26,2024-05-20
7385, Pipe Rack (Inside Plant): EXCAVATION,CIV,2023-11-26,2023-12-02
7386, Pipe Rack (Inside Plant): RCC & Steel Structure in substructure including PCC,CIV,2023-12-03,2024-01-01
7387, Pipe Rack (Inside Plant): RCC in superstructure,CIV,2024-01-02,2024-04-30
7388, Pipe Rack (Inside Plant): Backfilling,CIV,2024-05-01,2024-05-10
7389, Pipe Rack (Inside Plant): Finishing works,CIV,2024-05-11,2024-05-20
7390, Pipe pedestal,CIV,2023-09-27,2024-10-08
7391, Pipe pedestal: EXCAVATION,CIV,2023-10-27,2023-11-02
7392, Pipe pedestal : RCC in substructure including PCC,CIV,2023-11-03,2023-12-02
7393, Pipe pedestal: RCC in superstructure,CIV,2023-12-03,2024-01-06
7394, Pipe pedestal : Backfilling,CIV,2024-01-07,2024-01-16
7395, Pipe pedestal (Outside Plant): Finishing works,CIV,2024-01-17,2024-01-26
7396, AHP Main Control cum MCC Room & LHS MCC Room,CIV,2023-09-27,2024-10-08
7397, Main Control Room: EXCAVATION,CIV,2023-09-27,2023-10-11
7398, Main Control Room: RCC in substructure including PCC,CIV,2023-10-12,2023-11-10
7399, Main Control Room: RCC/Structure work in superstructure,CIV,2023-11-11,2024-05-11
7400, Main Control Room: Brick Work & Plastering,CIV,2024-05-12,2024-07-10
7401, Main Control Room: Flooring,CIV,2024-07-11,2024-07-25
7402, Main Control Room: Backfilling,CIV,2024-07-26,2024-08-09
7403, Main Control Room: Finishing works,CIV,2024-08-10,2024-10-08
7404, AHP MCC Room,CIV,2023-09-27,2024-10-08
7405, MCC Room: EXCAVATION,CIV,2023-09-27,2023-10-11
7406, MCC Room: RCC in substructure including PCC,CIV,2023-10-12,2023-11-10
7407, MCC Room: RCC/Structure work in superstructure,CIV,2023-11-11,2024-05-11
7408, MCC Room: Brick Work & Plastering,CIV,2024-05-12,2024-07-10
7409, MCC Room: Flooring,CIV,2024-07-11,2024-07-25
7410, MCC Room: Backfilling,CIV,2024-07-26,2024-08-09
7411, MCC Room: Finishing works,CIV,2024-08-10,2024-10-08
7412,Engineering  Supply &Erection,ENG,2022-12-25,2026-04-26
7413,Bottom Ash Handling & Coarse Ash Handling System,PRC,2022-12-25,2026-01-13
7414,NIT,ENQ,2022-12-25,2022-12-25
7415,Order placement,ORD,2022-12-26,2023-04-24
7416,Bottom Ash Hopper  Coarse Ash System  Equipment & Piping from Boiler area to BA Slurry PH,OTH,2023-04-25,2026-01-13
7417,Detailed Engineering,ENG,2023-04-25,2024-04-23
7418,Manufacturing,MFG,2024-01-25,2025-01-23
7419,Inspection  Dispatch and RECEIPT at site,DIS,2024-07-23,2025-05-18
7420, Equipment Erection,ERC,2024-09-21,2025-09-15
7421,BAH: Structure Fabrication,ERC,2024-09-21,2024-12-04
7422,BAH: and RECEIPT,ERC,2024-12-05,2025-02-17
7423,Application of Refractory,ERC,2025-02-18,2025-04-18
7424,Erection of BAH area Equipment(Clinker grinder  jet pump etc),ERC,2025-04-19,2025-07-17
7425,Erection in Eco  APH and Duct area,ERC,2024-09-21,2024-11-19
7426,BAH: Erection of BAH Slurry Piping & APH/Duct slurry piping,ERC,2025-05-19,2025-09-15
7427,Botheration of Electrical & C&I Items including cabling etc,ERC,2025-06-18,2025-09-15
7428,Bottom ash: Commissioning,COM,2025-09-16,2025-12-14
7429,Readiness of Bottom Ash Handling system including Ash transportation system up to slurry pump house for BLU of U#1,ERC,2025-12-15,2026-01-13
7430,Ash water PH  Ash Slurry PH & piping upto plant Boundary,OTH,2023-04-25,2025-09-25
7431,Detailed Engineering,ENG,2023-04-25,2024-04-23
7432,Manufacturing,MFG,2024-01-25,2025-01-23
7433,Inspection  Dispatch and RECEIPT at site,DIS,2024-07-23,2025-05-18
7434, and RECEIPT,ERC,2024-09-21,2025-09-25
7435,Erection of mechanical Equipment in Slurry PH & Ash Water PH,ERC,2024-09-21,2025-02-27
7436,Ash Slurry Pump House and Ash Water Pump House - Piping,ERC,2025-02-28,2025-06-27
7437,Piping upto Plant Boundary,ERC,2025-03-30,2025-07-27
7438,Erection of Electrical & C&I Items including cabling etc.,ERC,2025-06-28,2025-09-25
7439,Commissioning,COM,2024-09-22,2024-12-20
7440,Trial Run with load,COM,2024-12-21,2025-01-19
7441, Fly Ash Conveying System,PRC,2022-12-25,2026-01-18
7442, NIT,ENQ,2022-12-25,2022-12-25
7443, Order Placement,ORD,2022-12-26,2023-04-24
7444,Compressor house,OTH,2023-04-25,2026-01-18
7445,Detailed Engineering,ENG,2023-04-25,2024-04-23
7446,Manufacturing,MFG,2024-01-25,2024-11-19
7447,Inspection  Dispatch and RECEIPT at site,DIS,2024-05-19,2024-12-04
7448, and RECEIPT,REC,2025-01-04,2025-09-30
7449,Compressor house -Erection of mechanical equipments,ERC,2025-01-04,2025-05-03
7450,Compressor house - Piping,ERC,2025-05-04,2025-09-30
7451,Compressor house -Erection of Electrical & C&I items including cabling,ERC,2025-05-04,2025-08-31
7452,Commissioning,COM,2025-09-01,2025-12-19
7453,Trial Run with load,COM,2025-12-20,2026-01-18
7454,ESP area,ERC,2023-04-25,2025-12-14
7455,Detailed Engineering,ENG,2023-04-25,2024-04-23
7456,Manufacturing,MFG,2024-01-25,2025-01-23
7457,Inspection  Dispatch and RECEIPT at site,DIS,2024-07-23,2025-05-18
7458, and RECEIPT,REC,2024-10-31,2025-09-15
7459,Erection of mechanical equipments,ERC,2024-11-20,2025-06-17
7460,Erection of Structure & Pipe Trestle from ESP to FA Silo,ERC,2024-10-31,2025-07-27
7461,Piping from ESP to Intermediate Silo/Classifier Silo/Fly Ash Silo,ERC,2024-11-20,2025-08-16
7462,Erection of Electrical & C&I Items including cabling etc.,ERC,2025-06-18,2025-09-15
7463,Commissioning,COM,2025-08-17,2025-11-14
7464,Trial Run with load,COM,2025-11-15,2025-12-14
7465,Intermediate Silo & Fly Ash Silo Equipment,ERC,2023-04-25,2025-11-14
7466,Detailed Engineering,ERC,2023-04-25,2024-04-23
7467,Manufacturing,MFG,2024-01-25,2025-01-23
7468,Inspection  Dispatch and RECEIPT at site,DIS,2024-07-23,2025-05-08
7469, and RECEIPT,REC,2024-11-20,2025-11-14
7470, and RECEIPT in Intermediate silo,REC,2024-11-20,2025-07-17
7471, and RECEIPT in FA silo,REC,2024-11-20,2025-08-16
7472,Erection of Electrical & C&I Items including cabling etc.,ERC,2025-07-18,2025-11-14
7473,Commissioning,COM,2025-07-18,2025-10-15
7474,Trial Run with load,COM,2025-10-16,2025-11-14
7475,Fly ash Classifier,ERC,2023-04-25,2026-01-13
7476,Detailed Engineering,ENG,2023-04-25,2024-04-23
7477,Manufacturing,MFG,2024-01-25,2025-01-23
7478,Inspection  Dispatch and RECEIPT at site,DIS,2024-07-23,2025-05-08
7479, and RECEIPT,REC,2024-11-20,2025-10-15
7480,Erection of mechanical  Equipment,ERC,2024-11-20,2025-07-17
7481,Piping from clarifier to FA silo,ERC,2024-11-20,2025-08-16
7482,Erection of Electrical & C&I Items including cabling etc.,ERC,2025-07-18,2025-10-15
7483,Commissioning,COM,2025-08-17,2025-12-14
7484,Trial Run with load,ERC,2025-12-15,2026-01-13
7485,Fly ash Bagging System,ERC,2023-04-25,2026-01-08
7486,Detailed Engineering,ENG,2023-04-25,2024-03-19
7487,Manufacturing,MFG,2023-12-21,2024-12-19
7488,Inspection  Dispatch and RECEIPT at site,DIS,2024-06-18,2025-04-03
7489,Erection of mechanical  Equipment,ERC,2024-10-16,2025-08-11
7490,Erection of Electrical & C&I Items including cabling etc.,ERC,2025-08-12,2025-11-09
7491,Commissioning,COM,2025-08-12,2025-12-09
7492,Trial Run with load,ERC,2025-12-10,2026-01-08
7493,JHS - 12.5MVA  11/3.45 KV AHP AUX Transformer,ERC,2023-06-04,2025-11-01
7494,Engineering,ENG,2023-06-04,2023-12-30
7495,Manufacturing & testing,MFG,2023-10-02,2025-01-15
7496, Packing  Dispatch,DIS,2024-09-18,2025-02-14
7497,Erection of Aux Transformer,ERC,2025-03-17,2025-08-03
7498,Commissioning of Aux Transformer,COM,2025-08-04,2025-11-01
7499,Readiness of Ash Handling system for Steam Blowing,ERC,2026-01-14,2026-02-27
7500,Readiness of Fly Ash system Handling system,ERC,2026-01-19,2026-04-26
7501,Illumination Package for CHP  AHP  LHP & GHP,PRC,2023-02-18,2025-05-08
7502, NIT,ENQ,2023-02-18,2023-02-18
7503, Order Placement,ORD,2023-02-19,2023-06-18
7504,Detailed Engineering& Approval of Dwgs datasheet and QAP,ENG,2023-06-19,2024-03-14
7505,Manufacturing,MFG,2023-09-17,2024-08-06
7506,Inspection  Dispatch and RECEIPT at site,DIS,2024-02-09,2024-11-04
7507,Erection of Illumination package,ERC,2024-04-09,2025-04-08
7508, Commissioning,COM,2025-01-09,2025-05-08
7509,Electrical: E&C for CHP  AHP  LHP & GHP,PRC,2023-09-21,2025-12-19
7510,NIT,ENQ,2023-09-21,2023-09-21
7511,Order placement,ORD,2023-09-22,2024-01-19
7512,Detailed Engineering,ENG,2024-01-20,2024-06-27
7513,Manufacturing,MFG,2024-03-30,2025-04-23
7514,Dispatch,DIS,2024-09-26,2025-06-12
7515,EARTHING,ERC,2024-11-25,2025-05-23
7516,CABLE TRAY & SUPPORTS AND CABLE LAYING,ERC,2025-01-24,2025-09-20
7517,OIL TYPE TRANSFORMER,OTH,2025-03-25,2025-05-23
7518,BUSDUCT,OTH,2025-05-24,2025-08-21
7519,MCC,OTH,2025-05-24,2025-08-21
7520,DCS INCLUDING BATTERY  CHARGER  UPS,OTH,2025-07-23,2025-09-20
7521,220V DC BATTERY & CHARGER,OTH,2025-07-23,2025-09-20
7522,COMMISSIONING OF TRANSFORMER  BUSDUCT  MCC  DCS  BATTERY & CHARGER,COM,2025-04-24,2025-12-19
7523,DG,OTH,2023-06-15,2025-08-27
7524, Rel of Dwg for DG,PE - RFC,2024-05-29,2024-05-29
7525,Supply,SUP,2023-06-15,2025-04-07
7526,DG Set,SUP,2023-06-15,2025-04-07
7527,PO Placement,ORD,2023-06-15,2023-10-15
7528,Engineering,ENG,2023-10-16,2024-02-12
7529,Dispatch of DG Set with Associated items,DIS,2024-10-10,2025-04-07
7530,E&C DG SET,OTH,2025-04-08,2025-08-27
7531,E&C DG SET: Erection of Diesel Generator set,ERC,2025-04-08,2025-05-07
7532,E&C DG Redefection of Fuel Oil System (DG SET),ERC,2025-05-08,2025-06-06
7533,E&C DG Redefection of Cooling water system consisting of Pumps / Heaters / expansion tanks/ radiators etc,ERC,2025-06-07,2025-07-01
7534,E&C DG Redefection of DG Battery Bank along with DG Battery Charger,ERC,2025-07-02,2025-07-26
7535,E&C DG Redefection of DG Switchgear,ERC,2025-07-27,2025-08-20
7536,E&C DG SET: Commissioning of DG Set,COM,2025-08-21,2025-08-27
7537,MILL REJECT SYSTEM,SUP,2023-05-15,2026-06-20
7538,Supply,SUP,2023-05-15,2026-01-11
7539,MILL REJECT SYSTEM ,OTH,2023-05-15,2026-01-11
7540,Ordering,ORD,2023-05-15,2023-10-11
7541,Engineering,ENG,2023-10-12,2024-07-07
7542,Manufacturing,MFG,2024-07-08,2025-08-14
7543,Dispatch of Conveying Air compressors,DIS,2025-08-15,2026-01-11
7544,Dispatch of Pyrite hoppers,DIS,2025-08-15,2026-01-11
7545,Dispatch of pipings and other balance items,DIS,2025-08-15,2026-01-11
7546,Civil,CIV,2024-09-16,2025-07-27
7547,Conveying Air Compressor Foundation,CIV,2024-09-16,2025-04-28
7548,EXCAVATION,CIV,2024-09-16,2024-10-30
7549,RCC in substructure including PCC,CIV,2024-10-31,2025-01-03
7550,RCC in superstructure,CIV,2025-01-04,2025-04-03
7551,Backfilling,CIV,2025-04-04,2025-04-18
7552,Finishing works,CIV,2025-04-19,2025-04-28
7553,Silo Structure Foundation,CIV,2025-04-29,2025-07-27
7554, EXCAVATION,CIV,2025-04-29,2025-05-08
7555, RCC in substructure including PCC,CIV,2025-05-09,2025-06-02
7556, RCC in superstructure,CIV,2025-06-03,2025-07-12
7557, Backfilling,CIV,2025-07-13,2025-07-22
7558, Finishing works,CIV,2025-07-23,2025-07-27
7559,Erection,ERC,2025-04-29,2026-06-20
7560, MILL REJECT SYSTEM: Conveying Air compressors: inspection of foundations,ERC,2025-04-29,2025-05-18
7561, MILL REJECT SYSTEM: Conveying Air compressors: placement of Conveying Air compressors on foundation,ERC,2025-05-19,2025-06-07
7562, MILL REJECT SYSTEM: Conveying Air compressors: Erection of Valves,ERC,2025-06-08,2025-07-27
7563, MILL REJECT SYSTEM:PYRITE HOPPERS: Placement of pyrite hoppers,ERC,2025-07-28,2025-09-25
7564, MILL REJECT SYSTEM:PYRITE Hoppers: Erection of Deluge Valves,ERC,2025-09-26,2025-11-09
7565, MILL REJECT SYSTEM: Conveying piping: Erection of Conveying Air piping for compressor,ERC,2025-11-10,2025-12-13
7566, MILL REJECT SYSTEM: Conveying SYSTEM: Conveying of associated fittings,ERC,2025-12-14,2026-01-16
7567, MILL REJECT SYSTEM:MILL REJECT SILO: Fabrication of Structure,ERC,2026-01-17,2026-02-10
7568, MILL REJECT SYSTEM:MILL REJECT SILO: Fabrication of Silo,ERC,2026-02-11,2026-03-27
7569, MILL REJECT SYSTEM:MILL REJECT SILO: Erection of support structure for Silo,ERC,2026-03-28,2026-04-16
7570, MILL REJECT SYSTEM:MILL REJECT SILO: Lifting of Silo cone,ERC,2026-04-17,2026-04-21
7571, MILL REJECT SYSTEM:MILL REJECT SILO: Welding of Silo Cone with structure,ERC,2026-04-22,2026-05-01
7572, MILL REJECT SYSTEM:MILL REJECT SILO: lifting of Silo Shell,ERC,2026-05-02,2026-05-06
7573, MILL REJECT SYSTEM:MILL REJECT SILO:WELDING OF SILO SHELL,ERC,2026-05-07,2026-05-16
7574, MILL REJECT SYSTEM:MILL REJECT SILO:LINING INSIDE MILL REJECT SILO,ERC,2026-05-17,2026-05-23
7575, MILL REJECT SYSTEM:ERECTION OF Electrical  C&I and PLC SYSTEM,ERC,2026-05-24,2026-06-12
7576, MILL REJECT SYSTEM:COMMISSIONING of MRS,COM,2026-06-13,2026-06-20
7577,400kV Switchyard,OTH,2023-04-25,2026-03-27
7578,Engineering Activities,ENG,2023-04-25,2023-07-18
7579,400 kV Single Line Diagram,ENG,2023-04-25,2023-05-09
7580,Layout Plan & Section - 400 kV,ENG,2023-05-10,2023-05-29
7581,Civil Design Basis,ENG,2023-05-30,2023-07-18
7582,Ordering of BOIs - 400 kV Switchyard,ORD,2023-05-30,2023-09-11
7583,400 kV Gas Insulated Switchgear,ORD,2023-05-30,2023-08-27
7584,400 kV BPI,ORD,2023-05-30,2023-07-18
7585,336 kV LA,ORD,2023-05-30,2023-07-18
7586,400 kV WT,ORD,2023-06-04,2023-07-23
7587,FOTE,ORD,2023-05-30,2023-07-18
7588,Control & Power Cable,ORD,2023-05-30,2023-07-18
7589,Marshalling Kiosk & JBs,ORD,2023-05-30,2023-07-18
7590,Earthing Material,ORD,2023-05-30,2023-07-18
7591,Shield Wire,ORD,2023-05-30,2023-07-18
7592,ACSR Conductor,ORD,2023-05-30,2023-07-18
7593,Al tube,ORD,2023-05-30,2023-07-18
7594,Cable Trench Material,ORD,2023-05-30,2023-07-18
7595,Structures & Hardwares,ORD,2023-05-30,2023-07-18
7596,Battery & Battery Chargers,ORD,2023-05-30,2023-07-18
7597,Auxiliary Transformer,ORD,2023-07-24,2023-09-11
7598,Illumination System,ORD,2023-05-30,2023-07-18
7599,Fire Protection System,OTH,2023-05-30,2023-07-18
7600,Air Conditioning and Ventilation System,OTH,2023-05-30,2023-07-18
7601,EOT Crane,OTH,2023-05-30,2023-07-18
7602,Self Power Hydraulic Aerial Working Platform,OTH,2023-05-30,2023-07-18
7603,Detailed Engineering for 400 kV Switchyard,ENG,2023-04-25,2023-11-25
7604,400 kV Structure Layout and Section,OTH,2023-06-09,2023-07-08
7605,400 kV EKD - Plan  Section and BOM,OTH,2023-06-29,2023-07-28
7606,400 kV Clearance Check Diagram,OTH,2023-06-19,2023-07-18
7607,400 kV DSLP Calculation and Layout - Overall,OTH,2023-06-24,2023-07-23
7608,400 kV Earthing Layout - Overall,OTH,2023-06-14,2023-07-13
7609,400 kV CVT - Drawing  Data Sheet  TTR  MQP,ENG,2023-07-29,2023-08-27
7610,400 kV CVT - Structural Design  Drawing,ENG,2023-07-29,2023-08-27
7611,400 kV CVT - Proto Corrected Structural Drawing,ENG,2023-07-29,2023-08-27
7612,400 kV CVT - Foundation Design  Drawing,CIV,2023-07-29,2023-08-27
7613,336 kV LA - Drawing  Data Sheet  TTR  MQP,ENG,2023-07-29,2023-08-27
7614,336 kV LA - Structural Design  Drawing,ENG,2023-07-29,2023-08-27
7615,336 kV LA - Proto Corrected Structural Drawing,ENG,2023-07-29,2023-08-27
7616,336 kV LA - Foundation Design  Drawing,CIV,2023-07-29,2023-08-27
7617,400 kV BPI - Drawing  Data Sheet  TTR  MQP,ENG,2023-07-29,2023-08-27
7618,400 kV BPI - Structural Design  Drawing,ENG,2023-07-29,2023-08-27
7619,400 kV BPI - Proto Corrected Structural Drawing,ENG,2023-07-29,2023-08-27
7620,400 kV BPI - Foundation Design  Drawing,CIV,2023-07-29,2023-08-27
7621,400 kV Wave Trap - Drawing  Data Sheet  TTR  MQP,ENG,2023-08-03,2023-09-01
7622,400 kV Wave Trap - Structural Design  Drawing,ENG,2023-08-03,2023-09-01
7623,400 kV Wave Trap - Proto Corrected Structural Drawing,ENG,2023-08-03,2023-09-01
7624,400 kV Wave Trap- Foundation Design  Drawing,CIV,2023-08-03,2023-09-01
7625,FOTE - Drawing  Data Sheet  TTR  MQP,ENG,2023-07-29,2023-08-27
7626,125 MVAr Reactor,OTH,2023-04-25,2023-05-24
7627,Composite Long Rod Insulator,OTH,2023-04-25,2023-05-24
7628,LT Switchgear,OTH,2023-04-25,2023-05-24
7629,Control & Power Cable- Drawing  Data Sheet  TTR  MQP,ENG,2023-07-29,2023-08-27
7630,Marshalling Kiosk & JBs- Drawing  Data Sheet  TTR  MQP,ENG,2023-07-29,2023-08-27
7631,Shield Wire - Drawing and Data sheet,ENG,2023-07-29,2023-08-27
7632,ACSR Conductor- Drawing and Data sheet,ENG,2023-07-29,2023-08-27
7633,Al tube- Drawing and Data sheet,ENG,2023-07-29,2023-08-27
7634,Cable Trench Material- Drawing and Data sheet,ENG,2023-07-29,2023-08-27
7635,Battery & Battery Chargers- Drawing  Data Sheet  TTR  MQP,ENG,2023-07-29,2023-08-27
7636,Auxiliary Transformer- Drawing  Data Sheet  TTR  MQP,ENG,2023-09-22,2023-10-21
7637,Illumination System- Drawing  Data Sheet  TTR  MQP,ENG,2023-07-29,2023-08-27
7638,Fire Protection System- Drawing  Data Sheet  TTR  MQP,ENG,2023-07-29,2023-08-27
7639,Air Conditioning and Ventilation System- Drawing  Data Sheet  TTR  MQP,ENG,2023-07-29,2023-08-27
7640,EOT Crane- Drawing  Data Sheet  TTR  MQP,ENG,2023-07-29,2023-08-27
7641,Self Power Hydraulic Aerial Working Platform- Drawing  Data Sheet  TTR  MQP,ENG,2023-07-29,2023-08-27
7642,Control & Relay Panel & SAS for 400 kV Switchyard,OTH,2023-04-25,2023-06-23
7643,400 kV Protection SLD,OTH,2023-05-30,2023-06-28
7644,Control & Power Cable Schedule,ENG,2023-07-24,2023-08-22
7645,GA & Architectural Plan  Elevation and Sections for 400 kV GIS Building,ENG,2023-09-27,2023-10-26
7646,GA and Data Sheet of Circuit Breaker (GIS),ENG,2023-09-27,2023-11-25
7647,GA and Data Sheet of Disconnecting Switch (GIS),ENG,2023-09-27,2023-11-25
7648,GA and Data Sheet of Earthing Switch (GIS),ENG,2023-09-27,2023-11-25
7649,GA and Data Sheet of Operating Mechanism for DS & ES (GIS),ENG,2023-09-27,2023-11-25
7650,GA and Data Sheet of Current Transformer (GIS),ENG,2023-09-27,2023-11-25
7651,GA and Data Sheet of Bus Voltage Transformer (For reference) (GIS),ENG,2023-09-27,2023-11-25
7652,GA and Data Sheet of Circuit Breaker (GIS),ENG,2023-09-27,2023-11-25
7653,400 kV GIS Building - Load Calculation  Analysis & Design,ENG,2023-09-27,2023-10-26
7654,400 kV GIS Building - Design of Crane Runway girder,ENG,2023-09-27,2023-10-26
7655,400 kV GIS Building - Design of Roof Purlins,ENG,2023-09-27,2023-10-26
7656,400 kV GIS Building - Design of Indoor Cable Trench,ENG,2023-09-27,2023-10-26
7657,400 kV GIS Building - Layout and details of foundations and column pedestals,ENG,2023-09-27,2023-10-26
7658,400 kV GIS Building - GA and Details of structural steel columns including tie beams and bracings,ENG,2023-09-27,2023-10-26
7659,400 kV GIS Building - GA and RC details of plinth beam,ENG,2023-09-27,2023-10-26
7660,400 kV GIS Building - GA and details of Roof Truss including roof bracings ,ENG,2023-09-27,2023-10-26
7661,400 kV GIS Building - Layout & details of Roof and wall,ENG,2023-09-27,2023-10-26
7662,400 kV GIS Building - Details of EOT crane girder,ENG,2023-09-27,2023-10-26
7663,400 kV GIS Building - Layout and RCC details of Indoor cable trenches,CIV,2023-09-27,2023-10-26
7664,400 kV GIS Building - GA and RC details of GIS equipments,ENG,2023-09-27,2023-10-26
7665,400 kV GIS Building - Details of Door & Windows,ENG,2023-09-27,2023-10-26
7666,Manufacturing  Testing and Dispatch,MFG,2023-05-25,2024-08-21
7667,400 kV Gas Insulated Switchgear,OTH,2023-11-26,2024-08-21
7668,Manufacturing,MFG,2023-11-26,2024-05-23
7669,Testing  Inspection &Dispatch,DIS,2024-05-24,2024-07-22
7670,Receipt at Site,OTH,2024-07-23,2024-08-21
7671,400 kV CVT,OTH,2023-08-28,2023-12-05
7672,Manufacturing,MFG,2023-08-28,2023-10-16
7673,Testing  Inspection &Dispatch,DIS,2023-10-17,2023-11-15
7674,Receipt at Site,OTH,2023-11-16,2023-12-05
7675,400 kV BPI,OTH,2023-08-28,2023-12-05
7676,Manufacturing,MFG,2023-08-28,2023-10-16
7677,Testing  Inspection &Dispatch,DIS,2023-10-17,2023-11-15
7678,Receipt at Site,OTH,2023-11-16,2023-12-05
7679,336 kV LA,OTH,2023-08-28,2023-12-05
7680,Manufacturing,MFG,2023-08-28,2023-10-16
7681,Testing  Inspection &Dispatch,DIS,2023-10-17,2023-11-15
7682,Receipt at Site,OTH,2023-11-16,2023-12-05
7683,400 kV WT,OTH,2023-09-02,2023-12-10
7684,Manufacturing,MFG,2023-09-02,2023-10-21
7685,Testing  Inspection &Dispatch,DIS,2023-10-22,2023-11-20
7686,Receipt at Site,OTH,2023-11-21,2023-12-10
7687,400 kV Control & Relay Panels and SAS,,2023-06-24,2023-11-10
7688,Manufacturing,MFG,2023-06-24,2023-09-21
7689,Testing  Inspection &Dispatch,DIS,2023-09-22,2023-10-21
7690,Receipt at Site,OTH,2023-10-22,2023-11-10
7691,FOTE,OTH,2023-08-28,2023-12-05
7692,Manufacturing,MFG,2023-08-28,2023-10-16
7693,Testing  Inspection &Dispatch,DIS,2023-10-17,2023-11-15
7694,Receipt at Site,OTH,2023-11-16,2023-12-05
7695,Control & Power Cable,OTH,2023-08-28,2024-01-14
7696,Manufacturing,MFG,2023-08-28,2023-11-25
7697,Testing  Inspection &Dispatch,DIS,2023-11-26,2023-12-25
7698,Receipt at Site,OTH,2023-12-26,2024-01-14
7699,125 MVAr Reactor,OTH,2023-05-25,2023-10-11
7700,Manufacturing,MFG,2023-05-25,2023-08-22
7701,Testing  Inspection &Dispatch,DIS,2023-08-23,2023-09-21
7702,Receipt at Site,OTH,2023-09-22,2023-10-11
7703,Composite Long Rod Insulator,OTH,2023-05-25,2023-10-11
7704,Manufacturing,MFG,2023-05-25,2023-08-22
7705,Testing  Inspection &Dispatch,DIS,2023-08-23,2023-09-21
7706,Receipt at Site,OTH,2023-09-22,2023-10-11
7707,LT Switchgear,OTH,2023-05-25,2023-10-11
7708,Manufacturing,MFG,2023-05-25,2023-08-22
7709,Testing  Inspection &Dispatch,DIS,2023-08-23,2023-09-21
7710,Receipt at Site,OTH,2023-09-22,2023-10-11
7711,Marshalling Kiosk & JBs,OTH,2023-08-28,2023-12-05
7712,Manufacturing,MFG,2023-08-28,2023-10-16
7713,Testing  Inspection &Dispatch,DIS,2023-10-17,2023-11-15
7714,Receipt at Site,OTH,2023-11-16,2023-12-05
7715,Earthing Material,OTH,2023-07-19,2023-10-06
7716,Manufacturing,MFG,2023-07-19,2023-08-17
7717,Testing  Inspection &Dispatch,DIS,2023-08-18,2023-09-16
7718,Receipt at Site,OTH,2023-09-17,2023-10-06
7719,Shield Wire,OTH,2023-08-28,2023-12-05
7720,Manufacturing,MFG,2023-08-28,2023-10-16
7721,Testing  Inspection &Dispatch,DIS,2023-10-17,2023-11-15
7722,Receipt at Site,OTH,2023-11-16,2023-12-05
7723,ACSR Conductor,OTH,2023-08-28,2023-12-05
7724,Manufacturing,MFG,2023-08-28,2023-10-16
7725,Testing  Inspection &Dispatch,DIS,2023-10-17,2023-11-15
7726,Receipt at Site,OTH,2023-11-16,2023-12-05
7727,Al tube,OTH,2023-08-28,2023-12-05
7728,Manufacturing,MFG,2023-08-28,2023-10-16
7729,Testing  Inspection &Dispatch,DIS,2023-10-17,2023-11-15
7730,Receipt at Site,OTH,2023-11-16,2023-12-05
7731,Cable Trench Material,OTH,2023-08-28,2023-12-05
7732,Manufacturing,MFG,2023-08-28,2023-10-16
7733,Testing  Inspection &Dispatch,DIS,2023-10-17,2023-11-15
7734,Receipt at Site,OTH,2023-11-16,2023-12-05
7735,Structures & Hardwares,OTH,2023-08-18,2023-11-25
7736,Manufacturing,MFG,2023-08-18,2023-10-06
7737,Testing  Inspection &Dispatch,DIS,2023-10-07,2023-11-05
7738,Receipt at Site,OTH,2023-11-06,2023-11-25
7739,Battery & Battery Chargers,OTH,2023-08-28,2023-12-15
7740,Manufacturing,MFG,2023-08-28,2023-10-26
7741,Testing  Inspection &Dispatch,DIS,2023-10-27,2023-11-25
7742,Receipt at Site,OTH,2023-11-26,2023-12-15
7743,Auxiliary Transformer,OTH,2023-10-22,2024-01-29
7744,Manufacturing,MFG,2023-10-22,2023-12-10
7745,Testing  Inspection &Dispatch,DIS,2023-12-11,2024-01-09
7746,Receipt at Site,OTH,2024-01-10,2024-01-29
7747,Illumination System,OTH,2023-08-28,2023-12-15
7748,Manufacturing,MFG,2023-08-28,2023-10-26
7749,Testing  Inspection &Dispatch,DIS,2023-10-27,2023-11-25
7750,Receipt at Site,OTH,2023-11-26,2023-12-15
7751,Fire Protection System,OTH,2023-08-28,2024-01-14
7752,Manufacturing,MFG,2023-08-28,2023-11-25
7753,Testing  Inspection &Dispatch,DIS,2023-11-26,2023-12-25
7754,Receipt at Site,OTH,2023-12-26,2024-01-14
7755,Air Conditioning and Ventilation System,OTH,2023-08-28,2024-01-14
7756,Manufacturing,MFG,2023-08-28,2023-11-25
7757,Testing  Inspection &Dispatch,DIS,2023-11-26,2023-12-25
7758,Receipt at Site,OTH,2023-12-26,2024-01-14
7759,EOT Crane,OTH,2023-08-28,2024-01-14
7760,Manufacturing,MFG,2023-08-28,2023-11-25
7761,Testing  Inspection &Dispatch,DIS,2023-11-26,2023-12-25
7762,Receipt at Site,OTH,2023-12-26,2024-01-14
7763,Self Power Hydraulic Aerial Working Platform,OTH,2023-08-28,2024-01-14
7764,Manufacturing,MFG,2023-08-28,2023-11-25
7765,Testing  Inspection &Dispatch,DIS,2023-11-26,2023-12-25
7766,Receipt at Site,OTH,2023-12-26,2024-01-14
7767,Civil,CIV,2023-05-30,2025-01-23
7768,Switchyard Equipment foundation,CIV,2023-05-30,2024-04-23
7769,GIS Building,CIV,2023-05-30,2024-04-03
7770,Foundation ,CIV,2023-05-30,2023-08-27
7771,Columns & Superstructure ,CIV,2023-08-28,2023-11-25
7772,Roof sheeting,CIV,2023-11-26,2024-02-23
7773,Brick work and finishing work,CIV,2023-12-16,2024-04-03
7774,Control Room,CIV,2023-09-07,2024-11-24
7775,EXCAVATION,CIV,2023-09-07,2023-10-01
7776,RCC in substructure including PCC,CIV,2023-10-02,2023-12-30
7777,RCC/Structure work in superstructure,CIV,2023-12-31,2024-05-28
7778,Brick Work & Plastering,CIV,2024-05-29,2024-07-27
7779,Flooring,CIV,2024-07-28,2024-09-10
7780,Backfilling,CIV,2024-09-11,2024-09-25
7781,Finishing works,CIV,2024-09-26,2024-11-24
7782,AHU Building,CIV,2023-09-07,2025-01-23
7783,EXCAVATION,CIV,2023-09-07,2023-10-01
7784,RCC in substructure including PCC,CIV,2023-10-02,2023-12-30
7785,RCC/Structure work in superstructure,CIV,2023-12-31,2024-07-27
7786,Brick Work & Plastering,CIV,2024-07-28,2024-09-25
7787,Flooring,CIV,2024-09-26,2024-11-09
7788,Backfilling,CIV,2024-11-10,2024-11-24
7789,Finishing works,CIV,2024-11-25,2025-01-23
7790,and Dispatch,OTH,2023-09-18,2025-08-04
7791,Towers and Gantry,ERC,2023-09-18,2024-01-15
7792,400 kV Reactor,ERC,2024-05-01,2024-08-08
7793,EOT Crane,ERC,2024-02-24,2024-06-22
7794,Air Conditioning and Ventilation System,ERC,2025-01-24,2025-05-23
7795,Fire Protection System,ERC,2024-04-04,2024-08-01
7796,Illumination System,ERC,2023-12-26,2024-04-23
7797,LT System (Including Battery and Battery Chargers) (Control room Building),ERC,2024-11-25,2025-01-23
7798,Outdoor Equipments (LA  BPI  CVT  WT) (Outdoor),ERC,2023-12-26,2024-03-14
7799,400 kV Control & Relay Panel & SAS (Control room Building),ERC,2024-11-25,2025-01-23
7800,FOTE (Control room Building),ERC,2024-11-25,2025-01-23
7801,Auxiliary Transformer (Outdoor),ERC,2024-02-29,2024-04-28
7802,Readiness of Priority bays for charging for Start-up Power(400 kV Priority area for start up power including priority bays with bus bar covering GIS & AIS system),ERC,2024-08-22,2025-04-26
7803,400 kV Balance Area,ERC,2025-04-27,2025-08-04
7804,Readiness of line bays  Generator Transformer Bay for Unit # 1  Coupler Bays  Transfer Bays etc. with Common,COM,2025-08-05,2026-01-26
7805,Balance COF U#1,ERC,2026-01-27,2026-03-27
7806,Station C&I,ERC,2025-02-03,2026-06-17
7807,Readiness of DDCMIS for Water System & Make-Up Water System ,ERC,2025-02-03,2025-03-26
7808,Readiness of DDCMIS Systems required for Boiler Light Up,ERC,2025-02-03,2025-11-09
7809,Readiness of DDCMIS For Main Plant & Standalone Common System,COM,2025-02-03,2026-01-08
7810,Readiness of DDCMIS for AHP & CHP and other balance works,ERC,2025-02-03,2026-02-17
7811,Completion of facilities for C&I system ,ERC,2026-02-18,2026-06-17
7812,Chlorine Dioxide dosing system,OTH,2022-12-26,2025-08-13
7813, Rel of Dwg for CW Chlorination system,PE - RFC,2024-06-04,2024-06-04
7814,Award of  Execution Agency,PRC,2022-12-26,2023-05-25
7815,Enquiry,ENQ,2022-12-26,2022-12-26
7816,PO Placement,ORD,2022-12-27,2023-05-25
7817, Civil,OTH,2024-06-05,2025-03-31
7818,Excavation,CIV,2024-06-05,2024-07-04
7819,RCC Sub-structure,CIV,2024-07-05,2024-12-01
7820,RCC Super-Structure,CIV,2024-12-02,2025-03-31
7821,Supply,OTH,2023-11-22,2024-05-19
7822,Tanks,OTH,2023-11-22,2024-03-20
7823,Pumps,OTH,2023-11-22,2024-05-19
7824,Pipes  fittings & Valves,OTH,2023-11-22,2024-05-19
7825,Erection,ERC,2025-04-01,2025-08-13
7826,Tanks,ERC,2025-04-01,2025-05-15
7827,Pumps,ERC,2025-05-16,2025-06-14
7828,INTERCONNECTING PIPING & FITTINGS,ERC,2025-06-15,2025-07-14
7829,Commissioning,COM,2025-07-15,2025-08-13
7830,Pipe Rack and Cable Trestle  Station Piping,OTH,2023-08-23,2026-01-29
7831,Release of Drawings,PE - RFC,2023-08-23,2023-08-23
7832,Award of  Execution Agency,PRC,2023-08-23,2024-01-20
7833,NIT,ENQ,2023-08-23,2023-08-23
7834,PO Placement,ORD,2023-08-24,2024-01-20
7835, Civil,CIV,2024-02-20,2024-10-16
7836,Excavation,CIV,2024-02-20,2024-03-20
7837,Pedestal footing- Priority path,OTH,2024-03-21,2024-06-18
7838,Pedestal footing- Balance,OTH,2024-06-19,2024-10-16
7839,Supply,OTH,2024-09-07,2025-03-05
7840,Cable trestle,OTH,2024-09-07,2025-01-04
7841,Pipe rack,OTH,2024-09-07,2025-03-05
7842,Erection,ERC,2025-04-05,2026-01-29
7843,Pipe rack  Cable trestle  Piping & Cable laying,ERC,2025-04-05,2026-01-29
7844,Readiness for HT,ERC,2025-05-05,2025-07-03
7845,Readiness for BLU,ERC,2025-07-04,2025-09-01
7846,Readiness for Full loading,ERC,2025-09-02,2026-01-29
7847,Misc. Elevators,OTH,2023-09-03,2025-11-17
7848,Supply,OTH,2023-09-03,2025-11-17
7849,Elevator,OTH,2023-09-03,2024-10-26
7850,Ordering,OTH,2023-09-03,2023-12-01
7851,Detailed Engineering,ENG,2023-12-02,2024-04-29
7852,Manufacturing,MFG,2024-04-30,2024-09-26
7853,Dispatch,DIS,2024-09-27,2024-10-26
7854,Civil,OTH,2024-09-24,2025-05-21
7855,Readiness of Elevator Pit & Shaft,OTH,2024-09-24,2025-05-21
7856,Erection,ERC,2025-05-22,2025-11-17
7857,Erection and commissioning of Elevator,COM,2025-05-22,2025-11-17
7858,Lifting Equipments,OTH,2023-05-15,2026-06-03
7859,Supply,SUP,2023-05-15,2026-06-03
7860,Lifting Tackles (PG-99),SUP,2023-05-15,2025-07-28
7861,MISC CHAIN PULLEY BLOCKS (PGMA-99099),SUP,2023-10-21,2025-07-28
7862,Ordering & Engineering,ENG,2023-10-21,2024-10-15
7863,Manufacturing,MFG,2024-10-16,2025-07-28
7864,Dispatch,DIS,2025-04-30,2025-05-29
7865,FAN HANDLING EQUIPMENT (PGMA-99100),SUP,2023-07-23,2025-02-27
7866,Ordering & Engineering,ENG,2023-07-23,2024-04-17
7867,Manufacturing,MFG,2024-04-18,2025-01-28
7868,Dispatch,DIS,2025-01-29,2025-02-27
7869,CIR PUMP / FEED PUMP HANDLING EQUIPMENT (PGMA-99300),SUP,2023-05-24,2024-12-26
7870,Ordering & Engineering,ENG,2023-05-24,2024-02-17
7871,Manufacturing,MFG,2024-02-18,2024-11-26
7872,Dispatch,DIS,2024-11-27,2024-12-26
7873,AIRHEATER STEAMCOIL AIRHEATER HANDLG E (PGMA-99400),SUP,2023-07-23,2025-02-27
7874,Ordering & Engineering,ENG,2023-07-23,2024-04-17
7875,Manufacturing,MFG,2024-04-18,2025-01-28
7876,Dispatch,DIS,2025-01-29,2025-02-27
7877,FURNACE CRADLE -WALL COVERAGE ELECTR (PGMA-99512),SUP,2023-07-23,2025-02-27
7878,Ordering & Engineering,ENG,2023-07-23,2024-04-17
7879,Manufacturing,MFG,2024-04-18,2025-01-28
7880,Dispatch,DIS,2025-01-29,2025-02-27
7881,FO SYSTEM HANDLING EQUIPMENT (PGMA-99600),SUP,2023-07-23,2025-02-27
7882,Ordering & Engineering,ENG,2023-07-23,2024-04-17
7883,Manufacturing,MFG,2024-04-18,2025-01-28
7884,Dispatch,DIS,2025-01-29,2025-02-27
7885,BOI-PEM - CHAIN PULLEY BLOCK ,SUP,2023-12-05,2025-01-27
7886,Ordering,ORD,2023-12-05,2024-03-03
7887,Detailed Engineering,ENG,2024-03-04,2024-07-31
7888,Manufacturing,MFG,2024-08-01,2024-12-28
7889,Dispatch,DIS,2024-12-29,2025-01-27
7890,BOI-PEM - ELECTRIC HOIST ,SUP,2023-12-01,2025-01-23
7891,Ordering,ORD,2023-12-01,2024-02-28
7892,Detailed Engineering,ENG,2024-02-29,2024-07-27
7893,Manufacturing,MFG,2024-07-28,2024-12-24
7894,Dispatch,DIS,2024-12-25,2025-01-23
7895,BOI-PEM - D/G EOT CRANE (UPTO 100 T) ,SUP,2023-05-15,2024-07-07
7896,Ordering,ORD,2023-05-15,2023-08-12
7897,Detailed Engineering,ENG,2023-08-13,2024-01-09
7898,Manufacturing,MFG,2024-01-10,2024-06-07
7899,Dispatch,DIS,2024-06-08,2024-07-07
7900,BOI-PEM - Single Girder EOT / HOT Misc. Cranes ,SUP,2023-11-11,2025-01-03
7901,Ordering,ORD,2023-11-11,2024-02-08
7902,Detailed Engineering,ENG,2024-02-09,2024-07-07
7903,Manufacturing,MFG,2024-07-08,2024-12-04
7904,Dispatch,DIS,2024-12-05,2025-01-03
7905,Erection,ERC,2025-05-30,2026-06-03
7906,E&C of Lifting equipments,ERC,2025-05-30,2026-06-03
7907,Misc. Building,OTH,2023-01-05,2025-07-03
7908,NON PLANT Building,OTH,2023-01-05,2025-07-03
7909, Rel of Dwg for Administration Building,PE - RFC,2024-01-10,2024-01-10
7910, Rel of Dwg for Construction office,PE - RFC,2023-01-05,2023-01-05
7911, Rel of Dwg for Canteen Building,PE - RFC,2024-08-27,2024-08-27
7912, Rel of Dwg for O&M Workshop Building,PE - RFC,2024-07-08,2024-07-08
7913, Rel of Dwg for Gate Complex along with CISF Building,PE - RFC,2023-06-04,2023-06-04
7914, Rel of Dwg for Fire station building with Drill Tower,PE - RFC,2023-11-11,2023-11-11
7915, Rel of Dwg for CHP office cum Workshop Building,PE - RFC,2023-07-24,2023-07-24
7916, Rel of Dwg for Dozer Shed,PE - RFC,2025-03-15,2025-03-15
7917,Gate Complex along with CISF Building,CIV,2024-01-16,2024-09-20
7918, TIME OFFICE & SECURITY OFFICE: EXCAVATION,CIV,2024-01-16,2024-01-30
7919, TIME OFFICE & SECURITY OFFICE:RCC in substructure including PCC,CIV,2024-01-31,2024-02-19
7920, TIME OFFICE & SECURITY OFFICE: RCC in superstructure,CIV,2024-02-20,2024-04-19
7921, TIME OFFICE & SECURITY OFFICE: Brick Work & Plastering,CIV,2024-05-04,2024-06-17
7922, TIME OFFICE & SECURITY OFFICE: Flooring,CIV,2024-06-18,2024-07-07
7923, TIME OFFICE & SECURITY OFFICE: Backfilling,CIV,2024-07-08,2024-07-22
7924, TIME OFFICE & SECURITY OFFICE: Finishing works,CIV,2024-07-23,2024-09-20
7925,Construction office,CIV,2023-01-06,2023-06-23
7926,EXCAVATION,CIV,2023-01-06,2023-01-20
7927,RCC in substructure including PCC,CIV,2023-01-21,2023-02-04
7928,RCC in superstructure,CIV,2023-02-05,2023-03-06
7929,Brick Work & Plastering,CIV,2023-03-21,2023-04-19
7930,Flooring,CIV,2023-04-20,2023-05-04
7931,Backfilling,CIV,2023-05-05,2023-05-14
7932,Finishing works,CIV,2023-05-15,2023-06-23
7933, CANTEEN BUILDING,CIV,2024-09-02,2025-07-03
7934,   EXCAVATION,CIV,2024-09-02,2024-09-21
7935,   RCC in substructure including PCC,CIV,2024-09-22,2024-10-16
7936,   RCC in superstructure,CIV,2024-10-17,2025-01-14
7937,   Brick Work & Plastering,CIV,2025-01-15,2025-03-10
7938,   Flooring,CIV,2025-03-11,2025-04-04
7939,   Backfilling,CIV,2025-04-05,2025-04-19
7940,   Finishing works,CIV,2025-04-20,2025-07-03
7941,Fire Station building and Drill Tower,CIV,2024-09-02,2025-07-03
7942,   EXCAVATION,CIV,2024-09-02,2024-09-21
7943,   RCC in substructure including PCC,CIV,2024-09-22,2024-10-16
7944,   RCC in superstructure,CIV,2024-10-17,2025-01-14
7945,   Brick Work & Plastering,CIV,2025-01-15,2025-03-10
7946,   Flooring,CIV,2025-03-11,2025-04-04
7947,   Backfilling,CIV,2025-04-05,2025-04-19
7948,   Finishing works,CIV,2025-04-20,2025-07-03
7949,FQA Lab building,CIV,2024-09-02,2025-07-03
7950,   EXCAVATION,CIV,2024-09-02,2024-09-21
7951,   RCC in substructure including PCC,CIV,2024-09-22,2024-10-16
7952,   RCC in superstructure,CIV,2024-10-17,2025-01-14
7953,   Brick Work & Plastering,CIV,2025-01-15,2025-03-10
7954,   Flooring,CIV,2025-03-11,2025-04-04
7955,   Backfilling,CIV,2025-04-05,2025-04-19
7956,   Finishing works,CIV,2025-04-20,2025-07-03
7957,CHP office cum Workshop Building,CIV,2024-09-02,2025-07-03
7958,   EXCAVATION,CIV,2024-09-02,2024-09-21
7959,   RCC in substructure including PCC,CIV,2024-09-22,2024-10-16
7960,   RCC in superstructure,CIV,2024-10-17,2025-01-14
7961,   Brick Work & Plastering,CIV,2025-01-15,2025-03-10
7962,   Flooring,CIV,2025-03-11,2025-04-04
7963,   Backfilling,CIV,2025-04-05,2025-04-19
7964,   Finishing works,CIV,2025-04-20,2025-07-03
7965,Administration Building,CIV,2024-09-02,2025-07-03
7966,   EXCAVATION,CIV,2024-09-02,2024-09-21
7967,   RCC in substructure including PCC,CIV,2024-09-22,2024-10-16
7968,   RCC in superstructure,CIV,2024-10-17,2025-01-14
7969,   Brick Work & Plastering,CIV,2025-01-15,2025-03-10
7970,   Flooring,CIV,2025-03-11,2025-04-04
7971,   Backfilling,CIV,2025-04-05,2025-04-19
7972,   Finishing works,CIV,2025-04-20,2025-07-03
7973,O&M Workshop Building,CIV,2024-09-02,2025-07-03
7974,   EXCAVATION,CIV,2024-09-02,2024-09-21
7975,   RCC in substructure including PCC,CIV,2024-09-22,2024-10-16
7976,   RCC in superstructure,CIV,2024-10-17,2025-01-14
7977,   Brick Work & Plastering,CIV,2025-01-15,2025-03-10
7978,   Flooring,CIV,2025-03-11,2025-04-04
7979,   Backfilling,CIV,2025-04-05,2025-04-19
7980,   Finishing works,CIV,2025-04-20,2025-07-03
7981,1.4 MWp Solar Rooftop Pkg,OTH,2024-02-19,2026-06-21
7982,Engineering,ENG,2024-02-19,2024-06-27
7983,Submission of quality plan,ENG,2024-02-19,2024-03-09
7984,Submission of field quality plan,ENG,2024-03-10,2024-03-29
7985,Subcontracting & Vendor List Approval,ENG,2024-03-30,2024-04-28
7986,Drawing Submission from BHEL,ENG,2024-04-29,2024-05-13
7987,Drawing Approval from customer,ENG,2024-05-14,2024-06-27
7988,Procurement  Manufacturing & Dispatch,MFG,2024-06-28,2026-02-09
7989,Sub-tendering for SPV Modules,OTH,2024-06-28,2024-08-11
7990,Placement of Order on SPV modules OEM,OTH,2024-08-12,2024-08-18
7991,Manufacturing of SPV Modules,MFG,2024-08-19,2024-10-17
7992,Inspection of SPV Modules,MFG,2024-10-18,2024-11-01
7993,Dispatch of SPV modules,DIS,2024-11-02,2024-12-01
7994,Procurement of Inverters,PRC,2024-12-02,2025-01-15
7995,Dispatch of Inverters,DIS,2025-01-16,2025-03-16
7996,Procurement of MMS,PRC,2025-03-17,2025-05-15
7997,Inspection &Dispatch,DIS,2025-05-16,2025-07-14
7998,Procurement of Transformers,PRC,2025-07-15,2025-09-12
7999,Inspection &Dispatch,DIS,2025-09-13,2025-10-27
8000,Procurement of BOS,PRC,2025-10-28,2025-12-26
8001,Dispatch of BOS,DIS,2025-12-27,2026-02-09
8002,Site Mobilisation,OTH,2024-04-06,2024-04-20
8003,Erection & Commissioning,OTH,2025-01-15,2026-06-21
8004,Civil Work - Structures & buildings,CIV,2025-01-15,2025-04-14
8005,Civil Work -Others,CIV,2025-01-15,2025-04-14
8006,415V/11 kV Substation Erection,ERC,2025-11-02,2025-12-31
8007,Steel Structures Erection,ERC,2025-11-02,2026-03-01
8008,Modules Laying,ERC,2026-01-16,2026-05-05
8009,Cable Laying,ERC,2026-01-16,2026-05-05
8010,Inverters Erection,ERC,2026-01-16,2026-02-14
8011,BOS Erection,ERC,2026-01-16,2026-05-15
8012,Commissioning,COM,2026-05-16,2026-06-14
8013,Synchronisation,ERC,2026-06-15,2026-06-21
8014,Aux Boiler,OTH,2023-04-29,2025-11-14
8015,Engineering (LO  GA and P&ID),ENG,2023-04-29,2023-10-25
8016,Foundation Materials and Structure,CIV,2023-10-26,2024-10-19
8017,Release of MIs,ENG,2023-10-26,2023-12-24
8018,Engineering Documents,ENG,2023-10-26,2024-01-03
8019,Release of Purchase Orders,PRC,2023-12-25,2024-02-22
8020,Receipt of material at HPVP,OTH,2024-02-23,2024-06-01
8021,Fabrication,OTH,2024-06-02,2024-09-29
8022,Dispatches,DIS,2024-08-21,2024-10-19
8023,Boiler Drums  PG 04,OTH,2024-01-04,2025-07-31
8024,Release of MIs,ENG,2024-01-04,2024-03-18
8025,Engineering Documents,ENG,2024-03-19,2024-04-17
8026,Release of Purchase Orders,PRC,2024-03-19,2024-05-17
8027,Receipt of material at HPVP,OTH,2024-05-18,2024-09-14
8028,Shop Fabrication,OTH,2024-09-15,2025-05-22
8029,Dispatches,DIS,2025-05-23,2025-07-31
8030,Pressure Parts  PG 06 07 08 09 10 11 12 19,OTH,2024-02-03,2025-09-25
8031,Release of MIs,ENG,2024-02-03,2024-04-17
8032,Engineering Documents,ENG,2024-04-18,2024-05-17
8033,Release of Purchase Orders,PRC,2024-04-18,2024-06-16
8034,Receipt of material at HPVP,OTH,2024-06-17,2024-10-14
8035,Shop Fabrication,OTH,2024-10-15,2025-06-27
8036,Dispatches,DIS,2025-06-28,2025-09-25
8037,Soot Blowers Valves & Fittings  PG 20 21,OTH,2024-04-18,2025-02-16
8038,Release of MIs,ENG,2024-04-18,2024-07-11
8039,Engineering Documents,ENG,2024-07-12,2024-08-10
8040,Release of Purchase Orders,PRC,2024-07-12,2024-08-20
8041,Receipt,OTH,2024-08-21,2025-02-16
8042,Fuel Firing System  PG 41  42,OTH,2024-04-18,2025-07-05
8043,Release of MIs,ENG,2024-04-18,2024-06-16
8044,Engineering Documents,ENG,2024-06-17,2024-07-26
8045,Release of Purchase Orders,ENG,2024-06-17,2024-08-15
8046,Receipt of material at HPVP,OTH,2024-08-16,2024-11-13
8047,Fabrication,OTH,2024-11-14,2025-06-21
8048,Dispatches,DIS,2025-06-22,2025-07-05
8049,Ducts  PG 48,OTH,2024-06-17,2025-03-17
8050,Release of MIs,ENG,2024-06-17,2024-07-16
8051,Engineering Documents,ENG,2024-07-17,2024-08-15
8052,Release of Purchase Orders,PRC,2024-07-17,2024-09-14
8053,Receipt of material at HPVP,OTH,2024-09-15,2024-11-03
8054,Fabrication,OTH,2024-11-04,2025-03-03
8055,Dispatches,DIS,2025-03-04,2025-03-17
8056,BAP - Damper FD fan outlet (PGMA 57013),SUP,2024-05-19,2025-06-22
8057,Engineering,ENG,2024-05-19,2024-06-17
8058,Manufacturing ,MFG,2024-06-18,2025-02-22
8059,Dispatch,DIS,2025-02-23,2025-06-22
8060,BAP - Aux fan (PG 56),SUP,2024-05-19,2025-06-22
8061,Engineering,ENG,2024-05-19,2024-06-17
8062,Manufacturing ,MFG,2024-06-18,2025-02-22
8063,Dispatch,DIS,2025-02-23,2025-06-22
8064,BAP - CYLINDRICAL Chimney (SELF SUPPORTED)- H-35 M (PG- 87),SUP,2024-05-19,2025-06-22
8065,Engineering,ENG,2024-05-19,2024-06-17
8066,Manufacturing ,MFG,2024-06-18,2025-02-22
8067,Dispatch,DIS,2025-02-23,2025-06-22
8068,Lining & Insulation  PG 33,SUP,2024-07-17,2025-10-19
8069,Release of MIs,ENG,2024-07-17,2024-08-25
8070,Engineering Documents,ENG,2024-07-17,2024-11-13
8071,Release of Purchase Orders,PRC,2024-11-14,2025-01-22
8072,Manufacturing & Dispatch,MFG,2025-04-23,2025-10-19
8073,Electrical and C&I  PG 95  97,OTH,2024-07-17,2025-03-27
8074,Release of MIs,ENG,2024-07-17,2024-08-14
8075,Engineering Documents,ENG,2024-08-15,2024-09-13
8076,Release of Purchase Orders,PRC,2024-08-15,2024-11-12
8077,Manufacturing & Dispatch,MFG,2024-11-13,2025-03-27
8078,Dispatch of piping & valves ,DIS,2024-11-29,2025-05-31
8079,Foundation work ,CIV,2024-10-10,2025-04-27
8080,Erection of pressure parts  drum  ducting ,ERC,2025-04-28,2025-09-24
8081,Erection of Chimney ,ERC,2025-04-28,2025-09-24
8082,Erection of fan  Gate and dampers,ERC,2025-04-28,2025-11-13
8083,Erection of piping valve ,ERC,2025-06-07,2025-09-24
8084,Hydro test ,ERC,2025-09-25,2025-09-27
8085,Insulation and refractory work ,ERC,2025-09-28,2025-10-27
8086,Aux Boiler light up ,COM,2025-10-27,2025-10-27
8087,Chemical cleaning ,ERC,2025-10-28,2025-10-30
8088,Steam blowing of piping up to Aux PRDS ,ERC,2025-10-31,2025-11-14
8089,FGD ,OTH,2022-09-27,2026-05-18
8090,Engineering,ENG,2022-10-27,2024-04-13
8091,Basic Engineering,ENG,2022-10-27,2023-02-23
8092,Detailed Engineering,ENG,2023-02-24,2024-04-13
8093,Gypsum Dewatering building,OTH,2023-11-12,2026-01-20
8094,Engineering &Supply,ENG,2023-11-12,2025-05-29
8095,FOUNDATION MATERIALS,SUP,2024-02-14,2024-05-28
8096,Engineering,ENG,2024-02-14,2024-02-28
8097,Manufacturing,MFG,2024-02-29,2024-04-28
8098,Dispatch,DIS,2024-04-29,2024-05-28
8099,COLUMNS,SUP,2024-07-03,2024-11-14
8100,Engineering,ENG,2024-07-03,2024-08-16
8101,Manufacturing,MFG,2024-08-17,2024-10-15
8102,Dispatch,DIS,2024-10-16,2024-11-14
8103,BEAMS & BRACING,SUP,2024-08-17,2024-12-29
8104,Engineering,ENG,2024-08-17,2024-09-30
8105,Manufacturing,MFG,2024-10-01,2024-11-29
8106,Dispatch,DIS,2024-11-30,2024-12-29
8107,FLOOR & PLATFORMS,SUP,2024-08-17,2025-01-13
8108,Engineering,ENG,2024-08-17,2024-09-30
8109,Manufacturing,MFG,2024-10-01,2024-12-14
8110,Dispatch,DIS,2024-12-15,2025-01-13
8111,WALL BEAMS,SUP,2024-08-17,2024-12-29
8112,Engineering,ENG,2024-08-17,2024-09-30
8113,Manufacturing,MFG,2024-10-01,2024-11-29
8114,Dispatch,DIS,2024-11-30,2024-12-29
8115,STAIRS,SUP,2024-10-01,2025-02-12
8116,Engineering,ENG,2024-10-01,2024-11-14
8117,Manufacturing,MFG,2024-11-15,2025-01-13
8118,Dispatch,DIS,2025-01-14,2025-02-12
8119,MISC STRUCTURES,SUP,2024-10-01,2025-02-12
8120,Engineering,ENG,2024-10-01,2024-11-14
8121,Manufacturing,MFG,2024-11-15,2025-01-13
8122,Dispatch,DIS,2025-01-14,2025-02-12
8123,Equipments (Sub-Assembly),SUP,2024-04-14,2025-02-22
8124,Enquiry & NIT,ENQ,2024-04-14,2024-04-28
8125,Ordering,ORD,2024-04-29,2024-05-28
8126,Detailed Engineering,ENG,2024-05-29,2024-07-27
8127,Dispatch,DIS,2025-01-24,2025-02-22
8128,LIME FEEDING/DOSING SYSTEM,SUP,2023-11-12,2025-05-29
8129,Enquiry & NIT,ENQ,2023-11-12,2023-11-26
8130,Ordering & Engineering,ORD,2023-11-27,2024-06-13
8131,Manufacturing,MFG,2024-06-14,2024-12-10
8132,Dispatch,DIS,2024-12-11,2025-05-29
8133,BOI-PEM-  ELEVATORS,SUP,2024-06-03,2025-05-17
8134,Enquiry & NIT,ENQ,2024-06-03,2024-07-12
8135,Ordering & Engineering,ORD,2024-07-13,2024-09-09
8136,Manufacturing,MFG,2024-09-10,2025-01-07
8137,Dispatch,DIS,2025-04-18,2025-05-17
8138,Civil Works,OTH,2024-04-14,2025-07-07
8139,RFC Superstructure drawing,PE - RFC,2024-06-03,2024-07-02
8140,RFC Civil Building foundation,PE - RFC,2024-04-14,2024-06-12
8141,RFC Civil Equipment foundation,PE - RFC,2024-06-03,2024-07-02
8142,Excavation,CIV,2024-06-13,2024-07-12
8143,RCC,CIV,2024-07-13,2025-07-07
8144,Erection of Structure,ERC,2025-06-08,2025-11-04
8145,FOUNDATION MATERIALSGYPSUM DEWAT,ERC,2025-06-08,2025-07-07
8146,GYPSUM DEWAT COLUMNS,ERC,2025-07-08,2025-09-20
8147,GYPSUM DEWAT BEAMS & BRACING,ERC,2025-07-23,2025-10-20
8148,GYPSUM DEWAT FLOOR & PLATFORMS,ERC,2025-08-07,2025-10-20
8149,GYPSUM DEWAT WALL BEAMS,ERC,2025-07-23,2025-10-05
8150,GYPSUM DEWAT STAIRS,ERC,2025-08-22,2025-11-04
8151,GYPSUM DEWAT MISC STRUCTURES,ERC,2025-08-22,2025-11-04
8152,Erection of Equipment,ERC,2025-05-18,2025-11-21
8153,Gypsum Dewatering Eqpt(Sub-Assembly of FGD),ERC,2025-08-07,2025-11-04
8154,LIME FEEDING/DOSING SYSTEM,ERC,2025-09-21,2025-11-19
8155,ELEVATORS,ERC,2025-05-18,2025-11-21
8156,Commissioning of Equipments,COM,2025-09-06,2026-01-20
8157,Gypsum Dewatering Eqpt/(Sub-Assembly of FGD),OTH,2025-09-06,2026-01-03
8158,LIME FEEDING/DOSING SYSTEM,OTH,2025-09-21,2026-01-18
8159,ELEVATORS,OTH,2025-11-22,2026-01-20
8160,Ball Mill Building and Ball Mills,OTH,2022-09-27,2025-05-07
8161,Engineering &Supply,ENG,2022-09-27,2024-10-29
8162,HYD - Wet Ball Mill,SUP,2022-09-27,2024-10-19
8163,PROCUREMENT,ORD,2022-09-27,2023-12-25
8164,MANUFACTURING,MFG,2023-12-26,2024-06-02
8165,ASSEMBLY & TESTING,MFG,2024-06-03,2024-09-19
8166,Dispatch OF WET BALL MILLING SYSTEM AND ALL ASSOCIATED ITEMS,DIS,2024-09-20,2024-10-19
8167,BPL - Ball Mill Motor,SUP,2022-09-27,2024-10-29
8168,Engineering,ENG,2022-09-27,2023-12-25
8169,Manufacturing,MFG,2023-12-26,2024-07-12
8170,Dispatch,DIS,2024-07-13,2024-10-29
8171,FOUNDATION MATERIALS FOR BALL MILL BLDG,SUP,2023-12-21,2024-04-18
8172,Engineering,ENG,2023-12-21,2024-01-04
8173,Manufacturing,MFG,2024-01-05,2024-03-19
8174,Dispatch,DIS,2024-03-20,2024-04-18
8175, BALL MILL BLDG COLUMNS,SUP,2023-12-21,2024-05-03
8176,Engineering,ENG,2023-12-21,2024-02-03
8177,Manufacturing,MFG,2024-02-04,2024-04-03
8178,Dispatch,DIS,2024-04-04,2024-05-03
8179,BALL MILL BUILDING BEAMS & BRACING,SUP,2024-01-05,2024-05-18
8180,Engineering,ENG,2024-01-05,2024-02-18
8181,Manufacturing,MFG,2024-02-19,2024-04-18
8182,Dispatch,DIS,2024-04-19,2024-05-18
8183,BALL MILL BUILDING FLOOR & PLATFORMS,SUP,2024-01-05,2024-06-02
8184,Engineering,ENG,2024-01-05,2024-03-04
8185,Manufacturing,MFG,2024-03-05,2024-05-03
8186,Dispatch,DIS,2024-05-04,2024-06-02
8187,BALL MILL BUILDING WALL BEAMS,SUP,2024-01-05,2024-05-18
8188,Engineering,ENG,2024-01-05,2024-02-18
8189,Manufacturing,MFG,2024-02-19,2024-04-18
8190,Dispatch,DIS,2024-04-19,2024-05-18
8191,Civil Works,OTH,2023-09-22,2024-05-18
8192, RFC Civil Mill Foundation drawing,PE - RFC,2023-09-22,2023-10-21
8193, RFC Civil Building foundation drawing,PE - RFC,2023-10-22,2023-11-30
8194, RFC Superstructure drawing,PE - RFC,2023-11-11,2023-12-20
8195,Excavation,CIV,2023-10-22,2023-11-20
8196,RCC,CIV,2023-11-21,2024-05-18
8197,Erection,ERC,2024-05-19,2025-04-07
8198,Erection of Structure,ERC,2024-05-19,2024-12-14
8199,Erection of Wet Ball Mill,ERC,2024-10-20,2025-03-18
8200,Erection of Ball Mill Motor,ERC,2025-03-09,2025-04-07
8201,Commissioning,COM,2025-03-09,2025-05-07
8202,Day Silo,OTH,2022-09-27,2025-05-02
8203,Engineering &Supply,ENG,2022-09-27,2024-10-19
8204, FOUNDATION MATERIALS,SUP,2023-10-02,2024-01-29
8205,Engineering,ENG,2023-10-02,2023-10-16
8206,Manufacturing,MFG,2023-10-17,2023-12-30
8207,Dispatch,DIS,2023-12-31,2024-01-29
8208,COLUMNS,SUP,2023-10-02,2024-03-14
8209,Engineering,ENG,2023-10-02,2023-11-15
8210,Manufacturing,MFG,2023-11-16,2024-02-13
8211,Dispatch,DIS,2024-02-14,2024-03-14
8212,BEAMS & BRACING,SUP,2023-11-16,2024-03-29
8213,Engineering,ENG,2023-11-16,2023-12-15
8214,Manufacturing,MFG,2023-12-16,2024-02-28
8215,Dispatch,DIS,2024-02-29,2024-03-29
8216,FLOOR & PLATFORMS,SUP,2023-11-16,2024-04-13
8217,Engineering,ENG,2023-11-16,2023-12-30
8218,Manufacturing,MFG,2023-12-31,2024-03-14
8219,Dispatch,DIS,2024-03-15,2024-04-13
8220,WALL BEAMS,SUP,2023-11-16,2024-03-29
8221,Engineering,ENG,2023-11-16,2023-12-30
8222,Manufacturing,MFG,2023-12-31,2024-02-28
8223,Dispatch,DIS,2024-02-29,2024-03-29
8224,STAIRS,SUP,2023-11-16,2024-04-28
8225,Engineering,ENG,2023-11-16,2023-12-30
8226,Manufacturing,MFG,2023-12-31,2024-03-29
8227,Dispatch,DIS,2024-03-30,2024-04-28
8228,MISC STRUCTURES,SUP,2023-12-16,2024-05-28
8229,Engineering,ENG,2023-12-16,2024-01-29
8230,Manufacturing,MFG,2024-01-30,2024-04-28
8231,Dispatch,DIS,2024-04-29,2024-05-28
8232, HYD- LIMESTONE DAY SILO AND ACCESSORIES,SUP,2022-09-27,2024-10-19
8233,PROCUREMENT,ORD,2022-09-27,2023-12-25
8234,MANUFACTURING,MFG,2023-12-26,2024-06-02
8235,ASSEMBLY& TESTING,MFG,2024-06-03,2024-09-19
8236,Dispatch OF LIME STONE DAY SILO AND ACCESSORIES AND ALL ASSOCIATED ITEMS,DIS,2024-09-20,2024-10-19
8237, Civil Works,OTH,2023-09-02,2024-03-29
8238, RFC Civil foundation,PE - RFC,2023-09-02,2023-10-01
8239, RFC Superstructure drawing,PE - RFC,2023-10-02,2023-10-31
8240, Excavation,CIV,2023-10-02,2023-11-30
8241, RCC,CIV,2023-12-01,2024-03-29
8242,Erection,ERC,2024-03-30,2025-05-02
8243,Erection of Structure,ERC,2024-03-30,2024-08-26
8244,Erection of Silos,ERC,2024-10-20,2025-03-18
8245,Erection of Bag Filter,ERC,2025-03-19,2025-05-02
8246,Erection of Air Cannon,ERC,2025-03-19,2025-05-02
8247,Erection of Bucket Elevator,ERC,2024-08-27,2025-03-14
8248,LHS & GHS System,OTH,2022-11-26,2026-05-18
8249,Ordering & Engineering of LHS & GHS,ENG,2022-11-26,2023-10-21
8250,Enquiry,ENQ,2022-11-26,2022-12-25
8251,Ordering,ORD,2022-12-26,2023-04-24
8252,Detailed Engineering,ENG,2023-04-25,2023-10-21
8253,Limestone Transfer Point-1,OTH,2023-02-24,2025-09-30
8254,Equipment Dispatch,DIS,2024-04-19,2024-05-18
8255,Dispatch,DIS,2024-04-19,2024-05-18
8256,Engineering &Supply of Structure,ENG,2023-02-24,2024-05-18
8257, FOUNDATION MATERIALS LTP1,SUP,2023-10-22,2024-03-04
8258,Engineering,ENG,2023-10-22,2023-11-05
8259,Manufacturing,MFG,2023-11-06,2024-02-03
8260,Dispatch,DIS,2024-02-04,2024-03-04
8261,LTP1 COLUMNS,SUP,2023-10-22,2024-05-18
8262,Engineering,ENG,2023-10-22,2024-01-19
8263,Manufacturing,MFG,2024-01-20,2024-04-18
8264,Dispatch,DIS,2024-04-19,2024-05-18
8265,LTP1 BEAMS & BRACING,SUP,2023-10-22,2024-05-18
8266,Engineering,ENG,2023-10-22,2024-01-19
8267,Manufacturing,MFG,2024-01-20,2024-04-18
8268,Dispatch,DIS,2024-04-19,2024-05-18
8269,LTP1 FLOOR & PLATFORMS,SUP,2023-10-22,2024-05-18
8270,Engineering,ENG,2023-10-22,2024-01-19
8271,Manufacturing,MFG,2024-01-20,2024-04-18
8272,Dispatch,DIS,2024-04-19,2024-05-18
8273, LTP1 WALL BEAMS,SUP,2023-10-22,2024-05-18
8274,Engineering,ENG,2023-10-22,2024-01-19
8275,Manufacturing,MFG,2024-01-20,2024-04-18
8276,Dispatch,DIS,2024-04-19,2024-05-18
8277, LTP1 FASTENERS,SUP,2023-02-24,2023-12-12
8278,Enquiry,ENQ,2023-02-24,2023-03-02
8279,Ordering,ORD,2023-03-03,2023-06-30
8280,Engineering,ENG,2023-07-01,2023-09-28
8281,Dispatch,DIS,2023-11-13,2023-12-12
8282, LTP1 STAIRS & LADDERS,SUP,2023-10-22,2024-05-18
8283,Engineering,ENG,2023-10-22,2024-01-19
8284,Manufacturing,MFG,2024-01-20,2024-04-18
8285,Dispatch,DIS,2024-04-19,2024-05-18
8286,LTP1 MISC STRUCTURES,SUP,2023-10-22,2024-05-18
8287,Engineering,ENG,2023-10-22,2024-01-19
8288,Manufacturing,MFG,2024-01-20,2024-04-18
8289,Dispatch,DIS,2024-04-19,2024-05-18
8290,Civil Works,CIV,2023-02-24,2024-04-03
8291,Engineering: Superstructure & Foundation,CIV,2023-02-24,2023-07-23
8292,Excavation,CIV,2023-07-24,2023-09-06
8293,RCC,CIV,2023-11-06,2024-04-03
8294,Erection,ERC,2024-05-19,2025-09-30
8295,Erection of Structure,ERC,2024-05-19,2025-05-03
8296,Erection of Equipment,ERC,2024-10-16,2025-09-30
8297,ISG- Limestone Truck Tippler ,OTH,2023-02-24,2024-11-14
8298,Equipment Dispatch,DIS,2024-07-18,2024-08-16
8299,Dispatch,DIS,2024-07-18,2024-08-16
8300,Civil Works,OTH,2023-02-24,2024-06-17
8301,Engineering: Foundation,CIV,2023-02-24,2023-04-24
8302,Excavation,CIV,2023-04-25,2023-06-23
8303,RCC,CIV,2023-06-24,2024-06-17
8304,Erection of Equipment,ERC,2024-08-17,2024-11-14
8305,ISG- Surface Feeder,OTH,2023-02-24,2024-10-25
8306,Equipment Dispatch,DIS,2024-06-28,2024-07-27
8307,Dispatch,DIS,2024-06-28,2024-07-27
8308,Civil Works,OTH,2023-02-24,2023-10-21
8309,Engineering: Foundation,CIV,2023-02-24,2023-04-24
8310,Excavation,CIV,2023-04-25,2023-06-23
8311,RCC,CIV,2023-06-24,2023-10-21
8312,Erection of Equipment,ERC,2024-07-28,2024-10-25
8313, Belt Conveyor-1A/B,OTH,2023-06-24,2025-06-07
8314,Equipment Dispatch,DIS,2024-04-19,2024-05-18
8315,LSBC1-Dispatch,DIS,2024-04-19,2024-05-18
8316,Engineering &Supply of Structure,ENG,2023-11-21,2024-08-01
8317,FOUNDATION MATERIALS CONVEYOR-LC-1A/B,SUP,2023-11-21,2024-04-03
8318,Engineering,ENG,2023-11-21,2023-12-05
8319,Manufacturing,MFG,2023-12-06,2024-03-04
8320,Dispatch,DIS,2024-03-05,2024-04-03
8321,CONVEYOR-LC-1A/B COLUMNS - TRESTLES,SUP,2023-12-06,2024-08-01
8322,Engineering,ENG,2023-12-06,2024-03-04
8323,Manufacturing,MFG,2024-03-05,2024-07-02
8324,Dispatch,DIS,2024-07-03,2024-08-01
8325, CONVEYOR-LC-1A/B BEAMS & BRACING,SUP,2023-12-11,2024-05-23
8326,Engineering,ENG,2023-12-11,2024-01-24
8327,Manufacturing,MFG,2024-01-25,2024-04-23
8328,Dispatch,DIS,2024-04-24,2024-05-23
8329,CONVEYOR-LC-1A/B FLOOR & PLATFORMS,SUP,2023-12-16,2024-06-27
8330,Engineering,ENG,2023-12-16,2024-01-29
8331,Manufacturing,MFG,2024-01-30,2024-05-28
8332,Dispatch,DIS,2024-05-29,2024-06-27
8333,CONVEYOR-LC-1A/B STAIRS & LADDERS,SUP,2023-12-16,2024-04-28
8334,Engineering,ENG,2023-12-16,2024-01-29
8335,Manufacturing,MFG,2024-01-30,2024-03-29
8336,Dispatch,DIS,2024-03-30,2024-04-28
8337,CONVEYOR-LC-1A/B MISC STRUCTURES,SUP,2023-12-21,2024-04-03
8338,Engineering,ENG,2023-12-21,2024-01-19
8339,Manufacturing,MFG,2024-01-20,2024-03-04
8340,Dispatch,DIS,2024-03-05,2024-04-03
8341,Civil Works,CIV,2023-06-24,2024-05-03
8342,Engineering: Foundation,PE - RFC,2023-06-24,2023-08-22
8343,Engineering: Superstructure,ENG,2023-07-24,2023-10-21
8344,Excavation,CIV,2023-08-23,2023-11-20
8345,RCC,CIV,2024-02-04,2024-05-03
8346,Erection,ERC,2024-05-04,2025-06-07
8347,Erection of Structure,ERC,2024-05-04,2024-11-19
8348,Erection of Equipment,ERC,2024-11-20,2025-06-07
8349,Limestone Crusher House,OTH,2023-06-24,2025-09-10
8350,Equipment Dispatch,DIS,2024-04-19,2024-06-17
8351,Dispatch,DIS,2024-04-19,2024-06-17
8352,Engineering &Supply of Structure,ENG,2023-06-24,2023-12-20
8353, FOUNDATION MATERIALS,SUP,2023-06-24,2023-11-05
8354,Engineering,ENG,2023-06-24,2023-07-08
8355,Manufacturing,MFG,2023-07-09,2023-10-06
8356,Dispatch,DIS,2023-10-07,2023-11-05
8357,COLUMNS,SUP,2023-06-24,2023-12-20
8358,Engineering,ENG,2023-06-24,2023-07-23
8359,Manufacturing,MFG,2023-07-24,2023-11-20
8360,Dispatch,DIS,2023-11-21,2023-12-20
8361,BEAMS & BRACING,SUP,2023-06-24,2023-11-20
8362,Engineering,ENG,2023-06-24,2023-07-23
8363,Manufacturing,MFG,2023-07-24,2023-10-21
8364,Dispatch,DIS,2023-10-22,2023-11-20
8365,FLOOR & PLATFORMS,SUP,2023-06-24,2023-11-20
8366,Engineering,ENG,2023-06-24,2023-07-23
8367,Manufacturing,MFG,2023-07-24,2023-10-21
8368,Dispatch,DIS,2023-10-22,2023-11-20
8369,WALL BEAMS,SUP,2023-06-24,2023-11-20
8370,Engineering,ENG,2023-06-24,2023-07-23
8371,Manufacturing,MFG,2023-07-24,2023-10-21
8372,Dispatch,DIS,2023-10-22,2023-11-20
8373,STAIRS & LADDERS,SUP,2023-06-24,2023-10-21
8374,Engineering,ENG,2023-06-24,2023-07-23
8375,Manufacturing,MFG,2023-07-24,2023-09-21
8376,Dispatch,DIS,2023-09-22,2023-10-21
8377,MISC STRUCTURES,SUP,2023-06-24,2023-10-06
8378,Engineering,ENG,2023-06-24,2023-07-23
8379,Manufacturing,MFG,2023-07-24,2023-09-06
8380,Dispatch,DIS,2023-09-07,2023-10-06
8381,Civil Works,CIV,2023-06-24,2024-04-18
8382,Engineering: Foundation,CIV,2023-06-24,2023-08-22
8383,Engineering: Superstructure,ENG,2023-08-23,2023-11-20
8384,Excavation,CIV,2023-08-23,2023-11-20
8385,RCC,CIV,2023-09-22,2024-04-18
8386,Erection of Structure,ERC,2024-04-19,2025-04-13
8387,Erection of Equipment,ERC,2025-04-14,2025-09-10
8388,Limestone Belt Feeder,OTH,2023-02-24,2025-03-04
8389,Equipment Dispatch,DIS,2023-02-24,2024-12-04
8390,Ordering & Engineering,ENG,2024-05-09,2024-09-05
8391,Manufacturing,MFG,2023-02-24,2023-07-23
8392,Dispatch,DIS,2024-09-06,2024-12-04
8393,Equipment Dispatch,DIS,2024-12-05,2025-03-04
8394,Limestone Bulk Storage Silo and Bucket Elevator,OTH,2023-05-25,2025-11-04
8395,Engineering &Supply,ENG,2023-07-24,2025-05-23
8396,FOUNDATION MATERIALS SILO STR,SUP,2023-07-24,2024-07-22
8397,Engineering,ENG,2023-07-24,2023-11-15
8398,Manufacturing,MFG,2023-11-16,2024-06-22
8399,Dispatch,DIS,2024-06-23,2024-07-22
8400,SILO STR COLUMNS,SUP,2023-07-24,2024-10-25
8401,Engineering,ENG,2023-07-24,2024-02-18
8402,Manufacturing,MFG,2024-02-19,2024-09-25
8403,Dispatch,DIS,2024-09-26,2024-10-25
8404,SILO STR BEAMS & BRACING,SUP,2024-02-19,2025-05-23
8405,Engineering,ENG,2024-02-19,2024-09-15
8406,Manufacturing,MFG,2024-09-16,2025-04-23
8407,Dispatch,DIS,2025-04-24,2025-05-23
8408,SILO STR FLOOR & PLATFORMS,SUP,2024-02-19,2025-05-23
8409,Engineering,ENG,2024-02-19,2024-09-15
8410,Manufacturing,MFG,2024-09-16,2025-04-23
8411,Dispatch,DIS,2025-04-24,2025-05-23
8412,SILO STR WALL BEAMS,SUP,2024-02-19,2025-05-23
8413,Engineering,ENG,2024-02-19,2024-09-15
8414,Manufacturing,MFG,2024-09-16,2025-04-23
8415,Dispatch,DIS,2025-04-24,2025-05-23
8416,SILO STR STAIRS & LADDERS,SUP,2024-02-19,2025-05-23
8417,Engineering,ENG,2024-02-19,2024-09-15
8418,Manufacturing,MFG,2024-09-16,2025-04-23
8419,Dispatch,DIS,2025-04-24,2025-05-23
8420,SILO STR MISC STRUCTURES,SUP,2024-02-19,2025-05-23
8421,Engineering,ENG,2024-02-19,2024-09-15
8422,Manufacturing,MFG,2024-09-16,2025-04-23
8423,Dispatch,DIS,2025-04-24,2025-05-23
8424,SILO SHELL,SUP,2024-02-19,2025-05-23
8425,Engineering,ENG,2024-02-19,2024-09-15
8426,Manufacturing,MFG,2024-09-16,2025-04-23
8427,Dispatch,DIS,2025-04-24,2025-05-23
8428,Equipments,SUP,2023-07-24,2024-09-05
8429,Engineering,ENG,2023-07-24,2023-09-21
8430,Ordering,OTH,2023-09-22,2024-01-19
8431,Manufacturing,MFG,2024-01-20,2024-08-06
8432,Dispatch,DIS,2024-08-07,2024-09-05
8433,Civil Works,CIV,2023-05-25,2024-08-21
8434,Engineering: Foundation,ENG,2023-05-25,2023-07-23
8435,Engineering: Superstructure,ENG,2023-06-09,2023-07-23
8436,Excavation,CIV,2023-07-24,2023-10-21
8437,RCC,CIV,2024-01-25,2024-08-21
8438,Erection,ERC,2024-11-10,2025-11-04
8439,Erection of Structure,ERC,2024-11-10,2025-07-07
8440,Erection of Equipment,ERC,2025-07-08,2025-11-04
8441,Limestone Bucket Elevator and Reversible Belt Feeder,OTH,2024-05-25,2024-12-30
8442,Equipment Dispatch,DIS,2024-05-25,2024-09-01
8443,Dispatch,DIS,2024-05-25,2024-09-01
8444,Erection of Equipment,ERC,2024-09-02,2024-12-30
8445,Gypsum Conveyor-1A/B,OTH,2023-06-24,2025-09-30
8446,Equipment Dispatch,DIS,2024-04-19,2024-06-17
8447,Dispatch,DIS,2024-04-19,2024-06-17
8448,Engineering &Supply of Structure,ENG,2023-06-24,2023-12-14
8449,FOUNDATION MATERIALSCONVEYOR-GC-1A/B,SUP,2023-06-24,2023-10-06
8450,Engineering,ENG,2023-06-24,2023-07-08
8451,Manufacturing,MFG,2023-07-09,2023-09-06
8452,Dispatch,DIS,2023-09-07,2023-10-06
8453,FX110 - CONVEYOR-GC-1A/B COLUMNS - TRESTLES,SUP,2023-06-24,2023-11-20
8454,Engineering,ENG,2023-06-24,2023-07-23
8455,Manufacturing,MFG,2023-07-24,2023-10-21
8456,Dispatch,DIS,2023-10-22,2023-11-20
8457,FX210 - CONVEYOR-GC-1A/B BEAMS & BRACING,SUP,2023-06-24,2023-11-20
8458,Engineering,ENG,2023-06-24,2023-07-23
8459,Manufacturing,MFG,2023-07-24,2023-10-21
8460,Dispatch,DIS,2023-10-22,2023-11-20
8461,FX310 - CONVEYOR-GC-1A/B FLOOR & PLATFORMS,SUP,2023-06-24,2023-11-05
8462,Engineering,ENG,2023-06-24,2023-07-23
8463,Manufacturing,MFG,2023-07-24,2023-10-06
8464,Dispatch,DIS,2023-10-07,2023-11-05
8465,FX710 - CONVEYOR-GC-1A/B FASTENERS,SUP,2023-07-04,2023-12-14
8466,Enquiry,OTH,2023-07-04,2023-07-10
8467,Ordering,OTH,2023-07-11,2023-09-08
8468,Engineering,ENG,2023-09-09,2023-09-15
8469,Dispatch,DIS,2023-11-15,2023-12-14
8470,FX810 - CONVEYOR-GC-1A/B STAIRS & LADDERS,SUP,2023-07-14,2023-10-26
8471,Engineering,ENG,2023-07-14,2023-08-12
8472,Manufacturing,MFG,2023-08-13,2023-09-26
8473,Dispatch,DIS,2023-09-27,2023-10-26
8474,FX910 - CONVEYOR-GC-1A/B MISC STRUCTURES,SUP,2023-07-24,2023-10-21
8475,Engineering,ENG,2023-07-24,2023-08-07
8476,Manufacturing,MFG,2023-08-08,2023-09-21
8477,Dispatch,DIS,2023-09-22,2023-10-21
8478,Civil Works,CIV,2023-11-21,2025-02-22
8479,Engineering: Foundation,PE - RFC,2023-11-21,2024-01-19
8480,Engineering: Superstructure,PE - RFC,2024-01-20,2024-04-18
8481,Excavation,CIV,2024-01-20,2024-03-19
8482,RCC,CIV,2024-11-15,2025-02-22
8483,Erection of Structure,ERC,2025-02-23,2025-06-22
8484,Erection of Equipment,ERC,2025-06-23,2025-09-30
8485,Gypsum Travelling Tripper/Gypsum Storage Shed,OTH,2023-05-25,2026-02-17
8486,Equipment Dispatch,DIS,2024-07-14,2024-09-11
8487,Dispatch,DIS,2024-07-14,2024-09-11
8488,Engineering &Supply of Structure,ENG,2023-07-24,2024-12-29
8489,FX014 - FOUNDATION MATERIALSGYPSUM SHED,SUP,2023-07-24,2023-12-20
8490,Engineering,ENG,2023-07-24,2023-08-22
8491,Manufacturing,MFG,2023-08-23,2023-11-20
8492,Dispatch,DIS,2023-11-21,2023-12-20
8493,FX140 - GYPSUM SHED COLUMNS,SUP,2023-07-24,2024-04-03
8494,Engineering,ENG,2023-07-24,2023-09-06
8495,Manufacturing,MFG,2023-09-07,2024-01-04
8496,Dispatch,DIS,2024-01-05,2024-04-03
8497,FX240 - GYPSUM SHED BEAMS & BRACING,SUP,2023-08-23,2024-05-03
8498,Engineering,ENG,2023-08-23,2023-10-06
8499,Manufacturing,MFG,2023-10-07,2024-02-03
8500,Dispatch,DIS,2024-02-04,2024-05-03
8501,FX340 - GYPSUM SHED FLOOR & PLATFORMS,SUP,2024-02-09,2024-08-21
8502,Engineering,ENG,2024-02-09,2024-03-24
8503,Manufacturing,MFG,2024-03-25,2024-05-23
8504,Dispatch,DIS,2024-05-24,2024-08-21
8505,FX640 - GYPSUM SHED WALL BEAMS,SUP,2023-09-02,2024-05-28
8506,Engineering,ENG,2023-09-02,2023-10-31
8507,Manufacturing,MFG,2023-11-01,2024-02-28
8508,Dispatch,DIS,2024-02-29,2024-05-28
8509,FX740 - GYPSUM SHED FASTENERS,SUP,2023-09-07,2024-08-16
8510,Enquiry,ENQ,2023-09-07,2023-10-21
8511,Ordering,ORD,2023-10-22,2024-02-18
8512,Engineering,ENG,2024-02-19,2024-05-18
8513,Dispatch,DIS,2024-07-18,2024-08-16
8514,FX840 - GYPSUM SHED STAIRS & LADDERS,SUP,2023-11-21,2024-08-16
8515,Engineering,ENG,2023-11-21,2024-01-19
8516,Manufacturing,MFG,2024-01-20,2024-05-18
8517,Dispatch,DIS,2024-05-19,2024-08-16
8518,FX940 - GYPSUM SHED MISC STRUCTURES,SUP,2024-01-20,2024-12-29
8519,Engineering,ENG,2024-01-20,2024-03-04
8520,Manufacturing,MFG,2024-03-05,2024-08-31
8521,Dispatch,DIS,2024-09-01,2024-12-29
8522,Civil Works,CIV,2023-05-25,2025-02-22
8523,RFC Civil - Foundation,PE - RFC,2023-05-25,2023-07-23
8524,RFC Civil - Superstructure,PE - RFC,2023-05-25,2023-07-23
8525,Excavation,CIV,2023-12-21,2024-04-18
8526,GYPSUM SHED: RCC,CIV,2024-05-19,2025-02-22
8527,Erection of Structure,ERC,2025-02-23,2025-09-20
8528,Erection & Commissioning of Equipments,COM,2025-09-21,2026-02-17
8529,Pump House for LHP/ GHP,OTH,2024-02-19,2025-07-27
8530,Equipment Dispatch,DIS,2024-04-19,2024-05-18
8531,Dispatch,DIS,2024-04-19,2024-05-18
8532,Civil Works ,CIV,2024-02-19,2025-01-28
8533,RFC Civil - Superstructure,PE - RFC,2024-02-19,2024-05-18
8534,RFC Civil - Foundation,PE - RFC,2024-05-19,2024-07-17
8535,Excavation,CIV,2024-07-18,2024-08-31
8536,RCC,CIV,2024-09-01,2025-01-28
8537,Erection of Equipment,ERC,2025-01-29,2025-07-27
8538,Weigh Bridge,OTH,2024-02-19,2024-10-15
8539,Equipment Dispatch,DIS,2024-04-19,2024-05-18
8540,Dispatch,DIS,2024-04-19,2024-05-18
8541,Civil Works of Weigh Bridge GHP,OTH,2024-02-19,2024-10-15
8542,Weigh Bridge-GHP Foundation ,CIV,2024-02-19,2024-05-18
8543,Excavation,CIV,2024-05-19,2024-07-17
8544,RCC,CIV,2024-07-18,2024-10-15
8545,Civil Works of Weigh Bridge LHP,OTH,2024-02-19,2024-09-30
8546,Weigh Bridge-GHP Foundation ,CIV,2024-02-19,2024-05-18
8547,Excavation,CIV,2024-05-19,2024-07-02
8548,RCC,CIV,2024-07-03,2024-09-30
8549,Erection of Equipment,ERC,2024-07-18,2024-10-15
8550,Electrical and C&I Items,OTH,2024-04-19,2026-02-02
8551,Equipment Dispatch,DIS,2024-04-19,2024-06-17
8552,Dispatch,DIS,2024-04-19,2024-06-17
8553,Erection of Equipment,ERC,2025-10-06,2026-02-02
8554,Misc./Auxiliary Systems,OTH,2024-02-19,2024-11-24
8555,Equipment Dispatch,DIS,2024-02-19,2024-06-17
8556,Dispatch,DIS,2024-02-19,2024-06-17
8557,Erection of Equipment,ERC,2024-08-17,2024-11-24
8558,MCC building,OTH,2023-07-24,2025-03-04
8559,Civil Works,OTH,2023-07-24,2024-08-16
8560,Engineering: Foundation,CIV,2023-07-24,2023-09-21
8561,Engineering: Superstructure,ENG,2023-09-22,2023-11-20
8562,Excavation,CIV,2023-11-21,2023-12-20
8563,RCC,CIV,2023-12-21,2024-08-16
8564,Erection of Panels,ERC,2024-10-16,2025-03-04
8565,Erection of panels,ERC,2024-10-16,2025-03-04
8566,Commissioning of Limestone handling & Crushing System,COM,2025-11-05,2026-02-02
8567,Commissioning of Gypsum Handling System,COM,2026-02-18,2026-05-18
8568,Pumps,OTH,2023-04-05,2024-04-18
8569,Engineering &Supply,ENG,2023-04-05,2023-11-18
8570,BOI-FW701  SLURRY PUMPS & ACCESSORIES(A B C&D),SUP,2023-04-05,2023-11-18
8571,Ordering,ORD,2023-04-05,2023-06-23
8572,Engineering,ENG,2023-06-24,2023-07-23
8573,Manufacturing,MFG,2023-07-24,2023-10-19
8574,Dispatch,DIS,2023-10-20,2023-11-18
8575,BOI- FW702 -WATER PUMPS & ACCESSORIES,SUP,2023-04-15,2023-11-18
8576,Ordering,ORD,2023-04-15,2023-06-23
8577,Engineering,ENG,2023-06-24,2023-07-23
8578,Manufacturing,MFG,2023-07-24,2023-10-19
8579,Dispatch,DIS,2023-10-20,2023-11-18
8580,Civil Works,OTH,2023-08-23,2024-04-18
8581,RFC MISC PUMPS-GA & RC DETAILS OF FOUNDATION,PE - RFC,2023-08-23,2023-10-21
8582,Excavation,CIV,2023-10-22,2023-11-20
8583,RCC,CIV,2023-11-21,2024-04-18
8584,Erection of Equipment,ERC,2023-12-19,2024-01-17
8585,FW701 - SLURRY PUMPS & ACCESSORIES,ERC,2023-12-19,2024-01-17
8586,FW702 - WATER PUMPS & ACCESSORIES,ERC,2023-12-19,2024-01-17
8587,BOI-Tanks-PEM,OTH,2023-02-24,2025-08-11
8588,Engineering &Supply,ENG,2023-02-24,2024-12-24
8589,Ordering,ORD,2023-02-24,2023-10-31
8590,Detailed Engineering,ENG,2023-11-01,2024-04-28
8591,Fabrication /Manufacturing,MFG,2024-04-29,2024-11-24
8592,Dispatch of Primary Hydro Cyclone Feed Tank,DIS,2024-11-25,2024-12-24
8593,Dispatch of Secondary Hydro Cyclone Feed Tank,DIS,2024-11-25,2024-12-24
8594,Dispatch of AUXILIARY ABSORBENT TANK,DIS,2024-11-25,2024-12-24
8595,Dispatch of Limestone Slurry storage Tank,DIS,2024-11-25,2024-12-24
8596,Dispatch of FILTRATE WATER TANK,DIS,2024-11-25,2024-12-24
8597,Dispatch of PROCES WATER TANK,DIS,2024-11-25,2024-12-24
8598,Dispatch of WASTE WATER TANK,DIS,2024-11-25,2024-12-24
8599,Dispatch of BELT WASH TANK,DIS,2024-11-25,2024-12-24
8600,Dispatch of CAKE WASH TANK,DIS,2024-11-25,2024-12-24
8601,Civil,CIV,2024-04-14,2024-06-12
8602,PCE-51400 RFC PRIMARY Hydro CYCLONE FEED TANK: GA & RCC DETAILS OF FOUNDATION,CIV,2024-04-14,2024-06-12
8603,PCE-51400 RFC SECONDARY Hydro CYCLONE TANK: GA & RCC DETAILS OF FOUNDATION,CIV,2024-04-14,2024-06-12
8604,PCE-51400 RFC LIMESTONE SLURRY TANK: GA & RCC DETAILS OF FOUNDATION,CIV,2024-04-14,2024-06-12
8605,PCE-51400 RFC AUXILIARY ABSORBENT TANK: GA & RCC DETAILS OF FOUNDATION,CIV,2024-04-14,2024-06-12
8606,PCE-51400 RFC FILTRATE WATER TANK: GA & RCC DETAILS OF FOUNDATION,CIV,2024-04-14,2024-06-12
8607,PCE-51400 RFC WASTE WATER TANK: GA & RCC DETAILS OF FOUNDATION,CIV,2024-04-14,2024-06-12
8608,PCE-51400 RFC PROCESS WATER TANK: GA & RCC DETAILS OF FOUNDATION,CIV,2024-04-14,2024-06-12
8609,PCE-51400 RFC BELT FILTER WASHING TANKS: GA & RCC DETAILS OF FOUNDATION,CIV,2024-04-14,2024-06-12
8610,PCE-51400 RFC CLARIFIED WATER TANK: GA & RCC DETAILS OF FOUNDATION,CIV,2024-04-14,2024-06-12
8611,PCE-51400 RFC CAKE WASH TANK:  GA & RC DETAIL OF FOUNDATION,PE - RFC,2024-04-14,2024-06-12
8612,PCE-51400 RFC NEUTRALIZATION TANK:  GA & RC DETAIL OF FOUNDATION,PE - RFC,2024-04-14,2024-06-12
8613,PWI-13640 Data sheet & General Arrangement of Agitators,OTH,2024-04-14,2024-06-12
8614,Erection / Assembly,ERC,2024-12-25,2025-08-11
8615,Primary Hydro cyclone feed tank,ERC,2025-01-24,2025-08-11
8616,Secondary Hydro cyclone feed tank,ERC,2024-12-25,2025-07-12
8617,Limestone Slurry Storage tank,ERC,2024-12-25,2025-07-12
8618,Auxiliary Absorbent Tank,ERC,2024-12-25,2025-07-12
8619,Filtrate Water Tank,ERC,2024-12-25,2025-07-12
8620,Waste Water Tank,ERC,2024-12-25,2025-07-12
8621,Process Water Tank,ERC,2024-12-25,2025-07-12
8622,Belt Filter Wash Tank,ERC,2024-12-25,2025-07-12
8623,Cake Wash  tank,ERC,2024-12-25,2025-07-12
8624,Electrical Items,OTH,2023-08-23,2026-02-27
8625,Engineering &Supply,ENG,2023-08-23,2025-03-04
8626,FW806 - CONTROL JUNCTION BOX,SUP,2023-09-12,2024-08-13
8627,Enquiry,ENQ,2023-09-12,2023-10-11
8628,Ordering ,ORD,2023-10-12,2023-11-10
8629,Engineering,ENG,2023-11-11,2024-02-06
8630,Dispatch,DIS,2024-07-15,2024-08-13
8631,FW807 - POWER JUNCTION BOX,SUP,2023-09-12,2024-07-14
8632,Enquiry,ENQ,2023-09-12,2023-10-11
8633,Ordering ,ORD,2023-10-12,2023-11-10
8634,Engineering,ENG,2023-11-11,2024-02-06
8635,Dispatch,DIS,2024-06-15,2024-07-14
8636,FW779 - SUPPORTS FOR CABLE TRAYS/CONTR,SUP,2023-09-12,2024-11-04
8637,Enquiry,ENQ,2023-09-12,2023-09-26
8638,Ordering ,ORD,2023-09-27,2023-11-25
8639,Engineering,ENG,2023-11-26,2024-02-08
8640,Dispatch,DIS,2024-10-06,2024-11-04
8641,FW841 - CONTROL VALVES,SUP,2023-10-02,2024-12-24
8642,Enquiry,ENQ,2023-10-02,2023-10-31
8643,Ordering ,ORD,2023-11-01,2023-12-30
8644,Engineering,ENG,2023-12-31,2024-03-29
8645,Dispatch,DIS,2024-11-25,2024-12-24
8646,Electrical - Balance BOIs,SUP,2023-08-23,2025-03-04
8647,Enquiry,ENQ,2023-08-23,2023-09-21
8648,Ordering ,ORD,2023-09-22,2023-11-20
8649,Engineering,ENG,2023-11-21,2024-02-18
8650,Dispatch,DIS,2024-12-05,2025-03-04
8651, Balance BOIs- HOIST  VALVES  CHAIN PULLEY  COMMISSIONING SPARES etc.,SUP,2023-08-23,2025-03-04
8652,Enquiry,ENQ,2023-08-23,2023-09-21
8653,Ordering ,ORD,2023-09-22,2023-11-20
8654,Engineering,ENG,2023-11-21,2024-02-18
8655,Dispatch,DIS,2024-12-05,2025-03-04
8656,Electrical and C&I Erection works (Cable Tray  Cabling  termination  Earthing etc) & Pre-Commissioning,COM,2025-04-19,2026-02-27
8657,Absorber,ERC,2025-09-19,2025-12-27
8658,Duct & Structure,ERC,2025-08-02,2025-12-29
8659,Gates & Dampers,ERC,2025-10-31,2026-02-27
8660,RC Pumps,ERC,2025-07-23,2025-09-20
8661,Oxidation Blower,ERC,2025-05-18,2025-07-16
8662,FGD Control Room,ERC,2025-05-24,2025-09-20
8663,Gypsum Dewatering System,ERC,2025-04-19,2025-07-17
8664,Agitators,ERC,2025-04-19,2025-06-17
8665,ACW System,ERC,2025-10-24,2026-01-21
8666,Compressor House,ERC,2025-04-19,2025-07-07
8667,Pumps,ERC,2025-04-19,2025-07-02
8668,Valves,ERC,2025-04-19,2025-07-02
8669, HT Motors,OTH,2023-06-24,2025-05-17
8670,Engineering and Supply,ENG,2023-06-24,2024-10-05
8671,RC PUMP MOTOR,OTH,2023-06-24,2024-09-05
8672,Engineering,ENG,2023-06-24,2023-08-22
8673,Manufacturing,MFG,2023-08-23,2024-08-06
8674,Dispatch,DIS,2024-08-07,2024-09-05
8675,OXIDATION BLOWER MOTOR,SUP,2023-06-24,2024-10-05
8676,Engineering,ENG,2023-06-24,2023-09-21
8677,Manufacturing,MFG,2023-09-22,2024-09-05
8678,Dispatch,DIS,2024-09-06,2024-10-05
8679,Erection,ERC,2025-04-03,2025-05-17
8680,RC PUMP MOTOR,ERC,2025-04-03,2025-05-02
8681,OXIDATION BLOWER MOTOR,ERC,2025-04-18,2025-05-17
8682,Earthing,OTH,2023-03-26,2023-09-26
8683,Ordering,OTH,2023-03-26,2023-05-24
8684,Engineering,ENG,2023-05-25,2023-07-23
8685,Manufacturing,MFG,2023-06-29,2023-08-27
8686,Dispatch,DIS,2023-08-28,2023-09-26
8687,Sub Systems,OTH,2023-02-24,2025-12-28
8688,Absorber,OTH,2023-02-24,2025-12-28
8689,Engineering and Supplies,ENG,2023-02-24,2025-10-15
8690,Absorber-Structure,OTH,2023-02-24,2024-07-27
8691,FW226 - EQWT,SUP,2023-02-24,2024-01-31
8692,Engineering,ENG,2023-02-24,2023-07-15
8693,Manufacturing,MFG,2023-07-16,2024-01-01
8694,Dispatch,DIS,2023-12-03,2024-01-31
8695,FW281 - FOUNDATION MATL FOR ABSORBER,SUP,2023-02-24,2024-01-01
8696,Engineering,ENG,2023-02-24,2023-07-15
8697,Manufacturing,MFG,2023-07-16,2023-12-02
8698,Dispatch,DIS,2023-11-03,2024-01-01
8699,FW285 - SUPRTING STR FOR EMERGENCY QWT,SUP,2023-02-24,2024-02-28
8700,Ordering,ORD,2023-02-24,2023-06-23
8701,Engineering,ENG,2023-04-25,2023-08-22
8702,Manufacturing,MFG,2023-08-23,2024-01-29
8703,Dispatch,DIS,2023-12-31,2024-02-28
8704,FW300 - ABSORBER COLUMN,SUP,2023-02-24,2024-03-29
8705,Engineering,ENG,2023-02-24,2023-10-12
8706,Manufacturing,MFG,2023-10-13,2024-02-28
8707,Dispatch,DIS,2024-01-30,2024-03-29
8708,FW301 - ABSORBER BEAM AND BRACINGS,SUP,2023-02-24,2024-03-30
8709,Engineering,ENG,2023-02-24,2023-09-12
8710,Manufacturing,MFG,2023-09-13,2024-02-29
8711,Dispatch,DIS,2024-01-31,2024-03-30
8712,FW302 - ABSORBER LOWER FLOORS,SUP,2023-02-24,2024-03-30
8713,Engineering,ENG,2023-02-24,2023-09-12
8714,Manufacturing,MFG,2023-09-13,2024-02-29
8715,Dispatch,DIS,2024-01-31,2024-03-30
8716,FW303 - ABSORBER UPPER FLOORS,SUP,2023-02-24,2024-03-30
8717,Engineering,ENG,2023-02-24,2023-09-12
8718,Manufacturing,MFG,2023-09-13,2024-02-29
8719,Dispatch,DIS,2024-01-31,2024-03-30
8720,FW304 - ABSORBER FLOOR GRILLS,SUP,2023-02-24,2024-06-18
8721,Engineering,ENG,2023-02-24,2023-09-12
8722,Manufacturing,MFG,2023-09-13,2024-05-19
8723,Dispatch,DIS,2024-04-20,2024-06-18
8724,FW305 - ABSORBER STAIR & HANDRAILS,SUP,2023-02-24,2024-07-27
8725,Ordering,ORD,2023-02-24,2023-06-23
8726,Engineering,ENG,2023-04-25,2023-10-21
8727,Manufacturing,MFG,2023-10-22,2024-06-27
8728,Dispatch,DIS,2024-05-29,2024-07-27
8729,FW306 - ABSORBER HSFG FASTNERS,SUP,2023-02-24,2024-06-27
8730,Engineering,ENG,2023-02-24,2023-10-21
8731,Manufacturing,MFG,2023-10-22,2024-05-28
8732,Dispatch,DIS,2024-04-29,2024-06-27
8733,FW307 - ABSORBER MISCELLANEOUS,SUP,2023-02-24,2024-06-27
8734,Engineering,ENG,2023-02-24,2023-10-21
8735,Manufacturing,MFG,2023-10-22,2024-05-28
8736,Dispatch,DIS,2024-04-29,2024-06-27
8737, Absorber Casing,OTH,2023-02-24,2024-06-27
8738,FW201-ABSORBER RC PUMP NOZZLE,SUP,2023-02-24,2024-06-27
8739,Engineering,ENG,2023-02-24,2023-10-21
8740,Manufacturing,MFG,2023-10-22,2024-05-28
8741,Dispatch,DIS,2024-04-29,2024-06-27
8742,FW202-ABS NOZZLE NB300 & ABOVE,SUP,2023-02-24,2024-06-27
8743,Engineering,ENG,2023-02-24,2023-10-21
8744,Manufacturing,MFG,2023-10-22,2024-05-28
8745,Dispatch,DIS,2024-04-29,2024-06-27
8746,FW203-ABS NOZZLE NB 25 TO NB250,SUP,2023-02-24,2024-06-27
8747,Engineering,ENG,2023-02-24,2023-10-21
8748,Manufacturing,MFG,2023-10-22,2024-05-28
8749,Dispatch,DIS,2024-04-29,2024-06-27
8750,FW209-MANHOLE DOOR FOR ABSORBER,SUP,2023-02-24,2024-06-27
8751,Engineering,ENG,2023-02-24,2023-10-21
8752,Manufacturing,MFG,2023-10-22,2024-05-28
8753,Dispatch,DIS,2024-04-29,2024-06-27
8754,FW216-ABSORBER BAFFLE GRATING SUPPORT,SUP,2023-02-24,2024-06-27
8755,Engineering,ENG,2023-02-24,2023-10-21
8756,Manufacturing,MFG,2023-10-22,2024-05-28
8757,Dispatch,DIS,2024-04-29,2024-06-27
8758,FW217-ABSORBER ME SUPPORT,SUP,2023-02-24,2024-06-27
8759,Engineering,ENG,2023-02-24,2023-10-21
8760,Manufacturing,MFG,2023-10-22,2024-05-28
8761,Dispatch,DIS,2024-04-29,2024-06-27
8762,FW218-ABSORBER SPRAY PIPE SUPPORT,SUP,2023-02-24,2024-06-27
8763,Engineering,ENG,2023-02-24,2023-10-21
8764,Manufacturing,MFG,2023-10-22,2024-05-28
8765,Dispatch,DIS,2024-04-29,2024-06-27
8766,FW219-ABSORBER SYSTEM-BASE,SUP,2023-02-24,2024-06-27
8767,Engineering,ENG,2023-02-24,2023-10-21
8768,Manufacturing,MFG,2023-10-22,2024-05-28
8769,Dispatch,DIS,2024-04-29,2024-06-27
8770,FW221-ABSORBER SYSTEM-CASING BOTTOM,SUP,2023-02-24,2024-04-28
8771,Engineering,ENG,2023-02-24,2023-10-21
8772,Manufacturing,MFG,2023-10-22,2024-03-29
8773,Dispatch,DIS,2024-02-29,2024-04-28
8774,FW222-ABSORBER SYSTEM-CASING TOP,SUP,2023-02-24,2024-04-28
8775,Engineering,ENG,2023-02-24,2023-10-21
8776,Manufacturing,MFG,2023-10-22,2024-03-29
8777,Dispatch,DIS,2024-02-29,2024-04-28
8778,FW224-ABSORBER LINING - C276,SUP,2023-02-24,2024-06-27
8779,Engineering,ENG,2023-02-24,2023-10-21
8780,Manufacturing,MFG,2023-10-22,2024-05-28
8781,Dispatch,DIS,2024-04-29,2024-06-27
8782,FW228-ABSORBER-W/D INTERFACE- C276 zone,SUP,2023-02-24,2024-06-27
8783,Engineering,ENG,2023-02-24,2023-10-21
8784,Manufacturing,MFG,2023-10-22,2024-05-28
8785,Dispatch,DIS,2024-04-29,2024-06-27
8786,FW328-ABSORBER-W/D INTERFACE- CS zone,SUP,2023-02-24,2024-06-27
8787,Engineering,ENG,2023-02-24,2023-10-21
8788,Manufacturing,MFG,2023-10-22,2024-05-28
8789,Dispatch,DIS,2024-04-29,2024-06-27
8790,FW231-ABSORBER SHEAR PLATE,SUP,2023-02-24,2024-06-27
8791,Engineering,ENG,2023-02-24,2023-10-21
8792,Manufacturing,MFG,2023-10-22,2024-05-28
8793,Dispatch,DIS,2024-04-29,2024-06-27
8794,FW322-ABSORBER SYSTEM-CASING INTERMEDIATE,SUP,2023-02-24,2024-04-28
8795,Engineering,ENG,2023-02-24,2023-10-21
8796,Manufacturing,MFG,2023-10-22,2024-03-29
8797,Dispatch,DIS,2024-02-29,2024-04-28
8798,FW324-HOOD OVER ABSORBER,SUP,2023-02-24,2024-04-28
8799,Engineering,ENG,2023-02-24,2023-10-21
8800,Manufacturing,MFG,2023-10-22,2024-03-29
8801,Dispatch,DIS,2024-02-29,2024-04-28
8802,FW227-EMERGENCY QUENCHING SYSTEM,SUP,2023-02-24,2024-06-27
8803,Engineering,ENG,2023-02-24,2023-10-21
8804,Manufacturing,MFG,2023-10-22,2024-05-28
8805,Dispatch,DIS,2024-04-29,2024-06-27
8806,FW229-W/D WASH SYSTEM,SUP,2023-02-24,2024-06-27
8807,Engineering,ENG,2023-02-24,2023-10-21
8808,Manufacturing,MFG,2023-10-22,2024-05-28
8809,Dispatch,DIS,2024-04-29,2024-06-27
8810,Absorber Internals,SUP,2023-02-24,2024-08-11
8811,FW 215-SUBDELIVERY - MIST ELIMINATOR,SUP,2023-02-24,2024-06-07
8812,Ordering,ORD,2023-02-24,2023-06-23
8813,Engineering,ENG,2023-04-25,2023-08-22
8814,Manufacturing,MFG,2023-08-23,2024-05-08
8815,Dispatch,DIS,2024-04-09,2024-06-07
8816, FW213- Absorber system ,SUP,2023-02-24,2024-08-11
8817,Ordering,ORD,2023-02-24,2023-06-23
8818,Engineering,ENG,2023-06-24,2023-10-21
8819,Manufacturing,MFG,2023-10-22,2024-07-07
8820,Dispatch,DIS,2024-06-13,2024-08-11
8821,FW720-ABSORBER AGITATOR- BOI,SUP,2023-02-24,2024-05-28
8822,Ordering,ORD,2023-02-24,2023-06-23
8823,Engineering,ENG,2023-04-25,2023-08-22
8824,Manufacturing,MFG,2023-08-23,2024-05-13
8825,Dispatch,DIS,2024-03-30,2024-05-28
8826,Absorber-Supporting systems,SUP,2023-02-24,2025-04-02
8827,RC Pump Shed,OTH,2023-04-10,2024-06-22
8828,Engineering &Supply,SUP,2023-04-10,2024-06-22
8829,FW371 - HSFG BOLT-RC SHED-BOI,SUP,2023-09-12,2024-06-22
8830,Ordering,ORD,2023-09-12,2024-01-09
8831,Engineering,ENG,2023-11-11,2024-01-24
8832,Manufacturing,MFG,2024-01-25,2024-04-23
8833,Dispatch,DIS,2024-04-24,2024-06-22
8834,FW283 FOUNDATION MATERIAL & FW236 -STRUCTURES ,SUP,2023-07-24,2024-05-18
8835,Engineering,ENG,2023-07-24,2023-11-20
8836,Manufacturing,MFG,2023-11-21,2024-04-18
8837,Dispatch,DIS,2024-03-20,2024-05-18
8838,FW208- RC PUMP OXIDATION BLOWER SUPPORT,SUP,2023-05-25,2024-05-08
8839,Ordering,ORD,2023-05-25,2023-09-21
8840,Engineering,ENG,2023-07-24,2023-11-10
8841,Manufacturing,MFG,2023-11-11,2024-04-08
8842,Dispatch,DIS,2024-03-10,2024-05-08
8843,FW236- STRUCTURE FOR RC PUMP HOUSE,SUP,2023-04-10,2024-03-24
8844,Ordering,ORD,2023-04-10,2023-08-07
8845,Engineering,ENG,2023-06-09,2023-09-26
8846,Manufacturing,MFG,2023-09-27,2024-02-23
8847,Dispatch,DIS,2024-01-25,2024-03-24
8848,Absorbers Duct  Duct Structure & Duct support,SUP,2023-02-24,2024-04-30
8849,FW207-OUTLET GUIDE VANE,SUP,2023-02-24,2024-03-30
8850,Engineering,ENG,2023-02-24,2023-09-12
8851,Manufacturing,MFG,2023-09-13,2024-02-29
8852,Dispatch,DIS,2024-01-31,2024-03-30
8853,FW232-DUCT SUPPORT BTW BYPASS DUCT & BUF/GGH,SUP,2023-02-24,2024-03-30
8854,Engineering,ENG,2023-02-24,2023-09-12
8855,Manufacturing,MFG,2023-09-13,2024-02-29
8856,Dispatch,DIS,2024-01-31,2024-03-30
8857,FW234-DUCT SUPPORT B/T ABSORBER & STACK/BYPASS,SUP,2023-02-24,2024-03-30
8858,Engineering,ENG,2023-02-24,2023-09-12
8859,Manufacturing,MFG,2023-09-13,2024-02-29
8860,Dispatch,DIS,2024-01-31,2024-03-30
8861,FW251-EXPANSION JOINT - METALLIC,SUP,2023-02-24,2024-03-30
8862,Engineering,ENG,2023-02-24,2023-09-12
8863,Manufacturing,MFG,2023-09-13,2024-02-29
8864,Dispatch,DIS,2024-01-31,2024-03-30
8865,FW252-EXPANSION JOINT - NON-METALLIC,SUP,2023-02-24,2024-03-30
8866,Engineering,ENG,2023-02-24,2023-09-12
8867,Manufacturing,MFG,2023-09-13,2024-02-29
8868,Dispatch,DIS,2024-01-31,2024-03-30
8869,FW255-DUCT BETWEEN BYPASS AND BUF,SUP,2023-02-24,2024-03-30
8870,Engineering,ENG,2023-02-24,2023-09-12
8871,Manufacturing,MFG,2023-09-13,2024-02-29
8872,Dispatch,DIS,2024-01-31,2024-03-30
8873,FW257-DUCT BETWEEN ABSORBER AND BYPASS/STACK,SUP,2023-02-24,2024-03-30
8874,Engineering,ENG,2023-02-24,2023-09-12
8875,Manufacturing,MFG,2023-09-13,2024-02-29
8876,Dispatch,DIS,2024-01-31,2024-03-30
8877,FW267-INSULATION MATERIALS FOR DUCT,SUP,2023-02-24,2024-03-30
8878,Engineering,ENG,2023-02-24,2023-09-12
8879,Manufacturing,MFG,2023-09-13,2024-02-29
8880,Dispatch,DIS,2024-01-31,2024-03-30
8881,FW268-FIXING COMPONENTS FOR DUCT,SUP,2023-02-24,2024-03-30
8882,Engineering,ENG,2023-02-24,2023-09-12
8883,Manufacturing,MFG,2023-09-13,2024-02-29
8884,Dispatch,DIS,2024-01-31,2024-03-30
8885,FW269-CLADDING SHEET FOR DUCT,SUP,2023-02-24,2024-03-30
8886,Engineering,ENG,2023-02-24,2023-09-12
8887,Manufacturing,MFG,2023-09-13,2024-02-29
8888,Dispatch,DIS,2024-01-31,2024-03-30
8889,FW260-DUCT STRUCTURE BETWEEN BYPASS AND BUF,SUP,2023-02-24,2024-03-30
8890,Engineering,ENG,2023-02-24,2023-09-12
8891,Manufacturing,MFG,2023-09-13,2024-02-29
8892,Dispatch,DIS,2024-01-31,2024-03-30
8893,FW262-DUCT STRUCTURE B/T ABSORBER&STACK,SUP,2023-02-24,2024-03-30
8894,Engineering,ENG,2023-02-24,2023-09-12
8895,Manufacturing,MFG,2023-09-13,2024-02-29
8896,Dispatch,DIS,2024-01-31,2024-03-30
8897,FW280-FOUNDATION MATL FOR DUCT STRUCTURE,SUP,2023-02-24,2024-02-29
8898,Engineering,ENG,2023-02-24,2023-09-12
8899,Manufacturing,MFG,2023-09-13,2024-01-30
8900,Dispatch,DIS,2024-01-01,2024-02-29
8901,FW297-PLATFORM FOR DUCT,SUP,2023-02-24,2024-04-30
8902,Engineering,ENG,2023-02-24,2023-09-12
8903,Manufacturing,MFG,2023-09-13,2024-03-31
8904,Dispatch,DIS,2024-03-02,2024-04-30
8905,FW298-PLATFORM FOR G&D,SUP,2023-02-24,2024-04-30
8906,Engineering,ENG,2023-02-24,2023-09-12
8907,Manufacturing,MFG,2023-09-13,2024-03-31
8908,Dispatch,DIS,2024-03-02,2024-04-30
8909,FW612-GALLERIES AND RAILINGS FOR DAMPERS,SUP,2023-02-24,2024-04-30
8910,Engineering,ENG,2023-02-24,2023-09-12
8911,Manufacturing,MFG,2023-09-13,2024-03-31
8912,Dispatch,DIS,2024-03-02,2024-04-30
8913,FW 613-GALLERIES AND RAILINGS FOR DUCTS,SUP,2023-02-24,2024-04-30
8914,Engineering,ENG,2023-02-24,2023-09-12
8915,Manufacturing,MFG,2023-09-13,2024-03-31
8916,Dispatch,DIS,2024-03-02,2024-04-30
8917,FW373-HSFG Bolt?Duct Struct,SUP,2023-02-24,2024-03-30
8918,Engineering,ENG,2023-02-24,2023-09-12
8919,Manufacturing,MFG,2023-09-13,2024-02-29
8920,Dispatch,DIS,2024-01-31,2024-03-30
8921,HYD- ABSORBER SLURRY RECIRCULATION PUMP,SUP,2023-05-10,2025-03-18
8922,RC Pump-4 NOS,OTH,2023-05-10,2025-03-18
8923,ENGINEERING & PROCUREMENT,ORD,2023-05-10,2024-05-23
8924,MANUFACTURING,MFG,2024-05-24,2024-10-30
8925,ASSEMBLY& TESTING,MFG,2024-10-31,2025-02-16
8926,Dispatch OF ABSORBER SLURRY RECIRCULATION PUMP AND ALL ASSOCIATED ITEMS,DIS,2025-02-17,2025-03-18
8927,HYD-Oxidation blower,OTH,2023-05-25,2025-04-02
8928,Oxidation Blower-A(100% Capacity  1 Standby),OTH,2023-05-25,2025-04-02
8929,ENGINEERING & PROCUREMENT,ORD,2023-05-25,2024-06-07
8930,MANUFACTURING,MFG,2024-06-08,2024-11-14
8931,ASSEMBLY& TESTING,MFG,2024-11-15,2025-03-03
8932,Dispatch OF OXIDATION AIR BLOWER AND ALL ASSOCIATED ITEMS,DIS,2025-03-04,2025-04-02
8933,Absorber Handling System,OTH,2023-02-24,2024-07-27
8934,FH990-ABSORBER ISLAND-HANDLING SYSTEM-BOI,SUP,2023-02-24,2024-07-27
8935,Ordering,ORD,2023-02-24,2023-04-14
8936,Engineering,ENG,2023-04-15,2023-09-21
8937,Manufacturing,MFG,2023-09-22,2024-07-12
8938,Dispatch,DIS,2024-05-29,2024-07-27
8939,Absorber Piping &Valves,OTH,2023-02-24,2025-07-07
8940,FW860-FRP PIPING (LS GS),SUP,2023-02-24,2024-03-29
8941,Ordering,ORD,2023-02-24,2023-06-23
8942,Engineering,ENG,2023-04-25,2023-08-22
8943,Manufacturing,MFG,2023-08-23,2024-02-28
8944,Dispatch,DIS,2024-01-30,2024-03-29
8945,FW861-CSRL PIPE-1 (GS LS),SUP,2023-02-24,2024-03-29
8946,Ordering,ORD,2023-02-24,2023-06-23
8947,Engineering,ENG,2023-04-25,2023-08-22
8948,Manufacturing,MFG,2023-08-23,2024-02-28
8949,Dispatch,DIS,2024-01-30,2024-03-29
8950,FW862-CSRL PIPE-2 (GS LS),SUP,2023-02-24,2024-06-07
8951,Ordering,ORD,2023-02-24,2023-06-23
8952,Engineering,ENG,2023-04-25,2023-08-22
8953,Manufacturing,MFG,2023-08-23,2024-05-08
8954,Dispatch,DIS,2024-04-09,2024-06-07
8955,FW863-CS PIPING (PW CW SW),SUP,2023-02-24,2024-06-07
8956,Ordering,ORD,2023-02-24,2023-06-23
8957,Engineering,ENG,2023-04-25,2023-08-22
8958,Manufacturing,MFG,2023-08-23,2024-05-08
8959,Dispatch,DIS,2024-04-09,2024-06-07
8960,FW864-SS PIPING (W/D),SUP,2023-02-24,2024-10-30
8961,Engineering,ENG,2023-02-24,2023-10-21
8962,Manufacturing,MFG,2023-10-22,2024-09-30
8963,Dispatch,DIS,2024-09-01,2024-10-30
8964,FW865-GI PIPING (IA  DW),SUP,2023-02-24,2024-10-30
8965,Engineering,ENG,2023-02-24,2023-10-21
8966,Manufacturing,MFG,2023-10-22,2024-09-30
8967,Dispatch,DIS,2024-09-01,2024-10-30
8968,FW866-FASTENERS CS & SS,SUP,2023-02-24,2024-10-30
8969,Engineering,ENG,2023-02-24,2023-10-21
8970,Manufacturing,MFG,2023-10-22,2024-09-30
8971,Dispatch,DIS,2024-09-01,2024-10-30
8972,FW867-RUBBER GASKET  SHEET,SUP,2023-02-24,2024-10-30
8973,Engineering,ENG,2023-02-24,2023-10-21
8974,Manufacturing,MFG,2023-10-22,2024-09-30
8975,Dispatch,DIS,2024-09-01,2024-10-30
8976,FW868-U-BOLTS,SUP,2023-02-24,2024-10-30
8977,Engineering,ENG,2023-02-24,2023-10-21
8978,Manufacturing,MFG,2023-10-22,2024-09-30
8979,Dispatch,DIS,2024-09-01,2024-10-30
8980,FW869-RUBBER EXP. BELLOWS,SUP,2023-02-24,2024-10-30
8981,Engineering,ENG,2023-02-24,2023-10-21
8982,Manufacturing,MFG,2023-10-22,2024-09-30
8983,Dispatch,DIS,2024-09-01,2024-10-30
8984,FW870-PIPING ACC.,SUP,2023-02-24,2024-10-30
8985,Engineering,ENG,2023-02-24,2023-10-21
8986,Manufacturing,MFG,2023-10-22,2024-09-30
8987,Dispatch,DIS,2024-09-01,2024-10-30
8988,FW871-PIPING SUPPORT STRUCTURES,SUP,2023-02-24,2024-10-30
8989,Engineering,ENG,2023-02-24,2023-10-21
8990,Manufacturing,MFG,2023-10-22,2024-09-30
8991,Dispatch,DIS,2024-09-01,2024-10-30
8992,FW875-FRP PIPING (LOT-2),SUP,2023-02-24,2024-10-30
8993,Engineering,ENG,2023-02-24,2023-10-21
8994,Manufacturing,MFG,2023-10-22,2024-09-30
8995,Dispatch,DIS,2024-09-01,2024-10-30
8996,FW876-CSRL PIPIE-1 (LOT-2),SUP,2023-02-24,2024-10-30
8997,Engineering,ENG,2023-02-24,2023-10-21
8998,Manufacturing,MFG,2023-10-22,2024-09-30
8999,Dispatch,DIS,2024-09-01,2024-10-30
9000,FW877-CS PIPING (LOT-2),SUP,2023-02-24,2024-10-30
9001,Engineering,ENG,2023-02-24,2023-10-21
9002,Manufacturing,MFG,2023-10-22,2024-09-30
9003,Dispatch,DIS,2024-09-01,2024-10-30
9004,FW878-SS PIPING (LOT-2),SUP,2023-02-24,2024-10-30
9005,Engineering,ENG,2023-02-24,2023-10-21
9006,Manufacturing,MFG,2023-10-22,2024-09-30
9007,Dispatch,DIS,2024-09-01,2024-10-30
9008,FW- Balance Valves & Commissioning spares,SUP,2023-11-01,2025-07-07
9009,Engineering,ENG,2023-11-01,2024-06-27
9010,Manufacturing,MFG,2024-06-28,2025-06-07
9011,Dispatch,DIS,2025-05-09,2025-07-07
9012,FW879-GI PIPING (LOT-2),SUP,2023-02-24,2024-10-30
9013,Engineering,ENG,2023-02-24,2023-10-21
9014,Manufacturing,MFG,2023-10-22,2024-09-30
9015,Dispatch,DIS,2024-09-01,2024-10-30
9016,FW880-PIPING ACC (LOT-2),SUP,2023-02-24,2024-10-30
9017,Engineering,ENG,2023-02-24,2023-10-21
9018,Manufacturing,MFG,2023-10-22,2024-09-30
9019,Dispatch,DIS,2024-09-01,2024-10-30
9020,Absorber Elevator,SUP,2023-02-24,2025-09-16
9021,Ordering,ORD,2023-02-24,2023-04-15
9022,Engineering,ENG,2023-04-16,2023-08-13
9023,Manufacturing,MFG,2023-08-14,2024-05-19
9024,Dispatch,DIS,2024-05-05,2024-11-20
9025,FW282-FOUNDATION MATL FOR ELEVATOR,SUP,2024-05-05,2024-08-12
9026,FW372-HSFG Bolt?Elevator Struct,SUP,2024-05-05,2024-11-20
9027,FW380-Elevator Column,SUP,2024-05-05,2024-11-20
9028,FW381-Elevator Beam and Bracing,SUP,2024-05-05,2024-11-20
9029,FW382-Elevator Floors,SUP,2024-05-05,2024-11-20
9030,FW383-Elevator Stair and Hand rail,SUP,2024-05-05,2024-11-20
9031,FW384-Elevator Floor grill,SUP,2024-05-05,2024-11-20
9032,FW385-Elevator M/c room & Guide,SUP,2024-05-05,2024-11-20
9033,FW386-Inter-connecting platform to Abs,SUP,2024-05-05,2024-11-20
9034,FW293- Elevators and Accessories,SUP,2024-05-05,2024-11-20
9035,Erection and commissioning,ERC,2024-11-21,2025-09-16
9036,Absorber Consumables  Linings & Insulation  Casing etc.,SUP,2023-02-24,2025-10-15
9037,FL210-FIXING COMPONENTS FOR FGD SYSTEM,SUP,2023-11-01,2025-05-03
9038,Engineering,ENG,2023-11-01,2024-06-27
9039,Manufacturing,MFG,2024-06-28,2025-04-03
9040,Dispatch,DIS,2025-03-05,2025-05-03
9041,FL221-MINERAL WOOL FOR FGD SYSTEM-BOI,SUP,2024-05-29,2025-09-29
9042,Ordering,ORD,2024-05-29,2024-09-25
9043,Engineering,ENG,2024-07-28,2024-11-23
9044,Manufacturing,MFG,2024-11-24,2025-08-30
9045,Dispatch,DIS,2025-08-01,2025-09-29
9046,FL700-BULKED DD COMPONENTS FOR FGD SYSTEM,SUP,2024-04-14,2025-08-16
9047,Ordering & Engineering,ORD,2024-04-14,2024-09-10
9048,Manufacturing,MFG,2024-09-11,2025-07-17
9049,Dispatch,DIS,2025-06-18,2025-08-16
9050,FL701-BPS FASTENERS FOR FGD SYSTEM,SUP,2024-04-14,2025-10-15
9051,Engineering,ENG,2024-04-14,2024-12-09
9052,Manufacturing,MFG,2024-12-10,2025-09-15
9053,Dispatch,DIS,2025-08-17,2025-10-15
9054,FL810-OUTER CASING FOR FGD SYSTEM-BOI,SUP,2023-02-24,2024-07-27
9055,Ordering,ORD,2023-02-24,2023-06-23
9056,Engineering,ENG,2023-04-25,2023-08-22
9057,Manufacturing,MFG,2023-08-23,2024-06-27
9058,Dispatch,DIS,2024-05-29,2024-07-27
9059,FZ990-SPECIAL WELDING ELECTRODE,SUP,2023-02-24,2024-04-03
9060,Engineering,ENG,2023-02-24,2023-10-21
9061,Manufacturing,MFG,2023-10-22,2024-03-04
9062,Dispatch,DIS,2024-02-04,2024-04-03
9063,Civil Works,OTH,2023-08-23,2024-12-11
9064,Absorber-Main structure,OTH,2024-01-02,2024-10-22
9065,RFC Civil,PE - RFC,2024-01-02,2024-02-05
9066,Excavation,CIV,2024-02-06,2024-04-25
9067,RCC,CIV,2024-04-26,2024-10-22
9068,Absorber-Supporting systems,OTH,2024-02-21,2024-12-11
9069,RFC of RC Pump foundation drawing,PE - RFC,2024-02-21,2024-03-21
9070,RCC,CIV,2024-06-15,2024-07-14
9071,RFC of Oxidation Blower foundation drawing,PE - RFC,2024-02-26,2024-03-26
9072,RCC,CIV,2024-06-15,2024-12-11
9073,RC PUMP Shed,CIV,2023-08-23,2024-09-07
9074,RFC Civil OB & RC Pump Shed Foundation drawing,PE - RFC,2023-08-23,2023-10-21
9075,RFC Civil OB & RC Pump Shed Super structure,PE - RFC,2023-10-22,2023-12-20
9076,Excavation,CIV,2024-04-11,2024-06-09
9077,RCC,CIV,2024-06-10,2024-09-07
9078,Erection,ERC,2024-09-08,2025-12-28
9079,Absorber-Main structure,ERC,2024-10-23,2025-08-06
9080,Absorber Internals,ERC,2025-05-22,2025-09-18
9081,Absorber-Supporting systems,ERC,2024-09-08,2025-08-08
9082,RC Pump Shed,ERC,2024-09-08,2025-02-04
9083,HSFG BOLT-RC SHED-BOI,OTH,2024-09-08,2024-10-22
9084,STRUCTURES - RC PUMP HOUSE,OTH,2024-09-08,2024-12-06
9085,RC PUMP HOUSE CLADDING SHEETS-BOI,OTH,2024-12-07,2025-02-04
9086,Absorbers Inter connecting Platforms,OTH,2025-07-10,2025-08-08
9087,FZ340-INTER-CONNECTING PLTF TO ABS,OTH,2025-07-10,2025-08-08
9088,RC Pump,OTH,2025-04-18,2025-06-16
9089,Oxidation blower,OTH,2025-04-18,2025-06-21
9090,Absorber Quenching Water Tank,OTH,2025-05-21,2025-06-09
9091,Absorber Piping & Valves,ERC,2025-08-07,2025-12-04
9092,Absorber Consumables  Linings & Insulation  Casing etc.,ERC,2025-09-30,2025-12-28
9093,Balance BOIs of Absorber,SUP,2023-02-24,2025-04-28
9094,FW390-C276- Special welding electrode - part1,SUP,2023-02-24,2024-10-30
9095,Engineering,ENG,2023-02-24,2023-10-21
9096,Procurement,OTH,2023-10-22,2024-08-31
9097,Dispatch,DIS,2024-08-02,2024-10-30
9098,FW391-C276- Special welding electrode - part2,SUP,2023-02-24,2024-10-30
9099,Engineering,ENG,2023-02-24,2023-10-21
9100,Manufacturing,MFG,2023-10-22,2024-08-31
9101,Dispatch,DIS,2024-08-02,2024-10-30
9102,FW392-Ti - Special welding electrode - part1,SUP,2023-02-24,2024-10-30
9103,Engineering,ENG,2023-02-24,2023-10-21
9104,Manufacturing,MFG,2023-10-22,2024-08-31
9105,Dispatch,DIS,2024-08-02,2024-10-30
9106,FW393-Ti - Special welding electrode - part2,SUP,2023-02-24,2024-10-30
9107,Engineering,ENG,2023-02-24,2023-10-21
9108,Manufacturing,MFG,2023-10-22,2024-08-31
9109,Dispatch,DIS,2024-08-02,2024-10-30
9110,FW725-Nozzle and Flanges,SUP,2023-02-24,2024-10-30
9111,Engineering,ENG,2023-02-24,2023-10-21
9112,Manufacturing,MFG,2023-10-22,2024-08-31
9113,Dispatch,DIS,2024-08-02,2024-10-30
9114,FW710-MONORAIL FOR HOIST & CRANES,SUP,2023-08-23,2025-04-28
9115,Engineering,ENG,2023-08-23,2024-04-18
9116,Manufacturing,MFG,2024-04-19,2025-02-27
9117,Dispatch,DIS,2025-01-29,2025-04-28
9118,FW717-MAN HOLE DOOR,SUP,2023-02-24,2024-10-30
9119,Engineering,ENG,2023-02-24,2023-10-21
9120,Manufacturing,MFG,2023-10-22,2024-08-31
9121,Dispatch,DIS,2024-08-02,2024-10-30
9122,FW718 -ROOFING SHEET,SUP,2023-02-24,2024-10-30
9123,Engineering,ENG,2023-02-24,2023-10-21
9124,Manufacturing,MFG,2023-10-22,2024-08-31
9125,Dispatch,DIS,2024-08-02,2024-10-30
9126,FW992-Test Piece - C276,SUP,2023-02-24,2024-10-30
9127,Engineering,ENG,2023-02-24,2023-10-21
9128,Manufacturing,MFG,2023-10-22,2024-08-31
9129,Dispatch,DIS,2024-08-02,2024-10-30
9130,FW993-Test Piece - Ti,SUP,2023-02-24,2024-10-30
9131,Engineering,ENG,2023-02-24,2023-10-21
9132,Manufacturing,MFG,2023-10-22,2024-08-31
9133,Dispatch,DIS,2024-08-02,2024-10-30
9134,BOI-FW223-ABSORBER SYSTEM ACCESSORIES,SUP,2023-02-24,2024-10-30
9135,Engineering,ENG,2023-02-24,2023-10-21
9136,Manufacturing,MFG,2023-10-22,2024-08-31
9137,Dispatch,DIS,2024-08-02,2024-10-30
9138,BOI-FW227-EMERGENCY QUENCH SYSTEM,SUP,2023-02-24,2024-10-30
9139,Engineering,ENG,2023-02-24,2023-10-21
9140,Manufacturing,MFG,2023-10-22,2024-08-31
9141,Dispatch,DIS,2024-08-02,2024-10-30
9142,BOI-FW228-ABSORBER-W/D INTERFACE,SUP,2023-02-24,2024-10-30
9143,Engineering,ENG,2023-02-24,2023-10-21
9144,Manufacturing,MFG,2023-10-22,2024-08-31
9145,Dispatch,DIS,2024-08-02,2024-10-30
9146,BOI-FW229-W/D WASH SYSTEM,SUP,2023-02-24,2024-10-30
9147,Engineering,ENG,2023-02-24,2023-10-21
9148,Manufacturing,MFG,2023-10-22,2024-08-31
9149,Dispatch,DIS,2024-08-02,2024-10-30
9150,BOI-FW235-SPECIAL FASTENERS,SUP,2023-02-24,2024-10-30
9151,Engineering,ENG,2023-02-24,2023-10-21
9152,Manufacturing,MFG,2023-10-22,2024-08-31
9153,Dispatch,DIS,2024-08-02,2024-10-30
9154,BOI-FW239-VIEWING PORTS,SUP,2023-02-24,2024-10-30
9155,Engineering,ENG,2023-02-24,2023-10-21
9156,Manufacturing,MFG,2023-10-22,2024-08-31
9157,Dispatch,DIS,2024-08-02,2024-10-30
9158,BOI-FW243-SLURRY DISTRIBUTION SYSTEM- RC PUMP & ABSORBER,SUP,2023-02-24,2024-10-30
9159,Engineering,ENG,2023-02-24,2023-10-21
9160,Manufacturing,MFG,2023-10-22,2024-08-31
9161,Dispatch,DIS,2024-08-02,2024-10-30
9162,BOI-FW244-OXIDATION AIR DISTRIBUTION SYS,SUP,2023-02-24,2024-10-30
9163,Engineering,ENG,2023-02-24,2023-10-21
9164,Manufacturing,MFG,2023-10-22,2024-08-31
9165,Dispatch,DIS,2024-08-02,2024-10-30
9166,BOI-FW249-HANDLING EQUIPMENT - RC PUMP,SUP,2023-02-24,2024-10-30
9167,Engineering,ENG,2023-02-24,2023-10-21
9168,Manufacturing,MFG,2023-10-22,2024-08-31
9169,Dispatch,DIS,2024-08-02,2024-10-30
9170,BOI-FW252-EXPANSION JOINT- NON METALLIC,SUP,2023-02-24,2024-10-30
9171,Engineering,ENG,2023-02-24,2023-10-21
9172,Manufacturing,MFG,2023-10-22,2024-08-31
9173,Dispatch,DIS,2024-08-02,2024-10-30
9174,BOI-FW267-INSULATION MATERIALS FOR DUCT,SUP,2023-02-24,2024-10-30
9175,Engineering,ENG,2023-02-24,2023-10-21
9176,Manufacturing,MFG,2023-10-22,2024-08-31
9177,Dispatch,DIS,2024-08-02,2024-10-30
9178,BOI-FW268-FIXING COMPONENTS FOR DUCT,SUP,2023-02-24,2024-10-30
9179,Engineering,ENG,2023-02-24,2023-10-21
9180,Manufacturing,MFG,2023-10-22,2024-08-31
9181,Dispatch,DIS,2024-08-02,2024-10-30
9182,BOI-FW269-CLADDING SHEET FOR DUCT,SUP,2023-02-24,2024-10-30
9183,Engineering,ENG,2023-02-24,2023-10-21
9184,Manufacturing,MFG,2023-10-22,2024-08-31
9185,Dispatch,DIS,2024-08-02,2024-10-30
9186,JHS - 10 MVA  11/3.45 KV FGD AUX Transformers,SUP,2023-06-04,2025-11-01
9187,Engineering,ENG,2023-06-04,2023-12-30
9188,Manufacturing & testing,MFG,2023-10-02,2025-01-15
9189, Packing  Dispatch,DIS,2024-09-18,2025-02-14
9190,Erection of Aux Transformer,ERC,2025-03-17,2025-08-03
9191,Commissioning of Aux Transformer,COM,2025-08-04,2025-11-01
9192,Testing and Commissioning,COM,2025-12-30,2026-02-27
9193,PEM- Sewage Treatment Plant,OTH,2023-12-01,2026-06-14
9194,STP Execution Agency,PRC,2023-12-01,2024-05-29
9195,Enquiry,ENQ,2023-12-01,2023-12-01
9196,PO Placement,ORD,2023-12-02,2024-03-30
9197,Engineering Design/Drgs,ENG,2024-03-31,2024-05-29
9198,Supply,SUP,2025-05-15,2025-05-15
9199,STP: Dispatch COMPLETION of Materials,SUP,2025-05-15,2025-05-15
9200,Civil,CIV,2024-06-15,2025-12-01
9201,EXCAVATION,CIV,2024-06-15,2024-07-29
9202,RCC in substructure including PCC,CIV,2024-07-30,2024-12-26
9203,RCC in superstructure including equipment foundation,CIV,2024-12-27,2025-09-02
9204,Backfilling,CIV,2025-09-03,2025-10-17
9205,Finishing works,CIV,2025-10-18,2025-12-01
9206,Execution,ERC,2026-01-01,2026-06-14
9207, STP:E&C of STP,COM,2026-01-01,2026-06-14
